Activities
Project ID,CTO.PG.Workpack Number,Activity ID,Activity Name,BL Project Start,BL Project Finish,Start,Finish,Original Duration,Remaining Duration,At Completion Duration,Physical % Complete,Total Float,Activity Status
 W234LT,W234,W230.3820,## TOR Low Decay Heat: Thermal Analysis (Cost Summary) ##,,,10-Mar-25 A,13-Jun-25,66,50,66,0%,235,In Progress
 W234LT,W234,W230.3810,TOR Low Decay Heat Thermal Analysis Report Technical Review,,,02-Jun-25,13-Jun-25,10,10,10,0%,235,Not Started
 W234LT,W234,W230.3800,TOR Low Decay Heat Thermal Analysis Report Verification,,,01-May-25,30-May-25,20,20,20,0%,235,Not Started
 W234LT,W234,W230.3790,TOR Low Decay Heat Thermal Analysis Report  Authoring,,,10-Mar-25 A,30-Apr-25,36,20,36,25%,235,In Progress
 W234LT,W234,W230.3780,TOR Low Decay Heat Thermal Analysis Report (AME-1656),,,,13-Jun-25,0,0,0,0%,235,Not Started
 ER7514LT,W161,W161.9670,HPB PSR4 Head Doc: Verification Complete/ Verified Draft A Issued for INSA (T-7) EC 374795 (BU Milestone),,,,05-Dec-25,0,0,0,0%,270,Not Started
 W230LT,W230,W230.3820,## HYB Low Decay Heat: Thermal Analysis (Cost Summary) ##,,,10-Mar-25 A,13-Jun-25,66,50,66,0%,235,In Progress
 W230LT,W230,W230.3810,HYB Low Decay Heat Thermal Analysis Report Technical Review,,,02-Jun-25,13-Jun-25,10,10,10,0%,235,Not Started
 W230LT,W230,W230.3800,HYB Low Decay Heat Thermal Analysis Report Verification,,,01-May-25,30-May-25,20,20,20,0%,235,Not Started
 W230LT,W230,W230.3790,HYB Low Decay Heat Thermal Analysis Report  Authoring,,,10-Mar-25 A,30-Apr-25,36,20,36,25%,235,In Progress
 W230LT,W230,W230.3780,HYB Low Decay Heat Thermal Analysis Report (AME-1656),,,,13-Jun-25,0,0,0,0%,235,Not Started
 ER7514LT,W161,W161.9660,>>>INCOMING ENABLER (W404) - EC PDSC End of Verification,,,,07-Nov-25,0,0,0,0%,290,Not Started
 ER7514LT,W161,W161.9650,>>>MIRROR OF INCOMING ENABLER (W404) - EC PDSC End of Verification,,,,07-Nov-25*,0,0,0,0%,-58,Not Started
 ER7514LT,W161,W161.9640,PSR3 Extension EC Review Meeting,,,,28-Feb-25 A,0,0,0,100%,,Completed
 ER6360LT,W085,W085.1310,7 FFiR Flasks Refurbished and Available for Service,,,,12-Aug-25,0,0,0,0%,39,Not Started
 W731LT_UN,W731,W730.1000,TOR Enhanced Defueling Rate: Discovery Milestone - HF Scope Review of New Significant HBSC,,11-Sep-25,,11-Sep-25,0,0,0,0%,647,Not Started
 W730LT_UN,W730,W730.4200,HYB Enhanced Defueling Rate: Discovery Milestone - HF Scope Review of New Significant HBSC,,11-Sep-25,,11-Sep-25,0,0,0,0%,647,Not Started
 W731LT_UN,W731,W731.1060,>>>OUTGOING ENABLER (TOR Security - Preparing for Defuelling) Review SPPI File Against Issued Essential Safety Cases,,03-Mar-25,,01-Apr-25,0,0,0,0%,760,Not Started
 W731LT_UN,W731,W731.3170,Gate D Approved,,27-Mar-28,,27-Mar-28,0,0,0,0%,0,Not Started
 W731LT_UN,W731,W731.1010,>>>INCOMING ENABLER (W209) Supporting References Complete,,31-Jan-24,,31-Jan-24 A,0,0,0,100%,,Completed
 W731LT_UN,W731,W731.1000,>>>MIRROR OF INCOMING ENABLER (W209) Supporting References Complete,,31-Jan-24,,31-Jan-24 A,0,0,0,100%,,Completed
 W731LT_UN,W731,W731.1050,ETC (DD-PF),03-Mar-25,26-Nov-27,01-Apr-25,26-Nov-27,674,674,674,0%,86,Not Started
 W731LT_UN,W731,W731.1200,## Technical Development / Project Management - Pre Gate B - (Cost Summary) ##,07-Mar-25,03-Apr-25,07-Mar-25 A,03-Apr-25,20,3,20,0%,11,In Progress
 W731LT_UN,W731,W731.1040,Summary for TOR Fuel Handling Enhanced Safety Cases W230,03-Feb-25,27-Mar-28,03-Feb-25 A,27-Mar-28,801,760,801,0%,0,In Progress
 W731LT_UN,W731,W731.1030,Project Start,03-Feb-25,,03-Feb-25 A,,0,0,0,100%,,Completed
 W731LT_UN,W731,W731.2800,>>>OUTGOING ENABLER (W295) Safety Cases Authored,,23-Jul-27,,23-Jul-27,0,0,0,0%,175,Not Started
 W731LT_UN,W731,W731.3050,>>>OUTGOING ENABLER (W157 - TOR Security Plan) - EC / Station Approved,,23-Feb-28,,23-Feb-28,0,0,0,0%,23,Not Started
 W731LT_UN,W731,W731.1600,TOR Enhanced Defueling Rate: Requirements Capture,10-Feb-26,11-Feb-26,10-Feb-26,11-Feb-26,2,2,2,0%,14,Not Started
 W731LT_UN,W731,W731.1300,## TOR Enhanced Defueling Rate: B - B+ Phase Funding - (Cost Summary)  ##,03-Apr-25,10-Sep-26,03-Apr-25,10-Sep-26,362,362,362,0%,395,Not Started
 W731LT_UN,W731,W731.3090,## Gate D Submission - (Cost Summary)  ##,10-Mar-28,27-Mar-28,10-Mar-28,27-Mar-28,12,12,12,0%,0,Not Started
 W731LT_UN,W731,W731.3160,Project Finish,,27-Mar-28,,27-Mar-28,0,0,0,0%,0,Not Started
 W731LT_UN,W731,W731.2200,TOR Enhanced Defueling Rate: Station Approved Safety Case,,02-Sep-26,,02-Sep-26,0,0,0,0%,395,Not Started
 W731LT_UN,W731,W731.1070,Initial high level scope of programme,14-Feb-25,20-Feb-25,14-Feb-25 A,20-Feb-25 A,5,0,5,100%,,Completed
 W731LT_UN,W731,W731.1020,Confirm Objectives to be Delivered at Gate B,03-Feb-25,13-Feb-25,03-Feb-25 A,13-Feb-25 A,9,0,9,100%,,Completed
 W731LT_UN,W731,W731.1220,PRC Members Review PRC / IMS2 Documentation,13-Mar-25,14-Mar-25,13-Mar-25 A,14-Mar-25 A,2,0,2,100%,,Completed
 W731LT_UN,W731,W731.1250,Modify PRC Paper as Required,26-Mar-25,27-Mar-25,26-Mar-25 A,27-Mar-25 A,2,0,2,100%,,Completed
 W731LT_UN,W731,W731.1240,"Modify Estimate, Schedule & Risk Log as Required",26-Mar-25,27-Mar-25,26-Mar-25 A,27-Mar-25 A,2,0,2,100%,,Completed
 W731LT_UN,W731,W731.1230,Hold PRC Meeting,25-Mar-25,25-Mar-25,25-Mar-25 A,25-Mar-25 A,1,0,1,100%,,Completed
 W731LT_UN,W731,W731.1120,Prepare Draft Project Definition Document (PDD),21-Feb-25,06-Mar-25,21-Feb-25 A,06-Mar-25 A,10,0,10,100%,,Completed
 W731LT_UN,W731,W731.1110,PCL Validate & Approve Baseline Package for PRC Submission,21-Feb-25,06-Mar-25,21-Feb-25 A,06-Mar-25 A,10,0,10,100%,,Completed
 W731LT_UN,W731,W731.1100,Add Data to PRC / IMS2 Paper,21-Feb-25,06-Mar-25,21-Feb-25 A,06-Mar-25 A,10,0,10,100%,,Completed
 W731LT_UN,W731,W731.1090,Update Schedule/Estimate from Risk Log & Add Provisions,21-Feb-25,06-Mar-25,21-Feb-25 A,06-Mar-25 A,10,0,10,100%,,Completed
 W731LT_UN,W731,W731.1180,Complete Risk Log with Estimates,05-Mar-25,06-Mar-25,05-Mar-25 A,06-Mar-25 A,2,0,2,100%,,Completed
 W731LT_UN,W731,W731.1170,Hold Risk Workshop,05-Mar-25,06-Mar-25,05-Mar-25 A,06-Mar-25 A,2,0,2,100%,,Completed
 W731LT_UN,W731,W731.1160,Ensure Alignment of Schedule & Estimate,05-Mar-25,06-Mar-25,05-Mar-25 A,06-Mar-25 A,2,0,2,100%,,Completed
 W731LT_UN,W731,W731.1150,Estimate Scope +/- 10% B-C & +/- 30% Lifecycle,05-Mar-25,06-Mar-25,05-Mar-25 A,06-Mar-25 A,2,0,2,100%,,Completed
 W731LT_UN,W731,W731.1140,Plan Scope in Primavera (Level 2 B-B+ &  Level 1 Lifecycle),05-Mar-25,06-Mar-25,05-Mar-25 A,06-Mar-25 A,2,0,2,100%,,Completed
 W731LT_UN,W731,W731.1080,Define Project Control Structures (WBS/CBS/OBS/PBS),21-Feb-25,06-Mar-25,21-Feb-25 A,06-Mar-25 A,10,0,10,100%,,Completed
 W731LT_UN,W731,W731.1210,Gate B PRC Paper Submission,12-Mar-25,12-Mar-25,12-Mar-25 A,12-Mar-25 A,1,0,1,100%,,Completed
 W731LT_UN,W731,W731.1130,Case Production Plan Peer Review & Update,05-Mar-25,06-Mar-25,05-Mar-25 A,06-Mar-25 A,2,0,2,100%,,Completed
 W731LT_UN,W731,W731.1270,Gate B PRC Paper Approval,,27-Mar-25,,27-Mar-25 A,0,0,0,100%,,Completed
 W731LT_UN,W731,W731.1760,Initial high level scope of programme,31-Mar-26,15-Apr-26,31-Mar-26,15-Apr-26,10,10,10,0%,11,Not Started
 W731LT_UN,W731,W731.1750,Confirm Objectives to be Delivered at Gate B+,17-Mar-26,30-Mar-26,17-Mar-26,30-Mar-26,10,10,10,0%,11,Not Started
 W731LT_UN,W731,W731.1890,PRC Members Review PRC / IMS2 Documentation,07-May-26,08-May-26,07-May-26,08-May-26,2,2,2,0%,6,Not Started
 W731LT_UN,W731,W731.1920,Modify PRC Paper as Required,21-May-26,21-May-26,21-May-26,21-May-26,1,1,1,0%,0,Not Started
 W731LT_UN,W731,W731.1910,"Modify Estimate, Schedule & Risk Log as Required",20-May-26,21-May-26,20-May-26,21-May-26,2,2,2,0%,0,Not Started
 W731LT_UN,W731,W731.1900,Hold PRC Meeting,19-May-26,19-May-26,19-May-26,19-May-26,1,1,1,0%,0,Not Started
 W731LT_UN,W731,W731.1820,Prepare Draft Project Definition Document (PDD),02-Apr-26,17-Apr-26,02-Apr-26,17-Apr-26,10,10,10,0%,11,Not Started
 W731LT_UN,W731,W731.1810,PCL Validate & Approve Baseline Package for PRC Submission,02-Apr-26,17-Apr-26,02-Apr-26,17-Apr-26,10,10,10,0%,11,Not Started
 W731LT_UN,W731,W731.1800,Add Data to PRC / IMS2 Paper,02-Apr-26,17-Apr-26,02-Apr-26,17-Apr-26,10,10,10,0%,11,Not Started
 W731LT_UN,W731,W731.1790,Update Schedule/Estimate from Risk Log & Add Provisions,02-Apr-26,17-Apr-26,02-Apr-26,17-Apr-26,10,10,10,0%,11,Not Started
 W731LT_UN,W731,W731.1780,Complete Risk Log with Estimates,02-Apr-26,17-Apr-26,02-Apr-26,17-Apr-26,10,10,10,0%,11,Not Started
 W731LT_UN,W731,W731.1770,Hold Risk Workshop,02-Apr-26,17-Apr-26,02-Apr-26,17-Apr-26,10,10,10,0%,11,Not Started
 W731LT_UN,W731,W731.1870,Ensure Alignment of Schedule & Estimate,16-Apr-26,17-Apr-26,16-Apr-26,17-Apr-26,2,2,2,0%,11,Not Started
 W731LT_UN,W731,W731.1860,Estimate Scope +/- 10% B-B+ & +/- 30% Lifecycle,16-Apr-26,17-Apr-26,16-Apr-26,17-Apr-26,2,2,2,0%,11,Not Started
 W731LT_UN,W731,W731.1850,Plan Scope in Primavera (Level 2 B-B+ &  Level 1 Lifecycle),16-Apr-26,17-Apr-26,16-Apr-26,17-Apr-26,2,2,2,0%,11,Not Started
 W731LT_UN,W731,W731.1840,Define Project Control Structures (WBS/CBS/OBS/PBS),16-Apr-26,17-Apr-26,16-Apr-26,17-Apr-26,2,2,2,0%,11,Not Started
 W731LT_UN,W731,W731.1880,Gate B+ PRC Paper Submission,06-May-26,06-May-26,06-May-26,06-May-26,1,1,1,0%,0,Not Started
 W731LT_UN,W731,W731.1830,Case Production Plan Peer Review & Update,16-Apr-26,17-Apr-26,16-Apr-26,17-Apr-26,2,2,2,0%,11,Not Started
 W731LT_UN,W731,W731.1950,Gate B+ PRC Paper Approval,,21-May-26,,21-May-26,0,0,0,0%,0,Not Started
 W731LT_UN,W731,W731.3130,Prepare Gate D PRC Paper,16-Mar-28,23-Mar-28,16-Mar-28,23-Mar-28,6,6,6,0%,0,Not Started
 W731LT_UN,W731,W731.3140,Gate D PRC Paper Submission,24-Mar-28,24-Mar-28,24-Mar-28,24-Mar-28,1,1,1,0%,0,Not Started
 W731LT_UN,W731,W731.3120,Produce Project Closeout Report,14-Mar-28,15-Mar-28,14-Mar-28,15-Mar-28,2,2,2,0%,0,Not Started
 W731LT_UN,W731,W731.3100,Produce Lessons Learned Report,13-Mar-28,13-Mar-28,13-Mar-28,13-Mar-28,1,1,1,0%,0,Not Started
 W731LT_UN,W731,W731.3080,Hold Project Closeout and Lessons Learned Meeting,10-Mar-28,10-Mar-28,10-Mar-28,10-Mar-28,1,1,1,0%,0,Not Started
 W731LT_UN,W731,W731.3150,Gate D - Hold PRC Meeting,27-Mar-28,27-Mar-28,27-Mar-28,27-Mar-28,1,1,1,0%,0,Not Started
 W731LT_UN,W731,W731.1690,TOR Enhanced Defueling Rate: All Key Supporting Technical References Completed for Enhanced Defueling Rate,,03-Mar-26,,03-Mar-26,0,0,0,0%,527,Not Started
 W731LT_UN,W731,W731.1740,TOR Enhanced Defueling Rate: Safety Case Paper Authoring Complete EC NNNNNN - Enhanced Defueling Rate,,16-Mar-26,,16-Mar-26,0,0,0,0%,518,Not Started
 W731LT_UN,W731,W731.2150,TOR Enhanced Defueling Rate: ONR Agree/Acknowledge Safety Case - Enhanced Defueling Rate,,20-Aug-26,,20-Aug-26,0,0,0,0%,398,Not Started
 W731LT_UN,W731,W731.2110,TOR Enhanced Defueling Rate: INSA Final Approval EC NNNNNN - Enhanced Defueling Rate,,14-Aug-26,,14-Aug-26,0,0,0,0%,398,Not Started
 W731LT_UN,W731,W731.2190,TOR Enhanced Defueling Rate: Safety Case Approved - (Station Approval) - EC NNNNNN,,02-Sep-26,,02-Sep-26,0,0,0,0%,395,Not Started
 W731LT_UN,W731,W731.2050,TOR Enhanced Defueling Rate: Verification Complete/ Verified Draft A Issued for INSA  EC NNNNNN,,17-Jul-26,,17-Jul-26,0,0,0,0%,395,Not Started
 W731LT_UN,W731,W731.1260,Gate B Approved,,27-Mar-25,,27-Mar-25 A,0,0,0,100%,,Completed
 W731LT_UN,W731,W731.1940,Gate B+ Approved,,21-May-26,,21-May-26,0,0,0,0%,0,Not Started
 W731LT_UN,W731,W731.1280,TOR Enhanced Defueling Rate: Commence Supporting References or Supporting EC's,,03-Apr-25,,03-Apr-25,0,0,0,0%,11,Not Started
 W731LT_UN,W731,W731.1680,TOR Enhanced Defueling Rate: All Supporting References Approved and Issued,,03-Mar-26,,03-Mar-26,0,0,0,0%,524,Not Started
 W731LT_UN,W731,W731.1420,TOR Enhanced Defueling Rate: Produce verification plan,16-Oct-25,22-Oct-25,16-Oct-25,22-Oct-25,5,5,5,0%,540,Not Started
 W731LT_UN,W731,W731.1410,TOR Enhanced Defueling Rate: Prepare / Author the Safety Case Proposal,16-Oct-25,09-Feb-26,16-Oct-25,09-Feb-26,80,80,80,0%,11,Not Started
 W731LT_UN,W731,W731.1620,TOR Enhanced Defueling Rate: Obtain CO Review & Detail Checker,17-Feb-26,02-Mar-26,17-Feb-26,02-Mar-26,10,10,10,0%,11,Not Started
 W731LT_UN,W731,W731.1590,TOR Enhanced Defueling Rate: Final Authoring Consolidation Check,10-Feb-26,16-Feb-26,10-Feb-26,16-Feb-26,5,5,5,0%,11,Not Started
 W731LT_UN,W731,W731.1730,TOR Enhanced Defueling Rate: Verification Commenced (T-11),,16-Mar-26,,16-Mar-26,0,0,0,0%,440,Not Started
 W731LT_UN,W731,W731.2000,TOR Enhanced Defueling Rate: Final Verification,29-Jun-26,03-Jul-26,29-Jun-26,03-Jul-26,5,5,5,0%,395,Not Started
 W731LT_UN,W731,W731.1720,TOR Enhanced Defueling Rate: Issue to Peer CO & Station for comments,,16-Mar-26,,16-Mar-26,0,0,0,0%,440,Not Started
 W731LT_UN,W731,W731.2040,TOR Enhanced Defueling Rate: Submit for approval - Categoriser ratifies; RE/CO endorsement,,17-Jul-26,,17-Jul-26,0,0,0,0%,395,Not Started
 W731LT_UN,W731,W731.1990,TOR Enhanced Defueling Rate: Incorporate all stakeholder comments,22-Jun-26,26-Jun-26,22-Jun-26,26-Jun-26,5,5,5,0%,395,Not Started
 W731LT_UN,W731,W731.1980,TOR Enhanced Defueling Rate: Verification of the case - First Round Comments (using BARRIER MODEL),22-May-26,19-Jun-26,22-May-26,19-Jun-26,20,20,20,0%,395,Not Started
 W731LT_UN,W731,W731.2090,TOR Enhanced Defueling Rate: INSA review & iteration of comments (using BARRIER MODEL),20-Jul-26,14-Aug-26,20-Jul-26,14-Aug-26,20,20,20,0%,395,Not Started
 W731LT_UN,W731,W731.2210,TOR Enhanced Defueling Rate: Develop Implementation & Closeout,03-Sep-26,09-Sep-26,03-Sep-26,09-Sep-26,5,5,5,0%,395,Not Started
 W731LT_UN,W731,W731.2220,TOR Enhanced Defueling Rate: Post Job Debrief,10-Sep-26,10-Sep-26,10-Sep-26,10-Sep-26,1,1,1,0%,395,Not Started
 W731LT_UN,W731,W731.2140,TOR Enhanced Defueling Rate: Send CAT 2 Paper to ONR to Determine Level of Review Required (Acknowledge or Agreement),20-Aug-26,20-Aug-26,20-Aug-26,20-Aug-26,1,1,1,0%,395,Not Started
 W731LT_UN,W731,W731.2180,TOR Enhanced Defueling Rate: Station Approval,26-Aug-26,02-Sep-26,26-Aug-26,02-Sep-26,5,5,5,0%,395,Not Started
 W731LT_UN,W731,W731.1710,TOR Enhanced Defueling Rate: Lessons Learned Milestone - Technical References,,06-Mar-26,,06-Mar-26,0,0,0,0%,524,Not Started
 W731LT_UN,W731,W731.1610,TOR Enhanced Defueling Rate: Lessons Learned Milestone - Authoring of the Safety Case,,12-Feb-26,,12-Feb-26,0,0,0,0%,540,Not Started
 W731LT_UN,W731,W731.2130,TOR Enhanced Defueling Rate: Lessons Learned Milestone - Verification of the Safety Case,,19-Aug-26,,19-Aug-26,0,0,0,0%,410,Not Started
 W731LT_UN,W731,W731.2170,TOR Enhanced Defueling Rate: Lessons Learned Milestone -  INSA Review of the Safety Case,,25-Aug-26,,25-Aug-26,0,0,0,0%,406,Not Started
 W731LT_UN,W731,W731.1580,TOR Enhanced Defueling Rate: Lessons Learned Activitiy - Following Authoring of SC,10-Feb-26,12-Feb-26,10-Feb-26,12-Feb-26,3,3,3,0%,540,Not Started
 W731LT_UN,W731,W731.2120,TOR Enhanced Defueling Rate: Lessons Learned Activitiy - Following Verification of the SC,17-Aug-26,19-Aug-26,17-Aug-26,19-Aug-26,3,3,3,0%,395,Not Started
 W731LT_UN,W731,W731.2160,TOR Enhanced Defueling Rate: Lessons Learned Activitiy - Following INSA Review of the SC,21-Aug-26,25-Aug-26,21-Aug-26,25-Aug-26,3,3,3,0%,395,Not Started
 W731LT_UN,W731,W731.1700,TOR Enhanced Defueling Rate: Lessons Learned Activitiy - Following Completeion of Technical References,04-Mar-26,06-Mar-26,04-Mar-26,06-Mar-26,3,3,3,0%,524,Not Started
 W731LT_UN,W731,W731.2260,TOR  Low Decay Heat: Requirements Capture,15-Sep-26,17-Sep-26,15-Sep-26,17-Sep-26,3,3,3,0%,3,Not Started
 W731LT_UN,W731,W731.1970,## TOR Low Deacy Heat: B+ - B+ Phase Funding - (Cost Summary)  ##,21-May-26,06-May-27,21-May-26,06-May-27,243,243,243,0%,230,Not Started
 W731LT_UN,W731,W731.2700,TOR Low Decay Heat: Station Approved Safety Case,,20-Apr-27,,20-Apr-27,0,0,0,0%,218,Not Started
 W731LT_UN,W731,W731.1930,TOR Low Decay Heat: Commence Supporting References or Supporting EC's,,21-May-26,,21-May-26,0,0,0,0%,0,Not Started
 W731LT_UN,W731,W731.2030,TOR  Low Decay Heat: All Supporting References Approved and Issued,,17-Jul-26,,17-Jul-26,0,0,0,0%,0,Not Started
 W731LT_UN,W731,W731.2080,TOR  Low Decay Heat: Produce verification plan,20-Jul-26,24-Jul-26,20-Jul-26,24-Jul-26,5,5,5,0%,61,Not Started
 W731LT_UN,W731,W731.2070,TOR  Low Decay Heat: Prepare / Author the Safety Case Proposal,20-Jul-26,14-Sep-26,20-Jul-26,14-Sep-26,40,40,40,0%,0,Not Started
 W731LT_UN,W731,W731.2280,TOR  Low Decay Heat: Obtain CO Review & Detail Checker,23-Sep-26,20-Oct-26,23-Sep-26,20-Oct-26,20,20,20,0%,0,Not Started
 W731LT_UN,W731,W731.2250,TOR Low Decay Heat: Final Authoring Consolidation Check,15-Sep-26,22-Sep-26,15-Sep-26,22-Sep-26,6,6,6,0%,0,Not Started
 W731LT_UN,W731,W731.2300,TOR  Low Decay Heat: Verification Commenced (T-11),,20-Oct-26,,20-Oct-26,0,0,0,0%,0,Not Started
 W731LT_UN,W731,W731.2330,TOR Low Decay Heat: Final Verification,22-Jan-27,18-Feb-27,22-Jan-27,18-Feb-27,20,20,20,0%,0,Not Started
 W731LT_UN,W731,W731.2290,TOR  Low Decay Heat: Issue to Peer CO & Station for comments,,20-Oct-26,,20-Oct-26,0,0,0,0%,0,Not Started
 W731LT_UN,W731,W731.2350,TOR  Low Decay Heat: Submit for approval - Categoriser ratifies; RE/CO endorsement,,18-Feb-27,,18-Feb-27,0,0,0,0%,0,Not Started
 W731LT_UN,W731,W731.2320,TOR  Low Decay Heat: Incorporate all stakeholder comments,16-Dec-26,21-Jan-27,16-Dec-26,21-Jan-27,25,25,25,0%,0,Not Started
 W731LT_UN,W731,W731.2310,TOR  Low Decay Heat: Verification of the case - First Round Comments (using BARRIER MODEL),21-Oct-26,15-Dec-26,21-Oct-26,15-Dec-26,40,40,40,0%,0,Not Started
 W731LT_UN,W731,W731.2520,TOR  Low Decay Heat: Incorporate INSA comments,19-Mar-27,05-Apr-27,19-Mar-27,05-Apr-27,10,10,10,0%,218,Not Started
 W731LT_UN,W731,W731.2380,TOR Low Decay Heat: INSA review & iteration of comments (using BARRIER MODEL),19-Feb-27,18-Mar-27,19-Feb-27,18-Mar-27,20,20,20,0%,218,Not Started
 W731LT_UN,W731,W731.2710,TOR  Low Decay Heat: Develop Implementation & Closeout,21-Apr-27,05-May-27,21-Apr-27,05-May-27,10,10,10,0%,218,Not Started
 W731LT_UN,W731,W731.2720,TOR  Low Decay Heat: Post Job Debrief,06-May-27,06-May-27,06-May-27,06-May-27,1,1,1,0%,218,Not Started
 W731LT_UN,W731,W731.2650,TOR  Low Decay Heat: Send CAT 2 Paper to ONR to Determine Level of Review Required (Acknowledge or Agree,06-Apr-27,06-Apr-27,06-Apr-27,06-Apr-27,1,1,1,0%,218,Not Started
 W731LT_UN,W731,W731.1960,TOR  Low Decay Heat: Produce Supporting References Author / Verify / Approve,22-May-26,17-Jul-26,22-May-26,17-Jul-26,40,40,40,0%,0,Not Started
 W731LT_UN,W731,W731.2670,TOR  Low Decay Heat: Station Approval,07-Apr-27,20-Apr-27,07-Apr-27,20-Apr-27,10,10,10,0%,218,Not Started
 W731LT_UN,W731,W731.2240,TOR  Low Decay Heat: Lessons Learned Activitiy - Following Authoring of SC,15-Sep-26,17-Sep-26,15-Sep-26,17-Sep-26,3,3,3,0%,390,Not Started
 W731LT_UN,W731,W731.2370,TOR  Low Decay Heat: Lessons Learned Activitiy - Following Verification of the SC,19-Feb-27,23-Feb-27,19-Feb-27,23-Feb-27,3,3,3,0%,279,Not Started
 W731LT_UN,W731,W731.2640,TOR  Low Decay Heat: Lessons Learned Activitiy - Following INSA Review of the SC,06-Apr-27,08-Apr-27,06-Apr-27,08-Apr-27,3,3,3,0%,249,Not Started
 W731LT_UN,W731,W731.2060,TOR Low Decay Heat: Lessons Learned Activitiy - Following Completeion of Technical References,20-Jul-26,22-Jul-26,20-Jul-26,22-Jul-26,3,3,3,0%,430,Not Started
 W731LT_UN,W731,W731.2830,TOR  Reactor Inspections Relaxations: Requirements Capture,26-Jul-27,28-Jul-27,26-Jul-27,28-Jul-27,3,3,3,0%,3,Not Started
 W731LT_UN,W731,W731.2620,## TOR  Reactor Inspections Relaxations: B+ - D  Phase Funding - (Cost Summary)  ##,31-Mar-27,09-Mar-28,31-Mar-27,09-Mar-28,243,243,243,0%,12,Not Started
 W731LT_UN,W731,W731.3040,TOR Reactor Inspections Relaxations: Station Approved Safety Case,,23-Feb-28,,23-Feb-28,0,0,0,0%,0,Not Started
 W731LT_UN,W731,W731.2600,TOR  Reactor Inspections Relaxations: Commence Supporting References or Supporting EC's,,31-Mar-27,,31-Mar-27,0,0,0,0%,0,Not Started
 W731LT_UN,W731,W731.2740,TOR  Reactor Inspections Relaxations: All Supporting References Approved and Issued,,27-May-27,,27-May-27,0,0,0,0%,0,Not Started
 W731LT_UN,W731,W731.2770,TOR  Reactor Inspections Relaxations: Produce verification plan,28-May-27,04-Jun-27,28-May-27,04-Jun-27,5,5,5,0%,61,Not Started
 W731LT_UN,W731,W731.2760,TOR  Reactor Inspections Relaxations: Prepare / Author the Safety Case Proposal,28-May-27,23-Jul-27,28-May-27,23-Jul-27,40,40,40,0%,0,Not Started
 W731LT_UN,W731,W731.2850,TOR  Reactor Inspections Relaxations: Obtain CO Review & Detail Checker,03-Aug-27,31-Aug-27,03-Aug-27,31-Aug-27,20,20,20,0%,0,Not Started
 W731LT_UN,W731,W731.2820,TOR  Reactor Inspections Relaxations: Final Authoring Consolidation Check,26-Jul-27,02-Aug-27,26-Jul-27,02-Aug-27,6,6,6,0%,0,Not Started
 W731LT_UN,W731,W731.2870,TOR Reactor Inspections Relaxations: Verification Commenced (T-11),,31-Aug-27,,31-Aug-27,0,0,0,0%,0,Not Started
 W731LT_UN,W731,W731.2900,TOR  Reactor Inspections Relaxations: Final Verification,01-Dec-27,28-Dec-27,01-Dec-27,28-Dec-27,20,20,20,0%,0,Not Started
 W731LT_UN,W731,W731.2860,TOR  Reactor Inspections Relaxations: Issue to Peer CO & Station for comments,,31-Aug-27,,31-Aug-27,0,0,0,0%,0,Not Started
 W731LT_UN,W731,W731.2920,TOR  Reactor Inspections Relaxations: Submit for approval - Categoriser ratifies; RE/CO endorsement,,28-Dec-27,,28-Dec-27,0,0,0,0%,0,Not Started
 W731LT_UN,W731,W731.2890,TOR  Reactor Inspections Relaxations: Incorporate all stakeholder comments,27-Oct-27,30-Nov-27,27-Oct-27,30-Nov-27,25,25,25,0%,0,Not Started
 W731LT_UN,W731,W731.2880,TOR Reactor Inspections Relaxations: Verification of the case - First Round Comments (using BARRIER MODEL),01-Sep-27,26-Oct-27,01-Sep-27,26-Oct-27,40,40,40,0%,0,Not Started
 W731LT_UN,W731,W731.2960,TOR  Reactor Inspections Relaxations: Incorporate INSA comments,26-Jan-28,08-Feb-28,26-Jan-28,08-Feb-28,10,10,10,0%,0,Not Started
 W731LT_UN,W731,W731.2940,TOR  Reactor Inspections Relaxations: INSA review & iteration of comments (using BARRIER MODEL),29-Dec-27,25-Jan-28,29-Dec-27,25-Jan-28,20,20,20,0%,0,Not Started
 W731LT_UN,W731,W731.3060,TOR Reactor Inspections Relaxations: Develop Implementation & Closeout,24-Feb-28,08-Mar-28,24-Feb-28,08-Mar-28,10,10,10,0%,0,Not Started
 W731LT_UN,W731,W731.3070,TOR Reactor Inspections Relaxations: Post Job Debrief,09-Mar-28,09-Mar-28,09-Mar-28,09-Mar-28,1,1,1,0%,0,Not Started
 W731LT_UN,W731,W731.2990,TOR Reactor Inspections R: Send CAT 2 Paper to ONR to Determine Level of Review Required (Acknowledge or Agreement),09-Feb-28,09-Feb-28,09-Feb-28,09-Feb-28,1,1,1,0%,0,Not Started
 W731LT_UN,W731,W731.2610,TOR  Reactor Inspections Relaxations: Produce Supporting References Author / Verify / Approve,01-Apr-27,27-May-27,01-Apr-27,27-May-27,40,40,40,0%,0,Not Started
 W731LT_UN,W731,W731.3010,TOR Reactor Inspections Relaxations: Station Approval,10-Feb-28,23-Feb-28,10-Feb-28,23-Feb-28,10,10,10,0%,0,Not Started
 W731LT_UN,W731,W731.2810,TOR  Reactor Inspections Relaxations: Lessons Learned Activitiy - Following Authoring of SC,26-Jul-27,28-Jul-27,26-Jul-27,28-Jul-27,3,3,3,0%,172,Not Started
 W731LT_UN,W731,W731.2930,TOR  Reactor Inspections Relaxations: Lessons Learned Activitiy - Following Verification of the SC,29-Dec-27,31-Dec-27,29-Dec-27,31-Dec-27,3,3,3,0%,61,Not Started
 W731LT_UN,W731,W731.2980,TOR Reactor Inspections Relaxations: Lessons Learned Activitiy - Following INSA Review of the SC,09-Feb-28,11-Feb-28,09-Feb-28,11-Feb-28,3,3,3,0%,31,Not Started
 W731LT_UN,W731,W731.2750,TOR  Reactor Inspections Relaxations: Lessons Learned Activitiy - Following Completeion of Technical References,28-May-27,02-Jun-27,28-May-27,02-Jun-27,3,3,3,0%,212,Not Started
 W731LT_UN,W731,W731.2020,TOR Low Decay Heat: All Key Supporting Technical References Completed,,17-Jul-26,,17-Jul-26,0,0,0,0%,0,Not Started
 W731LT_UN,W731,W731.2230,TOR Low Decay Heat: Safety Case Paper Authoring Complete EC NNNNNN,,14-Sep-26,,14-Sep-26,0,0,0,0%,0,Not Started
 W731LT_UN,W731,W731.2660,TOR Low Decay Heat: ONR Agree/Acknowledge Safety Case,,06-Apr-27,,06-Apr-27,0,0,0,0%,218,Not Started
 W731LT_UN,W731,W731.2630,TOR Low Decay Heat: INSA Final Approval EC NNNNNN,,05-Apr-27,,05-Apr-27,0,0,0,0%,218,Not Started
 W731LT_UN,W731,W731.2690,TOR Low Decay Heat: Safety Case Approved - (Station Approval) - EC NNNNNN,,20-Apr-27,,20-Apr-27,0,0,0,0%,218,Not Started
 W731LT_UN,W731,W731.2340,TOR Low Decay Heat: Verification Complete/ Verified Draft A Issued for INSA  EC NNNNNN,,18-Feb-27,,18-Feb-27,0,0,0,0%,0,Not Started
 W731LT_UN,W731,W731.2730,TOR Reactor Inspections Relaxations: All Key Supporting Technical References Completed,,27-May-27,,27-May-27,0,0,0,0%,0,Not Started
 W731LT_UN,W731,W731.2790,TOR Reactor Inspections Relaxations: Safety Case Paper Authoring Complete EC NNNNNN,,23-Jul-27,,23-Jul-27,0,0,0,0%,0,Not Started
 W731LT_UN,W731,W731.3000,TOR Reactor Inspections Relaxations: ONR Agree/Acknowledge Safety Case,,09-Feb-28,,09-Feb-28,0,0,0,0%,0,Not Started
 W731LT_UN,W731,W731.2970,TOR Reactor Inspections Relaxations: INSA Final Approval EC NNNNNN,,08-Feb-28,,08-Feb-28,0,0,0,0%,0,Not Started
 W731LT_UN,W731,W731.3030,TOR Reactor Inspections Relaxations: Safety Case Approved - (Station Approval) - EC NNNNNN,,23-Feb-28,,23-Feb-28,0,0,0,0%,0,Not Started
 W731LT_UN,W731,W731.2910,TOR Reactor Inspections Relaxations: Verification Complete/ Verified Draft A Issued for INSA  EC NNNNNN,,28-Dec-27,,28-Dec-27,0,0,0,0%,0,Not Started
 W731LT_UN,W731,W731.2100,TOR Low Decay Heat: Lessons Learned Milestone - Technical References,,22-Jul-26,,22-Jul-26,0,0,0,0%,430,Not Started
 W731LT_UN,W731,W731.2270,TOR Low Decay Heat: Lessons Learned Milestone - Authoring of the Safety Case,,17-Sep-26,,17-Sep-26,0,0,0,0%,390,Not Started
 W731LT_UN,W731,W731.2390,TOR Low Decay Heat: Lessons Learned Milestone - Verification of the Safety Case,,23-Feb-27,,23-Feb-27,0,0,0,0%,279,Not Started
 W731LT_UN,W731,W731.2680,TOR Low Decay Heat: Lessons Learned Milestone -  INSA Review of the Safety Case,,08-Apr-27,,08-Apr-27,0,0,0,0%,249,Not Started
 W731LT_UN,W731,W731.2780,TOR Reactor Inspections Relaxations: Lessons Learned Milestone - Technical References,,02-Jun-27,,02-Jun-27,0,0,0,0%,212,Not Started
 W731LT_UN,W731,W731.2840,TOR Reactor Inspections Relaxations: Lessons Learned Milestone - Authoring of the Safety Case,,28-Jul-27,,28-Jul-27,0,0,0,0%,172,Not Started
 W731LT_UN,W731,W731.2950,TOR Reactor Inspections Relaxations: Lessons Learned Milestone - Verification of the Safety Case,,31-Dec-27,,31-Dec-27,0,0,0,0%,61,Not Started
 W731LT_UN,W731,W731.3020,TOR Reactor Inspections Relaxations: Lessons Learned Milestone -  INSA Review of the Safety Case,,11-Feb-28,,11-Feb-28,0,0,0,0%,31,Not Started
 W731LT_UN,W731,W731.3110,All CAT 2 Safety Cases: Lessons Learned Milestone - Gate D Lessons Learned Report Produced,,13-Mar-28,,13-Mar-28,0,0,0,0%,10,Not Started
 W731LT_UN,W731,W731.1190,Pre-Gate B - Delivery Strategy,07-Mar-25,03-Apr-25,07-Mar-25 A,03-Apr-25,20,3,20,80%,11,In Progress
 W731LT_UN,W731,W731.1290,TOR Enhanced Defueling Rate: PSA Modeling & Updates,04-Apr-25,30-Jul-25,04-Apr-25,30-Jul-25,80,80,80,0%,11,Not Started
 W731LT_UN,W731,W731.1310,TOR Enhanced Defueling Rate:  PSA Modeling Verification,31-Jul-25,06-Aug-25,31-Jul-25,06-Aug-25,5,5,5,0%,11,Not Started
 W731LT_UN,W731,W731.1320,TOR Enhanced Defueling Rate: PSA Modeling Technical Review,07-Aug-25,13-Aug-25,07-Aug-25,13-Aug-25,5,5,5,0%,11,Not Started
 W731LT_UN,W731,W731.1330,TOR Enhanced Defueling Rate: PSA Modeling Issued/ Approval,,13-Aug-25,,13-Aug-25,0,0,0,0%,11,Not Started
 W731LT_UN,W731,W731.1340,TOR Enhanced Defueling Rate: PSA Modeling Production Risk (Risk ID 42008),14-Aug-25,11-Sep-25,14-Aug-25,11-Sep-25,20,20,20,0%,11,Not Started
 W731LT_UN,W731,W731.1350,TOR Enhanced Defueling Rate: PSA Main Summary Report Authroing,12-Sep-25,02-Oct-25,12-Sep-25,02-Oct-25,15,15,15,0%,11,Not Started
 W731LT_UN,W731,W731.1360,TOR Enhanced Defueling Rate: PSA Main Sumary Report Verification,03-Oct-25,06-Oct-25,03-Oct-25,06-Oct-25,2,2,2,0%,11,Not Started
 W731LT_UN,W731,W731.1370,TOR Enhanced Defueling Rate: PSA Main Summary Report Technical Review,07-Oct-25,08-Oct-25,07-Oct-25,08-Oct-25,2,2,2,0%,11,Not Started
 W731LT_UN,W731,W731.1380,TOR Enhanced Defueling Rate: PSA Main Summary Report Issued/ Approval,,08-Oct-25,,08-Oct-25,0,0,0,0%,11,Not Started
 W731LT_UN,W731,W731.1390,TOR Enhanced Defueling Rate: PSA Main Summary Report Production Risk (Risk ID 42008),09-Oct-25,15-Oct-25,09-Oct-25,15-Oct-25,5,5,5,0%,11,Not Started
 W731LT_UN,W731,W731.1400,TOR Enhanced Defueling Rate: PSA Appendices Authoring,16-Oct-25,05-Nov-25,16-Oct-25,05-Nov-25,15,15,15,0%,524,Not Started
 W731LT_UN,W731,W731.1430,TOR Enhanced Defueling Rate: PSA Appendices Verification,06-Nov-25,07-Nov-25,06-Nov-25,07-Nov-25,2,2,2,0%,524,Not Started
 W731LT_UN,W731,W731.1440,TOR Enhanced Defueling Rate: PSA Appendices Technical Review,10-Nov-25,11-Nov-25,10-Nov-25,11-Nov-25,2,2,2,0%,524,Not Started
 W731LT_UN,W731,W731.1450,TOR Enhanced Defueling Rate: PSA Appendices Issued/ Approval,,11-Nov-25,,11-Nov-25,0,0,0,0%,524,Not Started
 W731LT_UN,W731,W731.1460,TOR Enhanced Defueling Rate: PSA Appendices Production Risk (Risk ID 42008),12-Nov-25,18-Nov-25,12-Nov-25,18-Nov-25,5,5,5,0%,524,Not Started
 W731LT_UN,W731,W731.1470,TOR Enhanced Defueling Rate: Worker Risk Authoring,19-Nov-25,09-Dec-25,19-Nov-25,09-Dec-25,15,15,15,0%,524,Not Started
 W731LT_UN,W731,W731.1480,TOR Enhanced Defueling Rate: Worker Risk Verification,10-Dec-25,11-Dec-25,10-Dec-25,11-Dec-25,2,2,2,0%,524,Not Started
 W731LT_UN,W731,W731.1490,TOR Enhanced Defueling Rate: Worker Risk Technical Review,12-Dec-25,15-Dec-25,12-Dec-25,15-Dec-25,2,2,2,0%,524,Not Started
 W731LT_UN,W731,W731.1500,TOR Enhanced Defueling Rate: Worker Risk Issued/ Approval,,15-Dec-25,,15-Dec-25,0,0,0,0%,524,Not Started
 W731LT_UN,W731,W731.1510,TOR Enhanced Defueling Rate: Worker Risk Production Risk (Risk 42008),16-Dec-25,22-Dec-25,16-Dec-25,22-Dec-25,5,5,5,0%,524,Not Started
 W731LT_UN,W731,W731.1520,TOR Enhanced Defueling Rate: Deterministic Assessment Authoring,23-Dec-25,15-Jan-26,23-Dec-25,15-Jan-26,15,15,15,0%,524,Not Started
 W731LT_UN,W731,W731.1530,TOR Enhanced Defueling Rate: Deterministic Assessment Verification,16-Jan-26,19-Jan-26,16-Jan-26,19-Jan-26,2,2,2,0%,524,Not Started
 W731LT_UN,W731,W731.1540,TOR Enhanced Defueling Rate: Deterministic Assessment Technical Review,20-Jan-26,21-Jan-26,20-Jan-26,21-Jan-26,2,2,2,0%,524,Not Started
 W731LT_UN,W731,W731.1550,TOR Enhanced Defueling Rate: Deterministic Assessment Issued/ Approval,,21-Jan-26,,21-Jan-26,0,0,0,0%,524,Not Started
 W731LT_UN,W731,W731.1560,TOR Enhanced Defueling Rate: Deterministic Assessment Production Risk (Risk 42008),22-Jan-26,28-Jan-26,22-Jan-26,28-Jan-26,5,5,5,0%,524,Not Started
 W731LT_UN,W731,W731.1570,TOR Enhanced Defueling Rate: HF Report on HBSCs Authoring,29-Jan-26,18-Feb-26,29-Jan-26,18-Feb-26,15,15,15,0%,524,Not Started
 W731LT_UN,W731,W731.1630,TOR Enhanced Defueling Rate: HF Report on HBSCs Verification,19-Feb-26,20-Feb-26,19-Feb-26,20-Feb-26,2,2,2,0%,524,Not Started
 W731LT_UN,W731,W731.1640,TOR Enhanced Defueling Rate: HF Report on HBSCs Technical Review,23-Feb-26,24-Feb-26,23-Feb-26,24-Feb-26,2,2,2,0%,524,Not Started
 W731LT_UN,W731,W731.1650,TOR Enhanced Defueling Rate: HF Report on HBSCs Issued/ Approval,,24-Feb-26,,24-Feb-26,0,0,0,0%,524,Not Started
 W731LT_UN,W731,W731.1660,TOR Enhanced Defueling Rate: HF Report on HBSCs Production Risk (Risk 42008),25-Feb-26,03-Mar-26,25-Feb-26,03-Mar-26,5,5,5,0%,524,Not Started
 W731LT_UN,W731,W731.1670,TOR Enhanced Defueling Rate: Paper Authoring Risk (Risk 42008),03-Mar-26,16-Mar-26,03-Mar-26,16-Mar-26,10,10,10,0%,11,Not Started
 W731LT_UN,W731,W731.2400,Initial high level scope of programme,05-Mar-27,18-Mar-27,05-Mar-27,18-Mar-27,10,10,10,0%,0,Not Started
 W731LT_UN,W731,W731.2360,Confirm Objectives to be Delivered at Gate B+,19-Feb-27,04-Mar-27,19-Feb-27,04-Mar-27,10,10,10,0%,0,Not Started
 W731LT_UN,W731,W731.2540,PRC Members Review PRC / IMS2 Documentation,24-Mar-27,25-Mar-27,24-Mar-27,25-Mar-27,2,2,2,0%,0,Not Started
 W731LT_UN,W731,W731.2570,Modify PRC Paper as Required,31-Mar-27,31-Mar-27,31-Mar-27,31-Mar-27,1,1,1,0%,0,Not Started
 W731LT_UN,W731,W731.2560,"Modify Estimate, Schedule & Risk Log as Required",30-Mar-27,31-Mar-27,30-Mar-27,31-Mar-27,2,2,2,0%,0,Not Started
 W731LT_UN,W731,W731.2550,Hold PRC Meeting,26-Mar-27,26-Mar-27,26-Mar-27,26-Mar-27,1,1,1,0%,1,Not Started
 W731LT_UN,W731,W731.2460,Prepare Draft Project Definition Document (PDD),09-Mar-27,22-Mar-27,09-Mar-27,22-Mar-27,10,10,10,0%,0,Not Started
 W731LT_UN,W731,W731.2450,PCL Validate & Approve Baseline Package for PRC Submission,09-Mar-27,22-Mar-27,09-Mar-27,22-Mar-27,10,10,10,0%,0,Not Started
 W731LT_UN,W731,W731.2440,Add Data to PRC / IMS2 Paper,09-Mar-27,22-Mar-27,09-Mar-27,22-Mar-27,10,10,10,0%,0,Not Started
 W731LT_UN,W731,W731.2430,Update Schedule/Estimate from Risk Log & Add Provisions,09-Mar-27,22-Mar-27,09-Mar-27,22-Mar-27,10,10,10,0%,0,Not Started
 W731LT_UN,W731,W731.2420,Complete Risk Log with Estimates,09-Mar-27,22-Mar-27,09-Mar-27,22-Mar-27,10,10,10,0%,0,Not Started
 W731LT_UN,W731,W731.2410,Hold Risk Workshop,09-Mar-27,22-Mar-27,09-Mar-27,22-Mar-27,10,10,10,0%,0,Not Started
 W731LT_UN,W731,W731.2510,Ensure Alignment of Schedule & Estimate,19-Mar-27,22-Mar-27,19-Mar-27,22-Mar-27,2,2,2,0%,0,Not Started
 W731LT_UN,W731,W731.2500,Estimate Scope +/- 10% B+-B++ & +/- 30% Lifecycle,19-Mar-27,22-Mar-27,19-Mar-27,22-Mar-27,2,2,2,0%,0,Not Started
 W731LT_UN,W731,W731.2490,Plan Scope in Primavera (Level 2 B+-B++ &  Level 1 Lifecycle),19-Mar-27,22-Mar-27,19-Mar-27,22-Mar-27,2,2,2,0%,0,Not Started
 W731LT_UN,W731,W731.2480,Define Project Control Structures (WBS/CBS/OBS/PBS),19-Mar-27,22-Mar-27,19-Mar-27,22-Mar-27,2,2,2,0%,0,Not Started
 W731LT_UN,W731,W731.2530,Gate B+ PRC Paper Submission,23-Mar-27,23-Mar-27,23-Mar-27,23-Mar-27,1,1,1,0%,0,Not Started
 W731LT_UN,W731,W731.2470,Case Production Plan Peer Review & Update,19-Mar-27,22-Mar-27,19-Mar-27,22-Mar-27,2,2,2,0%,0,Not Started
 W731LT_UN,W731,W731.2590,Gate B+ PRC Paper Approval,,31-Mar-27,,31-Mar-27,0,0,0,0%,0,Not Started
 W731LT_UN,W731,W731.2010,TOR Enhanced Defueling Rate: Final Verification Risk (Risk 42008),06-Jul-26,17-Jul-26,06-Jul-26,17-Jul-26,10,10,10,0%,395,Not Started
 W731LT_UN,W731,W731.2580,Gate B+ Approved,,31-Mar-27,,31-Mar-27,0,0,0,0%,0,Not Started
 W730LT_UN,W730,W730.1200,Gate B+ Approved,,31-Mar-27,,31-Mar-27,0,0,0,0%,0,Not Started
 W730LT_UN,W730,W730.2410,HYB Enhanced Defueling Rate: Final Verification Risk (Risk 42008),06-Jul-26,17-Jul-26,06-Jul-26,17-Jul-26,10,10,10,0%,395,Not Started
 W730LT_UN,W730,W730.4190,Gate B+ PRC Paper Approval,,31-Mar-27,,31-Mar-27,0,0,0,0%,0,Not Started
 W730LT_UN,W730,W730.4180,Case Production Plan Peer Review & Update,19-Mar-27,22-Mar-27,19-Mar-27,22-Mar-27,2,2,2,0%,0,Not Started
 W730LT_UN,W730,W730.4170,Gate B+ PRC Paper Submission,23-Mar-27,23-Mar-27,23-Mar-27,23-Mar-27,1,1,1,0%,0,Not Started
 W730LT_UN,W730,W730.4160,Define Project Control Structures (WBS/CBS/OBS/PBS),19-Mar-27,22-Mar-27,19-Mar-27,22-Mar-27,2,2,2,0%,0,Not Started
 W730LT_UN,W730,W730.4150,Plan Scope in Primavera (Level 2 B+-B+ &  Level 1 Lifecycle),19-Mar-27,22-Mar-27,19-Mar-27,22-Mar-27,2,2,2,0%,0,Not Started
 W730LT_UN,W730,W730.4140,Estimate Scope +/- 10% B+-B+ & +/- 30% Lifecycle,19-Mar-27,22-Mar-27,19-Mar-27,22-Mar-27,2,2,2,0%,0,Not Started
 W730LT_UN,W730,W730.4130,Ensure Alignment of Schedule & Estimate,19-Mar-27,22-Mar-27,19-Mar-27,22-Mar-27,2,2,2,0%,0,Not Started
 W730LT_UN,W730,W730.4120,Hold Risk Workshop,09-Mar-27,22-Mar-27,09-Mar-27,22-Mar-27,10,10,10,0%,0,Not Started
 W730LT_UN,W730,W730.4110,Complete Risk Log with Estimates,09-Mar-27,22-Mar-27,09-Mar-27,22-Mar-27,10,10,10,0%,0,Not Started
 W730LT_UN,W730,W730.4100,Update Schedule/Estimate from Risk Log & Add Provisions,09-Mar-27,22-Mar-27,09-Mar-27,22-Mar-27,10,10,10,0%,0,Not Started
 W730LT_UN,W730,W730.4090,Add Data to PRC / IMS2 Paper,09-Mar-27,22-Mar-27,09-Mar-27,22-Mar-27,10,10,10,0%,0,Not Started
 W730LT_UN,W730,W730.4080,PCL Validate & Approve Baseline Package for PRC Submission,09-Mar-27,22-Mar-27,09-Mar-27,22-Mar-27,10,10,10,0%,0,Not Started
 W730LT_UN,W730,W730.4070,Prepare Draft Project Definition Document (PDD),09-Mar-27,22-Mar-27,09-Mar-27,22-Mar-27,10,10,10,0%,0,Not Started
 W730LT_UN,W730,W730.4060,Hold PRC Meeting,26-Mar-27,26-Mar-27,26-Mar-27,26-Mar-27,1,1,1,0%,1,Not Started
 W730LT_UN,W730,W730.4050,"Modify Estimate, Schedule & Risk Log as Required",30-Mar-27,31-Mar-27,30-Mar-27,31-Mar-27,2,2,2,0%,0,Not Started
 W730LT_UN,W730,W730.4040,Modify PRC Paper as Required,31-Mar-27,31-Mar-27,31-Mar-27,31-Mar-27,1,1,1,0%,0,Not Started
 W730LT_UN,W730,W730.4030,PRC Members Review PRC / IMS2 Documentation,24-Mar-27,25-Mar-27,24-Mar-27,25-Mar-27,2,2,2,0%,0,Not Started
 W730LT_UN,W730,W730.4020,Confirm Objectives to be Delivered at Gate B+,19-Feb-27,04-Mar-27,19-Feb-27,04-Mar-27,10,10,10,0%,0,Not Started
 W730LT_UN,W730,W730.4010,Initial high level scope of programme,05-Mar-27,18-Mar-27,05-Mar-27,18-Mar-27,10,10,10,0%,0,Not Started
 W730LT_UN,W730,W730.2500,HYB Enhanced Defueling Rate: Paper Authoring Risk (Risk 42008),03-Mar-26,16-Mar-26,03-Mar-26,16-Mar-26,10,10,10,0%,11,Not Started
 W730LT_UN,W730,W730.4000,HYB Enhanced Defueling Rate: HF Report on HBSCs Production Risk (Risk 42008),25-Feb-26,03-Mar-26,25-Feb-26,03-Mar-26,5,5,5,0%,524,Not Started
 W730LT_UN,W730,W730.3990,HYB Enhanced Defueling Rate: HF Report on HBSCs Issued/ Approval,,24-Feb-26,,24-Feb-26,0,0,0,0%,524,Not Started
 W730LT_UN,W730,W730.3980,HYB Enhanced Defueling Rate: HF Report on HBSCs Technical Review,23-Feb-26,24-Feb-26,23-Feb-26,24-Feb-26,2,2,2,0%,524,Not Started
 W730LT_UN,W730,W730.3970,HYB Enhanced Defueling Rate: HF Report on HBSCs Verification,19-Feb-26,20-Feb-26,19-Feb-26,20-Feb-26,2,2,2,0%,524,Not Started
 W730LT_UN,W730,W730.3960,HYB Enhanced Defueling Rate: HF Report on HBSCs Authoring,29-Jan-26,18-Feb-26,29-Jan-26,18-Feb-26,15,15,15,0%,524,Not Started
 W730LT_UN,W730,W730.3950,HYB Enhanced Defueling Rate: Deterministic Assessment Production Risk (Risk 42008),22-Jan-26,28-Jan-26,22-Jan-26,28-Jan-26,5,5,5,0%,524,Not Started
 W730LT_UN,W730,W730.3940,HYB Enhanced Defueling Rate: Deterministic Assessment Issued/ Approval,,21-Jan-26,,21-Jan-26,0,0,0,0%,524,Not Started
 W730LT_UN,W730,W730.3930,HYB Enhanced Defueling Rate: Deterministic Assessment Technical Review,20-Jan-26,21-Jan-26,20-Jan-26,21-Jan-26,2,2,2,0%,524,Not Started
 W730LT_UN,W730,W730.3920,HYB Enhanced Defueling Rate: Deterministic Assessment Verification,16-Jan-26,19-Jan-26,16-Jan-26,19-Jan-26,2,2,2,0%,524,Not Started
 W730LT_UN,W730,W730.3910,HYB Enhanced Defueling Rate: Deterministic Assessment Authoring,23-Dec-25,15-Jan-26,23-Dec-25,15-Jan-26,15,15,15,0%,524,Not Started
 W730LT_UN,W730,W730.3900,HYB Enhanced Defueling Rate: Worker Risk Production Risk (Risk 42008),16-Dec-25,22-Dec-25,16-Dec-25,22-Dec-25,5,5,5,0%,524,Not Started
 W730LT_UN,W730,W730.3890,HYB Enhanced Defueling Rate: Worker Risk Issued/ Approval,,15-Dec-25,,15-Dec-25,0,0,0,0%,524,Not Started
 W730LT_UN,W730,W730.3880,HYB Enhanced Defueling Rate: Worker Risk Technical Review,12-Dec-25,15-Dec-25,12-Dec-25,15-Dec-25,2,2,2,0%,524,Not Started
 W730LT_UN,W730,W730.3870,HYB Enhanced Defueling Rate: Worker Risk Verification,10-Dec-25,11-Dec-25,10-Dec-25,11-Dec-25,2,2,2,0%,524,Not Started
 W730LT_UN,W730,W730.3860,HYB Enhanced Defueling Rate: Worker Risk Authoring,19-Nov-25,09-Dec-25,19-Nov-25,09-Dec-25,15,15,15,0%,524,Not Started
 W730LT_UN,W730,W730.3850,HYB Enhanced Defueling Rate: PSA Appendices Production Risk (Risk ID 42008),12-Nov-25,18-Nov-25,12-Nov-25,18-Nov-25,5,5,5,0%,524,Not Started
 W730LT_UN,W730,W730.3840,HYB Enhanced Defueling Rate: PSA Appendices Issued/ Approval,,11-Nov-25,,11-Nov-25,0,0,0,0%,524,Not Started
 W730LT_UN,W730,W730.3830,HYB Enhanced Defueling Rate: PSA Appendices Technical Review,10-Nov-25,11-Nov-25,10-Nov-25,11-Nov-25,2,2,2,0%,524,Not Started
 W730LT_UN,W730,W730.3820,HYB Enhanced Defueling Rate: PSA Appendices Verification,06-Nov-25,07-Nov-25,06-Nov-25,07-Nov-25,2,2,2,0%,524,Not Started
 W730LT_UN,W730,W730.3810,HYB Enhanced Defueling Rate: PSA Appendices Authoring,16-Oct-25,05-Nov-25,16-Oct-25,05-Nov-25,15,15,15,0%,524,Not Started
 W730LT_UN,W730,W730.3800,HYB Enhanced Defueling Rate: PSA Main Summary Report Production Risk (Risk ID 42008),09-Oct-25,15-Oct-25,09-Oct-25,15-Oct-25,5,5,5,0%,11,Not Started
 W730LT_UN,W730,W730.3790,HYB Enhanced Defueling Rate: PSA Main Summary Report Issued/ Approval,,08-Oct-25,,08-Oct-25,0,0,0,0%,11,Not Started
 W730LT_UN,W730,W730.3780,HYB Enhanced Defueling Rate: PSA Main Summary Report Technical Review,07-Oct-25,08-Oct-25,07-Oct-25,08-Oct-25,2,2,2,0%,11,Not Started
 W730LT_UN,W730,W730.3770,HYB Enhanced Defueling Rate: PSA Main Sumary Report Verification,03-Oct-25,06-Oct-25,03-Oct-25,06-Oct-25,2,2,2,0%,11,Not Started
 W730LT_UN,W730,W730.3760,HYB Enhanced Defueling Rate: PSA Main Summary Report Authroing,12-Sep-25,02-Oct-25,12-Sep-25,02-Oct-25,15,15,15,0%,11,Not Started
 W730LT_UN,W730,W730.3750,HYB Enhanced Defueling Rate: PSA Modeling Production Risk (Risk ID 42008),14-Aug-25,11-Sep-25,14-Aug-25,11-Sep-25,20,20,20,0%,11,Not Started
 W730LT_UN,W730,W730.3740,HYB Enhanced Defueling Rate: PSA Modeling Issued/ Approval,,13-Aug-25,,13-Aug-25,0,0,0,0%,11,Not Started
 W730LT_UN,W730,W730.3730,HYB Enhanced Defueling Rate: PSA Modeling Technical Review,07-Aug-25,13-Aug-25,07-Aug-25,13-Aug-25,5,5,5,0%,11,Not Started
 W730LT_UN,W730,W730.3720,HYB Enhanced Defueling Rate:  PSA Modeling Verification,31-Jul-25,06-Aug-25,31-Jul-25,06-Aug-25,5,5,5,0%,11,Not Started
 W730LT_UN,W730,W730.3710,HYB Enhanced Defueling Rate: PSA Modeling & Updates,04-Apr-25,30-Jul-25,04-Apr-25,30-Jul-25,80,80,80,0%,11,Not Started
 W526LT,W526,W526.1260,ETC 2032,,,02-Jan-32,31-Dec-32,256,256,256,0%,0,Not Started
 W526LT,W526,W526.1250,ETC 2031,,,02-Jan-31,31-Dec-31,253,253,253,0%,0,Not Started
 W526LT,W526,W526.1240,ETC 2030,,,02-Jan-30,31-Dec-30,253,253,253,0%,0,Not Started
 W526LT,W526,W526.1230,ETC 2029,,,02-Jan-29,31-Dec-29,253,253,253,0%,0,Not Started
 W526LT,W526,W526.1220,ETC 2028,,,03-Jan-28,29-Dec-28,253,253,253,0%,0,Not Started
 W526LT,W526,W526.1210,ETC 2027,,,04-Jan-27,31-Dec-27,255,255,255,0%,0,Not Started
 W526LT,W526,W526.1200,ETC 2026,,,02-Jan-26,31-Dec-26,254,254,254,0%,0,Not Started
 W526LT,W526,W526.1030,ETC 2025,,,01-Apr-25,31-Dec-25,190,190,190,0%,0,Not Started
 W234LT,W234,W234.3770,TOR Enhanced Defueling Rate: Produce draft NSRS (using BARRIER MODEL),,,,28-Feb-25 A,0,0,0,100%,,Completed
 W234LT,W234,W234.3760,TOR Enhanced Defueling Rate: Strategy EAN Complete,,,,20-Dec-24 A,0,0,0,100%,,Completed
 W234LT,W234,W234.3750,TOR Enhanced Defueling Rate: INA comments on NSRS,,,,25-Apr-25,0,0,0,0%,268,Not Started
 W234LT,W234,W234.3740,TOR - EC Kick Off Meeting & Early Strategy Development,,,,20-Dec-24 A,0,0,0,100%,,Completed
 W234LT,W234,W234.3730,## Technical Development / Project Management - Pre Gate A - (Cost Summary) ## SUNK COSTS,22-Feb-24,28-Jun-24,22-Feb-24 A,28-Jun-24 A,626,0,88,100%,,Completed
 W234LT,W234,W234.3720,## Technical Development / Project Management - Gate  A - D - (Cost Summary) ##,01-Jul-24,12-Aug-24,12-Jul-24 A,20-Dec-24 A,115,0,115,100%,,Completed
 W234LT,W234,W234.3710,Tech Review by EDF SQEP (Continued),01-Jul-24,05-Jul-24,12-Jul-24 A,18-Jul-24 A,5,0,5,100%,,Completed
 W234LT,W234,W234.3700,>>>OUTGOING ENABLER - NSRS's Complete - Feeds B-D Plan (Start Authoring References),,15-Jul-25,,13-Apr-26,0,0,0,0%,25,Not Started
 W234LT,W234,W234.3690,All CAT 2 Safety Cases: Lessons Learned Milestone - Gate D Lessons Learned Report Produced,,17-Jul-25,,15-Apr-26,0,0,0,0%,5,Not Started
 W234LT,W234,W234.3640,TOR Low Decay Heat: Lessons Learned Milestone - NSRS Approval,,04-Jul-25,,07-Nov-25,0,0,0,0%,113,Not Started
 W234LT,W234,W234.3590,TOR Reactor Inspections Relaxations: Lessons Learned Milestone - NSRS Approval,,27-Mar-25,,31-Mar-26,0,0,0,0%,32,Not Started
 W234LT,W234,W234.3580,TOR Low Decay Heat: Risk Milestone - NSRS Production Complete (Risk Ref 38976),,29-May-25,,02-Oct-25,0,0,0,0%,5,Not Started
 W234LT,W234,W234.3570,TOR Reactor Inspections Relaxations: Risk Milestone - NSRS Production Complete (Risk Ref 38976),,19-Feb-25,,23-Feb-26,0,0,0,0%,5,Not Started
 W234LT,W234,W234.3560,TOR Low Decay Heat: Discovery Milestone - NSRS Completion - Proceed with Safety Case (TOR),,23-Jun-25,,27-Oct-25,0,0,0,0%,140,Not Started
 W234LT,W234,W234.3550,TOR Reactor Inspections Relaxations - NSRS Completion - Proceed with Safety Case (TOR),,14-Mar-25,,18-Mar-26,0,0,0,0%,41,Not Started
 W234LT,W234,W234.3540,TOR Low Decay Heat: Optioneering Complete (Outline Safety Case / ALARP Strategy),,15-Jul-25,,18-Nov-25,0,0,0,0%,64,Not Started
 W234LT,W234,W234.3510,TOR Low Decay Heat: Station Agree NSRS,,23-Jun-25,,27-Oct-25,0,0,0,0%,140,Not Started
 W234LT,W234,W234.3460,TOR Reactor Inspections Relaxations: Optioneering Complete (Outline Safety Case / ALARP Strategy),,07-Apr-25,,13-Apr-26,0,0,0,0%,5,Not Started
 W234LT,W234,W234.3430,TOR Reactor Inspections Relaxations: Station Agree NSRS,,14-Mar-25,,18-Mar-26,0,0,0,0%,41,Not Started
 W234LT,W234,W234.3380,TOR Reactor Inspections Relaxations: Lessons Learned Activity - NSRS Approval,02-Jul-25,04-Jul-25,27-Mar-26,31-Mar-26,3,3,3,0%,32,Not Started
 W234LT,W234,W234.3330,TOR Reactor Inspections Relaxations: Risk Ref 38976 TBC - NSRS Production,22-May-25,29-May-25,17-Feb-26,23-Feb-26,5,5,5,0%,5,Not Started
 W234LT,W234,W234.3130,TOR Reactor Inspections Relaxations: Outline Safety Case / ALARP Strategy,02-Jul-25,15-Jul-25,27-Mar-26,13-Apr-26,10,10,10,0%,5,Not Started
 W234LT,W234,W234.3120,TOR Reactor Inspections Relaxations: DA (Peer) Comments on NSRS,17-Apr-25,02-May-25,16-Jan-26,29-Jan-26,10,10,10,0%,5,Not Started
 W234LT,W234,W234.3110,TOR Reactor Inspections Relaxations: Send NSRS to ONR to Determine Level of Review Required (Acknowledgement or Agreemen,01-Jul-25,01-Jul-25,26-Mar-26,26-Mar-26,1,1,1,0%,5,Not Started
 W234LT,W234,W234.3100,TOR Reactor Inspections Relaxations: Hold Case Conference / Optioneering Strategy Workshop as Appropriate,10-Apr-25,16-Apr-25,09-Jan-26,15-Jan-26,5,5,5,0%,5,Not Started
 W234LT,W234,W234.3090,TOR Reactor Inspections Relaxations: Mod Requested and EC Request Raised and Screened,11-Mar-25,26-Mar-25,05-Dec-25,22-Dec-25,12,12,12,0%,5,Not Started
 W234LT,W234,W234.3080,TOR Reactor Inspections Relaxations: Strategy Development & Produce MF EC NNNNN & Obtain Approval,21-Feb-25,10-Mar-25,19-Nov-25,04-Dec-25,12,12,12,0%,5,Not Started
 W234LT,W234,W234.3070,TOR Reactor Inspections Relaxations: Circulate NSRS for Relevant Stakeholders (A-B Part),24-Jun-25,30-Jun-25,19-Mar-26,25-Mar-26,5,5,5,0%,5,Not Started
 W234LT,W234,W234.3060,TOR Reactor Inspections Relaxations: Update NSRS to address comments,21-May-25,21-May-25,16-Feb-26,16-Feb-26,1,1,1,0%,5,Not Started
 W234LT,W234,W234.3050,TOR Reactor Inspections Relaxations: Register EC and identify Milestones in AMS  EC NNNNNN,20-May-25,20-May-25,13-Feb-26,13-Feb-26,1,1,1,0%,5,Not Started
 W234LT,W234,W234.3040,TOR Reactor Inspections Relaxations: Produce draft NSRS (using BARRIER MODEL),27-Mar-25,09-Apr-25,23-Dec-25,08-Jan-26,10,10,10,0%,5,Not Started
 W234LT,W234,W234.3030,TOR Reactor Inspections Relaxations: Station comments on NSRS,17-Apr-25,02-May-25,16-Jan-26,29-Jan-26,10,10,10,0%,5,Not Started
 W234LT,W234,W234.3020,TOR Reactor Inspections Relaxations: Issue final NSRS,30-May-25,30-May-25,24-Feb-26,24-Feb-26,1,1,1,0%,5,Not Started
 W234LT,W234,W234.3010,TOR Reactor Inspections Relaxations: Station agree NSRS,10-Jun-25,23-Jun-25,05-Mar-26,18-Mar-26,10,10,10,0%,5,Not Started
 W234LT,W234,W234.3000,TOR Reactor Inspections Relaxations: DA & INA agree NSRS (for authorised designers-NSRS must be reviewed by DA),03-Jun-25,23-Jun-25,26-Feb-26,18-Mar-26,15,15,15,0%,5,Not Started
 W234LT,W234,W234.2990,TOR Reactor Inspections Relaxations: INA comments on NSRS,06-May-25,19-May-25,30-Jan-26,12-Feb-26,10,10,10,0%,5,Not Started
 W234LT,W234,W234.2950,## TOR Reactor Inspections Relaxations: A - D Phase Funding - (Cost Summary) ##,21-Feb-25,15-Jul-25,19-Nov-25,13-Apr-26,99,99,99,0%,25,Not Started
 W234LT,W234,W234.2930,TOR Low Decay Heat: Lessons Learned Activity - NSRS Approval,25-Mar-25,27-Mar-25,05-Nov-25,07-Nov-25,3,3,3,0%,113,Not Started
 W234LT,W234,W234.2880,TOR Low Decay Heat: Risk Ref 38976 TBC - NSRS Production,13-Feb-25,19-Feb-25,26-Sep-25,02-Oct-25,5,5,5,0%,5,Not Started
 W234LT,W234,W234.2680,TOR Low Decay Heat: Outline Safety Case / ALARP Strategy,25-Mar-25,07-Apr-25,05-Nov-25,18-Nov-25,10,10,10,0%,5,Not Started
 W234LT,W234,W234.2670,TOR Low Decay Heat: DA (Peer) Comments on NSRS,14-Jan-25,27-Jan-25,27-Aug-25,09-Sep-25,10,10,10,0%,5,Not Started
 W234LT,W234,W234.2660,TOR Low Decay Heat: Send NSRS to ONR to Determine Level of Review Required (Acknowledgement or Agreemen,24-Mar-25,24-Mar-25,04-Nov-25,04-Nov-25,1,1,1,0%,5,Not Started
 W234LT,W234,W234.2650,TOR Low Decay Heat: Hold Case Conference / Optioneering Strategy Workshop as Appropriate,07-Jan-25,13-Jan-25,19-Aug-25,26-Aug-25,5,5,5,0%,5,Not Started
 W234LT,W234,W234.2640,TOR Low Decay Heat: Mod Requested and EC Request Raised and Screened,03-Dec-24,18-Dec-24,18-Jul-25,04-Aug-25,12,12,12,0%,5,Not Started
 W234LT,W234,W234.2630,TOR Low Decay Heat: Strategy Development & Produce MF EC NNNNN & Obtain Approval,15-Nov-24,02-Dec-24,02-Jul-25,17-Jul-25,12,12,12,0%,5,Not Started
 W234LT,W234,W234.2620,TOR Low Decay Heat: Circulate NSRS for Relevant Stakeholders (A-B Part),17-Mar-25,21-Mar-25,28-Oct-25,03-Nov-25,5,5,5,0%,5,Not Started
 W234LT,W234,W234.2610,TOR Low Decay Heat: Update NSRS to address comments,12-Feb-25,12-Feb-25,25-Sep-25,25-Sep-25,1,1,1,0%,5,Not Started
 W234LT,W234,W234.2600,TOR Low Decay Heat: Register EC and identify Milestones in AMS  EC NNNNNN,11-Feb-25,11-Feb-25,24-Sep-25,24-Sep-25,1,1,1,0%,5,Not Started
 W234LT,W234,W234.2590,TOR Low Decay Heat: Produce draft NSRS (using BARRIER MODEL),19-Dec-24,06-Jan-25,05-Aug-25,18-Aug-25,10,10,10,0%,5,Not Started
 W234LT,W234,W234.2580,TOR Low Decay Heat: Station comments on NSRS,14-Jan-25,27-Jan-25,27-Aug-25,09-Sep-25,10,10,10,0%,5,Not Started
 W234LT,W234,W234.2570,TOR Low Decay Heat: Issue final NSRS,20-Feb-25,20-Feb-25,03-Oct-25,03-Oct-25,1,1,1,0%,5,Not Started
 W234LT,W234,W234.2560,TOR Low Decay Heat: Station agree NSRS,03-Mar-25,14-Mar-25,14-Oct-25,27-Oct-25,10,10,10,0%,5,Not Started
 W234LT,W234,W234.2550,TOR Low Decay Heat: DA & INA agree NSRS (for authorised designers-NSRS must be reviewed by DA),24-Feb-25,14-Mar-25,07-Oct-25,27-Oct-25,15,15,15,0%,5,Not Started
 W234LT,W234,W234.2540,TOR Low Decay Heat: INA comments on NSRS,28-Jan-25,10-Feb-25,10-Sep-25,23-Sep-25,10,10,10,0%,5,Not Started
 W234LT,W234,W234.2500,## TOR Low Decay Heat: A - D Phase Funding - (Cost Summary) ##,15-Nov-24,07-Apr-25,02-Jul-25,18-Nov-25,99,99,99,0%,106,Not Started
 W234LT,W234,W234.2220,TOR Enhanced Defueling Rate: Lessons Learned Activity - NSRS Approval,17-Dec-24,19-Dec-24,04-Jun-25,06-Jun-25,3,3,3,0%,240,Not Started
 W234LT,W234,W234.1220,TOR Enhanced Defueling Rate: Lessons Learned Milestone - NSRS Approval,,19-Dec-24,,06-Jun-25,0,0,0,0%,240,Not Started
 W234LT,W234,W234.1210,TOR Enhanced Defueling Rate: Risk Milestone - NSRS Production Complete (Risk Ref  38976),,13-Nov-24,,30-Apr-25,0,0,0,0%,5,Not Started
 W234LT,W234,W234.2210,TOR Enhanced Defueling Rate: Risk Ref 38976 TBC - NSRS Production,07-Nov-24,13-Nov-24,30-Apr-25,30-Apr-25,0,0,0,0%,5,Not Started
 W234LT,W234,W234.2200,TOR Enhanced Defueling Rate: Outline Safety Case / ALARP Strategy,17-Dec-24,16-Jan-25,04-Jun-25,01-Jul-25,20,20,20,0%,5,Not Started
 W234LT,W234,W234.1200,TOR Enhanced Defueling Rate: Discovery Milestone - NSRS Completion - Proceed with Safety Case (TOR),,06-Dec-24,,23-May-25,0,0,0,0%,5,Not Started
 W234LT,W234,W234.1100,TOR Enhanced Defueling Rate: Optioneering Complete (Outline Safety Case / ALARP Strategy),,16-Jan-25,,01-Jul-25,0,0,0,0%,64,Not Started
 W234LT,W234,W234.1070,TOR Enhanced Defueling Rate: Station Agree NSRS,,06-Dec-24,,23-May-25,0,0,0,0%,249,Not Started
 W234LT,W234,W234.2190,TOR Enhanced Defueling Rate: DA (Peer) Comments on NSRS,08-Oct-24,21-Oct-24,18-Mar-25 A,26-Mar-25 A,10,0,7,100%,,Completed
 W234LT,W234,W234.2180,TOR Enhanced Defueling Rate: Send NSRS to ONR to Determine Level of Review Required (Acknowledgement or Agreement),16-Dec-24,16-Dec-24,03-Jun-25,03-Jun-25,1,1,1,0%,5,Not Started
 W234LT,W234,W234.2170,TOR Enhanced Defueling Rate: Hold Case Conference / Optioneering Strategy Workshop as Appropriate,01-Oct-24,07-Oct-24,11-Mar-25 A,18-Mar-25 A,5,0,5,100%,,Completed
 W234LT,W234,W234.2070,TOR Enhanced Defueling Rate: Mod Requested and EC Request Raised and Screened,30-Aug-24,16-Sep-24,03-Mar-25 A,10-Mar-25 A,6,0,6,100%,,Completed
 W234LT,W234,W234.1840,Gate D - Hold PRC Meeting,19-Aug-25,19-Aug-25,19-May-26,19-May-26,1,1,1,0%,0,Not Started
 W234LT,W234,W234.1830,Hold Project Closeout and Lessons Learned Meeting,16-Jul-25,16-Jul-25,14-Apr-26,14-Apr-26,1,1,1,0%,5,Not Started
 W234LT,W234,W234.1820,Produce Lessons Learned Report,17-Jul-25,17-Jul-25,15-Apr-26,15-Apr-26,1,1,1,0%,5,Not Started
 W234LT,W234,W234.1810,Produce Project Closeout Report,18-Jul-25,21-Jul-25,16-Apr-26,17-Apr-26,2,2,2,0%,5,Not Started
 W234LT,W234,W234.1800,Gate D PRC Paper Submission,06-Aug-25,06-Aug-25,06-May-26,06-May-26,1,1,1,0%,0,Not Started
 W234LT,W234,W234.1790,Prepare Gate D PRC Paper,22-Jul-25,29-Jul-25,20-Apr-26,27-Apr-26,6,6,6,0%,5,Not Started
 W234LT,W234,W234.2060,TOR Enhanced Defueling Rate: Strategy Development & Produce MF EC NNNNN & Obtain Approval,13-Aug-24,29-Aug-24,03-Feb-25 A,10-Feb-25 A,6,0,6,100%,,Completed
 W234LT,W234,W234.2160,TOR Enhanced Defueling Rate: Circulate NSRS for Relevant Stakeholders (A-B Part),09-Dec-24,13-Dec-24,27-May-25,02-Jun-25,5,5,5,0%,5,Not Started
 W234LT,W234,W234.2150,TOR Enhanced Defueling Rate: Update NSRS to address comments,06-Nov-24,06-Nov-24,29-Apr-25,29-Apr-25,1,1,1,0%,5,Not Started
 W234LT,W234,W234.2140,TOR Enhanced Defueling Rate: Register EC and identify Milestones in AMS  EC NNNNNN,05-Nov-24,05-Nov-24,28-Apr-25,28-Apr-25,1,1,1,0%,5,Not Started
 W234LT,W234,W234.2130,TOR Enhanced Defueling Rate: Produce draft NSRS (using BARRIER MODEL),17-Sep-24,30-Sep-24,03-Feb-25 A,28-Feb-25 A,20,0,20,100%,,Completed
 W234LT,W234,W234.2120,TOR Enhanced Defueling Rate: Station comments on NSRS,08-Oct-24,21-Oct-24,27-Mar-25 A,09-Apr-25,10,7,10,25%,5,In Progress
 W234LT,W234,W234.2110,TOR Enhanced Defueling Rate: Issue final NSRS,14-Nov-24,14-Nov-24,30-Apr-25,30-Apr-25,1,1,1,0%,5,Not Started
 W234LT,W234,W234.2100,TOR Enhanced Defueling Rate: Station agree NSRS,25-Nov-24,06-Dec-24,12-May-25,23-May-25,10,10,10,0%,5,Not Started
 W234LT,W234,W234.2090,TOR Enhanced Defueling Rate: DA & INA agree NSRS (for authorised designers-NSRS must be reviewed by DA),18-Nov-24,06-Dec-24,02-May-25,23-May-25,15,15,15,0%,5,Not Started
 W234LT,W234,W234.2080,TOR Enhanced Defueling Rate: INA comments on NSRS,22-Oct-24,04-Nov-24,10-Apr-25,25-Apr-25,10,10,10,0%,5,Not Started
 W234LT,W234,W234.1900,EC Kick Off Meeting & Early Strategy Development,30-Jul-24,12-Aug-24,20-Dec-24 A,20-Dec-24 A,2,0,1,100%,,Completed
 W234LT,W234,W234.2030,Strategy EAN Complete,,29-Jul-24,,20-Dec-24 A,0,0,0,100%,,Completed
 W234LT,W234,W234.2020,TR Completed and Uploaded to CDMS,23-Jul-24,29-Jul-24,19-Dec-24 A,20-Dec-24 A,2,0,2,100%,,Completed
 W234LT,W234,W234.2010,TSA Issue Final Report,22-Jul-24,22-Jul-24,27-Nov-24 A,18-Dec-24 A,1,0,16,100%,,Completed
 W234LT,W234,W234.2000,TSA Addressess Comments,08-Jul-24,19-Jul-24,19-Jul-24 A,26-Nov-24 A,10,0,92,100%,,Completed
 W234LT,W234,W234.1990,Tech Review by EDF SQEP,18-Jun-24,28-Jun-24,18-Jun-24 A,28-Jun-24 A,9,0,9,100%,,Completed
 W234LT,W234,W234.1980,Issued to EDF for Technical Reviews,,17-Jun-24,,17-Jun-24 A,0,0,0,100%,,Completed
 W234LT,W234,W234.1970,Verified by TSA,04-Jun-24,17-Jun-24,04-Jun-24 A,17-Jun-24 A,10,0,10,100%,,Completed
 W234LT,W234,W234.1960,Draft Report,28-Mar-24,03-Jun-24,28-Mar-24 A,03-Jun-24 A,1,0,44,100%,,Completed
 W234LT,W234,W234.1950,Pre Job Brief,27-Mar-24,27-Mar-24,27-Mar-24 A,27-Mar-24 A,1,0,0,100%,,Completed
 W234LT,W234,W234.1940,H2T Enhanced SC's EC Strategy Opex/L&L,26-Mar-24,26-Mar-24,26-Mar-24 A,26-Mar-24 A,1,0,0,100%,,Completed
 W234LT,W234,W234.1930,Kick-Off/Setting to Work Meeting,13-Mar-24,13-Mar-24,13-Mar-24 A,13-Mar-24 A,1,0,0,100%,,Completed
 W234LT,W234,W234.1920,TOR Enhanced SC's & Cat C MoTA Workshop,29-Feb-24,29-Feb-24,29-Feb-24 A,29-Feb-24 A,1,0,0,100%,,Completed
 W234LT,W234,W234.1910,TOR Enhanced SC's & Cat C MoTA Workshop,22-Feb-24,22-Feb-24,22-Feb-24 A,22-Feb-24 A,1,0,0,100%,,Completed
 W234LT,W234,W234.1890,Key Stakeholders Identified,17-May-24,17-May-24,17-May-24 A,17-May-24 A,1,0,1,100%,,Completed
 W234LT,W234,W234.1880,Appoint CO / AE / RE,16-May-24,16-May-24,16-May-24 A,16-May-24 A,1,0,1,100%,,Completed
 W234LT,W234,W234.1870,Initial Categorisation by Station,,26-Mar-24,,26-Mar-24 A,0,0,0,100%,,Completed
 W234LT,W234,W234.1860,PM / CO and PCE Create Initial Plan of Work,11-Apr-24,15-May-24,11-Apr-24 A,15-May-24 A,0,0,24,100%,,Completed
 W234LT,W234,W234.1340,Gate A PRC Paper Submission,12-Jun-24,12-Jun-24,12-Jun-24 A,12-Jun-24 A,1,0,1,100%,,Completed
 W234LT,W234,W234.1330,PCL Validate & Approve Baseline Package for PRC Submission,10-Jun-24,11-Jun-24,10-Jun-24 A,11-Jun-24 A,2,0,2,100%,,Completed
 W234LT,W234,W234.1320,Prepare Draft Project Definition Document (PDD),04-Jun-24,07-Jun-24,04-Jun-24 A,07-Jun-24 A,4,0,4,100%,,Completed
 W234LT,W234,W234.1390,Hold PRC Meeting,25-Jun-24,25-Jun-24,25-Jun-24 A,25-Jun-24 A,1,0,1,100%,,Completed
 W234LT,W234,W234.1380,"Modify Estimate, Schedule & Risk Log as Required",26-Jun-24,28-Jun-24,26-Jun-24 A,28-Jun-24 A,3,0,3,100%,,Completed
 W234LT,W234,W234.1370,Modify PRC Paper as Required,27-Jun-24,28-Jun-24,27-Jun-24 A,28-Jun-24 A,2,0,2,100%,,Completed
 W234LT,W234,W234.1360,PRC Members Review PRC/IMS2 Documentation,13-Jun-24,24-Jun-24,13-Jun-24 A,24-Jun-24 A,8,0,8,100%,,Completed
 W234LT,W234,W234.1350,Gate A PRC Paper Approval,,25-Jun-24,,25-Jun-24 A,0,0,0,100%,,Completed
 W234LT,W234,W234.1310,Confirm Objectives to be Delivered at Gate A (FEEDS TO SUMMARY SCHEDULE),28-Mar-24,03-Apr-24,28-Mar-24 A,03-Apr-24 A,10,0,3,100%,,Completed
 W234LT,W234,W234.1300,Initial high level scope of programme,04-Apr-24,07-May-24,04-Apr-24 A,07-May-24 A,5,0,23,100%,,Completed
 W234LT,W234,W234.1020,Project Finish,,19-Aug-25,,19-May-26,0,0,0,0%,0,Not Started
 W234LT,W234,W234.1780,## Gate D Submission - (Cost Summary)  ##,16-Jul-25,19-Aug-25,14-Apr-26,19-May-26,25,25,25,0%,0,Not Started
 W234LT,W234,W234.2050,## TOR Enhanced Defueling Rate: A - D Phase Funding - (Cost Summary) ##,13-Aug-24,16-Jan-25,03-Feb-25 A,01-Jul-25,103,62,103,0%,223,In Progress
 W234LT,W234,W234.1010,Project Start,,01-Feb-24,,01-Feb-24 A,0,0,0,100%,,Completed
 W234LT,W234,W234.1270,Summary for TOR Fuel Handling Enhanced Safety Cases W230,15-May-24,19-Aug-25,15-May-24 A,19-May-26,321,285,509,0%,0,In Progress
 W234LT,W234,W234.1850,## Technical Development / Project Management - Pre Gate A - (Cost Summary) ##,22-Feb-24,28-Jun-24,22-Feb-24 A,28-Jun-24 A,626,0,88,100%,,Completed
 W234LT,W234,W234.1000,ETC (DD-PF),01-Jul-24,18-Aug-25,01-Apr-25,18-May-26,284,284,284,0%,1,Not Started
 W234LT,W234,W234.1290,Update Schedule/Estimate from Risk Log & Add Provisions,08-May-24,14-May-24,08-May-24 A,14-May-24 A,5,0,5,100%,,Completed
 W234LT,W234,W234.1280,Draft / Add Data to PRC/IMS2 Paper,15-May-24,03-Jun-24,15-May-24 A,03-Jun-24 A,5,0,13,100%,,Completed
 W234LT,W234,W234.1120,Gate A  Approved,,25-Jun-24,,25-Jun-24 A,0,0,0,100%,,Completed
 W234LT,W234,W234.1110,Gate D Approved,,19-Aug-25,,19-May-26,0,0,0,0%,0,Not Started
 W529LT,W529,W529.1675,TOR Argus Support Contract - Q4 2026,01-Oct-26,31-Dec-26,07-Jul-26,06-Oct-26,65,65,65,0%,1584,Not Started
 W529LT,W529,W529.1665,TOR Argus Support Contract - Q3 2026,01-Jul-26,30-Sep-26,01-Apr-26,06-Jul-26,65,65,65,0%,1584,Not Started
 W529LT,W529,W195.1070,TPM and JCRB Meetings Held - 2032,02-Jan-32,31-Dec-32,02-Jan-32,31-Dec-32,256,256,256,0%,0,Not Started
 W529LT,W529,W195.1060,TPM and JCRB Meetings Held - 2031,02-Jan-31,31-Dec-31,02-Jan-31,31-Dec-31,253,253,253,0%,0,Not Started
 W529LT,W529,W195.1050,TPM and JCRB Meetings Held - 2030,02-Jan-30,31-Dec-30,02-Jan-30,31-Dec-30,253,253,253,0%,0,Not Started
 W529LT,W529,W195.1040,TPM and JCRB Meetings Held - 2029,02-Jan-29,31-Dec-29,02-Jan-29,31-Dec-29,253,253,253,0%,0,Not Started
 W529LT,W529,W195.1030,TPM and JCRB Meetings Held - 2028,03-Jan-28,29-Dec-28,03-Jan-28,29-Dec-28,253,253,253,0%,0,Not Started
 W529LT,W529,W195.1020,TPM and JCRB Meetings Held - 2027,04-Jan-27,31-Dec-27,04-Jan-27,31-Dec-27,255,255,255,0%,0,Not Started
 W529LT,W529,W195.1010,TPM and JCRB Meetings Held - 2026,02-Jan-26,31-Dec-26,02-Jan-26,31-Dec-26,254,254,254,0%,0,Not Started
 W529LT,W529,W195.1000,TPM and JCRB Meetings Held - 2025,02-Jan-25,31-Dec-25,02-Jan-25 A,31-Dec-25,253,190,253,24%,0,In Progress
 W529LT,W529,80,ETC 2032,02-Jan-32,31-Dec-32,02-Jan-32*,31-Dec-32,256,256,256,0%,0,Not Started
 W529LT,W529,70,ETC 2031,02-Jan-31,31-Dec-31,02-Jan-31*,31-Dec-31,253,253,253,0%,256,Not Started
 W529LT,W529,60,ETC 2030,02-Jan-30,31-Dec-30,02-Jan-30*,31-Dec-30,253,253,253,0%,509,Not Started
 W529LT,W529,50,ETC 2029,02-Jan-29,31-Dec-29,02-Jan-29*,31-Dec-29,253,253,253,0%,762,Not Started
 W529LT,W529,40,ETC 2028,03-Jan-28,29-Dec-28,03-Jan-28*,29-Dec-28,253,253,253,0%,1015,Not Started
 W529LT,W529,30,ETC 2027,04-Jan-27,31-Dec-27,04-Jan-27*,31-Dec-27,255,255,255,0%,1268,Not Started
 W529LT,W529,20,ETC 2026,02-Jan-26,31-Dec-26,02-Jan-26*,31-Dec-26,254,254,254,0%,1523,Not Started
 W529LT,W529,10,ETC 2025,02-Jan-25,31-Dec-25,01-Apr-25,31-Dec-25,190,190,190,0%,1777,Not Started
 W529LT,W529,W529.4080,TOR 2025 Issue Complete LSR,,28-May-25,,28-May-25,0,0,0,0%,1929,Not Started
 ER6360LT,W085,W085.3060,E99,,,15-May-25,16-May-25,1,2,2,0%,100,Not Started
 ER6360LT,W085,W085.3050,E116,,,13-May-25,14-May-25,1,2,2,0%,100,Not Started
 ER6360LT,W085,W085.3040,E137,,,09-May-25,12-May-25,1,2,2,0%,100,Not Started
 ER6360LT,W085,W085.3030,E114,,,07-May-25,08-May-25,1,2,2,0%,100,Not Started
 ER6360LT,W085,W085.3020,E122,,,06-May-25,06-May-25,1,1,1,0%,100,Not Started
 ER6360LT,W085,W085.3010,E113,,,01-May-25,02-May-25,1,2,2,0%,100,Not Started
 ER6360LT,W085,W085.3000,E120,,,29-Apr-25,30-Apr-25,1,2,2,0%,100,Not Started
 ER6360LT,W085,W085.2990,E112,,,25-Apr-25,28-Apr-25,1,2,2,0%,100,Not Started
 ER6360LT,W085,W085.2980,E117,,,23-Apr-25,24-Apr-25,1,2,2,0%,100,Not Started
 ER6360LT,W085,W085.2970,Procure Humidity Meters,,,29-Nov-24 A,12-Dec-24 A,1,0,10,100%,,Completed
 ER6360LT,W085,W085.2960,Procure Access Platforms,,,01-Nov-24 A,28-Nov-24 A,1,0,20,100%,,Completed
 ER6360LT,W085,W085.2950,Manufacture Dummy LSM'S,,,14-Jan-25 A,28-Mar-25 A,1,0,54,100%,,Completed
 ER6360LT,W085,W085.2940,Design Dummy LSM's,,,01-Nov-24 A,13-Jan-25 A,1,0,49,100%,,Completed
 ER6360LT,W085,W085.2930,Dimantle LSM Turning Table and Store,,,21-May-25,27-May-25,1,4,4,0%,94,Not Started
 ER6360LT,W085,W085.2920,Dismantle Lid Turning Table and Store,,,14-May-25,20-May-25,1,5,5,0%,94,Not Started
 ER6360LT,W085,W085.2910,Fence Erecting Stage 2,,,21-May-25,28-May-25,1,5,5,0%,93,Not Started
 ER6360LT,W085,W085.2900,Extractor Removal,,,23-Apr-25,24-Apr-25,1,2,2,0%,93,Not Started
 ER6360LT,W085,W085.2890,Paint Tent Removal,,,17-Apr-25,22-Apr-25,1,2,2,0%,93,Not Started
 ER6360LT,W085,W085.2880,Blast Tent Removal,,,10-Apr-25*,14-Apr-25,1,3,3,0%,93,Not Started
 ER6360LT,W085,W085.2870,Fence Erecting Stage 1,,,13-Jan-25 A,14-Feb-25 A,1,0,25,100%,,Completed
 ER6360LT,W085,W085.2860,Receipt Material,,,16-Dec-24 A,16-Dec-24 A,1,0,1,100%,,Completed
 ER6360LT,W085,W085.2850,Place PO - Fence,,,01-Oct-24 A,01-Oct-24 A,1,0,1,100%,,Completed
 ER6360LT,W085,W085.2840,Order Paint & Paint Stools Inc Yellow,,,17-Feb-25 A,28-Feb-25 A,1,0,10,100%,,Completed
 ER6360LT,W085,W085.2830,Stool NDE,,,13-Jan-25 A,14-Feb-25 A,1,0,25,100%,,Completed
 ER6360LT,W085,W085.2820,Stool Fabrication,,,15-Oct-24 A,10-Jan-25 A,1,0,61,100%,,Completed
 ER6360LT,W085,W085.2810,Receipt Material,,,14-Oct-24 A,14-Oct-24 A,1,0,1,100%,,Completed
 ER6360LT,W085,W085.2800,Place PO,,,01-Oct-24 A,01-Oct-24 A,1,0,1,100%,,Completed
 ER6360LT,W085,W085.2790,Assess Repairs Required if Any,,,26-Nov-24 A,27-Nov-24 A,1,0,2,100%,,Completed
 ER6360LT,W085,W085.2780,Conduct Roof Survey,,,01-Nov-24 A,05-Nov-24 A,1,0,3,100%,,Completed
 ER6360LT,W085,W085.2770,Remove Toilet From Storage Area,,,29-Oct-24 A,30-Oct-24 A,1,0,2,100%,,Completed
 ER6360LT,W085,W085.2760,Hook up New Toilet,,,22-Oct-24 A,23-Oct-24 A,1,0,2,100%,,Completed
 ER6360LT,W085,W085.2750,Order New Hook up Hardware,,,11-Oct-24 A,17-Oct-24 A,1,0,5,100%,,Completed
 ER6360LT,W085,W085.2740,Install Replacement Toilet in New Location,,,27-Sep-24 A,07-Oct-24 A,1,0,7,100%,,Completed
 ER7003LT,W160,W160.9660,>>>INCOMING ENABLER (W198) - EC PDSC Authoring Complete,,,,24-Jan-25 A,0,0,0,100%,,Completed
 ER7003LT,W160,W160.9650,>>>MIRROR OF INCOMING ENABLER (W198) - EC PDSC Authoring Complete,,,,24-Jan-25 A,0,0,0,100%,,Completed
 ER7514LT,W161,W161.9630,HPB PSR3 Extension EC: Author Up-Rev of PSR3 Extension EC,,,05-Aug-25,18-Aug-25,10,10,10,0%,-252,Not Started
 ER7514LT,W161,W161.9620,HPB PSR3 Extension EC: Review NSRS for Completeness,,,04-Aug-25,04-Aug-25,1,1,1,0%,-252,Not Started
 ER7514LT,W161,W161.9610,Assessment of PSR3 Extension EC Requirement,,,04-Aug-25*,,0,0,0,0%,-252,Not Started
 ER7003LT,W160,W160.9640,HNB PSR3 Extension EC: Author Up-Rev of PSR3 Extension EC,,,05-Aug-25,18-Aug-25,10,10,10,0%,-248,Not Started
 ER7003LT,W160,W160.9630,HNB PSR3 Extension EC: Review NSRS for Completeness,,,04-Aug-25,04-Aug-25,1,1,1,0%,-248,Not Started
 ER7003LT,W160,W160.9620,Assessment of PSR3 Extension EC Requirement,,,04-Aug-25*,,0,0,0,0%,-248,Not Started
 ER7514LT,W161,W161.9600,HPB PSR4 Head Doc: EC PDSC Safety Case Submitted to ONR (Incoming milestone to be linked),,,26-Mar-26,26-Mar-26,1,1,1,0%,194,Not Started
 W230LT,W230,W230.3770,HYB Enhanced Defueling Rate: Produce draft NSRS (using BARRIER MODEL),,,,28-Feb-25 A,0,0,0,100%,,Completed
 W230LT,W230,W230.3760,HYB Enhanced Defueling Rate: Strategy EAN Complete,,,,20-Dec-24 A,0,0,0,100%,,Completed
 ER7514LT,W161,W160.9610,>>>INCOMING ENABLER (W404) - EC PDSC Safety Case Submitted to ONR,,,,26-Mar-26,0,0,0,0%,194,Not Started
 ER7514LT,W161,W160.9600,>>>MIRROR OF INCOMING ENABLER (W404) - EC PDSC Safety Case Submitted to ONR,,,,26-Mar-26*,0,0,0,0%,194,Not Started
 ER7003LT,W160,W160.9220,INTERFACE MILESTONE - (W198) EC PDSC Safety Case Submitted to ONR,,,,02-Apr-25,0,0,0,0%,80,Not Started
 ER7003LT,W160,W160.9610,>>>INCOMING ENABLER (W198) - EC PDSC Safety Case Submitted to ONR,,,,03-Apr-25,0,0,0,0%,187,Not Started
 ER7003LT,W160,W160.9600,>>>MIRROR OF INCOMING ENABLER (W198) - EC PDSC Safety Case Submitted to ONR,,,,02-Apr-25*,0,0,0,0%,80,Not Started
 ER7003LT,W160,W160.4010,Initial high level scope of programme,27-Apr-23,28-Apr-23,27-Apr-23 A,28-Apr-23 A,2,0,1,100%,,Completed
 ER7003LT,W160,W160.4000,Confirm Objectives to be Delivered at Gate A (FEEDS TO SUMMARY SCHEDULE),24-Apr-23,28-Apr-23,24-Apr-23 A,28-Apr-23 A,2,0,4,100%,,Completed
 ER7003LT,W160,W160.1190,Gate A PRC Paper Approval,,27-Jun-23,,27-Jun-23 A,0,0,0,100%,,Completed
 ER7003LT,W160,W160.1170,PRC Members Review PRC Documentation,08-Jun-23,14-Jun-23,08-Jun-23 A,14-Jun-23 A,5,0,5,100%,,Completed
 ER7003LT,W160,W160.1210,Modify PRC Paper as Required,21-Jun-23,27-Jun-23,21-Jun-23 A,27-Jun-23 A,5,0,5,100%,,Completed
 ER7003LT,W160,W160.1200,"Modify Estimate, Schedule & Risk Log as Required",21-Jun-23,27-Jun-23,21-Jun-23 A,27-Jun-23 A,5,0,5,100%,,Completed
 ER7003LT,W160,W160.1180,Hold PRC Meeting,20-Jun-23,20-Jun-23,20-Jun-23 A,20-Jun-23 A,1,0,1,100%,,Completed
 ER7003LT,W160,W160.4020,Prepare Draft Project Definition Document (PDD),28-Apr-23,28-Apr-23,28-Apr-23 A,28-Apr-23 A,5,0,0,100%,,Completed
 ER7003LT,W160,W160.4050,PCL Validate & Approve Baseline Package for PRC Submission,06-Jun-23,06-Jun-23,06-Jun-23 A,06-Jun-23 A,1,0,1,100%,,Completed
 ER7003LT,W160,W160.4040,Add Data to PRC/IAB Paper,04-May-23,05-Jun-23,04-May-23 A,05-Jun-23 A,21,0,21,100%,,Completed
 ER7003LT,W160,W160.4030,Update Schedule/Estimate from Risk Log & Add Provisions,28-Apr-23,28-Apr-23,28-Apr-23 A,28-Apr-23 A,5,0,0,100%,,Completed
 ER7003LT,W160,W160.4060,Gate A PRC Paper Submission,07-Jun-23,07-Jun-23,07-Jun-23 A,07-Jun-23 A,1,0,1,100%,,Completed
 ER7003LT,W160,W160.4080,Initial high level scope of programme,02-Jan-24,12-Feb-24,02-Jan-24 A,12-Feb-24 A,30,0,30,100%,,Completed
 ER7003LT,W160,W160.4070,Confirm Objectives to be Delivered at Gate B,22-Dec-23,29-Dec-23,22-Dec-23 A,29-Dec-23 A,3,0,4,100%,,Completed
 ER7003LT,W160,W160.5120,PRC Members Review IAB Documentation,07-Mar-24,13-Mar-24,07-Mar-24 A,13-Mar-24 A,5,0,5,100%,,Completed
 ER7003LT,W160,W160.5150,Modify PRC Paper as Required,20-Mar-24,26-Mar-24,20-Mar-24 A,26-Mar-24 A,5,0,5,100%,,Completed
 ER7003LT,W160,W160.5140,"Modify Estimate, Schedule & Risk Log as Required",20-Mar-24,26-Mar-24,20-Mar-24 A,26-Mar-24 A,5,0,5,100%,,Completed
 ER7003LT,W160,W160.5130,Hold PRC Meeting,19-Mar-24,19-Mar-24,19-Mar-24 A,19-Mar-24 A,1,0,1,100%,,Completed
 ER7003LT,W160,W160.5030,Prepare Draft Project Definition Document (PDD),09-Feb-24,15-Feb-24,09-Feb-24 A,15-Feb-24 A,5,0,5,100%,,Completed
 ER7003LT,W160,W160.5090,PCL Validate & Approve Baseline Package for PRC Submission,14-Feb-24,01-Mar-24,14-Feb-24 A,01-Mar-24 A,2,0,13,100%,,Completed
 ER7003LT,W160,W160.5040,Add Data to IAB Paper,09-Feb-24,15-Feb-24,09-Feb-24 A,15-Feb-24 A,5,0,5,100%,,Completed
 ER7003LT,W160,W160.5010,Update Schedule/Estimate from Risk Log & Add Provisions,13-Feb-24,15-Feb-24,13-Feb-24 A,15-Feb-24 A,3,0,3,100%,,Completed
 ER7003LT,W160,W160.5080,Complete Risk Log with Estimates,13-Feb-24,15-Feb-24,13-Feb-24 A,15-Feb-24 A,3,0,3,100%,,Completed
 ER7003LT,W160,W160.5020,Hold Risk Workshop,13-Feb-24,15-Feb-24,13-Feb-24 A,15-Feb-24 A,3,0,3,100%,,Completed
 ER7003LT,W160,W160.5070,Ensure Alignment of Schedule & Estimate,14-Feb-24,29-Feb-24,14-Feb-24 A,29-Feb-24 A,2,0,11,100%,,Completed
 ER7003LT,W160,W160.5050,Estimate Scope +/- 10% B-C & +/- 30% Lifecycle,09-Feb-24,15-Feb-24,09-Feb-24 A,15-Feb-24 A,5,0,5,100%,,Completed
 ER7003LT,W160,W160.5060,Plan Scope in Primavera (Level 2 B-C &  Level 1 Lifecycle),09-Feb-24,15-Feb-24,09-Feb-24 A,15-Feb-24 A,5,0,5,100%,,Completed
 ER7003LT,W160,W160.4090,Define Project Control Structures (WBS/CBS/OBS/PBS),13-Feb-24,15-Feb-24,13-Feb-24 A,15-Feb-24 A,3,0,3,100%,,Completed
 ER7003LT,W160,W160.5100,Gate B PRC Paper Submission,06-Mar-24,06-Mar-24,06-Mar-24 A,06-Mar-24 A,1,0,1,100%,,Completed
 ER7003LT,W160,W160.5000,Case Production Plan Peer Review & Update,08-Feb-24,15-Feb-24,08-Feb-24 A,15-Feb-24 A,6,0,6,100%,,Completed
 ER7003LT,W160,W160.1000,Project Start,03-Apr-23,,03-Apr-23 A,,0,0,0,100%,,Completed
 ER7003LT,W160,W160.2130,Prepare Gate D PRC Paper,31-Jul-26,07-Aug-26,03-Sep-25,09-Sep-25,5,5,5,0%,60,Not Started
 ER7003LT,W160,W160.2140,Gate D PRC Paper Submission,12-Aug-26,12-Aug-26,10-Sep-25,10-Sep-25,1,1,1,0%,3,Not Started
 ER7003LT,W160,W160.2120,Produce Project Closeout Report,29-Jul-26,30-Jul-26,01-Sep-25,02-Sep-25,2,2,2,0%,60,Not Started
 ER7003LT,W160,W160.2110,Produce Lessons Learned Report,28-Jul-26,28-Jul-26,29-Aug-25,29-Aug-25,1,1,1,0%,60,Not Started
 ER7003LT,W160,W160.2100,Hold Project Closeout and Lessons Learned Meeting,27-Jul-26,27-Jul-26,28-Aug-25,28-Aug-25,1,1,1,0%,60,Not Started
 ER7003LT,W160,W160.2150,Gate D - Hold PRC Meeting,25-Aug-26,25-Aug-26,23-Sep-25,23-Sep-25,1,1,1,0%,3,Not Started
 ER7003LT,W160,W160.5400,Project Finish,,25-Aug-26,,23-Dec-25,0,0,0,0%,4,Not Started
 ER7003LT,W160,W160.5430,HNB PSR4 Head Doc: CO and PCE Create Initial Plan of Work,03-Apr-23,30-Jun-23,03-Apr-23 A,30-Jun-23 A,0,0,59,100%,,Completed
 ER7003LT,W160,W160.5860,HNB PSR4 Head Doc:Verification Commenced (T-11),,26-Sep-24,,24-Sep-24 A,0,0,0,100%,,Completed
 ER7003LT,W160,W160.6080,HNB PSR4 Head Doc: Develop Implementation & closeout Plan (No Longer Required),10-Jul-26,23-Jul-26,03-Mar-25 A,03-Mar-25 A,0,0,0,100%,,Completed
 ER7003LT,W160,W160.5840,HNB PSR4 Head Doc: Safety Case Paper Authoring Complete EC 374897 <Enter Paper Title Here>,,05-Sep-24,,18-Sep-24 A,0,0,0,100%,,Completed
 ER7003LT,W160,W160.5610,HNB PSR4 Head Doc: INA approve Cat 2 NSRS,29-Apr-24,03-May-24,10-Jun-24 A,14-Jun-24 A,5,0,5,100%,,Completed
 ER7003LT,W160,W160.6070,HNB PSR4 Head Doc: Revise all Affected Drawings and Documents for EC Approval (No Longer Required),26-Jun-26,09-Jul-26,03-Mar-25 A,03-Mar-25 A,0,0,0,100%,,Completed
 ER7003LT,W160,W160.6050,HNB PSR4 Head Doc: ONR Agree/Acknowledge Safety Case EC 374897,,25-Jun-26,,26-Aug-25,0,0,0,0%,60,Not Started
 ER7003LT,W160,W160.6030,HNB PSR4 Head Doc: INSA Final Approval EC 374897 <Enter Paper Title Here>,,24-Apr-25,,24-Apr-25,0,0,0,0%,65,Not Started
 ER7003LT,W160,W160.5630,HNB PSR4 Head Doc: Send NSRS to ONR to determine level of review required (Acknowldgement or Agreement) (If Required),,03-May-24,,18-Sep-24 A,0,0,0,100%,,Completed
 ER7003LT,W160,W160.6040,HNB PSR4 Head Doc: ONR Approval of Safety Case (Letter sent to initiate) EC 374897 <Enter Paper Title Here> ==> KDM,25-Jun-25,25-Jun-26,02-May-25,26-Aug-25,80,80,80,0%,60,Not Started
 ER7003LT,W160,W160.5920,HNB PSR4 Head Doc: Final Verification,09-Dec-24,20-Dec-24,15-Nov-24 A,28-Nov-24 A,10,0,10,100%,,Completed
 ER7003LT,W160,W160.6090,HNB PSR4 Head Doc: Post Job Debrief (CAT 2),24-Jul-26,24-Jul-26,27-Aug-25,27-Aug-25,1,1,1,0%,60,Not Started
 ER7003LT,W160,W160.5740,HNB PSR4 Head Doc: All Supporting References Approved and Issued,,05-Sep-24,,28-Jan-25 A,0,0,0,100%,,Completed
 ER7003LT,W160,W160.5600,HNB PSR4 Head Doc: INA approve Cat 2 NSRS EC 374897,,03-May-24,,14-Jun-24 A,0,0,0,100%,,Completed
 ER7003LT,W160,W160.5530,HNB PSR4 Head Doc: Verify Cat 2 NSRS,05-Mar-24,11-Mar-24,25-Mar-24 A,05-Apr-24 A,5,0,8,100%,,Completed
 ER7003LT,W160,W160.5990,HNB PSR4 Head Doc: INSA Assessment Substantially Comp (T - 3 weeks before NSC date),,13-Mar-25,,19-Mar-25 A,0,0,0,100%,,Completed
 ER7003LT,W160,W160.6010,HNB PSR4 Head Doc: Prepare Station Director's Brief,23-Dec-24,31-Dec-24,29-Nov-24 A,04-Apr-25,5,4,88,90%,62,In Progress
 ER7003LT,W160,W160.5980,HNB PSR4 Head Doc: Incorporate INSA comments,07-Mar-25,13-Mar-25,12-Mar-25 A,18-Mar-25 A,5,0,5,100%,,Completed
 ER7003LT,W160,W160.5890,"HNB PSR4 Head Doc: Issue to CO, INSA & Station for comments",,31-Oct-24,,31-Oct-24 A,0,0,0,100%,,Completed
 ER7003LT,W160,W160.5450,HNB PSR4 Head Doc: Initial Categorisation by Station,03-Apr-23,28-Apr-23,03-Apr-23 A,28-Apr-23 A,0,0,17,100%,,Completed
 ER7003LT,W160,W160.6060,HNB PSR4 Head Doc: Station Approve EC 374897 - HNB PSR4,,25-Jun-26,,26-Aug-25,0,0,0,0%,60,Not Started
 ER7003LT,W160,W160.6020,HNB PSR4 Head Doc: NSC Consideration & advice to Station Director ==> KDM,09-Apr-25,24-Apr-25,09-Apr-25,24-Apr-25,10,10,10,0%,60,Not Started
 ER7003LT,W160,W160.5930,HNB PSR4 Head Doc: Submit for approval - Categoriser ratifies; RE/CO endorsement ==> KDM,,20-Dec-24,,28-Nov-24 A,0,0,0,100%,,Completed
 ER7003LT,W160,W160.5410,"HNB PSR4 Head Doc: Mod Requested, Identify RE and EC Request Raised and Screened",03-Apr-23,30-Jun-23,03-Apr-23 A,30-Jun-23 A,0,0,59,100%,,Completed
 ER7003LT,W160,W160.5460,HNB PSR4 Head Doc: Appoint CO & CA,03-Apr-23,03-Apr-23,03-Apr-23 A,03-Apr-23 A,0,0,0,100%,,Completed
 ER7003LT,W160,W160.5570,HNB PSR4 Head Doc: Upload to AMS & Submit Cat 2 NSRS to INA,05-Apr-24,05-Apr-24,29-Apr-24 A,03-May-24 A,1,0,5,100%,,Completed
 ER7003LT,W160,W160.5540,HNB PSR4 Head Doc: PRWG Meeting for NSRS,26-Mar-24,26-Mar-24,18-Apr-24 A,18-Apr-24 A,1,0,0,100%,,Completed
 ER7003LT,W160,W160.5420,HNB PSR4 Head Doc: Initiate and Register EC and identify Milestones in AMS  EC 374897,01-Feb-24,26-Feb-24,01-Feb-24 A,26-Feb-24 A,1,0,17,100%,,Completed
 ER7003LT,W160,W160.6000,HNB PSR4 Head Doc: NSC Presentation Date (T) EC 374897 <Enter Paper Title Here>,,09-Apr-25,,09-Apr-25,0,0,0,0%,60,Not Started
 ER7003LT,W160,W160.5970,HNB PSR4 Head Doc: HNB PSR4 Head Doc: INSA review & iteration of comments (using BARRIER MODEL),07-Feb-25,06-Mar-25,04-Dec-24 A,11-Mar-25 A,40,0,67,100%,,Completed
 ER7003LT,W160,W160.5950,HNB PSR4 Head Doc: Verification Complete/ Verified Draft A Issued for INSA (T-7)  EC 374897,,20-Dec-24,,28-Nov-24 A,0,0,0,100%,,Completed
 ER7003LT,W160,W160.5870,HNB PSR4 Head Doc:Verification of the Submission (using BARRIER MODEL),27-Sep-24,31-Oct-24,25-Sep-24 A,31-Oct-24 A,27,0,27,100%,,Completed
 ER7003LT,W160,W160.5810,HNB PSR4 Head Doc: Produce and Approve Verification Plan,13-Sep-24,19-Sep-24,18-Sep-24 A,18-Sep-24 A,0,0,0,100%,,Completed
 ER7003LT,W160,W160.5900,HNB PSR4 Head Doc: Address Verifier Comments,01-Nov-24,14-Nov-24,01-Nov-24 A,14-Nov-24 A,10,0,10,100%,,Completed
 ER7003LT,W160,W160.5820,HNB PSR4 Head Doc: Authoring of the Submission Proposal,16-Apr-24,05-Sep-24,05-Apr-24 A,18-Sep-24 A,100,0,115,100%,,Completed
 ER7003LT,W160,W160.5470,HNB PSR4 Head Doc: CA to agree with CO format of the safety case,03-Apr-23,28-Apr-23,03-Apr-23 A,28-Apr-23 A,0,0,17,100%,,Completed
 ER7003LT,W160,W160.5620,HNB PSR4 Head Doc: NSRS Presented to NSC (If Required),,03-May-24,,18-Sep-24 A,0,0,0,100%,,Completed
 ER7003LT,W160,W160.5580,HNB PSR4 Head Doc: INA review Cat 2 NSRS,08-Apr-24,19-Apr-24,07-May-24 A,20-May-24 A,10,0,10,100%,,Completed
 ER7003LT,W160,W160.5560,HNB PSR4 Head Doc: Address PRWG Comments on Cat 2 NSRS,27-Mar-24,04-Apr-24,18-Apr-24 A,26-Apr-24 A,5,0,7,100%,,Completed
 ER7003LT,W160,W160.5510,HNB PSR4 Head Doc: Address Verifier Comments on Cat 2 NSRS,12-Mar-24,18-Mar-24,08-Apr-24 A,12-Apr-24 A,5,0,5,100%,,Completed
 ER7003LT,W160,W160.5520,HNB PSR4 Head Doc: Issue Cat 2 NSRS for PRWG review (allow 5d),19-Mar-24,25-Mar-24,12-Apr-24 A,17-Apr-24 A,2,0,3,100%,,Completed
 ER7003LT,W160,W160.5500,HNB PSR4 Head Doc: Author Cat 2 NSRS,04-Jan-24,04-Mar-24,04-Jan-24 A,22-Mar-24 A,5,0,56,100%,,Completed
 ER7003LT,W160,W160.5440,HNB PSR4 Head Doc: Produce MF EC 374897 & obtain approval,01-Feb-24,01-Mar-24,01-Feb-24 A,01-Mar-24 A,1,0,22,100%,,Completed
 ER7003LT,W160,W160.6150,CA PJB Held,,03-Apr-23,,03-Apr-23 A,0,0,0,100%,,Completed
 ER7003LT,W160,W160.6120,Key Stakeholders Identified,,28-Apr-23,,28-Apr-23 A,0,0,0,100%,,Completed
 ER7003LT,W160,W160.6130,CO & CA appointed,,03-Apr-23,,03-Apr-23 A,0,0,0,100%,,Completed
 ER7003LT,W160,W160.6370,Develop plan with further iterations,01-Aug-23,14-Aug-23,01-Aug-23 A,14-Aug-23 A,10,0,10,100%,,Completed
 ER7003LT,W160,W160.6390,Issue agreed work programme to stakeholders & suppliers,,14-Aug-23,,14-Aug-23 A,0,0,0,100%,,Completed
 ER7003LT,W160,W160.6360,Identify verifier for the case & establish all other resources,01-Jun-23,27-Jul-23,01-Jun-23 A,27-Jul-23 A,5,0,41,100%,,Completed
 ER7003LT,W160,W160.6180,Categorisation by RE / Station,03-Apr-23,28-Apr-23,03-Apr-23 A,28-Apr-23 A,5,0,17,100%,,Completed
 ER7003LT,W160,W160.6100,Raise Engineering Request (as required),03-Apr-23,10-May-23,03-Apr-23 A,10-May-23 A,5,0,23,100%,,Completed
 ER7003LT,W160,W160.6140,Develop initial programme plan using mandatory template,03-Apr-23,10-May-23,03-Apr-23 A,10-May-23 A,5,0,23,100%,,Completed
 ER7003LT,W160,W160.6170,Issue MF (as required),,01-Jun-23,,01-Jun-23 A,0,0,0,100%,,Completed
 ER7003LT,W160,W160.6110,"Mod requested, Initiate EC, identify RE, register EC & identify milestones in AMS",,03-Apr-23,,03-Apr-23 A,0,0,0,100%,,Completed
 ER7003LT,W160,W160.6340,"Agree resource & timescales with suppliers for delivering key refs, incl contingency, risk & allowance for rework",27-Jul-23,27-Jul-23,27-Jul-23 A,27-Jul-23 A,1,0,0,100%,,Completed
 ER7003LT,W160,W160.6350,Hold project kick start meeting with Station & key suppliers,02-Aug-23,02-Aug-23,02-Aug-23 A,02-Aug-23 A,1,0,1,100%,,Completed
 ER7003LT,W160,W160.6160,Produce MF (as required),03-Apr-23,01-Jun-23,03-Apr-23 A,01-Jun-23 A,5,0,39,100%,,Completed
 ER7003LT,W160,W160.6650,HNB PSR4 Head Doc: Gate A-B Procurement Activities,01-Jun-23,27-Jul-23,01-Jun-23 A,27-Jul-23 A,30,0,40,100%,,Completed
 ER7003LT,W160,W160.6660,## HNB PSR4 Head Doc: GAP Analysis (Mapping PDSC to PSR4 Requirements) - Cost Summary (CAT 2) ##,03-Aug-23,13-Oct-23,03-Aug-23 A,13-Oct-23 A,85,0,51,100%,,Completed
 ER7003LT,W160,W160.6680,## HNB PSR4 Head Doc: TSRS - Cost Summary (CAT 2) ##,05-Sep-23,22-Dec-23,05-Sep-23 A,22-Dec-23 A,50,0,79,100%,,Completed
 ER7003LT,W160,W160.6700,## HNB PSR4 Head Doc: Human Factors Review (SF12?) - ## Cost Summary (CAT 2) ##,27-Mar-24,31-May-24,26-Feb-24 A,30-Apr-24 A,44,0,45,100%,,Completed
 ER7003LT,W160,W160.6800,## HNB PSR4 Head Doc: Project Management - (A - B) - Cost Summary (CAT 2) ##,01-Jun-23,26-Mar-24,03-Apr-23 A,18-Apr-24 A,224,0,262,100%,,Completed
 ER7003LT,W160,W160.6810,## HNB PSR4 Head Doc: Safety Case Development - (A - B) - Cost Summary (CAT 2) ##,01-Jun-23,26-Mar-24,03-Apr-23 A,18-Apr-24 A,224,0,262,100%,,Completed
 ER7003LT,W160,W160.6830,## Project Management (Pre Gate A)  - Cost Summary (CAT 2) ##,03-Apr-23,01-Jun-23,03-Apr-23 A,01-Jun-23 A,39,0,39,100%,,Completed
 ER7003LT,W160,W160.6850,## Safety Case Development (Pre Gate A)  - Cost Summary (CAT 2) ##,03-Apr-23,01-Jun-23,03-Apr-23 A,01-Jun-23 A,39,0,39,100%,,Completed
 ER7003LT,W160,W160.6860,## Project Management (Gate A - B)  - Cost Summary (CAT 2) ##,01-Jun-23,26-Mar-24,01-Jun-23 A,18-Apr-24 A,228,0,224,100%,,Completed
 ER7003LT,W160,W160.6870,## Safety Case Development (Gate A - B)  - Cost Summary (CAT 2) ##,01-Jun-23,26-Mar-24,01-Jun-23 A,18-Apr-24 A,228,0,224,100%,,Completed
 ER7003LT,W160,W160.6900,HNB PSR3 Extension EC: Workshops EAN PRWG Endorsed,,26-Mar-24,,26-Jun-24 A,0,0,0,100%,,Completed
 ER7003LT,W160,W160.6980,Gate B PRC Paper Approval,,26-Mar-24,,26-Mar-24 A,0,0,0,100%,,Completed
 ER7003LT,W160,W160.7000,GAP Analysis,03-Aug-23,13-Oct-23,03-Aug-23 A,13-Oct-23 A,60,0,50,100%,,Completed
 ER7003LT,W160,W160.7010,TSRS,05-Sep-23,22-Dec-23,05-Sep-23 A,22-Dec-23 A,60,0,79,100%,,Completed
 ER7003LT,W160,W160.7020,Gate A-B Procurement Activities,01-Jun-23,27-Jul-23,01-Jun-23 A,27-Jul-23 A,30,0,41,100%,,Completed
 ER7003LT,W160,W160.7060,HNB PSR4 Head Doc: Prepare Paper for Submission to ONR,25-Apr-25,24-Jun-25,25-Apr-25,01-May-25,5,5,5,0%,60,Not Started
 ER7003LT,W160,W160.8000,Gate D -  PRC Paper Approval (HNB),,25-Aug-26,,23-Sep-25,0,0,0,0%,69,Not Started
 ER7003LT,W160,W160.7080,Gate B -  PRC Paper Approval (HNB),,26-Mar-24,,26-Mar-24 A,0,0,0,100%,,Completed
 ER7003LT,W160,W160.7070,Gate A -  PRC Paper Approval (HNB),,27-Jun-23,,27-Jun-23 A,0,0,0,100%,,Completed
 ER7003LT,W160,W160.8010,HNB PSR4 Head Doc: PSR4 Safety Case - Submitted to ONR,,24-Jun-25,,01-May-25,0,0,0,0%,60,Not Started
 ER7003LT,W160,W160.8050,Q3 FY23 Stakeholder Meeting with Magnox,,22-Sep-23,,22-Sep-23 A,0,0,0,100%,,Completed
 ER7003LT,W160,W160.8060,Q4 FY23 Stakeholder Meeting with NRS (Magnox),,05-Dec-23,,05-Dec-23 A,0,0,0,100%,,Completed
 ER7003LT,W160,W160.8110,Summary of HNB PSR4 - W160,03-Apr-23,25-Aug-26,03-Apr-23 A,23-Sep-25,1,121,624,0%,69,In Progress
 ER7003LT,W160,W160.8120,HNB PSR4 Head Doc: All Key Supporting References Appoved and Issued,,05-Sep-24,,28-Jan-25 A,0,0,0,100%,,Completed
 ER7003LT,W160,W160.8130,DISCOVERY MILESTONE - GAP Analysis Complete,,13-Oct-23,,13-Oct-23 A,0,0,0,100%,,Completed
 ER7003LT,W160,W160.8140,DISCOVERY MILESTONE - HF GAP Analysis Complete,,22-Dec-23,,22-Dec-23 A,0,0,0,100%,,Completed
 ER7003LT,W160,W160.8150,DISCOVERY MILESTONE - TSRS Complete,,22-Dec-23,,22-Dec-23 A,0,0,0,100%,,Completed
 ER7003LT,W160,W160.6670,## HNB PSR4 Head Doc: HF GAP Analysis (Mapping Human Factors Requirements) - Cost Summary (CAT 2) ##,19-Oct-23,22-Dec-23,19-Oct-23 A,22-Dec-23 A,1,0,47,100%,,Completed
 ER7003LT,W160,W160.8160,HNB PSR4 Head Doc: PJB,02-Jan-24,02-Jan-24,02-Jan-24 A,02-Jan-24 A,1,0,0,100%,,Completed
 ER7003LT,W160,W160.8170,HNB PSR4 Head Doc: QP Approved,03-Jan-24,03-Jan-24,03-Jan-24 A,03-Jan-24 A,1,0,0,100%,,Completed
 ER7003LT,W160,W160.8180,HNB PSR Head Doc: Upload Submission Proposal to AMS,06-Sep-24,12-Sep-24,22-Nov-24 A,28-Nov-24 A,5,0,5,100%,,Completed
 ER7003LT,W160,W160.8190,HNB PSR4 Head Doc: PJB Verifier,20-Sep-24,26-Sep-24,19-Sep-24 A,24-Sep-24 A,0,0,4,100%,,Completed
 ER7003LT,W160,W160.8200,HNB PSR4 Head Doc: Issue Document to NRS for comment,23-Dec-24,31-Dec-24,25-Sep-24 A,01-Nov-24 A,5,0,28,100%,,Completed
 ER7003LT,W160,W160.8210,HNB PSR4 Head Doc: NRS Comments,02-Jan-25,08-Jan-25,04-Nov-24 A,08-Nov-24 A,5,0,5,100%,,Completed
 ER7003LT,W160,W160.8220,HNB PSR4 Head Doc: NRS Comments Addressed,09-Jan-25,15-Jan-25,11-Nov-24 A,15-Nov-24 A,5,0,5,100%,,Completed
 ER7003LT,W160,W160.8230,HNB PSR4 Head Doc: TR Complete (To be Removed),16-Jan-25,22-Jan-25,01-Aug-24 A,01-Aug-24 A,0,0,0,100%,,Completed
 ER7003LT,W160,W160.8240,HNB PSR4 Head Doc: Issue for PRWG (Allow 5d),23-Jan-25,29-Jan-25,26-Nov-24 A,26-Nov-24 A,0,0,0,100%,,Completed
 ER7003LT,W160,W160.8250,HNB PSR4 Head Doc: PRWG Meeting for Head Doc,30-Jan-25,30-Jan-25,26-Nov-24 A,26-Nov-24 A,1,0,1,100%,,Completed
 ER7003LT,W160,W160.8260,HNB PSR4 Head Doc: PRWG Comments Addressed,31-Jan-25,06-Feb-25,27-Nov-24 A,03-Dec-24 A,5,0,5,100%,,Completed
 ER7003LT,W160,W160.8270,HNB PSR4 Head Doc: INSA  Assessment Substantially Comp (T - 3 weeks before NSC date),,13-Mar-25,,19-Mar-25 A,0,0,0,100%,,Completed
 ER7003LT,W160,W160.8280,HNB PSR4 Head Doc: NSC Presentation Date (T) EC 374897,,09-Apr-25,,09-Apr-25,0,0,0,0%,3,Not Started
 ER7003LT,W160,W160.8290,HNB PSR4 Head Doc: Verification Complete/ Verified Draft A Issued for INSA (T-7)  EC 374897,,20-Dec-24,,28-Nov-24 A,0,0,0,100%,,Completed
 ER7003LT,W160,W160.8300,>>>INCOMING ENABLER (W198) - EC PDSC Approved,,22-Jan-25,,04-Jul-25,0,0,0,0%,125,Not Started
 ER7003LT,W160,W160.8310,>>>MIRROR OF INCOMING ENABLER (W198) - EC PDSC Approved (Station Approval),,22-Jan-25,,04-Jul-25*,0,0,0,0%,126,Not Started
 ER7003LT,W160,W160.8320,>>>INCOMING ENABLER (W198) - Corrosion Assessment PJB,,01-Mar-24,,08-Jan-24 A,0,0,0,100%,,Completed
 ER7003LT,W160,W160.8330,>>>MIRROR OF INCOMING ENABLER (W198) - Corrosion Assessment PJB,,01-Mar-24,,08-Jan-24 A,0,0,0,100%,,Completed
 ER7003LT,W160,W160.8340,>>>INCOMING ENABLER (W198) - Fault and Hazard Schedule,,18-Mar-24,,28-Mar-24 A,0,0,0,100%,,Completed
 ER7003LT,W160,W160.8350,>>>MIRROR OF INCOMING ENABLER (W198) - Fault and Hazard Schedule,,18-Mar-24,,28-Mar-24 A,0,0,0,100%,,Completed
 ER7003LT,W160,W160.8360,>>>INCOMING ENABLER (W198) - Source Term EAN,,20-Mar-24,,01-May-24 A,0,0,0,100%,,Completed
 ER7003LT,W160,W160.8370,>>>MIRROR OF INCOMING ENABLER (W198) - Source Term EAN,,20-Mar-24,,01-May-24 A,0,0,0,100%,,Completed
 ER7003LT,W160,W160.8380,>>>INCOMING ENABLER (W198) - In Air Reactor EAN,,22-Apr-24,,01-Aug-24 A,0,0,0,100%,,Completed
 ER7003LT,W160,W160.8390,>>>MIRROR OF INCOMING ENABLER (W198) - In Air Reactor EAN,,22-Apr-24,,02-Aug-24 A,0,0,0,100%,,Completed
 ER7003LT,W160,W160.8400,>>>INCOMING ENABLER (W198) - Radwaste Technical Report (No longer required),,16-Apr-24,,20-Sep-24 A,0,0,0,100%,,Completed
 ER7003LT,W160,W160.8410,>>>MIRROR OF INCOMING ENABLER (W198) - Radwaste Technical Report (No longer required),,16-Apr-24,,20-Sep-24 A,0,0,0,100%,,Completed
 ER7003LT,W160,W160.8420,>>>INCOMING ENABLER (W198) - P&S Technical Report (No longer required),,17-May-24,,20-Sep-24 A,0,0,0,100%,,Completed
 ER7003LT,W160,W160.8430,>>>MIRROR OF INCOMING ENABLER (W198) - P&S Technical Report (No longer required),,17-May-24,,20-Sep-24 A,0,0,0,100%,,Completed
 ER7003LT,W160,W160.8440,>>>INCOMING ENABLER (W198) - Head Document,,19-Jul-24,,01-Jul-24 A,0,0,0,100%,,Completed
 ER7003LT,W160,W160.8450,>>>MIRROR OF INCOMING ENABLER (W198) - Head Document,,19-Jul-24,,01-Jul-24 A,0,0,0,100%,,Completed
 ER7003LT,W160,W160.8460,>>>INCOMING ENABLER (W198) - EC PDSC Proposal Ready for Review  (No longer required),,24-Jun-24,,20-Sep-24 A,0,0,0,100%,,Completed
 ER7003LT,W160,W160.8470,>>>MIRROR OF INCOMING ENABLER (W198) - EC PDSC Proposal Ready for Review  (No longer required),,24-Jun-24,,20-Sep-24 A,0,0,0,100%,,Completed
 ER7003LT,W160,W160.8480,>>>INCOMING ENABLER (W198) - EC PDSC INSA Final Approval,,16-Oct-24,,02-Apr-25,0,0,0,0%,188,Not Started
 ER7003LT,W160,W160.8490,>>>MIRROR OF INCOMING ENABLER (W198) - EC PDSC INSA Final Approval,,16-Oct-24,,02-Apr-25*,0,0,0,0%,80,Not Started
 ER7003LT,W160,W160.8500,HNB PSR3 Extension EC: Verification Commenced (T-11),,03-Jul-24,,15-Jul-24 A,0,0,0,100%,,Completed
 ER7003LT,W160,W160.8510,HNB PSR3 Extension EC: Develop Implementation & closeout Plan,08-May-25,21-May-25,22-Dec-25,22-Dec-25,1,1,1,0%,4,Not Started
 ER7003LT,W160,W160.8530,HNB PSR3 Extension EC: INA approve Cat 2 NSRS,23-Apr-24,29-Apr-24,10-Jun-24 A,14-Jun-24 A,5,0,5,100%,,Completed
 ER7003LT,W160,W160.8540,HNB PSR3 Extension EC: Revise all Affected Drawings and Documents for EC Approval,23-Apr-25,07-May-25,19-Dec-25,19-Dec-25,1,1,1,0%,4,Not Started
 ER7003LT,W160,W160.8560,HNB PSR3 Extension EC: Send NSRS to ONR to determine level of review required Acknowledgement or Agreement - If Required,,29-Apr-24,,18-Sep-24 A,0,0,0,100%,,Completed
 ER7003LT,W160,W160.8570,HNB PSR3 Extension EC: ONR Approval of Safety Case (Letter sent to initiate) EC 375144 <Enter Paper Title Here> ==> KDM,20-Jan-25,22-Apr-25,18-Dec-25,18-Dec-25,1,1,1,0%,4,Not Started
 ER7003LT,W160,W160.8580,HNB PSR3 Extension EC: Verification Complete,,07-Aug-24,,28-Aug-25,0,0,0,0%,-244,Not Started
 ER7003LT,W160,W160.8590,HNB PSR3 Extension EC: Post Job Debrief (CAT 2),22-May-25,22-May-25,23-Dec-25,23-Dec-25,1,1,1,0%,4,Not Started
 ER7003LT,W160,W160.8600,HNB PSR3 Extension EC: All Supporting References Approved and Issued (Workshops),,26-Mar-24,,09-Apr-24 A,0,0,0,100%,,Completed
 ER7003LT,W160,W160.8610,HNB PSR3 Extension EC:  Verify Cat 2 NSRS,04-Mar-24,08-Mar-24,12-Mar-24 A,15-Mar-24 A,5,0,3,100%,,Completed
 ER7003LT,W160,W160.8620,HNB PSR3 Extension EC: Prepare Station Director's Brief,08-Aug-24,14-Aug-24,29-Aug-25,04-Sep-25,5,5,5,0%,67,Not Started
 ER7003LT,W160,W160.8630,HNB PSR3 Extension EC: Incorporate INSA comments,21-Oct-24,25-Oct-24,30-Oct-25,05-Nov-25,5,5,5,0%,-248,Not Started
 ER7003LT,W160,W160.8640,"HNB PSR3 Extension EC: Issue to CO, INSA & Station for comments",,31-Jul-24,,26-Aug-25,0,0,0,0%,-244,Not Started
 ER7003LT,W160,W160.8650,HNB PSR3 Extension EC: NSC Consideration & advice to Station Director ==> KDM,04-Dec-24,17-Dec-24,03-Dec-25,16-Dec-25,10,10,10,0%,4,Not Started
 ER7003LT,W160,W160.8660,HNB PSR3 Extension EC: Submit for approval - Categoriser ratifies; RE/CO endorsement ==> KDM,,07-Aug-24,,28-Aug-25,0,0,0,0%,-224,Not Started
 ER7003LT,W160,W160.8670,HNB PSR3 Extension EC: Upload to AMS & Submit Cat 2 NSRS to INA,28-Mar-24,28-Mar-24,29-Apr-24 A,03-May-24 A,1,0,5,100%,,Completed
 ER7003LT,W160,W160.8680,HNB PSR3 Extension EC: PRWG Meeting for NSRS,25-Mar-24,25-Mar-24,18-Apr-24 A,18-Apr-24 A,1,0,0,100%,,Completed
 ER7003LT,W160,W160.8690,HNB PSR3 Extension EC: INSA review & iteration of comments (using BARRIER MODEL),23-Sep-24,18-Oct-24,02-Oct-25,29-Oct-25,20,20,20,0%,-248,Not Started
 ER7003LT,W160,W160.8700,HNB PSR3 Extension EC: Verification of the Submission (using BARRIER MODEL),04-Jul-24,31-Jul-24,19-Aug-25,26-Aug-25,5,5,5,0%,-248,Not Started
 ER7003LT,W160,W160.8710,HNB PSR3 Extension EC: Produce and Approve Verification Plan,26-Jun-24,02-Jul-24,08-Jul-24 A,12-Jul-24 A,5,0,5,100%,,Completed
 ER7003LT,W160,W160.8720,HNB PSR3 Extension EC: Address Verifier Comments,01-Aug-24,07-Aug-24,27-Aug-25,28-Aug-25,2,2,2,0%,-244,Not Started
 ER7003LT,W160,W160.8730,HNB PSR3 Extension EC: Authoring the Submission Proposal,27-Mar-24,24-Jun-24,22-Mar-24 A,04-Jul-24 A,60,0,71,100%,,Completed
 ER7003LT,W160,W160.8740,HNB PSR3 Extension EC: NSRS Presented to NSC (If Required),,29-Apr-24,,18-Sep-24 A,0,0,0,100%,,Completed
 ER7003LT,W160,W160.8750,HNB PSR3 Extension EC: INA review Cat 2 NSRS,02-Apr-24,15-Apr-24,07-May-24 A,20-May-24 A,10,0,10,100%,,Completed
 ER7003LT,W160,W160.8760,HNB PSR3 Extension EC: Address PRWG Comments on Cat 2 NSRS,26-Mar-24,27-Mar-24,18-Apr-24 A,26-Apr-24 A,2,0,6,100%,,Completed
 ER7003LT,W160,W160.8770,HNB PSR3 Extension EC:  Address Verifier Comments on Cat 2 NSRS,11-Mar-24,15-Mar-24,18-Mar-24 A,22-Mar-24 A,5,0,4,100%,,Completed
 ER7003LT,W160,W160.8780,HNB PSR3 Extension EC:  Issue Cat 2 NSRS for PRWG review (allow 5d),18-Mar-24,22-Mar-24,22-Mar-24 A,22-Mar-24 A,5,0,0,100%,,Completed
 ER7003LT,W160,W160.8790,HNB PSR3 Extension EC: Author Cat 2 NSRS,04-Jan-24,04-Mar-24,04-Jan-24 A,11-Mar-24 A,5,0,47,100%,,Completed
 ER7003LT,W160,W160.8920,HNB PSR3 Extension EC: Prepare Paper for Submission to ONR,18-Dec-24,17-Jan-25,17-Dec-25,17-Dec-25,1,1,1,0%,4,Not Started
 ER7003LT,W160,W160.8930,HNB PSR3 Extension EC: PJB,02-Jan-24,02-Jan-24,02-Jan-24 A,02-Jan-24 A,1,0,0,100%,,Completed
 ER7003LT,W160,W160.8940,HNB PSR3 Extension EC: HNB PSR4 Head Doc: QP Approved,03-Jan-24,03-Jan-24,03-Jan-24 A,03-Jan-24 A,1,0,0,100%,,Completed
 ER7003LT,W160,W160.8950,HNB PSR3 Extension EC: Upload Submission Proposal to AMS,25-Jun-24,25-Jun-24,05-Jul-24 A,05-Jul-24 A,1,0,1,100%,,Completed
 ER7003LT,W160,W160.8960,HNB PSR3 Extension EC: PJB Verifier,03-Jul-24,03-Jul-24,15-Jul-24 A,15-Jul-24 A,1,0,1,100%,,Completed
 ER7003LT,W160,W160.8970,HNB PSR3 Extension EC: Issue Document to NRS for comment,08-Aug-24,14-Aug-24,19-Aug-25,26-Aug-25,5,5,5,0%,-248,Not Started
 ER7003LT,W160,W160.8980,HNB PSR3 Extension EC: NRS Comments,15-Aug-24,21-Aug-24,27-Aug-25,02-Sep-25,5,5,5,0%,-248,Not Started
 ER7003LT,W160,W160.8990,HNB PSR3 Extension EC: NRS Comments Addressed,22-Aug-24,29-Aug-24,03-Sep-25,09-Sep-25,5,5,5,0%,-248,Not Started
 ER7003LT,W160,W160.9000,HNB PSR3 Extension EC: TR Complete,30-Aug-24,05-Sep-24,10-Sep-25,16-Sep-25,5,5,5,0%,-248,Not Started
 ER7003LT,W160,W160.9010,HNB PSR3 Extension EC: Issue for PRWG (Allow 5d),06-Sep-24,12-Sep-24,17-Sep-25,23-Sep-25,5,5,5,0%,-248,Not Started
 ER7003LT,W160,W160.9020,HNB PSR3 Extension EC: PRWG Meeting for Head Doc,13-Sep-24,13-Sep-24,24-Sep-25,24-Sep-25,1,1,1,0%,-248,Not Started
 ER7003LT,W160,W160.9030,HNB PSR3 Extension EC: PRWG Comments Addressed,16-Sep-24,20-Sep-24,25-Sep-25,01-Oct-25,5,5,5,0%,-248,Not Started
 ER7003LT,W160,W160.9040,HNB PSR3 Extension EC: INSA  Assessment Substantially Comp (T - 3 weeks before NSC date),,25-Oct-24,,05-Nov-25*,0,0,0,0%,-248,Not Started
 ER7003LT,W160,W160.9050,HNB PSR3 Extension EC: NSC Presentation Date (T) EC 375144 <Enter Paper Title Here>,,04-Dec-24,,03-Dec-25,0,0,0,0%,1,Not Started
 ER7003LT,W160,W160.9060,HNB PSR3 Extension EC: Verification Complete/ Verified Draft A Issued for INSA (T-7)  EC 375144,,07-Aug-24,,28-Aug-25,0,0,0,0%,-224,Not Started
 ER7003LT,W160,W160.9070,Initiate and Register EC and identify Milestones in AMS  EC 375144,01-Mar-24,01-Mar-24,01-Mar-24 A,02-Apr-24 A,1,0,21,100%,,Completed
 ER7003LT,W160,W160.9080,Produce MF EC 375144 & obtain approval,01-Mar-24,01-Mar-24,01-Mar-24 A,02-Apr-24 A,1,0,21,100%,,Completed
 ER7003LT,W160,W160.9110,HNB PSR3 Extension EC: Safety Case Paper Authoring Complete EC 375144 <Enter Paper Title Here>,,24-Jun-24,,04-Jul-24 A,0,0,0,100%,,Completed
 ER7003LT,W160,W160.9170,HNB PSR3 Extension EC: ONR Agree/Acknowledge Safety Case EC 375144,,22-Apr-25,,18-Dec-25,0,0,0,0%,4,Not Started
 ER7003LT,W160,W160.9150,HNB PSR3 Extension EC: INSA Final Approval EC 375144 <Enter Paper Title Here>,,17-Dec-24,,16-Dec-25,0,0,0,0%,5,Not Started
 ER7003LT,W160,W160.9090,HNB PSR3 Extension EC: INA approve Cat 2 NSRS EC 375144,,29-Apr-24,,14-Jun-24 A,0,0,0,100%,,Completed
 ER7003LT,W160,W160.9130,HNB PSR3 Extension EC: INSA Assessment Substantially Comp (T - 3 weeks before NSC date),,25-Oct-24,,05-Nov-25*,0,0,0,0%,-248,Not Started
 ER7003LT,W160,W160.9180,HNB PSR3 Extension EC: Station Approve EC 375144 - HNB PSR4,,22-Apr-25,,18-Dec-25,0,0,0,0%,4,Not Started
 ER7003LT,W160,W160.9140,HNB PSR3 Extension EC: NSC Presentation Date (T) EC 375144 <Enter Paper Title Here>,,04-Dec-24,,03-Dec-25,0,0,0,0%,1,Not Started
 ER7003LT,W160,W160.9120,HNB PSR3 Extension EC: Verification Complete/ Verified Draft A Issued for INSA (T-7)  EC 375144,,07-Aug-24,,28-Aug-25,0,0,0,0%,-224,Not Started
 ER7003LT,W160,W160.9160,HNB PSR3 Extension EC: PSR4 Safety Case - Submitted to ONR,,17-Jan-25,,17-Dec-25,0,0,0,0%,4,Not Started
 ER7003LT,W160,W160.9100,HNB PSR3 Extension EC: All Key Supporting References Appoved and Issued (Workshops),,26-Mar-24,,09-Apr-24 A,0,0,0,100%,,Completed
 ER7003LT,W160,W160.5585,HNB PSR4 Head Doc: Address INA comments on Cat 2 NSRS,22-Apr-24,26-Apr-24,21-May-24 A,07-Jun-24 A,5,0,13,100%,,Completed
 ER7003LT,W160,W160.8755,HNB PSR3 Extension EC: Address INA comments on Cat 2 NSRS,16-Apr-24,22-Apr-24,21-May-24 A,07-Jun-24 A,5,0,13,100%,,Completed
 ER7003LT,W160,W160.9200,HNB PSR4 Head Doc: INSA Final Approval EC 374897 <Enter Paper Title Here>,,24-Apr-25,,24-Apr-25,0,0,0,0%,65,Not Started
 ER7003LT,W160,W160.9210,HNB PSR3 Extension EC: INSA Final Approval EC 375144 <Enter Paper Title Here>,,17-Dec-24,,16-Dec-25,0,0,0,0%,5,Not Started
 ER7003LT,W160,W160.9250,PDSC - In Air Reactor EAN,,22-Apr-24,,02-Aug-24 A,0,0,0,100%,,Completed
 ER7003LT,W160,W160.9260,PDSC - Radwaste Technical Report,,16-Apr-24,,20-Sep-24 A,0,0,0,100%,,Completed
 ER7003LT,W160,W160.9270,PDSC - P&S Technical Report,,17-May-24,,20-Sep-24 A,0,0,0,100%,,Completed
 ER7003LT,W160,W160.9280,PDSC - Head Document,,19-Jul-24,,01-Jul-24 A,0,0,0,100%,,Completed
 ER7003LT,W160,W160.9290,PDSC - EC PDSC Proposal Ready for Review,,24-Jun-24,,20-Sep-24 A,0,0,0,100%,,Completed
 ER7003LT,W160,W160.9300,DISCOVERY MILESTONE - HNB PSR4 Head Doc: NSRS Presented to NSC (If Required),,07-May-24,,02-Sep-24 A,0,0,0,100%,,Completed
 ER7003LT,W160,W160.9310,DISCOVERY MILESTONE - HNB PSR4 Head Doc: Send NSRS to ONR to determine level of review (If Required),,07-May-24,,18-Sep-24 A,0,0,0,100%,,Completed
 ER7003LT,W160,W160.9320,DISCOVERY MILESTONE - HNB PSR3 Extension EC: NSRS Presented to NSC (If Required),,30-Apr-24,,02-Sep-24 A,0,0,0,100%,,Completed
 ER7003LT,W160,W160.9330,DISCOVERY MILESTONE - HNB PSR3 Extension EC: Send NSRS to ONR to determine level of review (If Required),,29-Apr-24,,02-Sep-24 A,0,0,0,100%,,Completed
 ER7003LT,W160,W160.9350,## HNB PSR4 Head Doc: Project Management - (B - D) - Cost Summary ##,27-Mar-24,24-Jul-26,08-Jan-24 A,27-Aug-25,376,102,415,40%,60,In Progress
 ER7003LT,W160,W160.9360,## HNB PSR4 Head Doc: Safety Case Development - (B - D) - Cost Summary ##,27-Mar-24,24-Jul-26,08-Jan-24 A,27-Aug-25,376,102,415,40%,60,In Progress
 ER7003LT,W160,W160.9370,## HNB PSR4 Head Doc: Verification - Cost Summary ##,20-Sep-24,20-Dec-24,19-Sep-24 A,28-Nov-24 A,47,0,51,100%,,Completed
 ER7003LT,W160,W160.9390,## HNB PSR4 Head Doc: Authoring of Paper - ## Cost Summary ##,16-Apr-24,19-Sep-24,05-Apr-24 A,28-Nov-24 A,160,0,167,100%,,Completed
 ER7003LT,W160,W160.9400,## HNB PSR4 Head Doc: Key Stakeholders Engagement - Cost Summary ##,23-Dec-24,06-Feb-25,01-Aug-24 A,03-Dec-24 A,88,0,88,100%,,Completed
 ER7003LT,W160,W160.9410,## HNB PSR4 Head Doc: INSA & NSC Meeting Readiness - Cost Summary ##,07-Feb-25,09-Apr-25,04-Dec-24 A,09-Apr-25,87,0,87,37%,47,In Progress
 ER7003LT,W160,W160.9420,## HNB PSR4 Head Doc: Clearances and Closeout - Cost Summary ##,23-Dec-24,24-Jul-26,29-Nov-24 A,27-Aug-25,186,102,186,1.25%,60,In Progress
 ER7003LT,W160,W160.9440,PSR3 Extension EC - Workshops,02-Jan-24,26-Mar-24,02-Jan-24 A,09-Apr-24 A,1,0,69,100%,,Completed
 ER7003LT,W160,W160.9450,## PSR3 Extension EC: Authoring of Paper - Cost Summary ##,27-Mar-24,02-Jul-24,22-Mar-24 A,18-Aug-25,370,11,355,100%,-248,In Progress
 ER7003LT,W160,W160.9460,## HNB PSR3 Extension EC: Verification - Cost Summary ##,03-Jul-24,07-Aug-24,15-Jul-24 A,28-Aug-25,285,7,285,99%,-224,In Progress
 ER7003LT,W160,W160.9470,## HNB PSR3 Extension EC: Key Stakeholders Engagement - Cost Summary ##,08-Aug-24,20-Sep-24,19-Aug-25,01-Oct-25,31,31,31,0%,-248,Not Started
 ER7003LT,W160,W160.9480,## HNB PSR3 Extension EC: INSA & NSC Meeting Readiness - Cost Summary ##,23-Sep-24,03-Dec-24,02-Oct-25,03-Dec-25,44,44,44,0%,1,Not Started
 ER7003LT,W160,W160.9490,## HNB PSR3 Extension EC: Clearances and Closeout - Cost Summary ##,08-Aug-24,22-May-25,29-Aug-25,23-Dec-25,83,83,83,0%,4,Not Started
 ER7003LT,W160,W160.9500,PDSC - Corrosion Assessment PJB,,01-Mar-24,,08-Jan-24 A,0,0,0,100%,,Completed
 ER7003LT,W160,W160.9510,PDSC - Fault and Hazard Schedule,,18-Mar-24,,28-Mar-24 A,0,0,0,100%,,Completed
 ER7003LT,W160,W160.9520,PDSC - Source Term EAN,,20-Mar-24,,01-May-24 A,0,0,0,100%,,Completed
 ER7003LT,W160,W160.9530,T&T Programme - HNB IMS System (Point of Transfer) Developed,,05-Sep-24,,05-Sep-24 A,0,0,0,100%,,Completed
 ER7003LT,W160,W160.9540,HNB PSR4 Head Doc: Verification Schedule Risk - (Risk Ref 38853),15-Nov-24,06-Dec-24,19-Mar-25 A,19-Mar-25 A,0,0,0,100%,,Completed
 ER7003LT,W160,W160.9550,Risk Milestone - (Risk Ref 38853) - HNB PSR4 Head Doc: Verification Substantially Complete,,06-Dec-24,,01-Nov-24 A,0,0,0,100%,,Completed
 ER7003LT,W160,W160.9560,>>>INCOMING ENABLER (W689) - T&T Programme - HNB IMS System (Point of Transfer) Developed,,05-Sep-24,,05-Sep-24 A,0,0,0,100%,,Completed
 ER7003LT,W160,W160.9570,>>>MIRROR OF INCOMING ENABLER (W689) - T&T Programme - HNB IMS System (Point of Transfer) Developed,,05-Sep-24,,05-Sep-24 A,0,0,0,100%,,Completed
 ER7003LT,W160,W160.9590,DISCOVERY MILESTONE - HNB PSR3 Extension EC: Decision by TD ND Deliverables Programme Board,,05-Sep-24,,25-Sep-25,0,0,0,0%,-244,Not Started
 ER7003LT,W160,W160.9580,## Technical Development / Project Management - Project PRE GATE A & GATE A - B - Sunk Costs - (Cost Summary)  ##,03-Apr-23,25-Mar-24,03-Apr-23 A,25-Mar-24 A,1,0,246,100%,,Completed
 ER7003LT,W160,W160.8002,ETC (DD-PF),,,01-Apr-25,31-Dec-25,190,190,190,0%,0,Not Started
 W230LT,W230,W230.3750,HYB Enhanced Defueling Rate: INA comments on NSRS,,,,25-Apr-25,0,0,0,0%,268,Not Started
 W230LT,W230,W230.3740,HYB - EC Kick Off Meeting & Early Strategy Development,,,,20-Dec-24 A,0,0,0,100%,,Completed
 ER7743LT,W527,W527.1290,ETC 2031,02-Jan-31,31-Dec-31,02-Jan-31,31-Dec-31,253,253,253,0%,0,Not Started
 ER7743LT,W527,W527.1250,ETC 2030,02-Jan-30,31-Dec-30,02-Jan-30,31-Dec-30,253,253,253,0%,0,Not Started
 ER7743LT,W527,W527.1160,ETC 2029,02-Jan-29,31-Dec-29,02-Jan-29,31-Dec-29,253,253,253,0%,0,Not Started
 ER7743LT,W527,W527.1150,ETC 2028,03-Jan-28,29-Dec-28,03-Jan-28,29-Dec-28,253,253,253,0%,0,Not Started
 ER7582LT,W196,W194.1050,HYA PES Group Support - 2030,02-Jan-30,31-Dec-30,02-Jan-30,31-Dec-30,253,253,253,0%,0,Not Started
 ER7582LT,W196,W194.1040,Plant Control Systems & Simulators (PCS&S) Group - 2030,02-Jan-30,31-Dec-30,02-Jan-30,31-Dec-30,253,253,253,0%,0,Not Started
 ER7582LT,W196,W194.1030,HYA PES Group Support - 2029,02-Jan-29,31-Dec-29,02-Jan-29,31-Dec-29,253,253,253,0%,0,Not Started
 ER7582LT,W196,W194.1020,Plant Control Systems & Simulators (PCS&S) Group - 2029,02-Jan-29,31-Dec-29,02-Jan-29,31-Dec-29,253,253,253,0%,0,Not Started
 ER7582LT,W196,W194.1010,HYA PES Group Support - 2028,03-Jan-28,29-Dec-28,03-Jan-28,29-Dec-28,253,253,253,0%,0,Not Started
 ER7582LT,W196,W194.1000,Plant Control Systems & Simulators (PCS&S) Group - 2028,03-Jan-28,29-Dec-28,03-Jan-28*,29-Dec-28,253,253,253,0%,0,Not Started
 ER7582LT,W196,W196.2350,ETC 2030,02-Jan-30,31-Dec-30,02-Jan-30,31-Dec-30,253,253,253,0%,0,Not Started
 ER7582LT,W196,W196.2120,ETC 2029,02-Jan-29,31-Dec-29,02-Jan-29,31-Dec-29,253,253,253,0%,0,Not Started
 ER7582LT,W196,W196.2110,ETC 2028,03-Jan-28,29-Dec-28,03-Jan-28,29-Dec-28,253,253,253,0%,0,Not Started
 ER7582LT,W196,W196.2100,ETC 2027,04-Jan-27,31-Dec-27,04-Jan-27,31-Dec-27,255,255,255,0%,0,Not Started
 ER7582LT,W196,W196.2070,ETC 2026,02-Jan-26,31-Dec-26,02-Jan-26,31-Dec-26,254,254,254,0%,0,Not Started
 ER7582LT,W196,W196.2060,ETC 2025,02-Jan-25,31-Dec-25,01-Apr-25,31-Dec-25,190,190,190,0%,0,Not Started
 ER7581LT,W195,W194.1050,Plant Control Systems & Simulators (PCS&S) Group - 2030,02-Jan-30,31-Dec-30,02-Jan-30,31-Dec-30,253,253,253,0%,0,Not Started
 ER7581LT,W195,W194.1040,HRA PES Group Support - 2030,02-Jan-30,31-Dec-30,02-Jan-30,31-Dec-30,253,253,253,0%,0,Not Started
 ER7581LT,W195,W194.1030,Plant Control Systems & Simulators (PCS&S) Group - 2029,02-Jan-29,31-Dec-29,02-Jan-29*,31-Dec-29,253,253,253,0%,0,Not Started
 ER7581LT,W195,W194.1020,HRA PES Group Support - 2029,02-Jan-29,31-Dec-29,02-Jan-29*,31-Dec-29,253,253,253,0%,253,Not Started
 ER7581LT,W195,W194.1010,Plant Control Systems & Simulators (PCS&S) Group - 2028,03-Jan-28,29-Dec-28,03-Jan-28,29-Dec-28,253,253,253,0%,506,Not Started
 ER7581LT,W195,W194.1000,HRA PES Group Support - 2028,03-Jan-28,29-Dec-28,03-Jan-28*,29-Dec-28,253,253,253,0%,506,Not Started
 ER7581LT,W195,W195.26110,ETC 2030,02-Jan-30,31-Dec-30,02-Jan-30,31-Dec-30,253,253,253,0%,0,Not Started
 ER7581LT,W195,W195.26100,ETC 2029,02-Jan-29,31-Dec-29,02-Jan-29,31-Dec-29,253,253,253,0%,0,Not Started
 ER7581LT,W195,W195.26090,ETC 2028,03-Jan-28,29-Dec-28,03-Jan-28,29-Dec-28,253,253,253,0%,0,Not Started
 ER7581LT,W195,W195.26080,ETC 2027,04-Jan-27,31-Dec-27,04-Jan-27,31-Dec-27,255,255,255,0%,0,Not Started
 ER7581LT,W195,W195.26070,ETC 2026,02-Jan-26,31-Dec-26,02-Jan-26,31-Dec-26,254,254,254,0%,0,Not Started
 ER7581LT,W195,W195.26060,ETC 2025,02-Jan-25,31-Dec-25,01-Apr-25,31-Dec-25,190,190,190,0%,0,Not Started
 ER7580LT,W194,W194.25810,Plant Control Systems & Simulators (PCS&S) Group - 2027,04-Jan-27,04-Jan-27,04-Jan-27,31-Dec-27,255,255,255,0%,0,Not Started
 ER7580LT,W194,W194.25800,HPB PES Group Support - 2027,04-Jan-27,31-Dec-27,04-Jan-27,31-Dec-27,255,255,255,0%,0,Not Started
 ER7580LT,W194,W194.25790,Project Support - 2027,04-Jan-27,31-Dec-27,04-Jan-27*,31-Dec-27,255,255,255,0%,0,Not Started
 ER7580LT,W194,W194.25780,Plant Control Systems & Simulators (PCS&S) Group - 2026,02-Jan-26,31-Dec-26,02-Jan-26,31-Dec-26,254,254,254,0%,255,Not Started
 ER7580LT,W194,W194.25770,HPB PES Group Support - 2026,02-Jan-26,31-Dec-26,02-Jan-26,31-Dec-26,254,254,254,0%,255,Not Started
 ER7580LT,W194,W194.25760,ETC 2026,02-Jan-26,04-Jan-27,02-Jan-26,31-Dec-26,254,254,254,0%,255,Not Started
 ER7580LT,W194,W194.25750,ETC 2025,02-Jan-25,31-Dec-25,01-Apr-25,31-Dec-25,190,190,190,0%,255,Not Started
 ER7580LT,W194,W194.25740,HPB 2025 DPCS Decommissioning,,14-Dec-26,,29-Oct-26,0,0,0,0%,299,Not Started
 ER7579LT,W193,W193.25390,HNB 2025 DPCS Decommissioning,,19-Nov-25,,14-Nov-25,0,0,0,0%,31,Not Started
 ER7743LT,W527,W527.27100,Asset Guardian Licences and Support 2031,30-May-31,30-May-31,30-May-31*,30-May-31,1,1,1,0%,150,Not Started
 ER7743LT,W527,W527.27090,Cost Engineer Support 2031,02-Jan-31,31-Dec-31,02-Jan-31,31-Dec-31,253,253,253,0%,0,Not Started
 ER7743LT,W527,W527.27080,Worldgrid Software Modification Support (LAMPS) - Q4 2031,01-Oct-31,31-Dec-31,01-Oct-31,31-Dec-31,64,64,64,0%,0,Not Started
 ER7743LT,W527,W527.27070,Worldgrid Software Modification Support (LAMPS) - Q3 2031,01-Jul-31,30-Sep-31,01-Jul-31,30-Sep-31,65,65,65,0%,64,Not Started
 ER7743LT,W527,W527.27060,Thales POLARIS & AIC Support Contract Q2 2031,28-Mar-31,30-Jun-31,28-Mar-31,30-Jun-31,63,63,63,0%,0,Not Started
 ER7743LT,W527,W527.27050,Thales POLARIS & AIC Support Contract Q3 2031,01-Jul-31,30-Sep-31,01-Jul-31,30-Sep-31,65,65,65,0%,0,Not Started
 ER7743LT,W527,W527.27040,Thales POLARIS & AIC Support Contract Q4 2031,01-Oct-31,31-Dec-31,01-Oct-31,31-Dec-31,64,64,64,0%,0,Not Started
 ER7743LT,W527,W527.27030,Thales POLARIS & AIC Support Contract Q1 2031,02-Jan-31,27-Mar-31,02-Jan-31,27-Mar-31,61,61,61,0%,0,Not Started
 ER7743LT,W527,W527.27020,Worldgrid Long Term Support Contract Q2 2031,28-Mar-31,30-Jun-31,28-Mar-31,30-Jun-31,63,63,63,0%,0,Not Started
 ER7743LT,W527,W527.27010,Worldgrid Long Term Support Contract Q4 2031,01-Oct-31,31-Dec-31,01-Oct-31,31-Dec-31,64,64,64,0%,0,Not Started
 ER7743LT,W527,W527.27000,Worldgrid System Engineering Support (SQEP) Q2 2031,28-Mar-31,30-Jun-31,28-Mar-31*,30-Jun-31,63,63,63,0%,0,Not Started
 ER7743LT,W527,W527.26990,Worldgrid System Engineering Support (SQEP) Q3 2031,01-Jul-31,30-Sep-31,01-Jul-31*,30-Sep-31,65,65,65,0%,0,Not Started
 ER7743LT,W527,W527.26980,Worldgrid Long Term Support Contract Q1 2031,02-Jan-31,27-Mar-31,02-Jan-31,27-Mar-31,61,61,61,0%,0,Not Started
 ER7743LT,W527,W527.26970,Worldgrid Long Term Support Contract Q3 2031,01-Jul-31,30-Sep-31,01-Jul-31,30-Sep-31,65,65,65,0%,0,Not Started
 ER7743LT,W527,W527.26960,Worldgrid Software Modification Support (LAMPS) - Q1 2031,02-Jan-31,27-Mar-31,02-Jan-31,27-Mar-31,61,61,61,0%,0,Not Started
 ER7743LT,W527,W527.26950,Worldgrid Software Modification Support (LAMPS) - Q2 2031,28-Mar-31,30-Jun-31,28-Mar-31,30-Jun-31,63,63,63,0%,0,Not Started
 ER7743LT,W527,W527.26940,Worldgrid System Engineering Support (SQEP) Q1 2031,02-Jan-31,27-Mar-31,02-Jan-31,27-Mar-31,61,61,61,0%,0,Not Started
 ER7743LT,W527,W527.26930,Worldgrid System Engineering Support (SQEP) Q4 2031,01-Oct-31,31-Dec-31,01-Oct-31*,31-Dec-31,64,64,64,0%,0,Not Started
 ER7743LT,W527,W527.26920,Plant Control Systems & Simulators (PCS&S) Group - 2031,02-Jan-31,26-Mar-31,02-Jan-31,31-Dec-31,253,253,253,0%,0,Not Started
 ER7743LT,W527,W527.26910,DNB PES Group Support - 2031,02-Jan-31,31-Dec-31,02-Jan-31,31-Dec-31,253,253,253,0%,0,Not Started
 ER7743LT,W527,W527.26820,Asset Guardian Licences and Support 2030,28-May-30,28-May-30,28-May-30*,28-May-30,1,1,1,0%,405,Not Started
 ER7743LT,W527,W527.26810,Cost Engineer Support 2030,02-Jan-30,31-Dec-30,02-Jan-30,31-Dec-30,253,253,253,0%,0,Not Started
 ER7743LT,W527,W527.26800,Worldgrid Software Modification Support (LAMPS) - Q4 2030,01-Oct-30,31-Dec-30,01-Oct-30,31-Dec-30,64,64,64,0%,253,Not Started
 ER7743LT,W527,W527.26790,Worldgrid Software Modification Support (LAMPS) - Q3 2030,01-Jul-30,30-Sep-30,01-Jul-30,30-Sep-30,65,65,65,0%,253,Not Started
 ER7743LT,W527,W527.26780,Thales POLARIS & AIC Support Contract Q2 2030,28-Mar-30,28-Jun-30,28-Mar-30,28-Jun-30,63,63,63,0%,253,Not Started
 ER7743LT,W527,W527.26770,Thales POLARIS & AIC Support Contract Q3 2030,01-Jul-30,30-Sep-30,01-Jul-30,30-Sep-30,65,65,65,0%,253,Not Started
 ER7743LT,W527,W527.26760,Thales POLARIS & AIC Support Contract Q4 2030,01-Oct-30,31-Dec-30,01-Oct-30,31-Dec-30,64,64,64,0%,253,Not Started
 ER7743LT,W527,W527.26750,Thales POLARIS & AIC Support Contract Q1 2030,02-Jan-30,27-Mar-30,02-Jan-30,27-Mar-30,61,61,61,0%,0,Not Started
 ER7743LT,W527,W527.26740,Worldgrid Long Term Support Contract Q2 2030,28-Mar-30,28-Jun-30,28-Mar-30,28-Jun-30,63,63,63,0%,253,Not Started
 ER7743LT,W527,W527.26730,Worldgrid Long Term Support Contract Q4 2030,01-Oct-30,31-Dec-30,01-Oct-30,31-Dec-30,64,64,64,0%,253,Not Started
 ER7743LT,W527,W527.26720,Worldgrid System Engineering Support (SQEP) Q2 2030,28-Mar-30,28-Jun-30,28-Mar-30*,28-Jun-30,63,63,63,0%,253,Not Started
 ER7743LT,W527,W527.26710,Worldgrid System Engineering Support (SQEP) Q3 2030,01-Jul-30,30-Sep-30,01-Jul-30*,30-Sep-30,65,65,65,0%,253,Not Started
 ER7743LT,W527,W527.26700,Worldgrid Long Term Support Contract Q1 2030,02-Jan-30,27-Mar-30,02-Jan-30,27-Mar-30,61,61,61,0%,0,Not Started
 ER7743LT,W527,W527.26690,Worldgrid Long Term Support Contract Q3 2030,01-Jul-30,30-Sep-30,01-Jul-30,30-Sep-30,65,65,65,0%,253,Not Started
 ER7743LT,W527,W527.26680,Worldgrid Software Modification Support (LAMPS) - Q1 2030,02-Jan-30,27-Mar-30,02-Jan-30,27-Mar-30,61,61,61,0%,0,Not Started
 ER7743LT,W527,W527.26670,Worldgrid Software Modification Support (LAMPS) - Q2 2030,28-Mar-30,28-Jun-30,28-Mar-30,28-Jun-30,63,63,63,0%,253,Not Started
 ER7743LT,W527,W527.26660,Worldgrid System Engineering Support (SQEP) Q1 2030,02-Jan-30,27-Mar-30,02-Jan-30,27-Mar-30,61,61,61,0%,0,Not Started
 ER7743LT,W527,W527.26650,Worldgrid System Engineering Support (SQEP) Q4 2030,01-Oct-30,31-Dec-30,01-Oct-30*,31-Dec-30,64,64,64,0%,253,Not Started
 ER7743LT,W527,W527.26640,Plant Control Systems & Simulators (PCS&S) Group - 2030,02-Jan-30,02-May-30,02-Jan-30,31-Dec-30,253,253,253,0%,0,Not Started
 ER7743LT,W527,W527.26630,DNB PES Group Support - 2030,02-Jan-30,31-Dec-30,02-Jan-30*,31-Dec-30,253,253,253,0%,0,Not Started
 ER7743LT,W527,W527.26540,Asset Guardian Licences and Support 2029,01-May-29,01-May-29,01-May-29*,01-May-29,1,1,1,0%,675,Not Started
 ER7743LT,W527,W527.26530,Cost Engineer Support 2029,02-Jan-29,31-Dec-29,02-Jan-29*,31-Dec-29,253,253,253,0%,506,Not Started
 ER7743LT,W527,W527.26520,Worldgrid Software Modification Support (LAMPS) - Q4 2029,01-Oct-29,31-Dec-29,01-Oct-29,31-Dec-29,64,64,64,0%,506,Not Started
 ER7743LT,W527,W527.26510,Worldgrid Software Modification Support (LAMPS) - Q3 2029,29-Jun-29,28-Sep-29,29-Jun-29,28-Sep-29,65,65,65,0%,506,Not Started
 ER7743LT,W527,W527.26500,Thales POLARIS & AIC Support Contract Q2 2029,28-Mar-29,28-Jun-29,28-Mar-29,28-Jun-29,63,63,63,0%,506,Not Started
 ER7743LT,W527,W527.26490,Thales POLARIS & AIC Support Contract Q3 2029,29-Jun-29,28-Sep-29,29-Jun-29,28-Sep-29,65,65,65,0%,506,Not Started
 ER7743LT,W527,W527.26480,Thales POLARIS & AIC Support Contract Q4 2029,01-Oct-29,31-Dec-29,01-Oct-29,31-Dec-29,64,64,64,0%,506,Not Started
 ER7743LT,W527,W527.26470,Thales POLARIS & AIC Support Contract Q1 2029,02-Jan-29,27-Mar-29,02-Jan-29*,27-Mar-29,61,61,61,0%,506,Not Started
 ER7743LT,W527,W527.26460,Worldgrid Long Term Support Contract Q2 2029,28-Mar-29,28-Jun-29,28-Mar-29,28-Jun-29,63,63,63,0%,506,Not Started
 ER7743LT,W527,W527.26450,Worldgrid Long Term Support Contract Q4 2029,01-Oct-29,31-Dec-29,01-Oct-29,31-Dec-29,64,64,64,0%,506,Not Started
 ER7743LT,W527,W527.26440,Worldgrid System Engineering Support (SQEP) Q2 2029,28-Mar-29,28-Jun-29,28-Mar-29*,28-Jun-29,63,63,63,0%,506,Not Started
 ER7743LT,W527,W527.26430,Worldgrid System Engineering Support (SQEP) Q3 2028,29-Jun-29,28-Sep-29,29-Jun-29*,28-Sep-29,65,65,65,0%,506,Not Started
 ER7743LT,W527,W527.26420,Worldgrid Long Term Support Contract Q1 2029,02-Jan-29,27-Mar-29,02-Jan-29*,27-Mar-29,61,61,61,0%,506,Not Started
 ER7743LT,W527,W527.26410,Worldgrid Long Term Support Contract Q3 2027,29-Jun-29,28-Sep-29,29-Jun-29,28-Sep-29,65,65,65,0%,506,Not Started
 ER7743LT,W527,W527.26400,Plant Control Systems & Simulators (PCS&S) Group - 2028,03-Jan-28,23-Jun-28,03-Jan-28,29-Dec-28,253,253,253,0%,759,Not Started
 ER7743LT,W527,W527.26390,DNB PES Group Support - 2028,03-Jan-28,29-Dec-28,03-Jan-28*,29-Dec-28,253,253,253,0%,759,Not Started
 ER7743LT,W527,W527.26380,Worldgrid Software Modification Support (LAMPS) - Q1 2029,02-Jan-29,27-Mar-29,02-Jan-29*,27-Mar-29,61,61,61,0%,506,Not Started
 ER7743LT,W527,W527.26370,Worldgrid Software Modification Support (LAMPS) - Q2 2029,28-Mar-29,28-Jun-29,28-Mar-29,28-Jun-29,63,63,63,0%,506,Not Started
 ER7743LT,W527,W527.26360,Worldgrid System Engineering Support (SQEP) Q1 2029,02-Jan-29,27-Mar-29,02-Jan-29*,27-Mar-29,61,61,61,0%,506,Not Started
 ER7743LT,W527,W527.26350,Worldgrid System Engineering Support (SQEP) Q4 2029,01-Oct-29,31-Dec-29,01-Oct-29*,31-Dec-29,64,64,64,0%,506,Not Started
 ER7743LT,W527,W527.26200,Asset Guardian Licences and Support 2028,02-May-28,02-May-28,02-May-28*,02-May-28,1,1,1,0%,928,Not Started
 ER7743LT,W527,W527.26190,Cost Engineer Support 2028,03-Jan-28,29-Dec-28,03-Jan-28*,29-Dec-28,253,253,253,0%,759,Not Started
 ER7743LT,W527,W527.26180,Worldgrid Software Modification Support (LAMPS) - Q4 2028,02-Oct-28,04-Jan-29,02-Oct-28,04-Jan-29,66,66,66,0%,756,Not Started
 ER7743LT,W527,W527.26170,Worldgrid Software Modification Support (LAMPS) - Q3 2028,03-Jul-28,02-Oct-28,03-Jul-28,02-Oct-28,65,65,65,0%,821,Not Started
 ER7743LT,W527,W527.26160,Thales POLARIS & AIC Support Contract Q2 2028,03-Apr-28,04-Jul-28,03-Apr-28,04-Jul-28,63,63,63,0%,884,Not Started
 ER7743LT,W527,W527.26150,Thales POLARIS & AIC Support Contract Q3 2028,03-Jul-28,02-Oct-28,03-Jul-28,02-Oct-28,65,65,65,0%,821,Not Started
 ER7743LT,W527,W527.26140,Thales POLARIS & AIC Support Contract Q4 2028,02-Oct-28,04-Jan-29,02-Oct-28,04-Jan-29,66,66,66,0%,756,Not Started
 ER7743LT,W527,W527.26130,Thales POLARIS & AIC Support Contract Q1 2028,03-Jan-28,27-Mar-28,03-Jan-28*,27-Mar-28,61,61,61,0%,951,Not Started
 ER7743LT,W527,W527.26120,Worldgrid Long Term Support Contract Q2 2028,03-Apr-28,04-Jul-28,03-Apr-28,04-Jul-28,63,63,63,0%,884,Not Started
 ER7743LT,W527,W527.26110,Worldgrid Long Term Support Contract Q4 2028,02-Oct-28,04-Jan-29,02-Oct-28,04-Jan-29,66,66,66,0%,756,Not Started
 ER7743LT,W527,W527.26100,Worldgrid System Engineering Support (SQEP) Q2 2028,03-Apr-28,30-Jun-28,03-Apr-28*,30-Jun-28,61,61,61,0%,756,Not Started
 ER7743LT,W527,W527.26090,Worldgrid System Engineering Support (SQEP) Q3 2028,03-Jul-28,29-Sep-28,03-Jul-28*,29-Sep-28,64,64,64,0%,756,Not Started
 ER7743LT,W527,W527.26080,Worldgrid Long Term Support Contract Q1 2028,03-Jan-28,27-Mar-28,03-Jan-28*,27-Mar-28,61,61,61,0%,951,Not Started
 ER7743LT,W527,W527.26070,Worldgrid Long Term Support Contract Q3 2028,03-Jul-28,02-Oct-28,03-Jul-28,02-Oct-28,65,65,65,0%,821,Not Started
 ER7743LT,W527,W527.26060,Plant Control Systems & Simulators (PCS&S) Group - 2029,02-Jan-29,25-Jun-29,02-Jan-29,31-Dec-29,253,253,253,0%,506,Not Started
 ER7743LT,W527,W527.26050,DNB PES Group Support - 2029,02-Jan-29,31-Dec-29,02-Jan-29*,31-Dec-29,253,253,253,0%,506,Not Started
 ER7743LT,W527,W527.26040,Worldgrid Software Modification Support (LAMPS) - Q1 2028,03-Jan-28,27-Mar-28,03-Jan-28*,27-Mar-28,61,61,61,0%,951,Not Started
 ER7743LT,W527,W527.26030,Worldgrid Software Modification Support (LAMPS) - Q2 2028,03-Apr-28,04-Jul-28,03-Apr-28,04-Jul-28,63,63,63,0%,884,Not Started
 ER7743LT,W527,W527.26020,Worldgrid System Engineering Support (SQEP) Q1 2028,03-Jan-28,31-Mar-28,03-Jan-28*,31-Mar-28,65,65,65,0%,756,Not Started
 ER7743LT,W527,W527.26010,Worldgrid System Engineering Support (SQEP) Q4 2028,02-Oct-28,29-Dec-28,02-Oct-28*,29-Dec-28,63,63,63,0%,756,Not Started
 W730LT_UN,W730,W730.3700,Pre-Gate B - Delivery Strategy,07-Mar-25,03-Apr-25,07-Mar-25 A,03-Apr-25,20,3,20,0%,11,In Progress
 W529LT,W529,W529.10220,TOR 2027 S14R2 - Installation R2,,12-May-28,,12-May-28,0,0,0,0%,1176,Not Started
 W529LT,W529,W529.10210,TOR 2027 S14R2 - Installation R2,18-Apr-28,12-May-28,18-Apr-28,12-May-28,18,18,18,0%,1176,Not Started
 W529LT,W529,W529.10200,TOR 2027 S14R2 - Delivery,20-Mar-28,13-Apr-28,20-Mar-28,13-Apr-28,19,19,19,0%,1176,Not Started
 W529LT,W529,W529.10190,TOR 2027 S14R2 - Testing,13-Dec-27,17-Mar-28,13-Dec-27,17-Mar-28,70,70,70,0%,1176,Not Started
 W529LT,W529,W529.10180,TOR 2027 S14R2 - Specification,01-Jul-27,10-Dec-27,01-Jul-27,10-Dec-27,116,116,116,0%,1176,Not Started
 W529LT,W529,W529.10170,TOR 2027 S14R2 - Go / No Go Decision,,30-Jun-27,,30-Jun-27,0,0,0,0%,1176,Not Started
 W529LT,W529,W529.10160,TOR 2027 S14R2 - Software Build Requirement,04-Jan-27,30-Jun-27,04-Jan-27*,30-Jun-27,124,124,124,0%,1176,Not Started
 W529LT,W529,W529.10150,TOR 2026 S14R1 - Installation R1,,16-Jul-27,,16-Jul-27,0,0,0,0%,1387,Not Started
 W529LT,W529,W529.10140,TOR 2025 S13R2 - Installation R2,,27-Feb-26,,27-Feb-26,0,0,0,0%,1736,Not Started
 W529LT,W529,W529.10130,"TGN097 R1 - Draft Report Produced, Internal Review and Issue to EDF",07-Sep-27,20-Sep-27,07-Sep-27,20-Sep-27,10,10,10,0%,1323,Not Started
 W529LT,W529,W529.10120,TGN097 R1 - EDF Review,21-Sep-27,04-Oct-27,21-Sep-27,04-Oct-27,10,10,10,0%,1323,Not Started
 W529LT,W529,W529.10110,TGN097 R1 - Update and Issue Report,11-Oct-27,15-Oct-27,11-Oct-27,15-Oct-27,5,5,5,0%,1323,Not Started
 W529LT,W529,W529.10100,TGN097 R1 - Inspection,31-Aug-27,06-Sep-27,31-Aug-27,06-Sep-27,5,5,5,0%,1323,Not Started
 W529LT,W529,W529.10090,TGN097 R1 - Plan Produced,04-Jan-27,05-Feb-27,04-Jan-27*,05-Feb-27,25,25,25,0%,1323,Not Started
 W529LT,W529,W529.10080,TOR 2027 R1 TGN097 Inspection Complete,,15-Oct-27,,15-Oct-27,0,0,0,0%,1323,Not Started
 W526LT,W526,W526.10640,HYB 2025 S13R7 - Installation R7,,29-Jan-25,,28-Feb-25 A,0,0,0,100%,,Completed
 W526LT,W526,W526.10630,HYB 2027 S14R7 - Installation R7,,30-Jul-27,,30-Jul-27,0,0,0,0%,1377,Not Started
 W526LT,W526,W526.10620,HYB 2026 S13R8 - Installation R8,,27-Jan-27,,27-Jan-27,0,0,0,0%,1505,Not Started
 W526LT,W526,W526.10610,HYB 2027 S14R7 - Installation R7,30-Jul-27,30-Jul-27,30-Jul-27,30-Jul-27,1,1,1,0%,1377,Not Started
 W526LT,W526,W526.10590,HYB 2027 S14R7 - Delivery,26-Apr-27,27-May-27,26-Apr-27,27-May-27,23,23,23,0%,1377,Not Started
 W526LT,W526,W526.10580,HYB 2027 S14R7 - Testing,03-Feb-27,23-Apr-27,03-Feb-27,23-Apr-27,56,56,56,0%,1377,Not Started
 W526LT,W526,W526.10570,HYB 2027 S14R7 - Specification,05-Jan-26,02-Feb-27,05-Jan-26*,02-Feb-27,275,275,275,0%,1377,Not Started
 W526LT,W526,W526.10560,HYB 2026 S13R8 - Installation R8,27-Jan-27,27-Jan-27,27-Jan-27,27-Jan-27,1,1,1,0%,1505,Not Started
 W526LT,W526,W526.10540,HYB 2026 S13R8 - Delivery,29-Oct-26,30-Nov-26,29-Oct-26,30-Nov-26,23,23,23,0%,1505,Not Started
 W526LT,W526,W526.10530,HYB 2026 S13R8 - Testing,01-Jun-26,28-Oct-26,01-Jun-26,28-Oct-26,107,107,107,0%,1505,Not Started
 W526LT,W526,W526.10520,HYB 2026 S13R8 - Specification,28-Apr-25,29-May-26,28-Apr-25*,29-May-26,275,275,275,0%,1505,Not Started
 W526LT,W526,W526.10470,HYB 2027 TGN097 R7 - Report,,21-Apr-27,,21-Apr-27,0,0,0,0%,1447,Not Started
 W526LT,W526,W526.10460,HYB 2026 TGN097 R8 - Report,,20-May-26,,20-May-26,0,0,0,0%,1681,Not Started
 W526LT,W526,W526.10450,HYB 2027 TGN097 R7 - Report,21-Apr-27,21-Apr-27,21-Apr-27,21-Apr-27,1,1,1,0%,1447,Not Started
 W526LT,W526,W526.10440,HYB 2027 TGN097 R7 - Update and Issue Report,14-Apr-27,20-Apr-27,14-Apr-27,20-Apr-27,5,5,5,0%,1447,Not Started
 W526LT,W526,W526.10430,HYB 2027 TGN097 R7 - EDF Review,31-Mar-27,13-Apr-27,31-Mar-27,13-Apr-27,10,10,10,0%,1447,Not Started
 W526LT,W526,W526.10420,"HYB 2027 TGN097 R7 - Draft Report Produced, Internal Review and Issue to EDF",15-Mar-27,30-Mar-27,15-Mar-27,30-Mar-27,10,10,10,0%,1447,Not Started
 W526LT,W526,W526.10410,HYB 2027 TGN097 R7 - Inspection,08-Mar-27,12-Mar-27,08-Mar-27*,12-Mar-27,5,5,5,0%,1447,Not Started
 W526LT,W526,W526.10400,HYB 2027 TGN097 R7 - Plan Produced,05-Feb-27,05-Apr-27,05-Feb-27*,05-Apr-27,40,40,40,0%,1459,Not Started
 W526LT,W526,W526.10390,HYB 2026 TGN097 R8 - Report,20-May-26,20-May-26,20-May-26,20-May-26,1,1,1,0%,1681,Not Started
 W526LT,W526,W526.10380,HYB 2026 TGN097 R8 - Update and Issue Report,13-May-26,19-May-26,13-May-26,19-May-26,5,5,5,0%,1681,Not Started
 W526LT,W526,W526.10370,HYB 2026 TGN097 R8 - EDF Review,28-Apr-26,12-May-26,28-Apr-26,12-May-26,10,10,10,0%,1681,Not Started
 W526LT,W526,W526.10360,"HYB 2026 TGN097 R8 - Draft Report Produced, Internal Review and Issue to EDF",14-Apr-26,27-Apr-26,14-Apr-26,27-Apr-26,10,10,10,0%,1681,Not Started
 W526LT,W526,W526.10350,HYB 2026 TGN097 R8 - Inspection,07-Apr-26,13-Apr-26,07-Apr-26,13-Apr-26,5,5,5,0%,1681,Not Started
 W526LT,W526,W526.10340,HYB 2026 TGN097 R8 - Plan Produced,06-Feb-26,02-Apr-26,06-Feb-26*,02-Apr-26,40,40,40,0%,1681,Not Started
 W526LT,W526,W526.10330,HYB 2027 Issue Complete LSR,,04-Oct-27,,04-Oct-27,0,0,0,0%,1332,Not Started
 W526LT,W526,W526.10320,HYB 2026 Issue Complete LSR,,05-Oct-26,,05-Oct-26,0,0,0,0%,1585,Not Started
 W526LT,W526,W526.10310,HYB 2026 Issue Complete LSR,04-Oct-27,04-Oct-27,04-Oct-27,04-Oct-27,1,1,1,0%,1332,Not Started
 W526LT,W526,W526.10300,HYB 2026 Update LSR,27-Sep-27,01-Oct-27,27-Sep-27,01-Oct-27,5,5,5,0%,1332,Not Started
 W526LT,W526,W526.10290,HYB 2026 EDF Review,13-Sep-27,24-Sep-27,13-Sep-27,24-Sep-27,10,10,10,0%,1332,Not Started
 W526LT,W526,W526.10280,"HYB 2026 LSR Update, Internal Review & Issue to EDF",27-Aug-27,10-Sep-27,27-Aug-27,10-Sep-27,10,10,10,0%,1332,Not Started
 W526LT,W526,W526.10270,HYB 2026 Recommendations Workshop,26-Aug-27,26-Aug-27,26-Aug-27,26-Aug-27,1,1,1,0%,1332,Not Started
 W526LT,W526,W526.10260,HYB 2026 Issue Recommendations,19-Aug-27,19-Aug-27,19-Aug-27,19-Aug-27,1,1,1,0%,1332,Not Started
 W526LT,W526,W526.10250,"HYB 2026 LSR Data Export, Analysis, Draft Report",29-Jul-27,18-Aug-27,29-Jul-27,18-Aug-27,15,15,15,0%,1332,Not Started
 W526LT,W526,W526.10240,HYB 2026 LSR Pre Data Extract,01-Jul-27,07-Jul-27,01-Jul-27*,07-Jul-27,5,5,5,0%,1332,Not Started
 ER7743LT,W527,W527.25950,DNB 2027 Issue Complete LSR,,08-Jun-27,,08-Jun-27,0,0,0,0%,1159,Not Started
 ER7743LT,W527,W527.25940,DNB 2026 Issue Complete LSR,,09-Jun-26,,09-Jun-26,0,0,0,0%,1412,Not Started
 ER7743LT,W527,W527.25930,DNB 2024 Issue Complete LSR,,28-Feb-25,,28-Feb-25 A,0,0,0,100%,,Completed
 ER7743LT,W527,W527.25920,Issue Complete LSR,08-Jun-27,08-Jun-27,08-Jun-27,08-Jun-27,1,1,1,0%,1159,Not Started
 ER7743LT,W527,W527.25910,Update LSR,01-Jun-27,07-Jun-27,01-Jun-27,07-Jun-27,5,5,5,0%,1159,Not Started
 ER7743LT,W527,W527.25900,EDF Review,17-May-27,28-May-27,17-May-27,28-May-27,10,10,10,0%,1159,Not Started
 ER7743LT,W527,W527.25890,"LSR Update, Internal Review & Issue to EDF",30-Apr-27,14-May-27,30-Apr-27,14-May-27,10,10,10,0%,1159,Not Started
 ER7743LT,W527,W527.25880,Recommendations Workshop,29-Apr-27,29-Apr-27,29-Apr-27,29-Apr-27,1,1,1,0%,1159,Not Started
 ER7743LT,W527,W527.25870,Issue Recommendations,23-Apr-27,23-Apr-27,23-Apr-27,23-Apr-27,1,1,1,0%,1159,Not Started
 ER7743LT,W527,W527.25860,"LSR Data Export, Analysis, Draft Report",02-Apr-27,22-Apr-27,02-Apr-27,22-Apr-27,15,15,15,0%,1159,Not Started
 ER7743LT,W527,W527.25850,LSR Pre Data Extract,05-Mar-27,11-Mar-27,05-Mar-27*,11-Mar-27,5,5,5,0%,1159,Not Started
 ER7582LT,W196,W196.25640,HYA 2027 LSR Issued,,09-Apr-27,,09-Apr-27,0,0,0,0%,946,Not Started
 ER7582LT,W196,W196.25630,HYA 2026 LSR Issued,,07-Apr-26,,07-Apr-26,0,0,0,0%,1202,Not Started
 ER7582LT,W196,W196.6240,HYA 2025 LSR Issued,,24-Mar-25,,16-Apr-25,0,0,0,0%,1446,Not Started
 ER7582LT,W196,W196.25620,Issue LSR,09-Apr-27,09-Apr-27,09-Apr-27,09-Apr-27,1,1,1,0%,946,Not Started
 ER7582LT,W196,W196.25610,Update LSR,02-Apr-27,08-Apr-27,02-Apr-27,08-Apr-27,5,5,5,0%,946,Not Started
 ER7582LT,W196,W196.25600,EDF Review,17-Mar-27,01-Apr-27,17-Mar-27,01-Apr-27,10,10,10,0%,946,Not Started
 ER7582LT,W196,W196.25590,"LSR Update, Internal Review & Issue to EDF",03-Mar-27,16-Mar-27,03-Mar-27,16-Mar-27,10,10,10,0%,946,Not Started
 ER7582LT,W196,W196.25580,Recommendations Workshop,02-Mar-27,02-Mar-27,02-Mar-27,02-Mar-27,1,1,1,0%,946,Not Started
 ER7582LT,W196,W196.25570,Issue Recommendations,22-Feb-27,22-Feb-27,22-Feb-27,22-Feb-27,1,1,1,0%,946,Not Started
 ER7582LT,W196,W196.25560,"LSR Data Export, Analysis, Draft Report",01-Feb-27,19-Feb-27,01-Feb-27,19-Feb-27,15,15,15,0%,946,Not Started
 ER7582LT,W196,W196.25550,LSR Pre Data Extract,04-Jan-27,08-Jan-27,04-Jan-27*,08-Jan-27,5,5,5,0%,946,Not Started
 ER7582LT,W196,W196.25540,Issue LSR,07-Apr-26,07-Apr-26,07-Apr-26,07-Apr-26,1,1,1,0%,1202,Not Started
 ER7582LT,W196,W196.25530,Update LSR,27-Mar-26,02-Apr-26,27-Mar-26,02-Apr-26,5,5,5,0%,1202,Not Started
 ER7582LT,W196,W196.25520,EDF Review,13-Mar-26,26-Mar-26,13-Mar-26,26-Mar-26,10,10,10,0%,1202,Not Started
 ER7582LT,W196,W196.25510,"LSR Update, Internal Review & Issue to EDF",27-Feb-26,12-Mar-26,27-Feb-26,12-Mar-26,10,10,10,0%,1202,Not Started
 ER7582LT,W196,W196.25500,Recommendations Workshop,26-Feb-26,26-Feb-26,26-Feb-26,26-Feb-26,1,1,1,0%,1202,Not Started
 ER7582LT,W196,W196.25490,Issue Recommendations,20-Feb-26,20-Feb-26,20-Feb-26,20-Feb-26,1,1,1,0%,1202,Not Started
 ER7582LT,W196,W196.25480,"LSR Data Export, Analysis, Draft Report",30-Jan-26,19-Feb-26,30-Jan-26,19-Feb-26,15,15,15,0%,1202,Not Started
 ER7582LT,W196,W196.25470,LSR Pre Data Extract,02-Jan-26,08-Jan-26,02-Jan-26*,08-Jan-26,5,5,5,0%,1202,Not Started
 ER7582LT,W196,W195.1130,HYA 2026 TGN097 R2 - Report Issue,,23-Oct-26,,23-Oct-26,0,0,0,0%,1062,Not Started
 ER7582LT,W196,W195.1120,"TGN097 R1 - Draft Report Produced, Internal Review and Issue to EDF",10-Sep-26,23-Sep-26,10-Sep-26,23-Sep-26,10,10,10,0%,1062,Not Started
 ER7582LT,W196,W195.1110,TGN097 R1 - EDF Review,24-Sep-26,07-Oct-26,24-Sep-26,07-Oct-26,10,10,10,0%,1062,Not Started
 ER7582LT,W196,W195.1100,TGN097 R1 - Report Issue,19-Oct-26,23-Oct-26,19-Oct-26,23-Oct-26,5,5,5,0%,1062,Not Started
 ER7582LT,W196,W195.1090,TGN097 R1 - Inspection,03-Sep-26,09-Sep-26,03-Sep-26*,09-Sep-26,5,5,5,0%,1062,Not Started
 ER7582LT,W196,W195.1080,TGN097 R1 - Plan Produced,02-Jan-26,06-Feb-26,02-Jan-26*,06-Feb-26,26,26,26,0%,1242,Not Started
 ER7582LT,W196,W195.1070,HYA 2026 - Installation R2,,30-Sep-27,,30-Sep-27,0,0,0,0%,825,Not Started
 ER7582LT,W196,W195.1060,HYA 2026 - Installation R1,,30-Jun-27,,30-Jun-27,0,0,0,0%,890,Not Started
 ER7582LT,W196,W195.1050,HYA 2026 - Installation R2,10-Sep-27,30-Sep-27,10-Sep-27*,30-Sep-27,15,15,15,0%,825,Not Started
 ER7582LT,W196,W195.1040,HYA 2026 - Specification,04-Nov-26,15-Dec-26,04-Nov-26*,15-Dec-26,30,30,30,0%,1024,Not Started
 ER7582LT,W196,W195.1030,HYA 2026 - Installation R1,10-Jun-27,30-Jun-27,10-Jun-27*,30-Jun-27,15,15,15,0%,890,Not Started
 ER7582LT,W196,W195.1020,HYA 2026 - Consolidation and Testing,08-Oct-26,30-Mar-27,08-Oct-26*,30-Mar-27,120,120,120,0%,954,Not Started
 ER7582LT,W196,W195.1010,HYA 2026 - Go / No Go Decision,29-Jan-27,29-Jan-27,29-Jan-27*,29-Jan-27,1,1,1,0%,994,Not Started
 ER7582LT,W196,W195.1000,HYA 2026 - Data Modifications and Amendments,05-Jan-26,30-Dec-26,05-Jan-26*,30-Dec-26,252,252,252,0%,1015,Not Started
 ER7581LT,W195,W195.26050,Issue Complete LSR,01-Dec-27,01-Dec-27,01-Dec-27,01-Dec-27,1,1,1,0%,781,Not Started
 ER7581LT,W195,W195.26040,Update LSR,24-Nov-27,30-Nov-27,24-Nov-27,30-Nov-27,5,5,5,0%,781,Not Started
 ER7581LT,W195,W195.26030,EDF Review,10-Nov-27,23-Nov-27,10-Nov-27,23-Nov-27,10,10,10,0%,781,Not Started
 ER7581LT,W195,W195.26020,"LSR Update, Internal Review & Issue to EDF",27-Oct-27,27-Oct-27,27-Oct-27,27-Oct-27,1,1,1,0%,781,Not Started
 ER7581LT,W195,W195.26010,Recommendations Workshop,26-Oct-27,26-Oct-27,26-Oct-27,26-Oct-27,1,1,1,0%,781,Not Started
 ER7581LT,W195,W195.26000,Issue Recommendations,18-Oct-27,18-Oct-27,18-Oct-27,18-Oct-27,1,1,1,0%,781,Not Started
 ER7581LT,W195,W195.25990,"LSR Data Export, Analysis, Draft Report",27-Sep-27,15-Oct-27,27-Sep-27,15-Oct-27,15,15,15,0%,781,Not Started
 ER7581LT,W195,W195.25980,LSR Pre Data Extract,31-Aug-27,06-Sep-27,31-Aug-27*,06-Sep-27,5,5,5,0%,781,Not Started
 ER7581LT,W195,W195.25970,HRA 2027 Issue Complete LSR,,01-Dec-27,,01-Dec-27,0,0,0,0%,781,Not Started
 ER7581LT,W195,W195.25960,HRA 2026 Issue Complete LSR,,02-Dec-26,,02-Dec-26,0,0,0,0%,1034,Not Started
 ER7581LT,W195,W195.25950,Issue Complete LSR,02-Dec-26,02-Dec-26,02-Dec-26,02-Dec-26,1,1,1,0%,1034,Not Started
 ER7581LT,W195,W195.25940,Update LSR,25-Nov-26,01-Dec-26,25-Nov-26,01-Dec-26,5,5,5,0%,1034,Not Started
 ER7581LT,W195,W195.25930,EDF Review,11-Nov-26,24-Nov-26,11-Nov-26,24-Nov-26,10,10,10,0%,1034,Not Started
 ER7581LT,W195,W195.25920,"LSR Update, Internal Review & Issue to EDF",28-Oct-26,10-Nov-26,28-Oct-26,10-Nov-26,10,10,10,0%,1034,Not Started
 ER7581LT,W195,W195.25910,Recommendations Workshop,27-Oct-26,27-Oct-26,27-Oct-26,27-Oct-26,1,1,1,0%,1034,Not Started
 ER7581LT,W195,W195.25900,Issue Recommendations,19-Oct-26,19-Oct-26,19-Oct-26,19-Oct-26,1,1,1,0%,1034,Not Started
 ER7581LT,W195,W195.25890,"LSR Data Export, Analysis, Draft Report",28-Sep-26,16-Oct-26,28-Sep-26,16-Oct-26,15,15,15,0%,1034,Not Started
 ER7581LT,W195,W195.25880,LSR Pre Data Extract,28-Aug-26,04-Sep-26,28-Aug-26*,04-Sep-26,5,5,5,0%,1034,Not Started
 ER7581LT,W195,W195.25870,HRA 2027 TGN097 R2 - Report Issue,,16-Aug-27,,16-Aug-27,0,0,0,0%,857,Not Started
 ER7581LT,W195,W195.25850,HRA 2026  - Installation R2,,30-Sep-27,,30-Sep-27,0,0,0,0%,825,Not Started
 ER7581LT,W195,W195.25840,HRA 2026  - Installation R1,,30-Jun-27,,30-Jun-27,0,0,0,0%,890,Not Started
 ER7581LT,W195,W195.25860,HRA 2026 TGN097 R2 - Report Issue,,16-Aug-27,,16-Aug-27,0,0,0,0%,857,Not Started
 ER7581LT,W195,W195.25830,"TGN097 R1 - Draft Report Produced, Internal Review and Issue to EDF",08-Jun-27,21-Jun-27,08-Jun-27,21-Jun-27,10,10,10,0%,857,Not Started
 ER7581LT,W195,W195.25820,TGN097 R1 - EDF Review,22-Jun-27,05-Jul-27,22-Jun-27,05-Jul-27,10,10,10,0%,857,Not Started
 ER7581LT,W195,W195.25810,TGN097 R1 - Report Issue,10-Aug-27,16-Aug-27,10-Aug-27,16-Aug-27,5,5,5,0%,857,Not Started
 ER7581LT,W195,W195.25800,TGN097 R1 - Inspection,01-Jun-27,07-Jun-27,01-Jun-27*,07-Jun-27,5,5,5,0%,857,Not Started
 ER7581LT,W195,W195.25790,TGN097 R1 - Plan Produced,10-Dec-26,05-Feb-27,10-Dec-26*,05-Feb-27,40,40,40,0%,989,Not Started
 ER7581LT,W195,W195.25780,HRA 2026  - Specification,02-Nov-26,15-Dec-26,02-Nov-26*,15-Dec-26,32,32,32,0%,890,Not Started
 ER7581LT,W195,W195.25770,HRA 2026  - Installation R2,13-Sep-27,30-Sep-27,13-Sep-27*,30-Sep-27,14,14,14,0%,825,Not Started
 ER7581LT,W195,W195.25760,HRA 2026  - Installation R1,08-Jun-27,30-Jun-27,08-Jun-27,30-Jun-27,17,17,17,0%,890,Not Started
 ER7581LT,W195,W195.25750,"HRA 2026  - Design, Consolidation and Testing",02-Feb-27,30-Mar-27,02-Feb-27,30-Mar-27,39,39,39,0%,890,Not Started
 ER7581LT,W195,W195.25740,HRA 2026  - Go / No Go Decision,16-Dec-26,29-Jan-27,16-Dec-26*,29-Jan-27,31,31,31,0%,890,Not Started
 ER7581LT,W195,W195.25730,HRA 2026  - Data Modifications and Amendments,05-Jan-26,30-Dec-26,05-Jan-26*,30-Dec-26,252,252,252,0%,1015,Not Started
 ER7580LT,W194,W194.25730,Disposal of Assets,20-Oct-26,14-Dec-26,18-Sep-26,29-Oct-26,30,30,30,0%,299,Not Started
 ER7580LT,W194,W194.25720,Redistribute Assets,08-Sep-26,19-Oct-26,06-Aug-26,17-Sep-26,30,30,30,0%,299,Not Started
 ER7580LT,W194,W194.25710,Decommission Reference Rig,13-Jul-26,07-Sep-26,25-Jun-26,05-Aug-26,30,30,30,0%,299,Not Started
 ER7580LT,W194,W194.25700,Fuel Free Verification (FFV) declared,08-Jul-26,10-Jul-26,24-Feb-26,26-Feb-26,3,3,3,0%,299,Not Started
 ER7580LT,W194,W194.25690,Revised Costs Provided,12-May-26,07-Jul-26,13-May-26,24-Jun-26,30,30,30,0%,299,Not Started
 ER7580LT,W194,W194.25680,Asset Assessment,12-Mar-26,11-May-26,27-Mar-26,12-May-26,30,30,30,0%,299,Not Started
 ER7580LT,W194,W194.25670,HPB SQEP declaration,03-Nov-25,11-Mar-26,27-Feb-26,26-Mar-26,20,20,20,0%,299,Not Started
 ER7580LT,W194,W194.25660,Raise RFS for Decommissioning Rig,27-Nov-24,31-Oct-25,27-Nov-24 A,31-Oct-25,30,149,235,75%,299,In Progress
 ER7579LT,W193,W193.25380,Disposal of Assets,09-Oct-25,19-Nov-25,06-Oct-25,14-Nov-25,30,30,30,0%,31,Not Started
 ER7579LT,W193,W193.25370,Redistribute Assets,28-Aug-25,08-Oct-25,22-Aug-25,03-Oct-25,30,30,30,0%,31,Not Started
 ER7579LT,W193,W193.25360,Decommission Reference Rig,16-Jul-25,27-Aug-25,11-Jul-25,21-Aug-25,30,30,30,0%,31,Not Started
 ER7579LT,W193,W193.25350,Fuel Free Verification (FFV) declared,11-Jul-25,15-Jul-25,14-Apr-25,16-Apr-25,3,3,3,0%,178,Not Started
 ER7579LT,W193,W193.25340,Revised Costs Provided,30-May-25,10-Jul-25,30-May-25,10-Jul-25,30,30,30,0%,31,Not Started
 ER7579LT,W193,W193.25330,Asset Assessment,14-Apr-25,29-May-25,14-Apr-25,29-May-25,30,30,30,0%,31,Not Started
 ER7579LT,W193,W193.25320,HNB SQEP declaration,20-Jan-25,11-Apr-25,20-Jan-25 A,11-Apr-25,60,9,60,75%,31,In Progress
 ER7579LT,W193,W193.25310,Raise RFS for Decommissioning Rig,15-Jul-24,22-Oct-24,15-Jul-24 A,22-Oct-24 A,30,0,71,100%,,Completed
 ER6360LT,W085,W085.1810,Gate D PRC Approval,,02-May-25,,01-Oct-25,0,0,0,0%,5,Not Started
 ER6360LT,W085,W085.A7210,Sunk Cost,02-Jan-18,31-May-24,02-Jan-18 A,31-May-24 A,1,0,1620,100%,,Completed
 ER7743LT,W527,W527.25840,DNB 2025 2.9 - Installation R22,,17-Sep-25,,17-Sep-25,0,0,0,0%,1594,Not Started
 ER7743LT,W527,W527.25830,DNB 2025 2.9 - Installation R21,,06-Aug-25,,06-Aug-25,0,0,0,0%,1623,Not Started
 ER7743LT,W527,W527.25820,DNB 2027 2.11 - Installation R22,,17-Jun-27,,17-Jun-27,0,0,0,0%,1152,Not Started
 ER7743LT,W527,W527.25810,DNB 2027 2.11 - Installation R21,,06-May-27,,06-May-27,0,0,0,0%,1181,Not Started
 ER7743LT,W527,W527.25800,DNB 2026 2.10 - Installation R22,,19-Jun-26,,19-Jun-26,0,0,0,0%,1404,Not Started
 ER7743LT,W527,W527.25790,DNB 2026 2.10 - Installation R21,,08-May-26,,08-May-26,0,0,0,0%,1433,Not Started
 ER7743LT,W527,W527.25780,DNB 2027 2.11 - Installation R1,22-Apr-27,06-May-27,22-Apr-27,06-May-27,10,10,10,0%,1152,Not Started
 ER7743LT,W527,W527.25770,DNB 2027 2.11 - Delivery,23-Nov-26,18-Dec-26,23-Nov-26,18-Dec-26,20,20,20,0%,1152,Not Started
 ER7743LT,W527,W527.25760,DNB 2027 2.11 - Testing,05-Oct-26,13-Nov-26,05-Oct-26,13-Nov-26,30,30,30,0%,1152,Not Started
 ER7743LT,W527,W527.25750,DNB 2027 2.11 - Specification,19-Jan-26,02-Oct-26,19-Jan-26*,02-Oct-26,180,180,180,0%,1152,Not Started
 ER7743LT,W527,W527.25740,DNB 2027 2.11 - Installation R2,04-Jun-27,17-Jun-27,04-Jun-27,17-Jun-27,10,10,10,0%,1152,Not Started
 ER7743LT,W527,W527.25730,DNB 2027 2.11 - Site Acceptance Testing,31-Dec-26,25-Mar-27,31-Dec-26,25-Mar-27,60,60,60,0%,1152,Not Started
 ER7743LT,W527,W527.25720,DNB 2026 2.10 - Installation R1,24-Apr-26,08-May-26,24-Apr-26,08-May-26,10,10,10,0%,1404,Not Started
 ER7743LT,W527,W527.25710,DNB 2026 2.10 - Delivery,24-Nov-25,19-Dec-25,24-Nov-25,19-Dec-25,20,20,20,0%,1404,Not Started
 ER7743LT,W527,W527.25700,DNB 2026 2.10 - Testing,06-Oct-25,14-Nov-25,06-Oct-25,14-Nov-25,30,30,30,0%,1404,Not Started
 ER7743LT,W527,W527.25690,DNB 2026 2.10 - Specification,20-Jan-25,03-Oct-25,20-Jan-25 A,03-Oct-25,180,129,180,30%,1404,In Progress
 ER7743LT,W527,W527.25680,DNB 2026 2.10 - Installation R2,08-Jun-26,19-Jun-26,08-Jun-26,19-Jun-26,10,10,10,0%,1404,Not Started
 ER7743LT,W527,W527.25670,DNB 2026 2.10 - Site Acceptance Testing,05-Jan-26,27-Mar-26,05-Jan-26,27-Mar-26,60,60,60,0%,1404,Not Started
 W230LT,W230,W230.3730,## Technical Development / Project Management - Pre Gate A - (Cost Summary) ## SUNK COSTS,22-Feb-24,28-Jun-24,22-Feb-24 A,28-Jun-24 A,626,0,88,100%,,Completed
 W230LT,W230,W230.3720,## Technical Development / Project Management - Gate  A - D - (Cost Summary) ##,01-Jul-24,12-Aug-24,12-Jul-24 A,20-Dec-24 A,115,0,115,100%,,Completed
 W230LT,W230,W230.3710,Tech Review by EDF SQEP (Continued),01-Jul-24,05-Jul-24,12-Jul-24 A,18-Jul-24 A,5,0,5,100%,,Completed
 W230LT,W230,W230.3700,>>>OUTGOING ENABLER - NSRS's Complete - Feeds B-D Plan (Start Authoring References),,15-Jul-25,,13-Apr-26,0,0,0,0%,25,Not Started
 W230LT,W230,W230.3690,All CAT 2 Safety Cases: Lessons Learned Milestone - Gate D Lessons Learned Report Produced,,17-Jul-25,,15-Apr-26,0,0,0,0%,5,Not Started
 W230LT,W230,W230.3640,HYB Low Decay Heat: Lessons Learned Milestone - NSRS Approval,,04-Jul-25,,07-Nov-25,0,0,0,0%,113,Not Started
 W230LT,W230,W230.3590,HYB Reactor Inspections Relaxations: Lessons Learned Milestone - NSRS Approval,,27-Mar-25,,31-Mar-26,0,0,0,0%,32,Not Started
 W230LT,W230,W230.3580,HYB Low Decay Heat: Risk Milestone - NSRS Production Complete (Risk Ref 38976),,29-May-25,,02-Oct-25,0,0,0,0%,5,Not Started
 W230LT,W230,W230.3570,HYB Reactor Inspections Relaxations: Risk Milestone - NSRS Production Complete (Risk Ref 38976),,19-Feb-25,,23-Feb-26,0,0,0,0%,5,Not Started
 W230LT,W230,W230.3560,HYB Low Decay Heat: Discovery Milestone - NSRS Completion - Proceed with Safety Case (HYB),,23-Jun-25,,27-Oct-25,0,0,0,0%,140,Not Started
 W230LT,W230,W230.3550,HYB Reactor Inspections Relaxations - NSRS Completion - Proceed with Safety Case (HYB),,14-Mar-25,,18-Mar-26,0,0,0,0%,41,Not Started
 W230LT,W230,W230.3540,HYB Low Decay Heat: Optioneering Complete (Outline Safety Case / ALARP Strategy),,15-Jul-25,,18-Nov-25,0,0,0,0%,64,Not Started
 W230LT,W230,W230.3510,HYB Low Decay Heat: Station Agree NSRS,,23-Jun-25,,27-Oct-25,0,0,0,0%,140,Not Started
 W230LT,W230,W230.3460,HYB Reactor Inspections Relaxations: Optioneering Complete (Outline Safety Case / ALARP Strategy),,07-Apr-25,,13-Apr-26,0,0,0,0%,5,Not Started
 W230LT,W230,W230.3430,HYB Reactor Inspections Relaxations: Station Agree NSRS,,14-Mar-25,,18-Mar-26,0,0,0,0%,41,Not Started
 W230LT,W230,W230.3380,HYB Reactor Inspections Relaxations: Lessons Learned Activity - NSRS Approval,02-Jul-25,04-Jul-25,27-Mar-26,31-Mar-26,3,3,3,0%,32,Not Started
 W230LT,W230,W230.3330,HYB Reactor Inspections Relaxations: Risk Ref 38976 TBC - NSRS Production,22-May-25,29-May-25,17-Feb-26,23-Feb-26,5,5,5,0%,5,Not Started
 W230LT,W230,W230.3130,HYB Reactor Inspections Relaxations: Outline Safety Case / ALARP Strategy,02-Jul-25,15-Jul-25,27-Mar-26,13-Apr-26,10,10,10,0%,5,Not Started
 W230LT,W230,W230.3120,HYB Reactor Inspections Relaxations: DA (Peer) Comments on NSRS,17-Apr-25,02-May-25,16-Jan-26,29-Jan-26,10,10,10,0%,5,Not Started
 W230LT,W230,W230.3110,HYB Reactor Inspections Relaxations: Send NSRS to ONR to Determine Level of Review Required (Acknowledgement or Agreemen,01-Jul-25,01-Jul-25,26-Mar-26,26-Mar-26,1,1,1,0%,5,Not Started
 W230LT,W230,W230.3100,HYB Reactor Inspections Relaxations: Hold Case Conference / Optioneering Strategy Workshop as Appropriate,10-Apr-25,16-Apr-25,09-Jan-26,15-Jan-26,5,5,5,0%,5,Not Started
 W230LT,W230,W230.3090,HYB Reactor Inspections Relaxations: Mod Requested and EC Request Raised and Screened,11-Mar-25,26-Mar-25,05-Dec-25,22-Dec-25,12,12,12,0%,5,Not Started
 W230LT,W230,W230.3080,HYB Reactor Inspections Relaxations: Strategy Development & Produce MF EC NNNNN & Obtain Approval,21-Feb-25,10-Mar-25,19-Nov-25,04-Dec-25,12,12,12,0%,5,Not Started
 W230LT,W230,W230.3070,HYB Reactor Inspections Relaxations: Circulate NSRS for Relevant Stakeholders (A-B Part),24-Jun-25,30-Jun-25,19-Mar-26,25-Mar-26,5,5,5,0%,5,Not Started
 W230LT,W230,W230.3060,HYB Reactor Inspections Relaxations: Update NSRS to address comments,21-May-25,21-May-25,16-Feb-26,16-Feb-26,1,1,1,0%,5,Not Started
 W230LT,W230,W230.3050,HYB Reactor Inspections Relaxations: Register EC and identify Milestones in AMS  EC NNNNNN,20-May-25,20-May-25,13-Feb-26,13-Feb-26,1,1,1,0%,5,Not Started
 W230LT,W230,W230.3040,HYB Reactor Inspections Relaxations: Produce draft NSRS (using BARRIER MODEL),27-Mar-25,09-Apr-25,23-Dec-25,08-Jan-26,10,10,10,0%,5,Not Started
 W230LT,W230,W230.3030,HYB Reactor Inspections Relaxations: Station comments on NSRS,17-Apr-25,02-May-25,16-Jan-26,29-Jan-26,10,10,10,0%,5,Not Started
 W230LT,W230,W230.3020,HYB Reactor Inspections Relaxations: Issue final NSRS,30-May-25,30-May-25,24-Feb-26,24-Feb-26,1,1,1,0%,5,Not Started
 W230LT,W230,W230.3010,HYB Reactor Inspections Relaxations: Station agree NSRS,10-Jun-25,23-Jun-25,05-Mar-26,18-Mar-26,10,10,10,0%,5,Not Started
 W230LT,W230,W230.3000,HYB Reactor Inspections Relaxations: DA & INA agree NSRS (for authorised designers-NSRS must be reviewed by DA),03-Jun-25,23-Jun-25,26-Feb-26,18-Mar-26,15,15,15,0%,5,Not Started
 W230LT,W230,W230.2990,HYB Reactor Inspections Relaxations: INA comments on NSRS,06-May-25,19-May-25,30-Jan-26,12-Feb-26,10,10,10,0%,5,Not Started
 W230LT,W230,W230.2950,## HYB Reactor Inspections Relaxations: A - D Phase Funding - (Cost Summary) ##,21-Feb-25,15-Jul-25,19-Nov-25,13-Apr-26,99,99,99,0%,25,Not Started
 W230LT,W230,W230.2930,HYB Low Decay Heat: Lessons Learned Activity - NSRS Approval,25-Mar-25,27-Mar-25,05-Nov-25,07-Nov-25,3,3,3,0%,113,Not Started
 W230LT,W230,W230.2880,HYB Low Decay Heat: Risk Ref 38976 TBC - NSRS Production,13-Feb-25,19-Feb-25,26-Sep-25,02-Oct-25,5,5,5,0%,5,Not Started
 W230LT,W230,W230.2680,HYB Low Decay Heat: Outline Safety Case / ALARP Strategy,25-Mar-25,07-Apr-25,05-Nov-25,18-Nov-25,10,10,10,0%,5,Not Started
 W230LT,W230,W230.2670,HYB Low Decay Heat: DA (Peer) Comments on NSRS,14-Jan-25,27-Jan-25,27-Aug-25,09-Sep-25,10,10,10,0%,5,Not Started
 W230LT,W230,W230.2660,HYB Low Decay Heat: Send NSRS to ONR to Determine Level of Review Required (Acknowledgement or Agreemen,24-Mar-25,24-Mar-25,04-Nov-25,04-Nov-25,1,1,1,0%,5,Not Started
 W230LT,W230,W230.2650,HYB Low Decay Heat: Hold Case Conference / Optioneering Strategy Workshop as Appropriate,07-Jan-25,13-Jan-25,19-Aug-25,26-Aug-25,5,5,5,0%,5,Not Started
 W230LT,W230,W230.2640,HYB Low Decay Heat: Mod Requested and EC Request Raised and Screened,03-Dec-24,18-Dec-24,18-Jul-25,04-Aug-25,12,12,12,0%,5,Not Started
 W230LT,W230,W230.2630,HYB Low Decay Heat: Strategy Development & Produce MF EC NNNNN & Obtain Approval,15-Nov-24,02-Dec-24,02-Jul-25,17-Jul-25,12,12,12,0%,5,Not Started
 W230LT,W230,W230.2620,HYB Low Decay Heat: Circulate NSRS for Relevant Stakeholders (A-B Part),17-Mar-25,21-Mar-25,28-Oct-25,03-Nov-25,5,5,5,0%,5,Not Started
 W230LT,W230,W230.2610,HYB Low Decay Heat: Update NSRS to address comments,12-Feb-25,12-Feb-25,25-Sep-25,25-Sep-25,1,1,1,0%,5,Not Started
 W230LT,W230,W230.2600,HYB Low Decay Heat: Register EC and identify Milestones in AMS  EC NNNNNN,11-Feb-25,11-Feb-25,24-Sep-25,24-Sep-25,1,1,1,0%,5,Not Started
 W230LT,W230,W230.2590,HYB Low Decay Heat: Produce draft NSRS (using BARRIER MODEL),19-Dec-24,06-Jan-25,05-Aug-25,18-Aug-25,10,10,10,0%,5,Not Started
 W230LT,W230,W230.2580,HYB Low Decay Heat: Station comments on NSRS,14-Jan-25,27-Jan-25,27-Aug-25,09-Sep-25,10,10,10,0%,5,Not Started
 W230LT,W230,W230.2570,HYB Low Decay Heat: Issue final NSRS,20-Feb-25,20-Feb-25,03-Oct-25,03-Oct-25,1,1,1,0%,5,Not Started
 W230LT,W230,W230.2560,HYB Low Decay Heat: Station agree NSRS,03-Mar-25,14-Mar-25,14-Oct-25,27-Oct-25,10,10,10,0%,5,Not Started
 W230LT,W230,W230.2550,HYB Low Decay Heat: DA & INA agree NSRS (for authorised designers-NSRS must be reviewed by DA),24-Feb-25,14-Mar-25,07-Oct-25,27-Oct-25,15,15,15,0%,5,Not Started
 W230LT,W230,W230.2540,HYB Low Decay Heat: INA comments on NSRS,28-Jan-25,10-Feb-25,10-Sep-25,23-Sep-25,10,10,10,0%,5,Not Started
 W230LT,W230,W230.2500,## HYB Low Decay Heat: A - D Phase Funding - (Cost Summary) ##,15-Nov-24,07-Apr-25,02-Jul-25,18-Nov-25,99,99,99,0%,106,Not Started
 W230LT,W230,W230.2220,HYB Enhanced Defueling Rate: Lessons Learned Activity - NSRS Approval,17-Dec-24,19-Dec-24,04-Jun-25,06-Jun-25,3,3,3,0%,240,Not Started
 W230LT,W230,W230.1220,HYB Enhanced Defueling Rate: Lessons Learned Milestone - NSRS Approval,,19-Dec-24,,06-Jun-25,0,0,0,0%,240,Not Started
 W230LT,W230,W230.1210,HYB Enhanced Defueling Rate: Risk Milestone - NSRS Production Complete (Risk Ref  38976),,13-Nov-24,,30-Apr-25,0,0,0,0%,5,Not Started
 W230LT,W230,W230.2210,HYB Enhanced Defueling Rate: Risk Ref 38976 TBC - NSRS Production,07-Nov-24,13-Nov-24,30-Apr-25,30-Apr-25,0,0,0,0%,5,Not Started
 W230LT,W230,W230.2200,HYB Enhanced Defueling Rate: Outline Safety Case / ALARP Strategy,17-Dec-24,16-Jan-25,04-Jun-25,01-Jul-25,20,20,20,0%,5,Not Started
 W230LT,W230,W230.1200,HYB Enhanced Defueling Rate: Discovery Milestone - NSRS Completion - Proceed with Safety Case (HYB),,06-Dec-24,,23-May-25,0,0,0,0%,5,Not Started
 W230LT,W230,W230.1100,HYB Enhanced Defueling Rate: Optioneering Complete (Outline Safety Case / ALARP Strategy),,16-Jan-25,,01-Jul-25,0,0,0,0%,64,Not Started
 W230LT,W230,W230.1070,HYB Enhanced Defueling Rate: Station Agree NSRS,,06-Dec-24,,23-May-25,0,0,0,0%,249,Not Started
 W230LT,W230,W230.2190,HYB Enhanced Defueling Rate: DA (Peer) Comments on NSRS,08-Oct-24,21-Oct-24,17-Mar-25 A,01-Apr-25,10,0,11,100%,5,In Progress
 W230LT,W230,W230.2180,HYB Enhanced Defueling Rate: Send NSRS to ONR to Determine Level of Review Required (Acknowledgement or Agreement),16-Dec-24,16-Dec-24,03-Jun-25,03-Jun-25,1,1,1,0%,5,Not Started
 W230LT,W230,W230.2170,HYB Enhanced Defueling Rate: Hold Case Conference / Optioneering Strategy Workshop as Appropriate,01-Oct-24,07-Oct-24,11-Mar-25 A,17-Mar-25 A,5,0,5,100%,,Completed
 W230LT,W230,W230.2070,HYB Enhanced Defueling Rate: Mod Requested and EC Request Raised and Screened,30-Aug-24,16-Sep-24,03-Mar-25 A,10-Mar-25 A,6,0,6,100%,,Completed
 W230LT,W230,W230.1840,Gate D - Hold PRC Meeting,19-Aug-25,19-Aug-25,19-May-26,19-May-26,1,1,1,0%,0,Not Started
 W230LT,W230,W230.1830,Hold Project Closeout and Lessons Learned Meeting,16-Jul-25,16-Jul-25,14-Apr-26,14-Apr-26,1,1,1,0%,5,Not Started
 W230LT,W230,W230.1820,Produce Lessons Learned Report,17-Jul-25,17-Jul-25,15-Apr-26,15-Apr-26,1,1,1,0%,5,Not Started
 W230LT,W230,W230.1810,Produce Project Closeout Report,18-Jul-25,21-Jul-25,16-Apr-26,17-Apr-26,2,2,2,0%,5,Not Started
 W230LT,W230,W230.1800,Gate D PRC Paper Submission,06-Aug-25,06-Aug-25,06-May-26,06-May-26,1,1,1,0%,0,Not Started
 W230LT,W230,W230.1790,Prepare Gate D PRC Paper,22-Jul-25,29-Jul-25,20-Apr-26,27-Apr-26,6,6,6,0%,5,Not Started
 W230LT,W230,W230.2060,HYB Enhanced Defueling Rate: Strategy Development & Produce MF EC NNNNN & Obtain Approval,13-Aug-24,29-Aug-24,03-Feb-25 A,10-Feb-25 A,6,0,6,100%,,Completed
 W230LT,W230,W230.2160,HYB Enhanced Defueling Rate: Circulate NSRS for Relevant Stakeholders (A-B Part),09-Dec-24,13-Dec-24,27-May-25,02-Jun-25,5,5,5,0%,5,Not Started
 W230LT,W230,W230.2150,HYB Enhanced Defueling Rate: Update NSRS to address comments,06-Nov-24,06-Nov-24,29-Apr-25,29-Apr-25,1,1,1,0%,5,Not Started
 W230LT,W230,W230.2140,HYB Enhanced Defueling Rate: Register EC and identify Milestones in AMS  EC NNNNNN,05-Nov-24,05-Nov-24,28-Apr-25,28-Apr-25,1,1,1,0%,5,Not Started
 W230LT,W230,W230.2130,HYB Enhanced Defueling Rate: Produce draft NSRS (using BARRIER MODEL),17-Sep-24,30-Sep-24,11-Feb-25 A,28-Feb-25 A,14,0,14,100%,,Completed
 W230LT,W230,W230.2120,HYB Enhanced Defueling Rate: Station comments on NSRS,08-Oct-24,21-Oct-24,27-Mar-25 A,09-Apr-25,10,7,10,25%,5,In Progress
 W230LT,W230,W230.2110,HYB Enhanced Defueling Rate: Issue final NSRS,14-Nov-24,14-Nov-24,30-Apr-25,30-Apr-25,1,1,1,0%,5,Not Started
 W230LT,W230,W230.2100,HYB Enhanced Defueling Rate: Station agree NSRS,25-Nov-24,06-Dec-24,12-May-25,23-May-25,10,10,10,0%,5,Not Started
 W230LT,W230,W230.2090,HYB Enhanced Defueling Rate: DA & INA agree NSRS (for authorised designers-NSRS must be reviewed by DA),18-Nov-24,06-Dec-24,02-May-25,23-May-25,15,15,15,0%,5,Not Started
 W230LT,W230,W230.2080,HYB Enhanced Defueling Rate: INA comments on NSRS,22-Oct-24,04-Nov-24,10-Apr-25,25-Apr-25,10,10,10,0%,5,Not Started
 W230LT,W230,W230.1900,EC Kick Off Meeting & Early Strategy Development,30-Jul-24,12-Aug-24,20-Dec-24 A,20-Dec-24 A,2,0,1,100%,,Completed
 W230LT,W230,W230.2030,Strategy EAN Complete,,29-Jul-24,,20-Dec-24 A,0,0,0,100%,,Completed
 W230LT,W230,W230.2020,TR Completed and Uploaded to CDMS,23-Jul-24,29-Jul-24,19-Dec-24 A,20-Dec-24 A,2,0,2,100%,,Completed
 W230LT,W230,W230.2010,TSA Issue Final Report,22-Jul-24,22-Jul-24,27-Nov-24 A,18-Dec-24 A,1,0,16,100%,,Completed
 W230LT,W230,W230.2000,TSA Addressess Comments,08-Jul-24,19-Jul-24,19-Jul-24 A,26-Nov-24 A,10,0,92,100%,,Completed
 W230LT,W230,W230.1990,Tech Review by EDF SQEP,18-Jun-24,28-Jun-24,18-Jun-24 A,28-Jun-24 A,9,0,9,100%,,Completed
 W230LT,W230,W230.1980,Issued to EDF for Technical Reviews,,17-Jun-24,,17-Jun-24 A,0,0,0,100%,,Completed
 W230LT,W230,W230.1970,Verified by TSA,04-Jun-24,17-Jun-24,04-Jun-24 A,17-Jun-24 A,10,0,10,100%,,Completed
 W230LT,W230,W230.1960,Draft Report,28-Mar-24,03-Jun-24,28-Mar-24 A,03-Jun-24 A,1,0,44,100%,,Completed
 W230LT,W230,W230.1950,Pre Job Brief,27-Mar-24,27-Mar-24,27-Mar-24 A,27-Mar-24 A,1,0,0,100%,,Completed
 W230LT,W230,W230.1940,H2T Enhanced SC's EC Strategy Opex/L&L,26-Mar-24,26-Mar-24,26-Mar-24 A,26-Mar-24 A,1,0,0,100%,,Completed
 W230LT,W230,W230.1930,Kick-Off/Setting to Work Meeting,13-Mar-24,13-Mar-24,13-Mar-24 A,13-Mar-24 A,1,0,0,100%,,Completed
 W230LT,W230,W230.1920,TOR Enhanced SC's & Cat C MoTA Workshop,29-Feb-24,29-Feb-24,29-Feb-24 A,29-Feb-24 A,1,0,0,100%,,Completed
 W230LT,W230,W230.1910,HYB Enhanced SC's & Cat C MoTA Workshop,22-Feb-24,22-Feb-24,22-Feb-24 A,22-Feb-24 A,1,0,0,100%,,Completed
 W230LT,W230,W230.1890,Key Stakeholders Identified,17-May-24,17-May-24,17-May-24 A,17-May-24 A,1,0,1,100%,,Completed
 W230LT,W230,W230.1880,Appoint CO / AE / RE,16-May-24,16-May-24,16-May-24 A,16-May-24 A,1,0,1,100%,,Completed
 W230LT,W230,W230.1870,Initial Categorisation by Station,,26-Mar-24,,26-Mar-24 A,0,0,0,100%,,Completed
 W230LT,W230,W230.1860,PM / CO and PCE Create Initial Plan of Work,11-Apr-24,15-May-24,11-Apr-24 A,15-May-24 A,0,0,24,100%,,Completed
 W230LT,W230,W230.1340,Gate A PRC Paper Submission,12-Jun-24,12-Jun-24,12-Jun-24 A,12-Jun-24 A,1,0,1,100%,,Completed
 W230LT,W230,W230.1330,PCL Validate & Approve Baseline Package for PRC Submission,10-Jun-24,11-Jun-24,10-Jun-24 A,11-Jun-24 A,2,0,2,100%,,Completed
 W230LT,W230,W230.1320,Prepare Draft Project Definition Document (PDD),04-Jun-24,07-Jun-24,04-Jun-24 A,07-Jun-24 A,4,0,4,100%,,Completed
 W230LT,W230,W230.1390,Hold PRC Meeting,25-Jun-24,25-Jun-24,25-Jun-24 A,25-Jun-24 A,1,0,1,100%,,Completed
 W230LT,W230,W230.1380,"Modify Estimate, Schedule & Risk Log as Required",26-Jun-24,28-Jun-24,26-Jun-24 A,28-Jun-24 A,3,0,3,100%,,Completed
 W230LT,W230,W230.1370,Modify PRC Paper as Required,27-Jun-24,28-Jun-24,27-Jun-24 A,28-Jun-24 A,2,0,2,100%,,Completed
 W230LT,W230,W230.1360,PRC Members Review PRC/IMS2 Documentation,13-Jun-24,24-Jun-24,13-Jun-24 A,24-Jun-24 A,8,0,8,100%,,Completed
 W230LT,W230,W230.1350,Gate A PRC Paper Approval,,25-Jun-24,,25-Jun-24 A,0,0,0,100%,,Completed
 W230LT,W230,W230.1310,Confirm Objectives to be Delivered at Gate A (FEEDS TO SUMMARY SCHEDULE),28-Mar-24,03-Apr-24,28-Mar-24 A,03-Apr-24 A,10,0,3,100%,,Completed
 W230LT,W230,W230.1300,Initial high level scope of programme,04-Apr-24,07-May-24,04-Apr-24 A,07-May-24 A,5,0,23,100%,,Completed
 W230LT,W230,W230.1020,Project Finish,,19-Aug-25,,19-May-26,0,0,0,0%,0,Not Started
 W230LT,W230,W230.1780,## Gate D Submission - (Cost Summary)  ##,16-Jul-25,19-Aug-25,14-Apr-26,19-May-26,25,25,25,0%,0,Not Started
 W230LT,W230,W230.2050,## HYB Enhanced Defueling Rate: A - D Phase Funding - (Cost Summary) ##,13-Aug-24,16-Jan-25,03-Feb-25 A,01-Jul-25,103,62,103,40%,223,In Progress
 W230LT,W230,W230.1010,Project Start,,01-Feb-24,,01-Feb-24 A,0,0,0,100%,,Completed
 W230LT,W230,W230.1270,Summary for HYB Fuel Handling Enhanced Safety Cases W230,15-May-24,19-Aug-25,15-May-24 A,19-May-26,321,285,509,0%,0,In Progress
 W230LT,W230,W230.1850,## Technical Development / Project Management - Pre Gate A - (Cost Summary) ##,22-Feb-24,28-Jun-24,22-Feb-24 A,28-Jun-24 A,626,0,88,100%,,Completed
 W230LT,W230,W230.1000,ETC (DD-PF),01-Jul-24,18-Aug-25,01-Apr-25,18-May-26,284,284,284,0%,1,Not Started
 W230LT,W230,W230.1290,Update Schedule/Estimate from Risk Log & Add Provisions,08-May-24,14-May-24,08-May-24 A,14-May-24 A,5,0,5,100%,,Completed
 W230LT,W230,W230.1280,Draft / Add Data to PRC/IMS2 Paper,15-May-24,03-Jun-24,15-May-24 A,03-Jun-24 A,5,0,13,100%,,Completed
 W230LT,W230,W230.1120,Gate A  Approved,,25-Jun-24,,25-Jun-24 A,0,0,0,100%,,Completed
 W230LT,W230,W230.1110,Gate D Approved,,19-Aug-25,,19-May-26,0,0,0,0%,0,Not Started
 W730LT_UN,W730,W730.3690,All CAT 2 Safety Cases: Lessons Learned Milestone - Gate D Lessons Learned Report Produced,,13-Mar-28,,13-Mar-28,0,0,0,0%,10,Not Started
 W730LT_UN,W730,W730.3680,HYB Reactor Inspections Relaxations: Lessons Learned Milestone -  INSA Review of the Safety Case,,11-Feb-28,,11-Feb-28,0,0,0,0%,31,Not Started
 W730LT_UN,W730,W730.3670,HYB Reactor Inspections Relaxations: Lessons Learned Milestone - Verification of the Safety Case,,31-Dec-27,,31-Dec-27,0,0,0,0%,61,Not Started
 W730LT_UN,W730,W730.3660,HYB Reactor Inspections Relaxations: Lessons Learned Milestone - Authoring of the Safety Case,,28-Jul-27,,28-Jul-27,0,0,0,0%,172,Not Started
 W730LT_UN,W730,W730.3650,HYB Reactor Inspections Relaxations: Lessons Learned Milestone - Technical References,,02-Jun-27,,02-Jun-27,0,0,0,0%,212,Not Started
 W730LT_UN,W730,W730.3630,HYB Low Decay Heat: Lessons Learned Milestone -  INSA Review of the Safety Case,,08-Apr-27,,08-Apr-27,0,0,0,0%,249,Not Started
 W730LT_UN,W730,W730.3620,HYB Low Decay Heat: Lessons Learned Milestone - Verification of the Safety Case,,23-Feb-27,,23-Feb-27,0,0,0,0%,279,Not Started
 W730LT_UN,W730,W730.3610,HYB Low Decay Heat: Lessons Learned Milestone - Authoring of the Safety Case,,17-Sep-26,,17-Sep-26,0,0,0,0%,390,Not Started
 W730LT_UN,W730,W730.3600,HYB Low Decay Heat: Lessons Learned Milestone - Technical References,,22-Jul-26,,22-Jul-26,0,0,0,0%,430,Not Started
 W730LT_UN,W730,W730.3530,HYB Reactor Inspections Relaxations: Verification Complete/ Verified Draft A Issued for INSA  EC NNNNNN,,28-Dec-27,,28-Dec-27,0,0,0,0%,0,Not Started
 W730LT_UN,W730,W730.3520,HYB Reactor Inspections Relaxations: Safety Case Approved - (Station Approval) - EC NNNNNN,,23-Feb-28,,23-Feb-28,0,0,0,0%,0,Not Started
 W730LT_UN,W730,W730.3500,HYB Reactor Inspections Relaxations: INSA Final Approval EC NNNNNN,,08-Feb-28,,08-Feb-28,0,0,0,0%,0,Not Started
 W730LT_UN,W730,W730.3490,HYB Reactor Inspections Relaxations: ONR Agree/Acknowledge Safety Case,,09-Feb-28,,09-Feb-28,0,0,0,0%,0,Not Started
 W730LT_UN,W730,W730.3480,HYB Reactor Inspections Relaxations: Safety Case Paper Authoring Complete EC NNNNNN,,23-Jul-27,,23-Jul-27,0,0,0,0%,0,Not Started
 W730LT_UN,W730,W730.3470,HYB Reactor Inspections Relaxations: All Key Supporting Technical References Completed,,27-May-27,,27-May-27,0,0,0,0%,0,Not Started
 W730LT_UN,W730,W730.3450,HYB Low Decay Heat: Verification Complete/ Verified Draft A Issued for INSA  EC NNNNNN,,18-Feb-27,,18-Feb-27,0,0,0,0%,0,Not Started
 W730LT_UN,W730,W730.3440,HYB Low Decay Heat: Safety Case Approved - (Station Approval) - EC NNNNNN,,20-Apr-27,,20-Apr-27,0,0,0,0%,218,Not Started
 W730LT_UN,W730,W730.3420,HYB Low Decay Heat: INSA Final Approval EC NNNNNN,,05-Apr-27,,05-Apr-27,0,0,0,0%,218,Not Started
 W730LT_UN,W730,W730.3410,HYB Low Decay Heat: ONR Agree/Acknowledge Safety Case,,06-Apr-27,,06-Apr-27,0,0,0,0%,218,Not Started
 W730LT_UN,W730,W730.3400,HYB Low Decay Heat: Safety Case Paper Authoring Complete EC NNNNNN,,14-Sep-26,,14-Sep-26,0,0,0,0%,0,Not Started
 W730LT_UN,W730,W730.3390,HYB Low Decay Heat: All Key Supporting Technical References Completed,,17-Jul-26,,17-Jul-26,0,0,0,0%,0,Not Started
 W730LT_UN,W730,W730.3370,HYB  Reactor Inspections Relaxations: Lessons Learned Activitiy - Following Completeion of Technical References,28-May-27,02-Jun-27,28-May-27,02-Jun-27,3,3,3,0%,212,Not Started
 W730LT_UN,W730,W730.3360,HYB Reactor Inspections Relaxations: Lessons Learned Activitiy - Following INSA Review of the SC,09-Feb-28,11-Feb-28,09-Feb-28,11-Feb-28,3,3,3,0%,31,Not Started
 W730LT_UN,W730,W730.3350,HYB  Reactor Inspections Relaxations: Lessons Learned Activitiy - Following Verification of the SC,29-Dec-27,31-Dec-27,29-Dec-27,31-Dec-27,3,3,3,0%,61,Not Started
 W730LT_UN,W730,W730.3340,HYB  Reactor Inspections Relaxations: Lessons Learned Activitiy - Following Authoring of SC,26-Jul-27,28-Jul-27,26-Jul-27,28-Jul-27,3,3,3,0%,172,Not Started
 W730LT_UN,W730,W730.3320,HYB Reactor Inspections Relaxations: Station Approval,10-Feb-28,23-Feb-28,10-Feb-28,23-Feb-28,10,10,10,0%,0,Not Started
 W730LT_UN,W730,W730.3310,HYB  Reactor Inspections Relaxations: Produce Supporting References Author / Verify / Approve,01-Apr-27,27-May-27,01-Apr-27,27-May-27,40,40,40,0%,0,Not Started
 W730LT_UN,W730,W730.3300,HYB Reactor Inspections R: Send CAT 2 Paper to ONR to Determine Level of Review Required (Acknowledge or Agreement),09-Feb-28,09-Feb-28,09-Feb-28,09-Feb-28,1,1,1,0%,0,Not Started
 W730LT_UN,W730,W730.3290,HYB Reactor Inspections Relaxations: Post Job Debrief,09-Mar-28,09-Mar-28,09-Mar-28,09-Mar-28,1,1,1,0%,0,Not Started
 W730LT_UN,W730,W730.3280,HYB Reactor Inspections Relaxations: Develop Implementation & Closeout,24-Feb-28,08-Mar-28,24-Feb-28,08-Mar-28,10,10,10,0%,0,Not Started
 W730LT_UN,W730,W730.3270,HYB  Reactor Inspections Relaxations: INSA review & iteration of comments (using BARRIER MODEL),29-Dec-27,25-Jan-28,29-Dec-27,25-Jan-28,20,20,20,0%,0,Not Started
 W730LT_UN,W730,W730.3260,HYB  Reactor Inspections Relaxations: Incorporate INSA comments,26-Jan-28,08-Feb-28,26-Jan-28,08-Feb-28,10,10,10,0%,0,Not Started
 W730LT_UN,W730,W730.3250,HYB Reactor Inspections Relaxations: Verification of the case - First Round Comments (using BARRIER MODEL),01-Sep-27,26-Oct-27,01-Sep-27,26-Oct-27,40,40,40,0%,0,Not Started
 W730LT_UN,W730,W730.3240,HYB  Reactor Inspections Relaxations: Incorporate all stakeholder comments,27-Oct-27,30-Nov-27,27-Oct-27,30-Nov-27,25,25,25,0%,0,Not Started
 W730LT_UN,W730,W730.3230,HYB  Reactor Inspections Relaxations: Submit for approval - Categoriser ratifies; RE/CO endorsement,,28-Dec-27,,28-Dec-27,0,0,0,0%,0,Not Started
 W730LT_UN,W730,W730.3220,HYB  Reactor Inspections Relaxations: Issue to Peer CO & Station for comments,,31-Aug-27,,31-Aug-27,0,0,0,0%,0,Not Started
 W730LT_UN,W730,W730.3210,HYB  Reactor Inspections Relaxations: Final Verification,01-Dec-27,28-Dec-27,01-Dec-27,28-Dec-27,20,20,20,0%,0,Not Started
 W730LT_UN,W730,W730.3200,HYB Reactor Inspections Relaxations: Verification Commenced (T-11),,31-Aug-27,,31-Aug-27,0,0,0,0%,0,Not Started
 W730LT_UN,W730,W730.3190,HYB  Reactor Inspections Relaxations: Final Authoring Consolidation Check,26-Jul-27,02-Aug-27,26-Jul-27,02-Aug-27,6,6,6,0%,0,Not Started
 W730LT_UN,W730,W730.3180,HYB  Reactor Inspections Relaxations: Obtain CO Review & Detail Checker,03-Aug-27,31-Aug-27,03-Aug-27,31-Aug-27,20,20,20,0%,0,Not Started
 W730LT_UN,W730,W730.3170,HYB  Reactor Inspections Relaxations: Prepare / Author the Safety Case Proposal,28-May-27,23-Jul-27,28-May-27,23-Jul-27,40,40,40,0%,0,Not Started
 W730LT_UN,W730,W730.3160,HYB  Reactor Inspections Relaxations: Produce verification plan,28-May-27,04-Jun-27,28-May-27,04-Jun-27,5,5,5,0%,61,Not Started
 W730LT_UN,W730,W730.3150,HYB  Reactor Inspections Relaxations: All Supporting References Approved and Issued,,27-May-27,,27-May-27,0,0,0,0%,0,Not Started
 W730LT_UN,W730,W730.3140,HYB  Reactor Inspections Relaxations: Commence Supporting References or Supporting EC's,,31-Mar-27,,31-Mar-27,0,0,0,0%,0,Not Started
 W730LT_UN,W730,W730.2980,HYB Reactor Inspections Relaxations: Station Approved Safety Case,,23-Feb-28,,23-Feb-28,0,0,0,0%,0,Not Started
 W730LT_UN,W730,W730.2960,## HYB  Reactor Inspections Relaxations: B+ - D  Phase Funding - (Cost Summary)  ##,31-Mar-27,09-Mar-28,31-Mar-27,09-Mar-28,243,243,243,0%,12,Not Started
 W730LT_UN,W730,W730.2940,HYB  Reactor Inspections Relaxations: Requirements Capture,26-Jul-27,28-Jul-27,26-Jul-27,28-Jul-27,3,3,3,0%,3,Not Started
 W730LT_UN,W730,W730.2920,HYB Low Decay Heat: Lessons Learned Activitiy - Following Completeion of Technical References,20-Jul-26,22-Jul-26,20-Jul-26,22-Jul-26,3,3,3,0%,430,Not Started
 W730LT_UN,W730,W730.2910,HYB  Low Decay Heat: Lessons Learned Activitiy - Following INSA Review of the SC,06-Apr-27,08-Apr-27,06-Apr-27,08-Apr-27,3,3,3,0%,249,Not Started
 W730LT_UN,W730,W730.2900,HYB  Low Decay Heat: Lessons Learned Activitiy - Following Verification of the SC,19-Feb-27,23-Feb-27,19-Feb-27,23-Feb-27,3,3,3,0%,279,Not Started
 W730LT_UN,W730,W730.2890,HYB  Low Decay Heat: Lessons Learned Activitiy - Following Authoring of SC,15-Sep-26,17-Sep-26,15-Sep-26,17-Sep-26,3,3,3,0%,390,Not Started
 W730LT_UN,W730,W730.2870,HYB  Low Decay Heat: Station Approval,07-Apr-27,20-Apr-27,07-Apr-27,20-Apr-27,10,10,10,0%,218,Not Started
 W730LT_UN,W730,W730.2860,HYB  Low Decay Heat: Produce Supporting References Author / Verify / Approve,22-May-26,17-Jul-26,22-May-26,17-Jul-26,40,40,40,0%,0,Not Started
 W730LT_UN,W730,W730.2850,HYB  Low Decay Heat: Send CAT 2 Paper to ONR to Determine Level of Review Required (Acknowledge or Agree,06-Apr-27,06-Apr-27,06-Apr-27,06-Apr-27,1,1,1,0%,218,Not Started
 W730LT_UN,W730,W730.2840,HYB  Low Decay Heat: Post Job Debrief,06-May-27,06-May-27,06-May-27,06-May-27,1,1,1,0%,218,Not Started
 W730LT_UN,W730,W730.2830,HYB  Low Decay Heat: Develop Implementation & Closeout,21-Apr-27,05-May-27,21-Apr-27,05-May-27,10,10,10,0%,218,Not Started
 W730LT_UN,W730,W730.2820,HYB Low Decay Heat: INSA review & iteration of comments (using BARRIER MODEL),19-Feb-27,18-Mar-27,19-Feb-27,18-Mar-27,20,20,20,0%,218,Not Started
 W730LT_UN,W730,W730.2810,HYB  Low Decay Heat: Incorporate INSA comments,19-Mar-27,05-Apr-27,19-Mar-27,05-Apr-27,10,10,10,0%,218,Not Started
 W730LT_UN,W730,W730.2800,HYB  Low Decay Heat: Verification of the case - First Round Comments (using BARRIER MODEL),21-Oct-26,15-Dec-26,21-Oct-26,15-Dec-26,40,40,40,0%,0,Not Started
 W730LT_UN,W730,W730.2790,HYB  Low Decay Heat: Incorporate all stakeholder comments,16-Dec-26,21-Jan-27,16-Dec-26,21-Jan-27,25,25,25,0%,0,Not Started
 W730LT_UN,W730,W730.2780,HYB  Low Decay Heat: Submit for approval - Categoriser ratifies; RE/CO endorsement,,18-Feb-27,,18-Feb-27,0,0,0,0%,0,Not Started
 W730LT_UN,W730,W730.2770,HYB  Low Decay Heat: Issue to Peer CO & Station for comments,,20-Oct-26,,20-Oct-26,0,0,0,0%,0,Not Started
 W730LT_UN,W730,W730.2760,HYB Low Decay Heat: Final Verification,22-Jan-27,18-Feb-27,22-Jan-27,18-Feb-27,20,20,20,0%,0,Not Started
 W730LT_UN,W730,W730.2750,HYB  Low Decay Heat: Verification Commenced (T-11),,20-Oct-26,,20-Oct-26,0,0,0,0%,0,Not Started
 W730LT_UN,W730,W730.2740,HYB Low Decay Heat: Final Authoring Consolidation Check,15-Sep-26,22-Sep-26,15-Sep-26,22-Sep-26,6,6,6,0%,0,Not Started
 W730LT_UN,W730,W730.2730,HYB  Low Decay Heat: Obtain CO Review & Detail Checker,23-Sep-26,20-Oct-26,23-Sep-26,20-Oct-26,20,20,20,0%,0,Not Started
 W730LT_UN,W730,W730.2720,HYB  Low Decay Heat: Prepare / Author the Safety Case Proposal,20-Jul-26,14-Sep-26,20-Jul-26,14-Sep-26,40,40,40,0%,0,Not Started
 W730LT_UN,W730,W730.2710,HYB  Low Decay Heat: Produce verification plan,20-Jul-26,24-Jul-26,20-Jul-26,24-Jul-26,5,5,5,0%,61,Not Started
 W730LT_UN,W730,W730.2700,HYB  Low Decay Heat: All Supporting References Approved and Issued,,17-Jul-26,,17-Jul-26,0,0,0,0%,0,Not Started
 W730LT_UN,W730,W730.2690,HYB Low Decay Heat: Commence Supporting References or Supporting EC's,,21-May-26,,21-May-26,0,0,0,0%,0,Not Started
 W730LT_UN,W730,W730.2530,HYB Low Decay Heat: Station Approved Safety Case,,20-Apr-27,,20-Apr-27,0,0,0,0%,218,Not Started
 W730LT_UN,W730,W730.2510,## HYB Low Deacy Heat: B+ - B+ Phase Funding - (Cost Summary)  ##,21-May-26,06-May-27,21-May-26,06-May-27,243,243,243,0%,230,Not Started
 W730LT_UN,W730,W730.2490,HYB  Low Decay Heat: Requirements Capture,15-Sep-26,17-Sep-26,15-Sep-26,17-Sep-26,3,3,3,0%,3,Not Started
 W730LT_UN,W730,W730.2270,HYB Enhanced Defueling Rate: Lessons Learned Activitiy - Following Completeion of Technical References,04-Mar-26,06-Mar-26,04-Mar-26,06-Mar-26,3,3,3,0%,524,Not Started
 W730LT_UN,W730,W730.2480,HYB Enhanced Defueling Rate: Lessons Learned Activitiy - Following INSA Review of the SC,21-Aug-26,25-Aug-26,21-Aug-26,25-Aug-26,3,3,3,0%,395,Not Started
 W730LT_UN,W730,W730.2470,HYB Enhanced Defueling Rate: Lessons Learned Activitiy - Following Verification of the SC,17-Aug-26,19-Aug-26,17-Aug-26,19-Aug-26,3,3,3,0%,395,Not Started
 W730LT_UN,W730,W730.2320,HYB Enhanced Defueling Rate: Lessons Learned Activitiy - Following Authoring of SC,10-Feb-26,12-Feb-26,10-Feb-26,12-Feb-26,3,3,3,0%,540,Not Started
 W730LT_UN,W730,W730.1260,HYB Enhanced Defueling Rate: Lessons Learned Milestone -  INSA Review of the Safety Case,,25-Aug-26,,25-Aug-26,0,0,0,0%,406,Not Started
 W730LT_UN,W730,W730.1250,HYB Enhanced Defueling Rate: Lessons Learned Milestone - Verification of the Safety Case,,19-Aug-26,,19-Aug-26,0,0,0,0%,410,Not Started
 W730LT_UN,W730,W730.1240,HYB Enhanced Defueling Rate: Lessons Learned Milestone - Authoring of the Safety Case,,12-Feb-26,,12-Feb-26,0,0,0,0%,540,Not Started
 W730LT_UN,W730,W730.1230,HYB Enhanced Defueling Rate: Lessons Learned Milestone - Technical References,,06-Mar-26,,06-Mar-26,0,0,0,0%,524,Not Started
 W730LT_UN,W730,W730.2460,HYB Enhanced Defueling Rate: Station Approval,26-Aug-26,02-Sep-26,26-Aug-26,02-Sep-26,5,5,5,0%,395,Not Started
 ER6360LT,W085,W085.2720,Post PRC Meeting Actions and Sanction Activities,25-Jun-24,25-Jun-24,25-Jun-24 A,25-Jun-24 A,0,0,0,100%,,Completed
 ER6360LT,W085,W085.2730,Gate B PRC Meeting,,25-Jun-24,,25-Jun-24 A,0,0,0,100%,,Completed
 ER6360LT,W085,W085.2690,Prepare Gate B+ PRC Paper [FEEDS TO SUMMARY SCHEDULE],03-Jun-24,03-Jun-24,03-Jun-24 A,03-Jun-24 A,0,0,0,100%,,Completed
 ER6360LT,W085,W085.2710,Gate B PRC Submission [KMS.SP],,12-Jun-24,,12-Jun-24 A,0,0,0,100%,,Completed
 ER6360LT,W085,W085.2700,Internal L&T Review,03-Jun-24,03-Jun-24,03-Jun-24 A,03-Jun-24 A,3,0,0,100%,,Completed
 W730LT_UN,W730,W730.2450,HYB Enhanced Defueling Rate: Send CAT 2 Paper to ONR to Determine Level of Review Required (Acknowledge or Agreement),20-Aug-26,20-Aug-26,20-Aug-26,20-Aug-26,1,1,1,0%,395,Not Started
 W730LT_UN,W730,W730.2440,HYB Enhanced Defueling Rate: Post Job Debrief,10-Sep-26,10-Sep-26,10-Sep-26,10-Sep-26,1,1,1,0%,395,Not Started
 W730LT_UN,W730,W730.2430,HYB Enhanced Defueling Rate: Develop Implementation & Closeout,03-Sep-26,09-Sep-26,03-Sep-26,09-Sep-26,5,5,5,0%,395,Not Started
 W730LT_UN,W730,W730.2420,HYB Enhanced Defueling Rate: INSA review & iteration of comments (using BARRIER MODEL),20-Jul-26,14-Aug-26,20-Jul-26,14-Aug-26,20,20,20,0%,395,Not Started
 W730LT_UN,W730,W730.2400,HYB Enhanced Defueling Rate: Verification of the case - First Round Comments (using BARRIER MODEL),22-May-26,19-Jun-26,22-May-26,19-Jun-26,20,20,20,0%,395,Not Started
 W730LT_UN,W730,W730.2390,HYB Enhanced Defueling Rate: Incorporate all stakeholder comments,22-Jun-26,26-Jun-26,22-Jun-26,26-Jun-26,5,5,5,0%,395,Not Started
 W730LT_UN,W730,W730.2380,HYB Enhanced Defueling Rate: Submit for approval - Categoriser ratifies; RE/CO endorsement,,17-Jul-26,,17-Jul-26,0,0,0,0%,395,Not Started
 W730LT_UN,W730,W730.2370,HYB Enhanced Defueling Rate: Issue to Peer CO & Station for comments,,16-Mar-26,,16-Mar-26,0,0,0,0%,440,Not Started
 W730LT_UN,W730,W730.2360,HYB Enhanced Defueling Rate: Final Verification,29-Jun-26,03-Jul-26,29-Jun-26,03-Jul-26,5,5,5,0%,395,Not Started
 W730LT_UN,W730,W730.2350,HYB Enhanced Defueling Rate: Verification Commenced (T-11),,16-Mar-26,,16-Mar-26,0,0,0,0%,440,Not Started
 W730LT_UN,W730,W730.2310,HYB Enhanced Defueling Rate: Final Authoring Consolidation Check,10-Feb-26,16-Feb-26,10-Feb-26,16-Feb-26,5,5,5,0%,11,Not Started
 W730LT_UN,W730,W730.2300,HYB Enhanced Defueling Rate: Obtain CO Review & Detail Checker,17-Feb-26,02-Mar-26,17-Feb-26,02-Mar-26,10,10,10,0%,11,Not Started
 W730LT_UN,W730,W730.2290,HYB Enhanced Defueling Rate: Prepare / Author the Safety Case Proposal,16-Oct-25,09-Feb-26,16-Oct-25,09-Feb-26,80,80,80,0%,11,Not Started
 W730LT_UN,W730,W730.2280,HYB Enhanced Defueling Rate: Produce verification plan,16-Oct-25,22-Oct-25,16-Oct-25,22-Oct-25,5,5,5,0%,540,Not Started
 W730LT_UN,W730,W730.2250,HYB Enhanced Defueling Rate: All Supporting References Approved and Issued,,03-Mar-26,,03-Mar-26,0,0,0,0%,524,Not Started
 W730LT_UN,W730,W730.2240,HYB Enhanced Defueling Rate: Commence Supporting References or Supporting EC's,,03-Apr-25,,03-Apr-25,0,0,0,0%,11,Not Started
 W730LT_UN,W730,W730.1140,Gate B+ Approved,,21-May-26,,21-May-26,0,0,0,0%,0,Not Started
 W730LT_UN,W730,W730.1130,Gate B Approved,,27-Mar-25,,27-Mar-25 A,0,0,0,100%,,Completed
 W730LT_UN,W730,W730.1090,HYB Enhanced Defueling Rate: Verification Complete/ Verified Draft A Issued for INSA  EC NNNNNN,,17-Jul-26,,17-Jul-26,0,0,0,0%,395,Not Started
 W730LT_UN,W730,W730.1080,HYB Enhanced Defueling Rate: Safety Case Approved - (Station Approval) - EC NNNNNN,,02-Sep-26,,02-Sep-26,0,0,0,0%,395,Not Started
 W730LT_UN,W730,W730.1065,HYB Enhanced Defueling Rate: INSA Final Approval EC NNNNNN - Enhanced Defueling Rate,,14-Aug-26,,14-Aug-26,0,0,0,0%,398,Not Started
 W730LT_UN,W730,W730.1050,HYB Enhanced Defueling Rate: ONR Agree/Acknowledge Safety Case - Enhanced Defueling Rate,,20-Aug-26,,20-Aug-26,0,0,0,0%,398,Not Started
 W730LT_UN,W730,W730.1040,HYB Enhanced Defueling Rate: Safety Case Paper Authoring Complete EC NNNNNN - Enhanced Defueling Rate,,16-Mar-26,,16-Mar-26,0,0,0,0%,518,Not Started
 W730LT_UN,W730,W730.1030,HYB Enhanced Defueling Rate: All Key Supporting Technical References Completed for Enhanced Defueling Rate,,03-Mar-26,,03-Mar-26,0,0,0,0%,527,Not Started
 W730LT_UN,W730,W730.1840,Gate D - Hold PRC Meeting,27-Mar-28,27-Mar-28,27-Mar-28,27-Mar-28,1,1,1,0%,0,Not Started
 W730LT_UN,W730,W730.1830,Hold Project Closeout and Lessons Learned Meeting,10-Mar-28,10-Mar-28,10-Mar-28,10-Mar-28,1,1,1,0%,0,Not Started
 W730LT_UN,W730,W730.1820,Produce Lessons Learned Report,13-Mar-28,13-Mar-28,13-Mar-28,13-Mar-28,1,1,1,0%,0,Not Started
 W730LT_UN,W730,W730.1810,Produce Project Closeout Report,14-Mar-28,15-Mar-28,14-Mar-28,15-Mar-28,2,2,2,0%,0,Not Started
 W730LT_UN,W730,W730.1800,Gate D PRC Paper Submission,24-Mar-28,24-Mar-28,24-Mar-28,24-Mar-28,1,1,1,0%,0,Not Started
 W730LT_UN,W730,W730.1790,Prepare Gate D PRC Paper,16-Mar-28,23-Mar-28,16-Mar-28,23-Mar-28,6,6,6,0%,0,Not Started
 W730LT_UN,W730,W730.1770,Gate B+ PRC Paper Approval,,21-May-26,,21-May-26,0,0,0,0%,0,Not Started
 W730LT_UN,W730,W730.1720,Case Production Plan Peer Review & Update,16-Apr-26,17-Apr-26,16-Apr-26,17-Apr-26,2,2,2,0%,11,Not Started
 W730LT_UN,W730,W730.1710,Gate B+ PRC Paper Submission,06-May-26,06-May-26,06-May-26,06-May-26,1,1,1,0%,0,Not Started
 W730LT_UN,W730,W730.1700,Define Project Control Structures (WBS/CBS/OBS/PBS),16-Apr-26,17-Apr-26,16-Apr-26,17-Apr-26,2,2,2,0%,11,Not Started
 W730LT_UN,W730,W730.1690,Plan Scope in Primavera (Level 2 B-B+ &  Level 1 Lifecycle),16-Apr-26,17-Apr-26,16-Apr-26,17-Apr-26,2,2,2,0%,11,Not Started
 W730LT_UN,W730,W730.1680,Estimate Scope +/- 10% B-B+ & +/- 30% Lifecycle,16-Apr-26,17-Apr-26,16-Apr-26,17-Apr-26,2,2,2,0%,11,Not Started
 W730LT_UN,W730,W730.1670,Ensure Alignment of Schedule & Estimate,16-Apr-26,17-Apr-26,16-Apr-26,17-Apr-26,2,2,2,0%,11,Not Started
 W730LT_UN,W730,W730.1660,Hold Risk Workshop,02-Apr-26,17-Apr-26,02-Apr-26,17-Apr-26,10,10,10,0%,11,Not Started
 W730LT_UN,W730,W730.1650,Complete Risk Log with Estimates,02-Apr-26,17-Apr-26,02-Apr-26,17-Apr-26,10,10,10,0%,11,Not Started
 W730LT_UN,W730,W730.1640,Update Schedule/Estimate from Risk Log & Add Provisions,02-Apr-26,17-Apr-26,02-Apr-26,17-Apr-26,10,10,10,0%,11,Not Started
 W730LT_UN,W730,W730.1630,Add Data to PRC / IMS2 Paper,02-Apr-26,17-Apr-26,02-Apr-26,17-Apr-26,10,10,10,0%,11,Not Started
 W730LT_UN,W730,W730.1620,PCL Validate & Approve Baseline Package for PRC Submission,02-Apr-26,17-Apr-26,02-Apr-26,17-Apr-26,10,10,10,0%,11,Not Started
 W730LT_UN,W730,W730.1610,Prepare Draft Project Definition Document (PDD),02-Apr-26,17-Apr-26,02-Apr-26,17-Apr-26,10,10,10,0%,11,Not Started
 W730LT_UN,W730,W730.1760,Hold PRC Meeting,19-May-26,19-May-26,19-May-26,19-May-26,1,1,1,0%,0,Not Started
 W730LT_UN,W730,W730.1750,"Modify Estimate, Schedule & Risk Log as Required",20-May-26,21-May-26,20-May-26,21-May-26,2,2,2,0%,0,Not Started
 W730LT_UN,W730,W730.1740,Modify PRC Paper as Required,21-May-26,21-May-26,21-May-26,21-May-26,1,1,1,0%,0,Not Started
 W730LT_UN,W730,W730.1730,PRC Members Review PRC / IMS2 Documentation,07-May-26,08-May-26,07-May-26,08-May-26,2,2,2,0%,6,Not Started
 W730LT_UN,W730,W730.1600,Confirm Objectives to be Delivered at Gate B+,17-Mar-26,30-Mar-26,17-Mar-26,30-Mar-26,10,10,10,0%,11,Not Started
 W730LT_UN,W730,W730.1590,Initial high level scope of programme,31-Mar-26,15-Apr-26,31-Mar-26,15-Apr-26,10,10,10,0%,11,Not Started
 W730LT_UN,W730,W730.1580,Gate B PRC Paper Approval,,27-Mar-25,,27-Mar-25 A,0,0,0,100%,,Completed
 W730LT_UN,W730,W730.1530,Case Production Plan Peer Review & Update,05-Mar-25,06-Mar-25,05-Mar-25 A,06-Mar-25 A,2,0,2,100%,,Completed
 W730LT_UN,W730,W730.1520,Gate B PRC Paper Submission,12-Mar-25,12-Mar-25,12-Mar-25 A,12-Mar-25 A,1,0,1,100%,,Completed
 W730LT_UN,W730,W730.1510,Define Project Control Structures (WBS/CBS/OBS/PBS),21-Feb-25,06-Mar-25,21-Feb-25 A,06-Mar-25 A,10,0,10,100%,,Completed
 W730LT_UN,W730,W730.1500,Plan Scope in Primavera (Level 2 B-B+ &  Level 1 Lifecycle),05-Mar-25,06-Mar-25,05-Mar-25 A,06-Mar-25 A,2,0,2,100%,,Completed
 W730LT_UN,W730,W730.1490,Estimate Scope +/- 10% B-C & +/- 30% Lifecycle,05-Mar-25,06-Mar-25,05-Mar-25 A,06-Mar-25 A,2,0,2,100%,,Completed
 W730LT_UN,W730,W730.1480,Ensure Alignment of Schedule & Estimate,05-Mar-25,06-Mar-25,05-Mar-25 A,06-Mar-25 A,2,0,2,100%,,Completed
 W730LT_UN,W730,W730.1470,Hold Risk Workshop,05-Mar-25,06-Mar-25,05-Mar-25 A,06-Mar-25 A,2,0,2,100%,,Completed
 W730LT_UN,W730,W730.1460,Complete Risk Log with Estimates,05-Mar-25,06-Mar-25,05-Mar-25 A,06-Mar-25 A,2,0,2,100%,,Completed
 W730LT_UN,W730,W730.1450,Update Schedule/Estimate from Risk Log & Add Provisions,21-Feb-25,06-Mar-25,21-Feb-25 A,06-Mar-25 A,10,0,10,100%,,Completed
 W730LT_UN,W730,W730.1440,Add Data to PRC / IMS2 Paper,21-Feb-25,06-Mar-25,21-Feb-25 A,06-Mar-25 A,10,0,10,100%,,Completed
 W730LT_UN,W730,W730.1430,PCL Validate & Approve Baseline Package for PRC Submission,21-Feb-25,06-Mar-25,21-Feb-25 A,06-Mar-25 A,10,0,10,100%,,Completed
 W730LT_UN,W730,W730.1420,Prepare Draft Project Definition Document (PDD),21-Feb-25,06-Mar-25,21-Feb-25 A,06-Mar-25 A,10,0,10,100%,,Completed
 W730LT_UN,W730,W730.1570,Hold PRC Meeting,25-Mar-25,25-Mar-25,25-Mar-25 A,25-Mar-25 A,1,0,1,100%,,Completed
 W730LT_UN,W730,W730.1560,"Modify Estimate, Schedule & Risk Log as Required",26-Mar-25,27-Mar-25,26-Mar-25 A,27-Mar-25 A,2,0,2,100%,,Completed
 W730LT_UN,W730,W730.1550,Modify PRC Paper as Required,26-Mar-25,27-Mar-25,26-Mar-25 A,27-Mar-25 A,2,0,2,100%,,Completed
 W730LT_UN,W730,W730.1540,PRC Members Review PRC / IMS2 Documentation,13-Mar-25,14-Mar-25,13-Mar-25 A,14-Mar-25 A,2,0,2,100%,,Completed
 W730LT_UN,W730,W730.1410,Confirm Objectives to be Delivered at Gate B,03-Feb-25,13-Feb-25,03-Feb-25 A,13-Feb-25 A,9,0,9,100%,,Completed
 W730LT_UN,W730,W730.1400,Initial high level scope of programme,14-Feb-25,20-Feb-25,14-Feb-25 A,20-Feb-25 A,5,0,5,100%,,Completed
 ER7514LT,W161,W161.9580,## Technical Development / Project Management - Project PRE GATE A & GATE A - B - Sunk Costs - (Cost Summary)  ##,03-Apr-23,25-Mar-24,03-Apr-23 A,25-Mar-24 A,1,0,246,100%,,Completed
 ER7514LT,W161,W161.9590,DISCOVERY MILESTONE - HPB PSR3 Extension EC: Decision by TD ND Deliverables Programme Board,,05-Sep-24,,07-Oct-25,0,0,0,0%,-252,Not Started
 ER7514LT,W161,W161.9570,>>>MIRROR OF INCOMING ENABLER (W689) - T&T Programme - HPB IMS System (Point of Transfer) Developed,,24-Feb-25,,03-Mar-25 A,0,0,0,100%,,Completed
 ER7514LT,W161,W161.9560,>>>INCOMING ENABLER (W689) - T&T Programme - HPB IMS System (Point of Transfer) Developed,,24-Feb-25,,03-Mar-25 A,0,0,0,100%,,Completed
 ER7514LT,W161,W161.9550,Risk Milestone - (Risk Ref 38853) - HPB PSR4 Head Doc: Verification Substantially Complete,,03-Jun-25,,31-Oct-25,0,0,0,0%,-58,Not Started
 ER7514LT,W161,W161.9540,HPB PSR4 Head Doc: Verification Schedule Risk - (Risk Ref 38853),12-May-25,03-Jun-25,27-Oct-25,31-Oct-25,5,5,5,0%,-58,Not Started
 ER7514LT,W161,W161.9530,T&T Programme - HPB IMS System (Point of Transfer) Developed,,24-Feb-25,,03-Mar-25 A,0,0,0,100%,,Completed
 ER7514LT,W161,W161.9520,PDSC - Source Term EAN,,23-May-24,,03-Feb-25 A,0,0,0,100%,,Completed
 ER7514LT,W161,W161.9510,PDSC - Fault and Hazard Schedule,,09-Aug-24,,06-May-25,0,0,0,0%,15,Not Started
 ER7514LT,W161,W161.9490,## HPB PSR3 Extension EC: Clearances and Closeout - Cost Summary ##,08-Aug-24,22-May-25,10-Sep-25,21-May-26,176,176,176,0%,157,Not Started
 ER7514LT,W161,W161.9480,## HPB PSR3 Extension EC: INSA & NSC Meeting Readiness - Cost Summary ##,23-Sep-24,04-Dec-24,08-Oct-25,03-Dec-25,40,40,40,0%,157,Not Started
 ER7514LT,W161,W161.9470,## HPB PSR3 Extension EC: Key Stakeholders Engagement - Cost Summary ##,08-Aug-24,20-Sep-24,01-Aug-24 A,24-Sep-25,291,26,291,0%,-243,In Progress
 ER7514LT,W161,W161.9460,## HPB PSR3 Extension EC: Verification - Cost Summary ##,03-Jul-24,07-Aug-24,15-Jul-24 A,09-Sep-25,303,15,293,75%,-232,In Progress
 ER7514LT,W161,W161.9450,## PSR3 Extension EC: Authoring of Paper - Cost Summary ##,27-Mar-24,02-Jul-24,22-Mar-24 A,18-Aug-25,350,11,355,100%,-252,In Progress
 ER7514LT,W161,W161.9440,PSR3 Extension EC - Workshops,02-Jan-24,26-Mar-24,02-Jan-24 A,09-Apr-24 A,1,0,69,100%,,Completed
 ER7514LT,W161,W161.9420,## HPB PSR4 Head Doc: Clearances and Closeout - Cost Summary ##,18-Jun-25,27-Jan-27,03-Mar-25 A,01-Jun-26,314,139,314,0%,151,In Progress
 ER7514LT,W161,W161.9410,## HPB PSR4 Head Doc: INSA & NSC Meeting Readiness - Cost Summary ##,31-Jul-25,15-Oct-25,20-Nov-25,19-Jan-26,40,40,40,0%,119,Not Started
 ER7514LT,W161,W161.9400,## HPB PSR4 Head Doc: Key Stakeholders Engagement - Cost Summary ##,18-Jun-25,30-Jul-25,15-Oct-25,19-Nov-25,26,26,26,0%,-66,Not Started
 ER7514LT,W161,W161.9390,## HPB PSR4 Head Doc: Authoring of Paper - ## Cost Summary ##,04-Oct-24,11-Mar-25,05-Apr-24 A,11-Sep-25,237,108,364,75%,-66,In Progress
 ER7514LT,W161,W161.9370,## HPB PSR4 Head Doc: Verification - Cost Summary ##,12-Mar-25,17-Jun-25,12-Sep-25,07-Nov-25,41,41,41,0%,-58,Not Started
 ER7514LT,W161,W161.9360,## HPB PSR4 Head Doc: Safety Case Development - (B - D) - Cost Summary ##,27-Mar-24,27-Jan-27,26-Feb-24 A,01-Jun-26,567,288,571,32%,151,In Progress
 ER7514LT,W161,W161.9350,## HPB PSR4 Head Doc: Project Management - (B - D) - Cost Summary ##,27-Mar-24,27-Jan-27,26-Feb-24 A,01-Jun-26,567,288,571,32%,151,In Progress
 ER7514LT,W161,W161.9330,DISCOVERY MILESTONE - HPB PSR3 Extension EC: Send NSRS to ONR to determine level of review (If Required),29-Apr-24,29-Apr-24,17-Sep-24 A,17-Sep-24 A,1,0,1,100%,,Completed
 ER7514LT,W161,W161.9320,DISCOVERY MILESTONE - HPB PSR3 Extension EC: NSRS Presented to NSC (If Required),30-Apr-24,30-Apr-24,18-Sep-24 A,18-Sep-24 A,1,0,1,100%,,Completed
 ER7514LT,W161,W161.9310,DISCOVERY MILESTONE - HPB PSR4 Head Doc: Send NSRS to ONR to determine level of review (If Required),07-May-24,07-May-24,18-Sep-24 A,18-Sep-24 A,1,0,1,100%,,Completed
 ER7514LT,W161,W161.9300,DISCOVERY MILESTONE - HPB PSR4 Head Doc: NSRS Presented to NSC (If Required),07-May-24,07-May-24,18-Sep-24 A,18-Sep-24 A,1,0,1,100%,,Completed
 ER7514LT,W161,W161.9290,PDSC - EC PDSC Proposal Ready for Review,,26-Feb-25,,29-Aug-25,0,0,0,0%,-66,Not Started
 ER7514LT,W161,W161.9280,PDSC - Head Document (No Longer Required),,25-Nov-24,,25-Feb-25 A,0,0,0,100%,,Completed
 ER7514LT,W161,W161.9270,PDSC - P&S Technical Report,,11-Sep-24,,12-Aug-25,0,0,0,0%,-54,Not Started
 ER7514LT,W161,W161.9260,PDSC - Radwaste Technical Report,,07-Nov-24,,12-Aug-25,0,0,0,0%,-54,Not Started
 ER7514LT,W161,W161.9210,HPB PSR3 Extension EC: INSA Final Approval EC 374794,,17-Dec-24,,16-Dec-25,0,0,0,0%,177,Not Started
 ER7514LT,W161,W161.9200,HPB PSR4 Head Doc: INSA Final Approval EC 374795,,28-Oct-25,,02-Feb-26,0,0,0,0%,119,Not Started
 ER7514LT,W161,W161.8755,HPB PSR3 Extension EC: Address INA comments on Cat 2 NSRS,16-Apr-24,22-Apr-24,21-May-24 A,07-Jun-24 A,5,0,13,100%,,Completed
 ER7514LT,W161,W161.5585,HPB PSR4 Head Doc: Address INA comments on Cat 2 NSRS,22-Apr-24,26-Apr-24,21-May-24 A,07-Jun-24 A,5,0,13,100%,,Completed
 ER7514LT,W161,W161.9100,HPB PSR3 Extension EC: All Key Supporting References Appoved and Issued (Workshops),,26-Mar-24,,09-Apr-24 A,0,0,0,100%,,Completed
 ER7514LT,W161,W161.9160,HPB PSR3 Extension EC: PSR4 Safety Case - Submitted to ONR,,17-Jan-25,,16-Jan-26,0,0,0,0%,157,Not Started
 ER7514LT,W161,W161.9120,HPB PSR3 Extension EC: Verification Complete/ Verified Draft A Issued for INSA (T-7)  EC 374794,,07-Aug-24,,09-Sep-25,0,0,0,0%,-252,Not Started
 ER7514LT,W161,W161.9140,HPB PSR3 Extension EC: NSC Presentation Date (T) EC 374794,,04-Dec-24,,03-Dec-25,0,0,0,0%,144,Not Started
 ER7514LT,W161,W161.9180,HPB PSR3 Extension EC: Station Approve EC 374794,,22-Apr-25,,21-Apr-26,0,0,0,0%,157,Not Started
 ER7514LT,W161,W161.9130,HPB PSR3 Extension EC: INSA Assessment Substantially Comp (T - 3 weeks before NSC date),,25-Oct-24,,11-Nov-25*,0,0,0,0%,-252,Not Started
 ER7514LT,W161,W161.9090,HPB PSR3 Extension EC: INA approve Cat 2 NSRS EC 374794,,29-Apr-24,,14-Jun-24 A,0,0,0,100%,,Completed
 ER7514LT,W161,W161.9150,HPB PSR3 Extension EC: INSA Final Approval EC 374794,,17-Dec-24,,16-Dec-25,0,0,0,0%,177,Not Started
 ER7514LT,W161,W161.9170,HPB PSR3 Extension EC: ONR Agree/Acknowledge Safety Case EC 374794,,22-Apr-25,,21-Apr-26,0,0,0,0%,157,Not Started
 ER7514LT,W161,W161.9110,HPB PSR3 Extension EC: Safety Case Paper Authoring Complete EC 374794,,24-Jun-24,,04-Jul-24 A,0,0,0,100%,,Completed
 ER7514LT,W161,W161.9080,Produce MF EC 374794 & obtain approval,01-Mar-24,01-Mar-24,01-Mar-24 A,02-Apr-24 A,1,0,20,100%,,Completed
 ER7514LT,W161,W161.9070,Initiate and Register EC and identify Milestones in AMS  EC 374794,01-Mar-24,01-Mar-24,01-Mar-24 A,02-Apr-24 A,1,0,21,100%,,Completed
 ER7514LT,W161,W161.9060,HPB PSR3 Extension EC: Verification Complete/ Verified Draft A Issued for INSA (T-7)  EC 374794,,07-Aug-24,,09-Sep-25,0,0,0,0%,-232,Not Started
 ER7514LT,W161,W161.9050,HPB PSR3 Extension EC: NSC Presentation Date (T) EC 374794,,04-Dec-24,,03-Dec-25,0,0,0,0%,144,Not Started
 ER7514LT,W161,W161.9040,HPB PSR3 Extension EC: INSA  Assessment Substantially Comp (T - 3 weeks before NSC date),,25-Oct-24,,11-Nov-25*,0,0,0,0%,-209,Not Started
 ER7514LT,W161,W161.9030,HPB PSR3 Extension EC: PRWG Comments Addressed,16-Sep-24,20-Sep-24,18-Sep-25,24-Sep-25,5,5,5,0%,-243,Not Started
 ER7514LT,W161,W161.9020,HPB PSR3 Extension EC: PRWG Meeting for Head Doc,13-Sep-24,13-Sep-24,17-Sep-25,17-Sep-25,1,1,1,0%,-243,Not Started
 ER7514LT,W161,W161.9010,HPB PSR3 Extension EC: Issue for PRWG (Allow 5d),06-Sep-24,12-Sep-24,10-Sep-25,16-Sep-25,5,5,5,0%,-243,Not Started
 ER7514LT,W161,W161.9000,HPB PSR3 Extension EC: TR Complete,30-Aug-24,05-Sep-24,01-Aug-24 A,01-Aug-24 A,0,0,0,100%,,Completed
 ER7514LT,W161,W161.8990,HPB PSR3 Extension EC: NRS Comments Addressed,22-Aug-24,29-Aug-24,03-Sep-25,09-Sep-25,5,5,5,0%,-243,Not Started
 ER7514LT,W161,W161.8980,HPB PSR3 Extension EC: NRS Comments,15-Aug-24,21-Aug-24,27-Aug-25,02-Sep-25,5,5,5,0%,-243,Not Started
 ER7514LT,W161,W161.8970,HPB PSR3 Extension EC: Issue Document to NRS for comment,08-Aug-24,14-Aug-24,19-Aug-25,26-Aug-25,5,5,5,0%,-243,Not Started
 ER7514LT,W161,W161.8960,HPB PSR3 Extension EC: PJB Verifier,03-Jul-24,03-Jul-24,15-Jul-24 A,15-Jul-24 A,1,0,0,100%,,Completed
 ER7514LT,W161,W161.8950,HPB PSR3 Extension EC: Upload Submission Proposal to AMS,25-Jun-24,25-Jun-24,05-Jul-24 A,05-Jul-24 A,1,0,1,100%,,Completed
 ER7514LT,W161,W161.8940,HPB PSR3 Extension EC: HPB PSR4 Head Doc: QP Approved,03-Jan-24,03-Jan-24,03-Jan-24 A,03-Jan-24 A,1,0,0,100%,,Completed
 ER7514LT,W161,W161.8930,HPB PSR3 Extension EC: PJB,02-Jan-24,02-Jan-24,02-Jan-24 A,02-Jan-24 A,1,0,0,100%,,Completed
 ER7514LT,W161,W161.8920,HPB PSR3 Extension EC: Prepare Paper for Submission to ONR,18-Dec-24,17-Jan-25,17-Dec-25,16-Jan-26,20,20,20,0%,157,Not Started
 ER7514LT,W161,W161.8790,HPB PSR3 Extension EC: Author Cat 2 NSRS,04-Jan-24,04-Mar-24,04-Jan-24 A,11-Mar-24 A,5,0,47,100%,,Completed
 ER7514LT,W161,W161.8780,HPB PSR3 Extension EC:  Issue Cat 2 NSRS for PRWG review (allow 5d),18-Mar-24,22-Mar-24,22-Mar-24 A,22-Mar-24 A,5,0,0,100%,,Completed
 ER7514LT,W161,W161.8770,HPB PSR3 Extension EC:  Address Verifier Comments on Cat 2 NSRS,11-Mar-24,15-Mar-24,18-Mar-24 A,22-Mar-24 A,5,0,4,100%,,Completed
 ER7514LT,W161,W161.8760,HPB PSR3 Extension EC: Address PRWG Comments on Cat 2 NSRS,26-Mar-24,27-Mar-24,18-Apr-24 A,26-Apr-24 A,2,0,6,100%,,Completed
 ER7514LT,W161,W161.8750,HPB PSR3 Extension EC: INA review Cat 2 NSRS,02-Apr-24,15-Apr-24,07-May-24 A,20-May-24 A,10,0,10,100%,,Completed
 ER7514LT,W161,W161.8740,HPB PSR3 Extension EC: NSRS Presented to NSC (If Required),,29-Apr-24,,18-Sep-24 A,0,0,0,100%,,Completed
 ER7514LT,W161,W161.8730,HPB PSR3 Extension EC: Authoring the Submission Proposal,27-Mar-24,24-Jun-24,22-Mar-24 A,04-Jul-24 A,60,0,71,100%,,Completed
 ER7514LT,W161,W161.8720,HPB PSR3 Extension EC: Address Verifier Comments,01-Aug-24,07-Aug-24,03-Sep-25,09-Sep-25,5,5,5,0%,-252,Not Started
 ER7514LT,W161,W161.8710,HPB PSR3 Extension EC: Produce and Approve Verification Plan,26-Jun-24,02-Jul-24,08-Jul-24 A,12-Jul-24 A,5,0,5,100%,,Completed
 ER7514LT,W161,W161.8700,HPB PSR3 Extension EC: Verification of the Submission (using BARRIER MODEL),04-Jul-24,31-Jul-24,19-Aug-25,02-Sep-25,10,10,10,0%,-252,Not Started
 ER7514LT,W161,W161.8690,HPB PSR3 Extension EC: INSA review & iteration of comments (using BARRIER MODEL),23-Sep-24,18-Oct-24,08-Oct-25,04-Nov-25,20,20,20,0%,-252,Not Started
 ER7514LT,W161,W161.8680,HPB PSR3 Extension EC: PRWG Meeting for NSRS,25-Mar-24,25-Mar-24,18-Apr-24 A,18-Apr-24 A,1,0,0,100%,,Completed
 ER7514LT,W161,W161.8670,HPB PSR3 Extension EC: Submit Cat 2 NSRS to INA,28-Mar-24,28-Mar-24,29-Apr-24 A,03-May-24 A,1,0,5,100%,,Completed
 ER7514LT,W161,W161.8660,HPB PSR3 Extension EC: Submit for approval - Categoriser ratifies; RE/CO endorsement ==> KDM,,07-Aug-24,,09-Sep-25,0,0,0,0%,-252,Not Started
 ER7514LT,W161,W161.8650,HPB PSR3 Extension EC: NSC Consideration & advice to Station Director ==> KDM,04-Dec-24,17-Dec-24,03-Dec-25,16-Dec-25,10,10,10,0%,157,Not Started
 ER7514LT,W161,W161.8640,"HPB PSR3 Extension EC: Issue to CO, INSA & Station for comments",,31-Jul-24,,02-Sep-25,0,0,0,0%,-252,Not Started
 ER7514LT,W161,W161.8630,HPB PSR3 Extension EC: Incorporate INSA comments,21-Oct-24,25-Oct-24,05-Nov-25,11-Nov-25,5,5,5,0%,-252,Not Started
 ER7514LT,W161,W161.8620,HPB PSR3 Extension EC: Prepare Station Director's Brief,08-Aug-24,14-Aug-24,10-Sep-25,16-Sep-25,5,5,5,0%,212,Not Started
 ER7514LT,W161,W161.8610,HPB PSR3 Extension EC:  Verify Cat 2 NSRS,04-Mar-24,08-Mar-24,12-Mar-24 A,15-Mar-24 A,5,0,3,100%,,Completed
 ER7514LT,W161,W161.8600,HPB PSR3 Extension EC: All Supporting References Approved and Issued (Workshops),,26-Mar-24,,09-Apr-24 A,0,0,0,100%,,Completed
 ER7514LT,W161,W161.8590,HPB PSR3 Extension EC: Post Job Debrief (CAT 2),22-May-25,22-May-25,21-May-26,21-May-26,1,1,1,0%,157,Not Started
 ER7514LT,W161,W161.8580,HPB PSR3 Extension EC: Verification Complete,,07-Aug-24,,09-Sep-25,0,0,0,0%,-252,Not Started
 ER7514LT,W161,W161.8570,HPB PSR3 Extension EC: ONR Approval of Safety Case (Letter sent to initiate) EC 374794,20-Jan-25,22-Apr-25,19-Jan-26,21-Apr-26,65,65,65,0%,157,Not Started
 ER7514LT,W161,W161.8560,HPB PSR3 Extension EC: Send NSRS to ONR to determine level of review required Acknowledgement or Agreement - If Required,,29-Apr-24,,18-Sep-24 A,0,0,0,100%,,Completed
 ER7514LT,W161,W161.8540,HPB PSR3 Extension EC: Revise all Affected Drawings and Documents for EC Approval,23-Apr-25,07-May-25,22-Apr-26,06-May-26,10,10,10,0%,157,Not Started
 ER7514LT,W161,W161.8530,HPB PSR3 Extension EC: INA approve Cat 2 NSRS,23-Apr-24,29-Apr-24,10-Jun-24 A,14-Jun-24 A,5,0,5,100%,,Completed
 ER7514LT,W161,W161.8510,HPB PSR3 Extension EC: Develop Implementation & closeout Plan,08-May-25,21-May-25,07-May-26,20-May-26,10,10,10,0%,157,Not Started
 ER7514LT,W161,W161.8500,HPB PSR3 Extension EC: Verification Commenced (T-11),,03-Jul-24,,15-Jul-24 A,0,0,0,100%,,Completed
 ER7514LT,W161,W161.8490,>>>MIRROR OF INCOMING ENABLER (W404) - EC PDSC INSA Final Approval (No Longer Required),,08-Sep-25,,25-Feb-25 A,0,0,0,100%,,Completed
 ER7514LT,W161,W161.8480,>>>INCOMING ENABLER (W404) - EC PDSC INSA Final Approval (No Longer Required),,09-Sep-25,,25-Feb-25 A,0,0,0,100%,,Completed
 ER7514LT,W161,W161.8470,>>>MIRROR OF INCOMING ENABLER (W404) - EC PDSC Proposal Ready for Review,,26-Feb-25,,29-Aug-25*,0,0,0,0%,-66,Not Started
 ER7514LT,W161,W161.8460,>>>INCOMING ENABLER (W404) - EC PDSC Proposal Ready for Review,,27-Feb-25,,29-Aug-25,0,0,0,0%,340,Not Started
 ER7514LT,W161,W161.8450,>>>MIRROR OF INCOMING ENABLER (W404) - Head Document (No Longer Required),,25-Nov-24,,25-Feb-25 A,0,0,0,100%,,Completed
 ER7514LT,W161,W161.8440,>>>INCOMING ENABLER (W404) - Head Document (No Longer Required),,26-Nov-24,,25-Feb-25 A,0,0,0,100%,,Completed
 ER7514LT,W161,W161.8430,>>>MIRROR OF INCOMING ENABLER (W404) - P&S Technical Report,,11-Sep-24,,12-Aug-25*,0,0,0,0%,-54,Not Started
 ER7514LT,W161,W161.8420,>>>INCOMING ENABLER (W404) - P&S Technical Report,,11-Sep-24,,12-Aug-25,0,0,0,0%,352,Not Started
 ER7514LT,W161,W161.8410,>>>MIRROR OF INCOMING ENABLER (W404) - Radwaste Technical Report,,07-Nov-24,,12-Aug-25*,0,0,0,0%,-54,Not Started
 ER7514LT,W161,W161.8400,>>>INCOMING ENABLER (W404) - Radwaste Technical Report,,07-Nov-24,,12-Aug-25,0,0,0,0%,352,Not Started
 ER7514LT,W161,W161.8370,>>>MIRROR OF INCOMING ENABLER (W404) - Source Term EAN,,23-May-24,,03-Feb-25 A,0,0,0,100%,,Completed
 ER7514LT,W161,W161.8360,>>>INCOMING ENABLER (W404) - Source Term EAN,,23-May-24,,03-Feb-25 A,0,0,0,100%,,Completed
 ER7514LT,W161,W161.8350,>>>MIRROR OF INCOMING ENABLER (W404) - Fault and Hazard Schedule,,09-Aug-24,,06-May-25*,0,0,0,0%,15,Not Started
 ER7514LT,W161,W161.8340,>>>INCOMING ENABLER (W404) - Fault and Hazard Schedule,,09-Aug-24,,06-May-25,0,0,0,0%,421,Not Started
 ER7514LT,W161,W161.8310,>>>MIRROR OF INCOMING ENABLER (W404) - EC PDSC Approved (Station Approval) (To be linked),,01-Dec-25,,26-Mar-26*,0,0,0,0%,195,Not Started
 ER7514LT,W161,W161.8300,>>>INCOMING ENABLER (W404) - EC PDSC Approved,,02-Dec-25,,27-Mar-26,0,0,0,0%,193,Not Started
 ER7514LT,W161,W161.8290,HPB PSR4 Head Doc: Verification Complete/ Verified Draft A Issued for INSA (T-7)  EC 374795,,17-Jun-25,,07-Nov-25,0,0,0,0%,-58,Not Started
 ER7514LT,W161,W161.8280,HPB PSR4 Head Doc: NSC Presentation Date (T) EC 374795 <Enter Paper Title Here>,,15-Oct-25,,19-Jan-26*,0,0,0,0%,123,Not Started
 ER7514LT,W161,W161.8270,HPB PSR4 Head Doc: INSA  Assessment Substantially Comp (T - 3 weeks before NSC date),,08-Sep-25,,24-Dec-25*,0,0,0,0%,-66,Not Started
 ER7514LT,W161,W161.8260,HPB PSR4 Head Doc: PRWG Comments Addressed,24-Jul-25,30-Jul-25,13-Nov-25,19-Nov-25,5,5,5,0%,-66,Not Started
 ER7514LT,W161,W161.8250,HPB PSR4 Head Doc: PRWG Meeting for Head Doc,23-Jul-25,23-Jul-25,12-Nov-25,12-Nov-25,1,1,1,0%,-66,Not Started
 ER7514LT,W161,W161.8240,HPB PSR4 Head Doc: Issue for PRWG (Allow 5d),16-Jul-25,22-Jul-25,05-Nov-25,11-Nov-25,5,5,5,0%,-66,Not Started
 ER7514LT,W161,W161.8230,HPB PSR4 Head Doc: TR Complete (No Longer Required),09-Jul-25,15-Jul-25,05-Nov-25,05-Nov-25,0,0,0,0%,-66,Not Started
 ER7514LT,W161,W161.8220,HPB PSR4 Head Doc: NRS Comments Addressed,02-Jul-25,08-Jul-25,29-Oct-25,04-Nov-25,5,5,5,0%,-66,Not Started
 ER7514LT,W161,W161.8210,HPB PSR4 Head Doc: NRS Comments,25-Jun-25,01-Jul-25,22-Oct-25,28-Oct-25,5,5,5,0%,-66,Not Started
 ER7514LT,W161,W161.8200,HPB PSR4 Head Doc: Issue Document to NRS for comment,18-Jun-25,24-Jun-25,15-Oct-25,21-Oct-25,5,5,5,0%,-66,Not Started
 ER7514LT,W161,W161.8190,HPB PSR4 Head Doc: PJB Verifier,12-Mar-25,18-Mar-25,12-Sep-25,16-Sep-25,3,3,3,0%,-66,Not Started
 ER7514LT,W161,W161.8180,HPB PSR Head Doc: Upload Submission Proposal to AMS,26-Feb-25,04-Mar-25,29-Aug-25,04-Sep-25,5,5,5,0%,-66,Not Started
 ER7514LT,W161,W161.8170,HPB PSR4 Head Doc: QP Approved,03-Jan-24,03-Jan-24,03-Jan-24 A,03-Jan-24 A,1,0,0,100%,,Completed
 ER7514LT,W161,W161.8160,HPB PSR4 Head Doc: PJB,02-Jan-24,02-Jan-24,02-Jan-24 A,02-Jan-24 A,1,0,0,100%,,Completed
 ER7514LT,W161,W161.8020,ETC (DD-PF),01-Mar-24,11-Feb-27,01-Apr-25,31-Dec-26,444,444,444,0%,0,Not Started
 ER7514LT,W161,W161.6670,## HPB PSR4 Head Doc: HF GAP Analysis (Mapping Human Factors Requirements) - Cost Summary (CAT 2) ##,19-Oct-23,22-Dec-23,19-Oct-23 A,22-Dec-23 A,1,0,47,100%,,Completed
 ER7514LT,W161,W161.8150,DISCOVERY MILESTONE - TSRS Complete,,22-Dec-23,,22-Dec-23 A,0,0,0,100%,,Completed
 ER7514LT,W161,W161.8140,DISCOVERY MILESTONE - HF GAP Analysis Complete,,22-Dec-23,,22-Dec-23 A,0,0,0,100%,,Completed
 ER7514LT,W161,W161.8130,DISCOVERY MILESTONE - GAP Analysis Complete,,13-Oct-23,,13-Oct-23 A,0,0,0,100%,,Completed
 ER7514LT,W161,W161.8120,HPB PSR4 Head Doc: All Key Supporting References Appoved and Issued,,26-Feb-25,,29-Aug-25,0,0,0,0%,-66,Not Started
 ER7514LT,W161,W161.8110,Summary of HPB PSR4 - W160,03-Apr-23,12-Feb-27,03-Apr-23 A,21-Jul-26,1,329,832,0%,115,In Progress
 ER7514LT,W161,W161.8060,Q4 FY23 Stakeholder Meeting with NRS (Magnox),,05-Dec-23,,05-Dec-23 A,0,0,0,100%,,Completed
 ER7514LT,W161,W161.8050,Q3 FY23 Stakeholder Meeting with Magnox,,22-Sep-23,,22-Sep-23 A,0,0,0,100%,,Completed
 ER7514LT,W161,W161.8010,HPB PSR4 Head Doc: PSR4 Safety Case - Submitted to ONR,,24-Dec-25,,09-Feb-26,0,0,0,0%,227,Not Started
 ER7514LT,W161,W161.7070,Gate A -  PRC Paper Approval (HPB),,27-Jun-23,,27-Jun-23 A,0,0,0,100%,,Completed
 ER7514LT,W161,W161.7080,Gate B -  PRC Paper Approval (HPB),,26-Mar-24,,26-Mar-24 A,0,0,0,100%,,Completed
 ER7514LT,W161,W161.8000,Gate D -  PRC Paper Approval (HPB),,12-Feb-27,,21-Jul-26,0,0,0,0%,115,Not Started
 ER7514LT,W161,W161.7060,HPB PSR4 Head Doc: Prepare Paper for Submission to ONR,29-Oct-25,24-Dec-25,03-Feb-26,09-Feb-26,5,5,5,0%,119,Not Started
 ER7514LT,W161,W161.7020,Gate A-B Procurement Activities,01-Jun-23,27-Jul-23,01-Jun-23 A,27-Jul-23 A,30,0,41,100%,,Completed
 ER7514LT,W161,W161.7010,TSRS,05-Sep-23,22-Dec-23,05-Sep-23 A,22-Dec-23 A,60,0,79,100%,,Completed
 ER7514LT,W161,W161.7000,GAP Analysis,03-Aug-23,13-Oct-23,03-Aug-23 A,13-Oct-23 A,60,0,50,100%,,Completed
 ER7514LT,W161,W161.6980,Gate B PRC Paper Approval,,26-Mar-24,,26-Mar-24 A,0,0,0,100%,,Completed
 ER7514LT,W161,W161.6900,HPB PSR3 Extension EC: Workshops EAN PRWG Endorsed,,26-Mar-24,,26-Jun-24 A,0,0,0,100%,,Completed
 ER7514LT,W161,W161.6870,## Safety Case Development (Gate A - B)  - Cost Summary (CAT 2) ##,01-Jun-23,26-Mar-24,01-Jun-23 A,18-Apr-24 A,228,0,224,100%,,Completed
 ER7514LT,W161,W161.6860,## Project Management (Gate A - B)  - Cost Summary (CAT 2) ##,01-Jun-23,26-Mar-24,01-Jun-23 A,18-Apr-24 A,228,0,224,100%,,Completed
 ER7514LT,W161,W161.6850,## Safety Case Development (Pre Gate A)  - Cost Summary (CAT 2) ##,03-Apr-23,01-Jun-23,03-Apr-23 A,01-Jun-23 A,39,0,39,100%,,Completed
 ER7514LT,W161,W161.6830,## Project Management (Pre Gate A)  - Cost Summary (CAT 2) ##,03-Apr-23,01-Jun-23,03-Apr-23 A,01-Jun-23 A,39,0,39,100%,,Completed
 ER7514LT,W161,W161.6810,## HPB PSR4 Head Doc: Safety Case Development - (A - B) - Cost Summary (CAT 2) ##,01-Jun-23,26-Mar-24,03-Apr-23 A,18-Apr-24 A,227,0,262,100%,,Completed
 ER7514LT,W161,W161.6800,## HPB PSR4 Head Doc: Project Management - (A - B) - Cost Summary (CAT 2) ##,01-Jun-23,26-Mar-24,03-Apr-23 A,18-Apr-24 A,227,0,262,100%,,Completed
 ER7514LT,W161,W161.6700,## HPB PSR4 Head Doc: Human Factors Review (SF12?) - ## Cost Summary (CAT 2) ##,27-Mar-24,31-May-24,26-Feb-24 A,30-Apr-24 A,44,0,44,100%,,Completed
 ER7514LT,W161,W161.6680,## HPB PSR4 Head Doc: TSRS - Cost Summary (CAT 2) ##,05-Sep-23,22-Dec-23,05-Sep-23 A,22-Dec-23 A,50,0,79,100%,,Completed
 ER7514LT,W161,W161.6660,## HPB PSR4 Head Doc: GAP Analysis (Mapping PDSC to PSR4 Requirements) - Cost Summary (CAT 2) ##,03-Aug-23,13-Oct-23,03-Aug-23 A,13-Oct-23 A,85,0,51,100%,,Completed
 ER7514LT,W161,W161.6650,HPB PSR4 Head Doc: Gate A-B Procurement Activities,01-Jun-23,27-Jul-23,01-Jun-23 A,27-Jul-23 A,30,0,40,100%,,Completed
 ER7514LT,W161,W161.6160,Produce MF (as required),03-Apr-23,01-Jun-23,03-Apr-23 A,01-Jun-23 A,5,0,39,100%,,Completed
 ER7514LT,W161,W161.6350,Hold project kick start meeting with Station & key suppliers,02-Aug-23,02-Aug-23,02-Aug-23 A,02-Aug-23 A,1,0,1,100%,,Completed
 ER7514LT,W161,W161.6340,"Agree resource & timescales with suppliers for delivering key refs, incl contingency, risk & allowance for rework",27-Jul-23,27-Jul-23,27-Jul-23 A,27-Jul-23 A,1,0,0,100%,,Completed
 ER7514LT,W161,W161.6110,"Mod requested, Initiate EC, identify RE, register EC & identify milestones in AMS",,03-Apr-23,,03-Apr-23 A,0,0,0,100%,,Completed
 ER7514LT,W161,W161.6170,Issue MF (as required),,01-Jun-23,,01-Jun-23 A,0,0,0,100%,,Completed
 ER7514LT,W161,W161.6140,Develop initial programme plan using mandatory template,03-Apr-23,10-May-23,03-Apr-23 A,10-May-23 A,5,0,23,100%,,Completed
 ER7514LT,W161,W161.6100,Raise Engineering Request (as required),03-Apr-23,10-May-23,03-Apr-23 A,10-May-23 A,5,0,23,100%,,Completed
 ER7514LT,W161,W161.6180,Categorisation by RE / Station,03-Apr-23,28-Apr-23,03-Apr-23 A,28-Apr-23 A,5,0,17,100%,,Completed
 ER7514LT,W161,W161.6360,Identify verifier for the case & establish all other resources,01-Jun-23,27-Jul-23,01-Jun-23 A,27-Jul-23 A,5,0,41,100%,,Completed
 ER7514LT,W161,W161.6390,Issue agreed work programme to stakeholders & suppliers,,14-Aug-23,,14-Aug-23 A,0,0,0,100%,,Completed
 ER7514LT,W161,W161.6370,Develop plan with further iterations,01-Aug-23,14-Aug-23,01-Aug-23 A,14-Aug-23 A,10,0,10,100%,,Completed
 ER7514LT,W161,W161.6130,CO & CA appointed,,03-Apr-23,,03-Apr-23 A,0,0,0,100%,,Completed
 ER7514LT,W161,W161.6120,Key Stakeholders Identified,,28-Apr-23,,28-Apr-23 A,0,0,0,100%,,Completed
 ER7514LT,W161,W161.6150,CA PJB Held,,03-Apr-23,,03-Apr-23 A,0,0,0,100%,,Completed
 ER7514LT,W161,W161.5440,HPB PSR4 Head Doc: Produce MF EC 374795 & obtain approval,01-Feb-24,01-Mar-24,01-Feb-24 A,01-Mar-24 A,1,0,22,100%,,Completed
 ER7514LT,W161,W161.5500,HPB PSR4 Head Doc: Author Cat 2 NSRS,04-Jan-24,04-Mar-24,04-Jan-24 A,22-Mar-24 A,5,0,56,100%,,Completed
 ER7514LT,W161,W161.5520,HPB PSR4 Head Doc: Issue Cat 2 NSRS for PRWG review (allow 5d),19-Mar-24,25-Mar-24,12-Apr-24 A,17-Apr-24 A,5,0,3,100%,,Completed
 ER7514LT,W161,W161.5510,HPB PSR4 Head Doc: Address Verifier Comments on Cat 2 NSRS,12-Mar-24,18-Mar-24,08-Apr-24 A,12-Apr-24 A,5,0,5,100%,,Completed
 ER7514LT,W161,W161.5560,HPB PSR4 Head Doc: Address PRWG Comments on Cat 2 NSRS,27-Mar-24,04-Apr-24,18-Apr-24 A,26-Apr-24 A,5,0,6,100%,,Completed
 ER7514LT,W161,W161.5580,HPB PSR4 Head Doc: INA review Cat 2 NSRS,08-Apr-24,19-Apr-24,07-May-24 A,20-May-24 A,10,0,10,100%,,Completed
 ER7514LT,W161,W161.5620,HPB PSR4 Head Doc: NSRS Presented to NSC (If Required),,03-May-24,,18-Sep-24 A,0,0,0,100%,,Completed
 ER7514LT,W161,W161.5470,HPB PSR4 Head Doc: CA to agree with CO format of the safety case,03-Apr-23,28-Apr-23,03-Apr-23 A,28-Apr-23 A,0,0,17,100%,,Completed
 ER7514LT,W161,W161.5820,HPB PSR4 Head Doc: Authoring of the Submission Proposal,04-Oct-24,26-Feb-25,05-Apr-24 A,29-Aug-25,100,98,354,35%,-66,In Progress
 ER7514LT,W161,W161.5900,HPB PSR4 Head Doc: Address Verifier Comments,25-Apr-25,09-May-25,15-Oct-25,24-Oct-25,8,8,8,0%,-58,Not Started
 ER7514LT,W161,W161.5810,HPB PSR4 Head Doc: Produce and Approve Verification Plan,05-Mar-25,11-Mar-25,05-Sep-25,11-Sep-25,5,5,5,0%,-66,Not Started
 ER7514LT,W161,W161.5870,HPB PSR4 Head Doc:Verification of the Submission (using BARRIER MODEL),19-Mar-25,24-Apr-25,17-Sep-25,14-Oct-25,20,20,20,0%,-66,Not Started
 ER7514LT,W161,W161.5950,HPB PSR4 Head Doc: Verification Complete/ Verified Draft A Issued for INSA (T-7)  EC 374795,,17-Jun-25,,07-Nov-25,0,0,0,0%,-58,Not Started
 ER7514LT,W161,W161.5970,HPB PSR4 Head Doc: HPB PSR4 Head Doc: INSA review & iteration of comments (using BARRIER MODEL),31-Jul-25,28-Aug-25,20-Nov-25,17-Dec-25,20,20,20,0%,-66,Not Started
 ER7514LT,W161,W161.6000,HPB PSR4 Head Doc: NSC Presentation Date (T) EC 374795,,15-Oct-25,,19-Jan-26,0,0,0,0%,123,Not Started
 ER7514LT,W161,W161.5420,HPB PSR4 Head Doc: Initiate and Register EC and identify Milestones in AMS  EC 374795,01-Feb-24,26-Feb-24,01-Feb-24 A,26-Feb-24 A,1,0,17,100%,,Completed
 ER7514LT,W161,W161.5540,HPB PSR4 Head Doc: PRWG Meeting for NSRS,26-Mar-24,26-Mar-24,18-Apr-24 A,18-Apr-24 A,1,0,0,100%,,Completed
 ER7514LT,W161,W161.5570,HPB PSR4 Head Doc: Upload to AMS & Submit Cat 2 NSRS to INA,05-Apr-24,05-Apr-24,29-Apr-24 A,03-May-24 A,1,0,5,100%,,Completed
 ER7514LT,W161,W161.5460,HPB PSR4 Head Doc: Appoint CO & CA,03-Apr-23,03-Apr-23,03-Apr-23 A,03-Apr-23 A,0,0,0,100%,,Completed
 ER7514LT,W161,W161.5410,"HPB PSR4 Head Doc: Mod Requested, Identify RE and EC Request Raised and Screened",03-Apr-23,30-Jun-23,03-Apr-23 A,30-Jun-23 A,0,0,59,100%,,Completed
 ER7514LT,W161,W161.5930,HPB PSR4 Head Doc: Submit for approval - Categoriser ratifies; RE/CO endorsement ==> KDM,,17-Jun-25,,07-Nov-25,0,0,0,0%,-58,Not Started
 ER7514LT,W161,W161.6020,HPB PSR4 Head Doc: NSC Consideration & advice to Station Director ==> KDM,15-Oct-25,28-Oct-25,20-Jan-26,02-Feb-26,10,10,10,0%,119,Not Started
 ER7514LT,W161,W161.6060,HPB PSR4 Head Doc: Station Approve EC 374795 - HPB PSR4,,28-Dec-26,,29-May-26,0,0,0,0%,119,Not Started
 ER7514LT,W161,W161.5450,HPB PSR4 Head Doc: Initial Categorisation by Station,03-Apr-23,28-Apr-23,03-Apr-23 A,28-Apr-23 A,0,0,17,100%,,Completed
 ER7514LT,W161,W161.5890,"HPB PSR4 Head Doc: Issue to CO, INSA & Station for comments",,24-Apr-25,,14-Oct-25,0,0,0,0%,-58,Not Started
 ER7514LT,W161,W161.5980,HPB PSR4 Head Doc: Incorporate INSA comments,29-Aug-25,04-Sep-25,18-Dec-25,24-Dec-25,5,5,5,0%,-66,Not Started
 ER7514LT,W161,W161.6010,HPB PSR4 Head Doc: Prepare Station Director's Brief,18-Jun-25,24-Jun-25,10-Nov-25,14-Nov-25,5,5,5,0%,162,Not Started
 ER7514LT,W161,W161.5990,HPB PSR4 Head Doc: INSA Assessment Substantially Comp (T - 3 weeks before NSC date),,08-Sep-25,,24-Dec-25*,0,0,0,0%,-66,Not Started
 ER7514LT,W161,W161.5530,HPB PSR4 Head Doc: Verify Cat 2 NSRS,05-Mar-24,11-Mar-24,25-Mar-24 A,05-Apr-24 A,5,0,8,100%,,Completed
 ER7514LT,W161,W161.5600,HPB PSR4 Head Doc: INA approve Cat 2 NSRS EC 374795,,03-May-24,,14-Jun-24 A,0,0,0,100%,,Completed
 ER7514LT,W161,W161.5740,HPB PSR4 Head Doc: All Supporting References Approved and Issued,,26-Feb-25,,29-Aug-25,0,0,0,0%,-66,Not Started
 ER7514LT,W161,W161.6090,HPB PSR4 Head Doc: Post Job Debrief (CAT 2),27-Jan-27,27-Jan-27,01-Jun-26,01-Jun-26,1,1,1,0%,119,Not Started
 ER7514LT,W161,W161.5920,HPB PSR4 Head Doc: Final Verification,04-Jun-25,17-Jun-25,03-Nov-25,07-Nov-25,5,5,5,0%,-58,Not Started
 ER7514LT,W161,W161.6040,HPB PSR4 Head Doc: ONR Approval of Safety Case (Letter sent to initiate) EC 374795,29-Dec-25,28-Dec-26,03-Feb-26,29-May-26,80,80,80,0%,119,Not Started
 ER7514LT,W161,W161.5630,HPB PSR4 Head Doc: Send NSRS to ONR to determine level of review required (Acknowldgement or Agreement) (If Required),,03-May-24,,18-Sep-24 A,0,0,0,100%,,Completed
 ER7514LT,W161,W161.6030,HPB PSR4 Head Doc: INSA Final Approval EC 374795,,28-Oct-25,,02-Feb-26,0,0,0,0%,119,Not Started
 ER7514LT,W161,W161.6050,HPB PSR4 Head Doc: ONR Agree/Acknowledge Safety Case EC 374795,,28-Dec-26,,29-May-26,0,0,0,0%,119,Not Started
 ER7514LT,W161,W161.6070,HPB PSR4 Head Doc: Revise all Affected Drawings and Documents for EC Approval (No Longer Required),29-Dec-26,12-Jan-27,03-Mar-25 A,03-Mar-25 A,0,0,0,100%,,Completed
 ER7514LT,W161,W161.5610,HPB PSR4 Head Doc: INA approve Cat 2 NSRS,29-Apr-24,03-May-24,10-Jun-24 A,14-Jun-24 A,5,0,5,100%,,Completed
 ER7514LT,W161,W161.5840,HPB PSR4 Head Doc: Safety Case Paper Authoring Complete EC 374795,,26-Feb-25,,29-Aug-25,0,0,0,0%,-53,Not Started
 ER7514LT,W161,W161.6080,HPB PSR4 Head Doc: Develop Implementation & closeout Plan (No Longer Required),13-Jan-27,26-Jan-27,03-Mar-25 A,03-Mar-25 A,0,0,0,100%,,Completed
 ER7514LT,W161,W161.5860,HPB PSR4 Head Doc:Verification Commenced (T-11),,18-Mar-25,,16-Sep-25,0,0,0,0%,-66,Not Started
 ER7514LT,W161,W161.5430,HPB PSR4 Head Doc: CO and PCE Create Initial Plan of Work,03-Apr-23,30-Jun-23,03-Apr-23 A,30-Jun-23 A,0,0,59,100%,,Completed
 ER7514LT,W161,W161.5400,Project Finish,,12-Feb-27,,21-Jul-26,0,0,0,0%,115,Not Started
 ER7514LT,W161,W161.2150,Gate D - Hold PRC Meeting,12-Feb-27,12-Feb-27,21-Jul-26,21-Jul-26,1,1,1,0%,5,Not Started
 ER7514LT,W161,W161.2100,Hold Project Closeout and Lessons Learned Meeting,28-Jan-27,28-Jan-27,02-Jun-26,02-Jun-26,1,1,1,0%,119,Not Started
 ER7514LT,W161,W161.2110,Produce Lessons Learned Report,29-Jan-27,29-Jan-27,03-Jun-26,03-Jun-26,1,1,1,0%,119,Not Started
 ER7514LT,W161,W161.2120,Produce Project Closeout Report,01-Feb-27,02-Feb-27,04-Jun-26,05-Jun-26,2,2,2,0%,119,Not Started
 ER7514LT,W161,W161.2140,Gate D PRC Paper Submission,11-Feb-27,11-Feb-27,08-Jul-26,08-Jul-26,1,1,1,0%,5,Not Started
 ER7514LT,W161,W161.2130,Prepare Gate D PRC Paper,03-Feb-27,10-Feb-27,08-Jun-26,15-Jun-26,6,6,6,0%,119,Not Started
 ER7514LT,W161,W161.1000,Project Start,03-Apr-23,,03-Apr-23 A,,0,0,0,100%,,Completed
 ER7514LT,W161,W161.5000,Case Production Plan Peer Review & Update,08-Feb-24,15-Feb-24,08-Feb-24 A,15-Feb-24 A,6,0,6,100%,,Completed
 ER7514LT,W161,W161.5100,Gate B PRC Paper Submission,06-Mar-24,06-Mar-24,06-Mar-24 A,06-Mar-24 A,1,0,1,100%,,Completed
 ER7514LT,W161,W161.4090,Define Project Control Structures (WBS/CBS/OBS/PBS),13-Feb-24,15-Feb-24,13-Feb-24 A,15-Feb-24 A,3,0,3,100%,,Completed
 ER7514LT,W161,W161.5060,Plan Scope in Primavera (Level 2 B-C &  Level 1 Lifecycle),09-Feb-24,15-Feb-24,09-Feb-24 A,15-Feb-24 A,5,0,5,100%,,Completed
 ER7514LT,W161,W161.5050,Estimate Scope +/- 10% B-C & +/- 30% Lifecycle,09-Feb-24,15-Feb-24,09-Feb-24 A,15-Feb-24 A,5,0,5,100%,,Completed
 ER7514LT,W161,W161.5070,Ensure Alignment of Schedule & Estimate,14-Feb-24,29-Feb-24,14-Feb-24 A,29-Feb-24 A,2,0,11,100%,,Completed
 ER7514LT,W161,W161.5020,Hold Risk Workshop,13-Feb-24,15-Feb-24,13-Feb-24 A,15-Feb-24 A,3,0,3,100%,,Completed
 ER7514LT,W161,W161.5080,Complete Risk Log with Estimates,13-Feb-24,15-Feb-24,13-Feb-24 A,15-Feb-24 A,3,0,3,100%,,Completed
 ER7514LT,W161,W161.5010,Update Schedule/Estimate from Risk Log & Add Provisions,13-Feb-24,15-Feb-24,13-Feb-24 A,15-Feb-24 A,3,0,3,100%,,Completed
 ER7514LT,W161,W161.5040,Add Data to IAB Paper,09-Feb-24,15-Feb-24,09-Feb-24 A,15-Feb-24 A,5,0,5,100%,,Completed
 ER7514LT,W161,W161.5090,PCL Validate & Approve Baseline Package for PRC Submission,14-Feb-24,01-Mar-24,14-Feb-24 A,01-Mar-24 A,2,0,13,100%,,Completed
 ER7514LT,W161,W161.5030,Prepare Draft Project Definition Document (PDD),09-Feb-24,15-Feb-24,09-Feb-24 A,15-Feb-24 A,5,0,5,100%,,Completed
 ER7514LT,W161,W161.5130,Hold PRC Meeting,19-Mar-24,19-Mar-24,19-Mar-24 A,19-Mar-24 A,1,0,1,100%,,Completed
 ER7514LT,W161,W161.5140,"Modify Estimate, Schedule & Risk Log as Required",20-Mar-24,26-Mar-24,20-Mar-24 A,26-Mar-24 A,5,0,5,100%,,Completed
 ER7514LT,W161,W161.5150,Modify PRC Paper as Required,20-Mar-24,26-Mar-24,20-Mar-24 A,26-Mar-24 A,5,0,5,100%,,Completed
 ER7514LT,W161,W161.5120,PRC Members Review IAB Documentation,07-Mar-24,13-Mar-24,07-Mar-24 A,13-Mar-24 A,5,0,5,100%,,Completed
 ER7514LT,W161,W161.4070,Confirm Objectives to be Delivered at Gate B,22-Dec-23,29-Dec-23,22-Dec-23 A,29-Dec-23 A,3,0,4,100%,,Completed
 ER7514LT,W161,W161.4080,Initial high level scope of programme,02-Jan-24,12-Feb-24,02-Jan-24 A,12-Feb-24 A,30,0,30,100%,,Completed
 ER7514LT,W161,W161.4060,Gate A PRC Paper Submission,07-Jun-23,07-Jun-23,07-Jun-23 A,07-Jun-23 A,1,0,1,100%,,Completed
 ER7514LT,W161,W161.4030,Update Schedule/Estimate from Risk Log & Add Provisions,28-Apr-23,28-Apr-23,28-Apr-23 A,28-Apr-23 A,5,0,0,100%,,Completed
 ER7514LT,W161,W161.4040,Add Data to PRC/IAB Paper,04-May-23,05-Jun-23,04-May-23 A,05-Jun-23 A,21,0,21,100%,,Completed
 ER7514LT,W161,W161.4050,PCL Validate & Approve Baseline Package for PRC Submission,06-Jun-23,06-Jun-23,06-Jun-23 A,06-Jun-23 A,1,0,1,100%,,Completed
 ER7514LT,W161,W161.4020,Prepare Draft Project Definition Document (PDD),28-Apr-23,28-Apr-23,28-Apr-23 A,28-Apr-23 A,5,0,0,100%,,Completed
 ER7514LT,W161,W161.1180,Hold PRC Meeting,20-Jun-23,20-Jun-23,20-Jun-23 A,20-Jun-23 A,1,0,1,100%,,Completed
 ER7514LT,W161,W161.1200,"Modify Estimate, Schedule & Risk Log as Required",21-Jun-23,27-Jun-23,21-Jun-23 A,27-Jun-23 A,5,0,5,100%,,Completed
 ER7514LT,W161,W161.1210,Modify PRC Paper as Required,21-Jun-23,27-Jun-23,21-Jun-23 A,27-Jun-23 A,5,0,5,100%,,Completed
 ER7514LT,W161,W161.1170,PRC Members Review PRC Documentation,08-Jun-23,14-Jun-23,08-Jun-23 A,14-Jun-23 A,5,0,5,100%,,Completed
 ER7514LT,W161,W161.1190,Gate A PRC Paper Approval,,27-Jun-23,,27-Jun-23 A,0,0,0,100%,,Completed
 ER7514LT,W161,W161.4000,Confirm Objectives to be Delivered at Gate A (FEEDS TO SUMMARY SCHEDULE),24-Apr-23,28-Apr-23,24-Apr-23 A,28-Apr-23 A,2,0,4,100%,,Completed
 ER7514LT,W161,W161.4010,Initial high level scope of programme,27-Apr-23,28-Apr-23,27-Apr-23 A,28-Apr-23 A,2,0,1,100%,,Completed
 ER7581LT,W195,W195.25720,Summary of HRA DPCS Defueling Support Plan,02-Jan-24,31-Dec-27,02-Jan-24 A,31-Dec-27,1,699,1016,20%,759,In Progress
 ER7582LT,W196,W196.25460,Summary of HYA DPCS Defueling Support Plan,02-Jan-24,31-Dec-27,02-Jan-24 A,31-Dec-27,1016,699,1016,10%,759,In Progress
 ER6360LT,W085,W085.1800,Lid Bolting Exercise (PROVISIONAL),10-Jan-24,20-Mar-24,10-Jan-24 A,20-Mar-24 A,1,0,51,100%,,Completed
 ER6360LT,W085,W085.1790,Lid Bolting Exercise (PROVISIONAL) (No Longer Required),14-Nov-24,09-Dec-24,03-Mar-25 A,03-Mar-25 A,1,0,0,100%,,Completed
 ER6360LT,W085,W085.1780,Lid Bolting Exercise (PROVISIONAL)  (No Longer Required),01-May-24,01-May-24,01-May-24 A,01-May-24 A,1,0,0,100%,,Completed
 ER6360LT,W085,W085.1770,Lid Bolting Exercise (PROVISIONAL)  (No Longer Required),01-May-24,01-May-24,01-May-24 A,01-May-24 A,1,0,0,100%,,Completed
 ER6360LT,W085,W085.1760,Lid Bolting Exercise (PROVISIONAL),16-Sep-24,08-Oct-24,12-Nov-24 A,21-Nov-24 A,1,0,8,100%,,Completed
 ER6360LT,W085,W085.1750,Lid Bolting Exercise (PROVISIONAL),18-Sep-24,10-Oct-24,14-Jan-25 A,01-Apr-25,1,0,55,100%,131,In Progress
 ER6360LT,W085,W085.1740,Lid Bolting Exercise (PROVISIONAL),07-May-24,22-May-24,07-May-24 A,22-May-24 A,1,0,12,100%,,Completed
 ER6360LT,W085,W085.1730,Lid Bolting Exercise (PROVISIONAL),14-Aug-24,05-Sep-24,22-Jul-24 A,19-Aug-24 A,1,0,21,100%,,Completed
 ER6360LT,W085,W085.1720,Lid Bolting Exercise (PROVISIONAL),20-May-24,11-Jun-24,20-May-24 A,11-Jun-24 A,1,0,16,100%,,Completed
 ER6360LT,W085,W085.1710,Lid Bolting Exercise (PROVISIONAL),21-Mar-24,28-Mar-24,21-Mar-24 A,28-Mar-24 A,1,0,6,100%,,Completed
 ER6360LT,W085,W085.1700,Lid Bolting Exercise (PROVISIONAL),03-Oct-24,25-Oct-24,02-Sep-24 A,24-Sep-24 A,1,0,17,100%,,Completed
 ER7579LT,W193,W193.25300,Summary HNB DPCS Defueling Support,02-Jan-24,31-Dec-25,02-Jan-24 A,31-Dec-25,507,190,507,58%,0,In Progress
 ER7743LT,W527,W527.25660,Summary for DNB DPCS Defueling Support,02-Jan-24,02-Jan-29,02-Jan-24 A,03-Apr-29,1016,1016,1333,13%,695,In Progress
 ER7582LT,W196,W196.2050,ETC (DD-PF),01-Dec-23,29-Dec-23,01-Dec-23 A,29-Dec-23 A,0,0,19,100%,,Completed
 ER7581LT,W195,W195.25710,ETC (DD-PF),01-Dec-23,29-Dec-23,01-Dec-23 A,29-Dec-23 A,0,0,19,100%,,Completed
 W526LT,W526,W526.10230,TPM and JCRB Meeting Held 2032,02-Jan-32,31-Dec-32,02-Jan-32,31-Dec-32,256,256,256,0%,0,Not Started
 W526LT,W526,W526.10220,TPM and JCRB Meeting Held 2031,02-Jan-31,31-Dec-31,02-Jan-31,31-Dec-31,253,253,253,0%,0,Not Started
 W526LT,W526,W526.10210,TPM and JCRB Meeting Held 2030,02-Jan-30,31-Dec-30,02-Jan-30,31-Dec-30,253,253,253,0%,0,Not Started
 W526LT,W526,W526.10200,TPM and JCRB Meeting Held 2029,02-Jan-29,31-Dec-29,02-Jan-29,31-Dec-29,253,253,253,0%,0,Not Started
 W526LT,W526,W526.10190,TPM and JCRB Meeting Held 2028,03-Jan-28,29-Dec-28,03-Jan-28,29-Dec-28,253,253,253,0%,0,Not Started
 W526LT,W526,W526.10180,TPM and JCRB Meeting Held 2027,04-Jan-27,31-Dec-27,04-Jan-27,31-Dec-27,255,255,255,0%,0,Not Started
 ER7582LT,W196,W196.25450,HYA 2025 - Installation R2,,30-Sep-26,,30-Sep-26,0,0,0,0%,1079,Not Started
 ER7582LT,W196,W196.25440,HYA 2025 - Installation R1,,30-Jun-26,,30-Jun-26,0,0,0,0%,1144,Not Started
 ER7582LT,W196,W196.25430,HYA 2024  - Installation R2,,30-Sep-25,,30-Sep-25,0,0,0,0%,1332,Not Started
 ER7582LT,W196,W196.25420,HYA 2024  - Installation R1,,30-Jun-25,,30-Jun-25,0,0,0,0%,1397,Not Started
 ER7743LT,W527,W527.1580,DNB TGN097 POLARIS - Report Issued,,25-Apr-25,,25-Apr-25,0,0,0,0%,1694,Not Started
 ER7743LT,W527,W527.1560,DNB TGN097 AIC - Report Issued,,25-Apr-25,,25-Apr-25,0,0,0,0%,1694,Not Started
 ER7743LT,W527,W527.25650,DNB TGN097 POLARIS - Plan Produced,,03-Apr-25,,03-Mar-25 A,0,0,0,100%,,Completed
 ER7743LT,W527,W527.25640,DNB TGN097 AIC - Plan Produced,,03-Apr-25,,03-Mar-25 A,0,0,0,100%,,Completed
 ER7743LT,W527,W527.3680,DNB 2024 2.8.2 - Installation R22,,16-Aug-24,,16-Aug-24 A,0,0,0,100%,,Completed
 ER7743LT,W527,W527.3670,DNB 2024 2.8.2 - Installation R21,,04-Oct-24,,04-Oct-24 A,0,0,0,100%,,Completed
 ER7743LT,W527,W527.25620,DNB 2025 2.9 - Installation R1,24-Jul-25,06-Aug-25,24-Jul-25,06-Aug-25,10,10,10,0%,1594,Not Started
 ER7743LT,W527,W527.25600,DNB 2025 2.9 - Delivery,25-Nov-24,20-Dec-24,25-Nov-24 A,20-Dec-24 A,20,0,20,100%,,Completed
 ER7743LT,W527,W527.25590,DNB 2025 2.9 - Testing,07-Oct-24,15-Nov-24,07-Oct-24 A,15-Nov-24 A,30,0,30,100%,,Completed
 ER7743LT,W527,W527.25580,DNB 2025 2.9 - Specification,08-Jan-24,04-Oct-24,08-Jan-24 A,04-Oct-24 A,120,0,190,100%,,Completed
 ER7743LT,W527,W527.25630,DNB 2025 2.9 - Installation R2,04-Sep-25,17-Sep-25,04-Sep-25,17-Sep-25,10,10,10,0%,1594,Not Started
 ER7743LT,W527,W527.25610,DNB 2025 2.9 - Site Acceptance Testing,06-Jan-25,30-Jun-25,06-Jan-25 A,30-Jun-25,122,61,122,50%,1594,In Progress
 ER7743LT,W527,W527.4840,TPM and JCRB Meetings Held 2027,04-Jan-27,31-Dec-27,04-Jan-27,31-Dec-27,255,255,255,0%,1012,Not Started
 ER7743LT,W527,W527.4830,TPM and JCRB Meetings Held 2026,02-Jan-26,31-Dec-26,02-Jan-26,31-Dec-26,254,254,254,0%,1012,Not Started
 ER7743LT,W527,W527.4820,TPM and JCRB Meetings Held 2025,02-Jan-25,31-Dec-25,02-Jan-25 A,31-Dec-25,253,190,253,24%,1012,In Progress
 ER7743LT,W527,W527.4810,TPM and JCRB Meetings Held 2024,02-Jan-24,31-Dec-24,02-Jan-24 A,31-Dec-24 A,254,0,254,100%,,Completed
 ER7582LT,W196,W196.25410,HYA 2024  - Installation R2,10-Sep-25,30-Sep-25,10-Sep-25*,30-Sep-25,15,15,15,0%,1332,Not Started
 ER7582LT,W196,W196.25400,HYA 2024 - Specification,02-Apr-24,13-Dec-24,02-Apr-24 A,13-Dec-24 A,30,0,181,100%,,Completed
 ER7582LT,W196,W196.1245,TPM and JCRB Meetings Held 2027,04-Jan-27,31-Dec-27,04-Jan-27,31-Dec-27,255,255,255,0%,759,Not Started
 ER7582LT,W196,W196.1235,TPM and JCRB Meetings Held 2026,02-Jan-26,31-Dec-26,02-Jan-26,31-Dec-26,254,254,254,0%,759,Not Started
 ER7582LT,W196,W196.1225,TPM and JCRB Meetings Held 2025,02-Jan-25,31-Dec-25,02-Jan-25 A,31-Dec-25,253,190,253,24%,759,In Progress
 ER7582LT,W196,W196.1215,TPM and JCRB Meetings Held 2024,02-Jan-24,31-Dec-24,02-Jan-24 A,31-Dec-24 A,254,0,254,100%,,Completed
 ER7581LT,W195,W195.25700,TPM and JCRB Meetings Held - 2027,04-Jan-27,31-Dec-27,04-Jan-27,31-Dec-27,255,255,255,0%,759,Not Started
 ER7581LT,W195,W195.25690,TPM and JCRB Meetings Held - 2026,02-Jan-26,31-Dec-26,02-Jan-26,31-Dec-26,254,254,254,0%,759,Not Started
 ER7581LT,W195,W195.25680,TPM and JCRB Meetings Held - 2025,02-Jan-25,31-Dec-25,02-Jan-25 A,31-Dec-25,253,190,253,24%,759,In Progress
 ER7581LT,W195,W195.25670,TPM and JCRB Meetings Held - 2024,02-Jan-24,31-Dec-24,02-Jan-24 A,31-Dec-24 A,254,0,254,100%,,Completed
 ER7581LT,W195,W195.25620,HRA 2025  - Specification,03-Nov-25,12-Dec-25,03-Nov-25*,12-Dec-25,30,30,30,0%,1175,Not Started
 ER7581LT,W195,W195.25660,HRA 2025  - Installation R2,10-Sep-26,30-Sep-26,10-Sep-26*,30-Sep-26,15,15,15,0%,1079,Not Started
 ER7581LT,W195,W195.25650,HRA 2025  - Installation R1,10-Jun-26,30-Jun-26,10-Jun-26,30-Jun-26,15,15,15,0%,1144,Not Started
 ER7581LT,W195,W195.25640,"HRA 2025  - Design, Consolidation and Testing",03-Feb-26,30-Mar-26,03-Feb-26,30-Mar-26,40,40,40,0%,1144,Not Started
 ER7581LT,W195,W195.25630,HRA 2025  - Go / No Go Decision,30-Jan-26,30-Jan-26,30-Jan-26*,30-Jan-26,1,1,1,0%,1144,Not Started
 ER7581LT,W195,W195.25610,HRA 2025  - Data Modifications and Amendments,03-Jan-25,31-Dec-25,03-Jan-25 A,31-Dec-25,252,190,252,24%,1268,In Progress
 ER7581LT,W195,W195.25600,HRA 2024  - Specification,04-Nov-24,13-Dec-24,04-Nov-24 A,13-Dec-24 A,30,0,30,100%,,Completed
 ER7581LT,W195,W195.25590,HRA 2024  - Installation R2,10-Sep-25,30-Sep-25,10-Sep-25*,30-Sep-25,15,15,15,0%,1332,Not Started
 W156LT,W156,W156.3250,Incoporate New Mitigations,01-Jul-25,01-Jul-25,29-Jul-25,29-Jul-25,1,1,1,0%,583,Not Started
 W156LT,W156,W156.3240,Issue revised SPORS,30-Jun-25,30-Jun-25,28-Jul-25,28-Jul-25,1,1,1,0%,583,Not Started
 W156LT,W156,W156.3230,Review and Update SPORS,27-Jun-25,27-Jun-25,25-Jul-25,25-Jul-25,1,1,1,0%,583,Not Started
 W156LT,W156,W156.3220,Review Flasks SPPI File Against Issued Enhanced Safety Cases,03-Feb-25,26-Jun-25,03-Mar-25 A,24-Jul-25,100,79,100,5%,583,In Progress
 ER7743LT,W527,W527.10060,DNB 2023 U21 - Site Acceptance Testing,28-Mar-24,28-Mar-24,28-Mar-24 A,28-Mar-24 A,1,0,1,100%,,Completed
 ER7743LT,W527,W527.25570,Issue Complete LSR,09-Jun-26,09-Jun-26,09-Jun-26,09-Jun-26,1,1,1,0%,1412,Not Started
 ER7743LT,W527,W527.25560,Update LSR,02-Jun-26,08-Jun-26,02-Jun-26,08-Jun-26,5,5,5,0%,1412,Not Started
 ER7743LT,W527,W527.25550,EDF Review,18-May-26,01-Jun-26,18-May-26,01-Jun-26,10,10,10,0%,1412,Not Started
 ER7743LT,W527,W527.25540,"LSR Update, Internal Review & Issue to EDF",01-May-26,15-May-26,01-May-26,15-May-26,10,10,10,0%,1412,Not Started
 ER7743LT,W527,W527.25530,Recommendations Workshop,30-Apr-26,30-Apr-26,30-Apr-26,30-Apr-26,1,1,1,0%,1412,Not Started
 ER7743LT,W527,W527.25520,Issue Recommendations,27-Apr-26,27-Apr-26,27-Apr-26,27-Apr-26,1,1,1,0%,1412,Not Started
 ER7743LT,W527,W527.25510,"LSR Data Export, Analysis, Draft Report",02-Apr-26,24-Apr-26,02-Apr-26,24-Apr-26,15,15,15,0%,1412,Not Started
 ER7743LT,W527,W527.25500,LSR Pre Data Extract,06-Mar-26,12-Mar-26,06-Mar-26*,12-Mar-26,5,5,5,0%,1412,Not Started
 ER7743LT,W527,W527.25490,Issue Complete LSR,28-Feb-25,28-Feb-25,28-Feb-25 A,28-Feb-25 A,1,0,1,100%,,Completed
 ER7743LT,W527,W527.25480,Update LSR,21-Feb-25,27-Feb-25,21-Feb-25 A,27-Feb-25 A,5,0,5,100%,,Completed
 ER7743LT,W527,W527.25470,EDF Review,07-Feb-25,20-Feb-25,07-Feb-25 A,20-Feb-25 A,10,0,10,100%,,Completed
 ER7743LT,W527,W527.25460,"LSR Update, Internal Review & Issue to EDF",28-Jan-25,06-Feb-25,28-Jan-25 A,06-Feb-25 A,8,0,8,100%,,Completed
 ER7743LT,W527,W527.25450,Recommendations Workshop,27-Jan-25,27-Jan-25,27-Jan-25 A,27-Jan-25 A,1,0,1,100%,,Completed
 ER7743LT,W527,W527.25440,Issue Recommendations,23-Jan-25,23-Jan-25,23-Jan-25 A,23-Jan-25 A,1,0,1,100%,,Completed
 ER7743LT,W527,W527.25430,"LSR Data Export, Analysis, Draft Report",02-Jan-25,22-Jan-25,02-Jan-25 A,22-Jan-25 A,15,0,15,100%,,Completed
 ER7743LT,W527,W527.25420,LSR Pre Data Extract,28-Nov-24,02-Jan-25,28-Nov-24 A,02-Jan-25 A,5,0,22,100%,,Completed
 ER7743LT,W527,W527.25410,DNB 2024 Issue Complete LSR,,03-Jun-24,,03-Jun-24 A,0,0,0,100%,,Completed
 ER7743LT,W527,W527.3650,Issue Complete LSR,24-Jun-24,24-Jun-24,24-Jun-24 A,24-Jun-24 A,1,0,1,100%,,Completed
 ER7743LT,W527,W527.3640,Update LSR,17-Jun-24,21-Jun-24,17-Jun-24 A,21-Jun-24 A,5,0,5,100%,,Completed
 ER7743LT,W527,W527.3630,EDF Review,03-Jun-24,14-Jun-24,03-Jun-24 A,14-Jun-24 A,10,0,10,100%,,Completed
 ER7743LT,W527,W527.3620,"LSR Update, Internal Review & Issue to EDF",23-Apr-24,31-May-24,23-Apr-24 A,31-May-24 A,10,0,27,100%,,Completed
 ER7743LT,W527,W527.3610,Recommendations Workshop,22-Apr-24,22-Apr-24,22-Apr-24 A,22-Apr-24 A,1,0,1,100%,,Completed
 ER7743LT,W527,W527.3600,Issue Recommendations,12-Apr-24,12-Apr-24,12-Apr-24 A,12-Apr-24 A,1,0,1,100%,,Completed
 ER7743LT,W527,W527.3590,"LSR Data Export, Analysis, Draft Report",20-Mar-24,11-Apr-24,20-Mar-24 A,11-Apr-24 A,15,0,15,100%,,Completed
 ER7743LT,W527,W527.3580,LSR Pre Data Extract,08-Mar-24,14-Mar-24,08-Mar-24 A,14-Mar-24 A,5,0,5,100%,,Completed
 W526LT,W526,W526.10170,TPM and JCRB Meeting Held 2026,02-Jan-26,31-Dec-26,02-Jan-26,31-Dec-26,254,254,254,0%,0,Not Started
 W526LT,W526,W526.10160,TPM and JCRB Meeting Held 2025,02-Jan-25,31-Dec-25,02-Jan-25 A,31-Dec-25,253,190,253,24%,0,In Progress
 W526LT,W526,W526.10150,HYB 2026 Issue Complete LSR,05-Oct-26,05-Oct-26,05-Oct-26,05-Oct-26,1,1,1,0%,1585,Not Started
 W526LT,W526,W526.10140,HYB 2026 Update LSR,28-Sep-26,02-Oct-26,28-Sep-26,02-Oct-26,5,5,5,0%,1585,Not Started
 W526LT,W526,W526.10130,HYB 2026 EDF Review,14-Sep-26,25-Sep-26,14-Sep-26,25-Sep-26,10,10,10,0%,1585,Not Started
 W526LT,W526,W526.10120,"HYB 2026 LSR Update, Internal Review & Issue to EDF",28-Aug-26,11-Sep-26,28-Aug-26,11-Sep-26,10,10,10,0%,1585,Not Started
 W526LT,W526,W526.10110,HYB 2026 Recommendations Workshop,27-Aug-26,27-Aug-26,27-Aug-26,27-Aug-26,1,1,1,0%,1585,Not Started
 W526LT,W526,W526.10100,HYB 2026 Issue Recommendations,20-Aug-26,20-Aug-26,20-Aug-26,20-Aug-26,1,1,1,0%,1585,Not Started
 W526LT,W526,W526.10090,"HYB 2026 LSR Data Export, Analysis, Draft Report",30-Jul-26,19-Aug-26,30-Jul-26,19-Aug-26,15,15,15,0%,1585,Not Started
 W526LT,W526,W526.10080,HYB 2026 LSR Pre Data Extract,02-Jul-26,08-Jul-26,02-Jul-26*,08-Jul-26,5,5,5,0%,1585,Not Started
 W526LT,W526,W526.4040,HYB 2025 Issue Complete LSR,,02-Jan-25,,03-Mar-25 A,0,0,0,100%,,Completed
 W526LT,W526,W526.3220,HYB 2025 Update LSR,01-Jul-25,07-Jul-25,01-Jul-25,07-Jul-25,5,5,5,0%,1901,Not Started
 W526LT,W526,W526.3210,HYB 2025 EDF Review,17-Jun-25,30-Jun-25,17-Jun-25,30-Jun-25,10,10,10,0%,1901,Not Started
 W526LT,W526,W526.3200,"HYB 2025 LSR Update, Internal Review & Issue to EDF",03-Jun-25,16-Jun-25,03-Jun-25,16-Jun-25,10,10,10,0%,1901,Not Started
 W526LT,W526,W526.3190,HYB 2025 Recommendations Workshop,02-Jun-25,02-Jun-25,02-Jun-25,02-Jun-25,1,1,1,0%,1901,Not Started
 W526LT,W526,W526.3180,HYB 2025 Issue Recommendations,30-May-25,30-May-25,30-May-25,30-May-25,1,1,1,0%,1901,Not Started
 W526LT,W526,W526.3170,"HYB 2025 LSR Data Export, Analysis, Draft Report",13-May-25,29-May-25,13-May-25,29-May-25,12,12,12,0%,1901,Not Started
 W526LT,W526,W526.3160,HYB 2025 LSR Pre Data Extract,14-Apr-25,12-May-25,14-Apr-25*,12-May-25,18,18,18,0%,1901,Not Started
 ER7582LT,W196,W196.6380,HYA 2025 - Installation R2,10-Sep-26,30-Sep-26,10-Sep-26*,30-Sep-26,15,15,15,0%,1079,Not Started
 ER7582LT,W196,W196.6360,HYA 2025 - Specification,03-Nov-25,12-Dec-25,03-Nov-25*,12-Dec-25,30,30,30,0%,1278,Not Started
 ER7582LT,W196,W196.25390,HYA 2025 TGN097 R2 - Report Issue,,01-May-25,,01-May-25,0,0,0,0%,1437,Not Started
 ER7582LT,W196,W196.25380,HYA 2025 TGN097 R2 - Plan Produced,,07-Feb-25,,07-Feb-25 A,0,0,0,100%,,Completed
 ER7582LT,W196,W196.25370,Issue LSR,24-Mar-25,24-Mar-25,16-Apr-25,16-Apr-25,1,1,1,0%,1446,Not Started
 ER7582LT,W196,W196.25360,Update LSR,17-Mar-25,21-Mar-25,09-Apr-25,15-Apr-25,5,5,5,0%,1446,Not Started
 ER7582LT,W196,W196.25350,EDF Review,06-Mar-25,14-Mar-25,31-Mar-25 A,08-Apr-25,7,6,7,10%,1446,In Progress
 ER7582LT,W196,W196.25340,"LSR Update, Internal Review & Issue to EDF",20-Feb-25,05-Mar-25,17-Mar-25 A,28-Mar-25 A,10,0,10,100%,,Completed
 ER7582LT,W196,W196.25330,Recommendations Workshop,19-Feb-25,19-Feb-25,14-Mar-25 A,14-Mar-25 A,1,0,1,100%,,Completed
 ER7582LT,W196,W196.25320,Issue Recommendations,13-Feb-25,13-Feb-25,10-Mar-25 A,10-Mar-25 A,1,0,1,100%,,Completed
 ER7582LT,W196,W196.25310,"LSR Data Export, Analysis, Draft Report",23-Jan-25,12-Feb-25,17-Feb-25 A,07-Mar-25 A,15,0,15,100%,,Completed
 ER7582LT,W196,W196.25300,LSR Pre Data Extract,20-Jan-25,24-Jan-25,20-Jan-25 A,24-Jan-25 A,5,0,5,100%,,Completed
 ER7582LT,W196,W196.25290,HYA 2024 Issue Complete LSR,,01-May-24,,01-May-24 A,0,0,0,100%,,Completed
 ER7582LT,W196,W196.2730,Issue LSR,22-Apr-24,22-Apr-24,22-Apr-24 A,22-Apr-24 A,1,0,1,100%,,Completed
 ER7582LT,W196,W196.2710,Update LSR,15-Apr-24,19-Apr-24,15-Apr-24 A,19-Apr-24 A,5,0,5,100%,,Completed
 ER7582LT,W196,W196.2700,EDF Review,15-Mar-24,12-Apr-24,15-Mar-24 A,12-Apr-24 A,10,0,19,100%,,Completed
 ER7582LT,W196,W196.2660,"LSR Update, Internal Review & Issue to EDF",01-Mar-24,14-Mar-24,01-Mar-24 A,14-Mar-24 A,10,0,10,100%,,Completed
 ER7582LT,W196,W196.2650,Recommendations Workshop,29-Feb-24,29-Feb-24,29-Feb-24 A,29-Feb-24 A,1,0,1,100%,,Completed
 ER7582LT,W196,W196.2640,Issue Recommendations,21-Feb-24,21-Feb-24,21-Feb-24 A,21-Feb-24 A,1,0,1,100%,,Completed
 ER7582LT,W196,W196.2140,"LSR Data Export, Analysis, Draft Report",31-Jan-24,20-Feb-24,31-Jan-24 A,20-Feb-24 A,15,0,15,100%,,Completed
 ER7582LT,W196,W196.2090,LSR Pre Data Extract,03-Jan-24,09-Jan-24,03-Jan-24 A,09-Jan-24 A,5,0,5,100%,,Completed
 ER7581LT,W195,W195.25580,HRA 2025 TGN097 R2 - Report Issue,,05-Sep-25,,05-Sep-25,0,0,0,0%,1349,Not Started
 ER7581LT,W195,W195.25570,HRA 2025 TGN097 R2 - Plan Produced,,07-Feb-25,,07-Feb-25 A,0,0,0,100%,,Completed
 ER7581LT,W195,W195.25560,HRA 2025 Issue Complete LSR,,20-Aug-25,,20-Aug-25,0,0,0,0%,1360,Not Started
 ER7581LT,W195,W195.25550,HRA 2024 TGN097 R1 - Report Issue,,13-Sep-24,,13-Sep-24 A,0,0,0,100%,,Completed
 ER7581LT,W195,W195.25540,HRA 2024 TGN097 R1 - Plan Produced,,28-Mar-24,,28-Mar-24 A,0,0,0,100%,,Completed
 ER7579LT,W193,W193. 1215,TPM and JCRB Meetings Held - 2024,02-Jan-24,31-Dec-24,02-Jan-24 A,31-Dec-24 A,254,0,254,100%,,Completed
 ER7581LT,W195,W195.25500,Issue Complete LSR,20-Aug-25,20-Aug-25,20-Aug-25,20-Aug-25,1,1,1,0%,1360,Not Started
 ER7581LT,W195,W195.25490,Update LSR,13-Aug-25,19-Aug-25,13-Aug-25,19-Aug-25,5,5,5,0%,1360,Not Started
 ER7581LT,W195,W195.25480,EDF Review,30-Jul-25,12-Aug-25,30-Jul-25,12-Aug-25,10,10,10,0%,1360,Not Started
 ER7581LT,W195,W195.25470,"LSR Update, Internal Review & Issue to EDF",16-Jul-25,29-Jul-25,16-Jul-25,29-Jul-25,10,10,10,0%,1360,Not Started
 ER7581LT,W195,W195.25460,Recommendations Workshop,15-Jul-25,15-Jul-25,15-Jul-25,15-Jul-25,1,1,1,0%,1360,Not Started
 ER7581LT,W195,W195.25450,Issue Recommendations,08-Jul-25,08-Jul-25,08-Jul-25,08-Jul-25,1,1,1,0%,1360,Not Started
 ER7581LT,W195,W195.25440,"LSR Data Export, Analysis, Draft Report",17-Jun-25,07-Jul-25,17-Jun-25,07-Jul-25,15,15,15,0%,1360,Not Started
 ER7581LT,W195,W195.25430,LSR Pre Data Extract,27-May-25,16-Jun-25,27-May-25*,16-Jun-25,15,15,15,0%,1360,Not Started
 ER7581LT,W195,W195.25420,HRA 2024 Issue Complete LSR,,11-Dec-24,,11-Dec-24 A,0,0,0,100%,,Completed
 ER7581LT,W195,W195.25410,Issue Complete LSR,11-Dec-24,11-Dec-24,11-Dec-24 A,11-Dec-24 A,1,0,1,100%,,Completed
 ER7581LT,W195,W195.25400,Update LSR,04-Dec-24,10-Dec-24,04-Dec-24 A,10-Dec-24 A,5,0,5,100%,,Completed
 ER7581LT,W195,W195.25390,EDF Review,13-Nov-24,26-Nov-24,13-Nov-24 A,26-Nov-24 A,10,0,10,100%,,Completed
 ER7581LT,W195,W195.25380,"LSR Update, Internal Review & Issue to EDF",30-Oct-24,12-Nov-24,30-Oct-24 A,12-Nov-24 A,10,0,10,100%,,Completed
 ER7581LT,W195,W195.25370,Recommendations Workshop,29-Oct-24,29-Oct-24,29-Oct-24 A,29-Oct-24 A,1,0,1,100%,,Completed
 ER7581LT,W195,W195.25360,Issue Recommendations,21-Oct-24,21-Oct-24,21-Oct-24 A,21-Oct-24 A,1,0,1,100%,,Completed
 ER7581LT,W195,W195.25350,"LSR Data Export, Analysis, Draft Report",30-Sep-24,18-Oct-24,30-Sep-24 A,18-Oct-24 A,15,0,15,100%,,Completed
 ER7581LT,W195,W195.25340,LSR Pre Data Extract,02-Sep-24,06-Sep-24,02-Sep-24 A,06-Sep-24 A,5,0,5,100%,,Completed
 ER7579LT,W193,W193.25290,HNB 2024 R3 - Requirement (Discovery)  (No Longer Required),29-Dec-23,29-Dec-23,29-Dec-23 A,29-Dec-23 A,1,0,0,100%,,Completed
 ER7579LT,W193,W193.25280,HNB 2024 R4 - Software Build Requirement (Discovery),,28-Jun-24,,28-Jun-24 A,0,0,0,100%,,Completed
 ER7579LT,W193,W193.25270,HNB 2024 R4 - Software Build Requirement (Discovery),28-Jun-24,28-Jun-24,28-Jun-24 A,28-Jun-24 A,1,0,1,100%,,Completed
 ER7580LT,W194,W194.25650,Issue Complete LSR,14-Feb-25,14-Feb-25,10-Mar-25 A,10-Mar-25 A,1,0,1,100%,,Completed
 ER7580LT,W194,W194.25640,Update LSR,07-Feb-25,13-Feb-25,03-Mar-25 A,07-Mar-25 A,5,0,5,100%,,Completed
 ER7580LT,W194,W194.25630,EDF Review,24-Jan-25,06-Feb-25,25-Feb-25 A,28-Feb-25 A,10,0,4,100%,,Completed
 ER7580LT,W194,W194.25620,"LSR Update, Internal Review & Issue to EDF",10-Jan-25,23-Jan-25,11-Feb-25 A,24-Feb-25 A,10,0,10,100%,,Completed
 ER7580LT,W194,W194.25610,Recommendations Workshop,03-Jan-25,03-Jan-25,04-Feb-25 A,04-Feb-25 A,1,0,1,100%,,Completed
 ER7580LT,W194,W194.25600,Issue Recommendations,02-Jan-25,02-Jan-25,03-Feb-25 A,03-Feb-25 A,1,0,1,100%,,Completed
 ER7580LT,W194,W194.25590,"LSR Data Export, Analysis, Draft Report",13-Jan-25,31-Jan-25,13-Jan-25 A,31-Jan-25 A,15,0,15,100%,,Completed
 ER7580LT,W194,W194.25580,LSR Pre Data Extract,09-Dec-24,13-Dec-24,09-Dec-24 A,13-Dec-24 A,5,0,5,100%,,Completed
 ER7580LT,W194,W194.25570,HPB 2024 R32.0 - Installation R4,,19-Jul-24,,19-Jul-24 A,0,0,0,100%,,Completed
 ER7580LT,W194,W194.25560,HPB 2024 HCP34 - Installation R3,,01-Jul-24,,01-Jul-24 A,0,0,0,100%,,Completed
 ER7580LT,W194,W194.25550,HPB 2025 R33.0 - Installation R3,,28-Feb-25,,28-Feb-25 A,0,0,0,100%,,Completed
 ER7580LT,W194,W194.25540,HPB 2025 R33.0 - Installation R4,,28-Feb-25,,28-Feb-25 A,0,0,0,100%,,Completed
 ER7580LT,W194,W194.25530,HPB 2025 HCP35 - Installation R3,,28-Feb-25,,28-Feb-25 A,0,0,0,100%,,Completed
 ER7580LT,W194,W194.25520,HPB 2025 HCP35 - Installation R4,,28-Feb-25,,28-Feb-25 A,0,0,0,100%,,Completed
 ER7580LT,W194,W194.25510,HPB 2025 HCP35 - Installation R3,10-Feb-25,28-Feb-25,10-Feb-25 A,28-Feb-25 A,15,0,15,100%,,Completed
 ER7580LT,W194,W194.25500,HPB 2025 R33.0 - Installation R3,10-Feb-25,28-Feb-25,10-Feb-25 A,28-Feb-25 A,15,0,15,100%,,Completed
 ER7580LT,W194,W194.25490,HPB 2024 HCP34 - Installation R3,03-Jun-24,21-Jun-24,03-Jun-24 A,21-Jun-24 A,15,0,15,100%,,Completed
 ER7580LT,W194,W194.25480,HPB 2024 R32.0 - Installation R3,17-Jun-24,24-Jun-24,17-Jun-24 A,24-Jun-24 A,15,0,6,100%,,Completed
 ER7580LT,W194,W194.25470,HPB 2024 HCP34 - Installation R4,,19-Jul-24,,19-Jul-24 A,0,0,0,100%,,Completed
 ER7580LT,W194,W194.25460,HPB 2024 R32.0 - Installation R3,,19-Jul-24,,19-Jul-24 A,0,0,0,100%,,Completed
 ER7580LT,W194,W194.25450,HPB 2024 - Issue LSR,,19-Mar-24,,19-Mar-24 A,0,0,0,100%,,Completed
 ER7580LT,W194,W194.25440,Issue Complete LSR,19-Mar-24,19-Mar-24,19-Mar-24 A,19-Mar-24 A,1,0,1,100%,,Completed
 ER7580LT,W194,W194.25430,Update LSR,12-Mar-24,18-Mar-24,12-Mar-24 A,18-Mar-24 A,5,0,5,100%,,Completed
 ER7580LT,W194,W194.25420,EDF Review,27-Feb-24,11-Mar-24,27-Feb-24 A,11-Mar-24 A,10,0,10,100%,,Completed
 ER7580LT,W194,W194.25410,"LSR Update, Internal Review & Issue to EDF",13-Feb-24,26-Feb-24,13-Feb-24 A,26-Feb-24 A,10,0,10,100%,,Completed
 ER7580LT,W194,W194.25400,Recommendations Workshop,06-Feb-24,06-Feb-24,06-Feb-24 A,06-Feb-24 A,1,0,1,100%,,Completed
 ER7580LT,W194,W194.25390,Issue Recommendations,30-Jan-24,30-Jan-24,30-Jan-24 A,30-Jan-24 A,1,0,1,100%,,Completed
 ER7580LT,W194,W194.25380,"LSR Data Export, Analysis, Draft Report",09-Jan-24,29-Jan-24,09-Jan-24 A,29-Jan-24 A,15,0,15,100%,,Completed
 ER7580LT,W194,W194.25370,LSR Pre Data Extract,05-Dec-23,11-Dec-23,05-Dec-23 A,11-Dec-23 A,5,0,5,100%,,Completed
 ER7580LT,W194,W194.25360,TPM and JCRB Meetings Held 2025,02-Jan-25,31-Dec-25,02-Jan-25 A,31-Dec-25,253,190,253,24%,509,In Progress
 ER7580LT,W194,W194.25350,TPM and JCRB Meetings Held 2024,02-Jan-24,31-Dec-24,02-Jan-24 A,31-Dec-24 A,254,0,254,100%,,Completed
 ER7580LT,W194,W194.25340,HPB 2025 - TGN097 R3 Report,,06-Nov-25,,06-Nov-25,0,0,0,0%,546,Not Started
 ER7580LT,W194,W194.25330,HPB 2025 - TGN097 R3 Inspection Complete,,09-Oct-25,,09-Oct-25,0,0,0,0%,566,Not Started
 ER7580LT,W194,W194.25320,HPB 2025 - TGN097 R3 Plan,,07-Feb-25,,07-Feb-25 A,0,0,0,100%,,Completed
 ER7580LT,W194,W194.25310,HPB 2024 - TGN097 R4 Report Issued,,01-Oct-24,,01-Oct-24 A,0,0,0,100%,,Completed
 ER7580LT,W194,W194.25300,HPB 2024 - TGN097 R4 Inspection Complete,,11-Sep-24,,11-Sep-24 A,0,0,0,100%,,Completed
 ER7580LT,W194,W194.25290,HPB 2024 - TGN097 R4 Plan,,28-Mar-24,,28-Mar-24 A,0,0,0,100%,,Completed
 W159LT,W159,W159.34991,2025,02-Jan-25,31-Dec-25,01-Apr-25,31-Dec-25,190,190,190,0%,274,Not Started
 W159LT,W159,W159.34981,2024,01-May-24,31-Dec-24,01-May-24 A,31-Dec-24 A,232,0,170,100%,,Completed
 W159LT,W159,W159.10013,"Substantive D/SPPIF, SVAs and SPORs completion (awaiting final Safety Case Approval)",,15-Dec-25,,16-Dec-25,0,0,0,0%,283,Not Started
 W159LT,W159,W159.10,2023 Actual,02-May-23,30-Jun-23,02-May-23 A,30-Jun-23 A,42,0,41,100%,,Completed
 W159LT,W159,W159.1000,Summary for TOR Security W159,02-May-23,29-Jan-27,02-May-23 A,29-Jan-27,800,464,950,21%,0,In Progress
 W159LT,W159,W159.A10501600,Project Closed,,29-Jan-27,,29-Jan-27,0,0,0,0%,0,Not Started
 W159LT,W159,W159.A1022,All Scope Delivered [FEEDS TO SUMMARY SCHEDULE],,29-Jan-27,,29-Jan-27,0,0,0,0%,0,Not Started
 W159LT,W159,W159.3750,Prep for Defueling All Security Issues Considered & Addressed for Permanent Mitigations,,23-Dec-25,,24-Dec-25,0,0,0,0%,277,Not Started
 W159LT,W159,W159.3680,>>> INCOMING ENABLER W213 Review SPPI File Against Approved Defuelling Essential Safety Cases,,22-Jul-25,,06-Aug-25,0,0,0,0%,376,Not Started
 W159LT,W159,W159.3670,TOR Security Regulatory Commitment Log (SRCL) Submit to ONR,,23-Dec-25,,24-Dec-25,0,0,0,0%,277,Not Started
 W159LT,W159,W159.01,Project Start [FEEDS TO SUMMARY SCHEDULE],02-May-23,,02-May-23 A,,0,0,0,100%,,Completed
 W159LT,W159,W159.000010,EAC (DD-PF),02-Jan-25,31-Dec-26,01-Apr-25,31-Dec-26,444,444,444,0%,20,Not Started
 W159LT,W159,W159.1990,Undertake assessment of potential impacts on existing TSS/TSP in respect of increased Flask movements,06-Aug-25,19-Aug-25,06-Aug-25*,19-Aug-25,10,10,10,0%,346,Not Started
 W159LT,W159,W159.2020,Undertake Site assessment of revised Flask Transfer/Storage arrangements,25-Jun-25,22-Jul-25,25-Jun-25*,22-Jul-25,20,20,20,0%,346,Not Started
 W159LT,W159,W159.2040,Undertake Security Vulnerability Assessments of Off-site and On-site rail heads and potential storage areas,23-Jul-25,05-Aug-25,23-Jul-25,05-Aug-25,10,10,10,0%,346,Not Started
 W159LT,W159,W159.2660,Prep for Defueling All Security Issues Considered & Addressed for Temporary Mitigations (TOR QP Sign Off),,23-Dec-25,,24-Dec-25,0,0,0,0%,277,Not Started
 W159LT,W159,W159.2670,ONR acknowledgement of proposed delivery model (ONR Approval Of DNSSP),,09-Jan-26,,19-Nov-25,0,0,0,0%,302,Not Started
 W159LT,W159,W159.2360,>>> MIRROR INCOMING ENABLER W213 Review SPPI File Against Approved Defuelling Essential Safety Cases,,17-Feb-25,,30-Sep-25*,0,0,0,0%,127,Not Started
 W159LT,W159,W159.3150,"Review Prep for Defueling (QH Self Assessment, PJDB, CR) - Lessons Learned Review Complete",,03-Apr-23,,03-Apr-23 A,0,0,0,100%,,Completed
 W159LT,W159,W159.11,Issue of SPOR - SPPI File for Prep of Defueling,,16-Dec-25,,17-Dec-25,0,0,0,0%,282,Not Started
 W159LT,W159,W159.3490,Review Prep for Defueling Revised SPOR for Temporary of Permanent Mitigations,,16-Dec-25,,17-Dec-25,0,0,0,0%,282,Not Started
 W159LT,W159,W159.3500,Review TSS/TSP For New Temporary or Permanent Mitigations,,19-Aug-25,,19-Aug-25,0,0,0,0%,367,Not Started
 W159LT,W159,W159.3480,TOR Prep for Defueling Security Protected Plant Identification (SPPI) Submit to ONR,,25-Nov-25,,29-Oct-25,0,0,0,0%,317,Not Started
 W159LT,W159,W159.3300,Prep for Off Site Transport All Security Issues Considered & Addressed,,19-Aug-25,,19-Aug-25,0,0,0,0%,367,Not Started
 W159LT,W159,W159.2500,ONR Approval of Draft DNSSP,24-Dec-25,09-Jan-26,06-Nov-25,19-Nov-25,10,10,10,0%,302,Not Started
 W159LT,W159,W159.2490,Draft DNSSP And Sumit To ONR,26-Nov-25,02-Dec-25,30-Oct-25,05-Nov-25,5,5,5,0%,302,Not Started
 W159LT,W159,W159.3630,ONR acknowledgement of SPPI File Final (Not Required if SC is Delivered on Time),26-Nov-25,23-Dec-25,03-Feb-25 A,28-Feb-25 A,20,0,20,100%,,Completed
 W159LT,W159,W159.2440,Submit  Defuelling SPPI File to ONR,25-Nov-25,25-Nov-25,29-Oct-25,29-Oct-25,1,1,1,0%,302,Not Started
 W159LT,W159,W159.1910,EAN (Reactor Systems) Production,01-Feb-23,13-Mar-23,01-Feb-23 A,13-Mar-23 A,60,0,28,100%,,Completed
 W159LT,W159,W159.24600,Reactor Equivalence Confirmed by NSG Group Head,01-Jul-26,04-Nov-26,01-Jul-26*,04-Nov-26,90,90,90,0%,0,Not Started
 W159LT,W159,W159.24500,Sign Station Defuelling QP- Ready to Implement Defuelling Security Regime,24-Dec-25,23-Jan-26,29-Dec-25,29-Dec-25,0,0,0,0%,127,Not Started
 W159LT,W159,W159.2650,Update Site SRCL And Sumbit To ONR V1,17-Dec-25,23-Dec-25,18-Dec-25,24-Dec-25,5,5,5,0%,127,Not Started
 W159LT,W159,W159.1930,Undertake Site assessment of defuelling impacts on existing and new SPP and resources,30-Sep-25,06-Oct-25,01-Oct-25,07-Oct-25,5,5,5,0%,127,Not Started
 W159LT,W159,W159.1940,Write up Defuelling SPPI file V1,07-Oct-25,27-Oct-25,08-Oct-25,28-Oct-25,15,15,15,0%,127,Not Started
 W159LT,W159,W159.1950,Undertake Security Vulnerability Assessments on changes to existing and new SPP V1,28-Oct-25,17-Nov-25,29-Oct-25,18-Nov-25,15,15,15,0%,127,Not Started
 W159LT,W159,W159.1960,Draft SPORs for all changes to existing and new SPP requiring revised or new mitigation measures V1,18-Nov-25,15-Dec-25,19-Nov-25,16-Dec-25,20,20,20,0%,127,Not Started
 W159LT,W159,W159.2520,Site SQEP verification and INA review of SPPI File (Not Required if SC is Delivered on Time),28-Oct-25,10-Nov-25,03-Feb-25 A,14-Feb-25 A,10,0,10,100%,,Completed
 W159LT,W159,W159.2530,Revision of SPPI File Folliowing INA Review V1 (Not Required if SC is Delivered on Time),11-Nov-25,17-Nov-25,03-Feb-25 A,07-Feb-25 A,5,0,5,100%,,Completed
 W159LT,W159,W159.2540,Issue of SPPI File and submit to ONR V1 (Not Required if SC is Delivered on Time),18-Nov-25,24-Nov-25,03-Feb-25 A,07-Feb-25 A,5,0,5,100%,,Completed
 W159LT,W159,W159.2570,Complete MSI process,16-Dec-25,29-Jan-26,17-Dec-25,30-Jan-26,30,30,30,0%,193,Not Started
 W159LT,W159,W159.2580,Implement administratively based mitigations,05-Nov-26,02-Dec-26,05-Nov-26,02-Dec-26,20,20,20,0%,0,Not Started
 W159LT,W159,W159.2590,Implement temp. infrastructure and org mitigations required to enable commencement of defuelling (FEEDS TO SUMMARY SCHE),05-Nov-26,29-Jan-27,05-Nov-26,29-Jan-27,60,60,60,0%,0,Not Started
 W159LT,W159,W159.2600,Implement permanent infrastructure and organisational mitigations,05-Nov-26,29-Jan-27,05-Nov-26,29-Jan-27,60,60,60,0%,0,Not Started
 W159LT,W159,W159.2700,Draft List of Security changes and proposed MSI Categories (Not Required if SC is Delivered on Time),28-Oct-25,10-Nov-25,03-Feb-25 A,14-Feb-25 A,10,0,10,100%,,Completed
 W159LT,W159,W159.2710,"Review and Agree Security Changes and MSI Category (INA, SPB, NSC)",16-Dec-25,29-Jan-26,17-Dec-25,30-Jan-26,30,30,30,0%,193,Not Started
 W159LT,W159,W159.2350,Issue SPORS V1,16-Dec-25,16-Dec-25,17-Dec-25,17-Dec-25,1,1,1,0%,127,Not Started
 W159LT,W159,W159.3170,"Review Prep for Defueling Lessons Learned (QH Self Assessment, PJDB, CR)",01-Feb-23,02-Feb-23,01-Feb-23 A,02-Feb-23 A,2,0,2,100%,,Completed
 W159LT,W159,W159.2000,Submit Revised TSS/TSP To ONR,20-Aug-25,20-Aug-25,20-Aug-25,20-Aug-25,1,1,1,0%,346,Not Started
 W159LT,W159,W159.2010,ONR Approval Of Revised TSS/TSP,21-Aug-25,18-Sep-25,21-Aug-25,18-Sep-25,20,20,20,0%,346,Not Started
 W159LT,W159,W159.2030,Implement Revised TSS/TSP Arrangements,01-Jul-26,23-Sep-26,01-Jul-26*,23-Sep-26,60,60,60,0%,90,Not Started
 W159LT,W159,W159.2550,Review SPPI File V1 Aganist Approved Defuelling Safety case And submit To ONR (Not Required if SC is Delivered on Time),18-Feb-25,24-Feb-25,01-Oct-25,07-Oct-25,5,5,5,0%,333,Not Started
 W157LT,W157,W157.2500,ONR Approval of Draft DNSSP,09-Jul-25,22-Jul-25,29-Aug-25,11-Sep-25,10,10,10,0%,331,Not Started
 W157LT,W157,W157.2490,Draft DNSSP And Sumit To ONR,10-Jun-25,16-Jun-25,30-Jul-25,05-Aug-25,5,5,5,0%,347,Not Started
 W157LT,W157,W157.34821,2025,02-Jan-25,02-Jan-25,01-Apr-25,31-Dec-25,190,190,190,0%,254,Not Started
 W157LT,W157,W157.34811,2024,01-Mar-24,31-Dec-24,01-Mar-24 A,31-Dec-24 A,232,0,211,100%,,Completed
 W157LT,W157,W157.3630,ONR acknowledgement of SPPI File Final,11-Jun-25,08-Jul-25,31-Jul-25,28-Aug-25,20,20,20,0%,231,Not Started
 W157LT,W157,W157.2440,Submit Final Defuelling SPPI File to ONR,10-Jun-25,10-Jun-25,30-Jul-25,30-Jul-25,1,1,1,0%,231,Not Started
 W157LT,W157,W157.2430,Update SRCL (Final),24-Jun-25,24-Jun-25,13-Aug-25,13-Aug-25,1,1,1,0%,351,Not Started
 W157LT,W157,W157.2420,Review SPORs (Final),17-Jun-25,23-Jun-25,06-Aug-25,12-Aug-25,5,5,5,0%,351,Not Started
 W157LT,W157,W157.2410,Review SVAs (Final),10-Jun-25,16-Jun-25,30-Jul-25,05-Aug-25,5,5,5,0%,351,Not Started
 W157LT,W157,W157.1910,EAN (Reactor Systems) Production,01-Feb-23,13-Mar-23,01-Feb-23 A,13-Mar-23 A,60,0,28,100%,,Completed
 W157LT,W157,W157.10013,"Substantive D/SPPIF, SVAs and SPORs completion (awaiting final Safety Case Approval)",,21-Jul-25,,21-Jul-25,0,0,0,0%,368,Not Started
 W157LT,W157,W157.24600,Reactor Equivalence Confirmed by NSG Group Head,01-Jul-26,04-Nov-26,01-Jul-26*,04-Nov-26,90,90,90,0%,40,Not Started
 W157LT,W157,W157.24500,Sign Station Defuelling QP- Ready to Implement Defuelling Security Regime,09-Jul-25,05-Aug-25,29-Aug-25,25-Sep-25,20,20,20,0%,231,Not Started
 W157LT,W157,W157.10,2023,01-Feb-23,29-Dec-23,01-Feb-23 A,29-Dec-23 A,230,0,229,100%,,Completed
 W157LT,W157,W157.1000,Summary for HYB Security W157,01-Feb-23,02-Dec-26,01-Feb-23 A,02-Dec-26,855,424,971,53%,20,In Progress
 W157LT,W157,W157.A10501600,Project Closed,,02-Dec-26,,02-Dec-26,0,0,0,0%,20,Not Started
 W157LT,W157,W157.A1022,All Scope Delivered [FEEDS TO SUMMARY SCHEDULE],,02-Dec-26,,02-Dec-26,0,0,0,0%,20,Not Started
 W157LT,W157,W157.2650,Update Site SRCL V1,23-Jul-25,29-Jul-25,23-Jul-25,29-Jul-25,5,5,5,0%,362,Not Started
 W157LT,W157,W157.3750,Prep for Defueling All Security Issues Considered & Addressed for Permanent Mitigations,,16-Dec-25,,16-Dec-25,0,0,0,0%,263,Not Started
 W157LT,W157,W157.3680,>>> INCOMING ENABLER W209 Review SPPI File Against ONR Approved Essential Defueling Safety Cases,,22-Jul-25,,06-Aug-25,0,0,0,0%,356,Not Started
 W157LT,W157,W157.3670,HYB Security Regulatory Commitment Log (SRCL) Submit to ONR,,24-Jun-25,,13-Aug-25,0,0,0,0%,351,Not Started
 W157LT,W157,W157.01,Project Start [FEEDS TO SUMMARY SCHEDULE],01-Feb-23,,01-Feb-23 A,,0,0,0,100%,,Completed
 W157LT,W157,W157.000010,EAC (DD-PF),02-Jan-25,31-Dec-26,01-Apr-25*,31-Dec-26,444,444,444,0%,0,Not Started
 W157LT,W157,W157.1930,Undertake Site assessment of defuelling impacts on existing and new SPP and resources,02-May-25,09-May-25,02-May-25*,09-May-25,5,5,5,0%,267,Not Started
 W157LT,W157,W157.1940,Write up Defuelling SPPI file V1,12-May-25,02-Jun-25,12-May-25,02-Jun-25,15,15,15,0%,267,Not Started
 W157LT,W157,W157.1950,Undertake Security Vulnerability Assessments on changes to existing and new SPP V1,03-Jun-25,23-Jun-25,03-Jun-25,23-Jun-25,15,15,15,0%,293,Not Started
 W157LT,W157,W157.1960,Draft SPORs for all changes to existing and new SPP requiring revised or new mitigation measures V1,24-Jun-25,21-Jul-25,24-Jun-25,21-Jul-25,20,20,20,0%,293,Not Started
 W157LT,W157,W157.1980,Draft Site specific Flask Transport Impact initial assessment template,02-Sep-25,02-Sep-25,02-Sep-25*,02-Sep-25,1,1,1,0%,297,Not Started
 W157LT,W157,W157.1990,Undertake assessment of potential impacts on existing TSS/TSP in respect of increased Flask movements,03-Sep-25,28-Oct-25,03-Sep-25*,28-Oct-25,40,40,40,0%,298,Not Started
 W157LT,W157,W157.2020,Undertake Site assessment of revised Flask Transfer/Storage arrangements,03-Sep-25,30-Sep-25,03-Sep-25,30-Sep-25,20,20,20,0%,297,Not Started
 W157LT,W157,W157.2520,Site SQEP verification and INA review of SPPI File,03-Jun-25,16-Jun-25,03-Jun-25,16-Jun-25,10,10,10,0%,383,Not Started
 W157LT,W157,W157.2530,Revision of SPPI File Folliowing INA Review V1,17-Jun-25,23-Jun-25,17-Jun-25,23-Jun-25,5,5,5,0%,383,Not Started
 W157LT,W157,W157.2540,Issue of SPPI File and submit to ONR V1,24-Jun-25,30-Jun-25,24-Jun-25,30-Jun-25,5,5,5,0%,383,Not Started
 W157LT,W157,W157.2560,Optioneer potential revised or new mitigations,22-Jul-25,11-Aug-25,22-Jul-25,11-Aug-25,15,15,15,0%,293,Not Started
 W157LT,W157,W157.2570,Complete MSI process,12-Aug-25,23-Sep-25,12-Aug-25,23-Sep-25,30,30,30,0%,293,Not Started
 W157LT,W157,W157.2580,Implement administratively based mitigations,05-Nov-26,02-Dec-26,05-Nov-26*,02-Dec-26,20,20,20,0%,20,Not Started
 W157LT,W157,W157.2590,Implement temp. infrastructure and org mitigations required to enable commencement of defuelling (FEEDS TO SUMMARY SCHE),24-Sep-25,04-Nov-25,24-Sep-25,04-Nov-25,30,30,30,0%,293,Not Started
 W157LT,W157,W157.2600,Implement permanent infrastructure and organisational mitigations,05-Nov-25,16-Dec-25,05-Nov-25*,16-Dec-25,30,30,30,0%,243,Not Started
 W157LT,W157,W157.2660,Prep for Defueling All Security Issues Considered & Addressed for Temporary Mitigations (HYB QP Sign Off),,04-Nov-25,,04-Nov-25,0,0,0,0%,293,Not Started
 W157LT,W157,W157.2670,ONR acknowledgement of proposed delivery model (ONR Approval of DNSSP),,22-Jul-25,,11-Sep-25,0,0,0,0%,331,Not Started
 W157LT,W157,W157.2700,Draft List of Security changes and proposed MSI Categories,03-Jun-25,16-Jun-25,03-Jun-25,16-Jun-25,10,10,10,0%,393,Not Started
 W157LT,W157,W157.2710,"Review and Agree Security Changes and MSI Category (INA, SPB, NSC)",12-Aug-25,23-Sep-25,12-Aug-25,23-Sep-25,30,30,30,0%,323,Not Started
 W157LT,W157,W157.2510,"Review Security Plan for Lessons Learned (QH Self Assessment, PJDB, CR)",01-Feb-23,02-Feb-23,01-Feb-23 A,02-Feb-23 A,2,0,2,100%,,Completed
 W157LT,W157,W157.2680,"Security Plan Lessons Learned Captured  (QH Self Assessment, PJDB, CR)",03-Feb-23,07-Feb-23,03-Feb-23 A,07-Feb-23 A,3,0,3,100%,,Completed
 W157LT,W157,W157.3140,Security Plan - Lessons Learned Review Complete,,07-Feb-23,,07-Feb-23 A,0,0,0,100%,,Completed
 W157LT,W157,W157.2350,Issue SPORS V1,22-Jul-25,22-Jul-25,22-Jul-25,22-Jul-25,1,1,1,0%,362,Not Started
 W157LT,W157,W157.2360,>>> MIRROR INCOMING ENABLER W209 Review SPPI File Against ONR Approved Essential Defueling Safety Cases,,17-Feb-25,,22-Jul-25*,0,0,0,0%,231,Not Started
 W157LT,W157,W157.2370,Review SPPI File Against Approved Essential Safety Cases,03-Jun-25,09-Jun-25,23-Jul-25,29-Jul-25,5,5,5,0%,231,Not Started
 W157LT,W157,W157.3150,"Review Prep for Defueling (QH Self Assessment, PJDB, CR) - Lessons Learned Review Complete",,02-Feb-23,,02-Feb-23 A,0,0,0,100%,,Completed
 W157LT,W157,W157.3170,"Review Prep for Defueling Lessons Learned (QH Self Assessment, PJDB, CR)",01-Feb-23,02-Feb-23,01-Feb-23 A,02-Feb-23 A,2,0,2,100%,,Completed
 W157LT,W157,W157.11,Issue of SPOR - SPPI File for Prep of Defueling,,22-Jul-25,,12-Aug-25,0,0,0,0%,352,Not Started
 W157LT,W157,W157.3490,Review Prep for Defueling Revised SPOR for Temporary And Permanent Mitigations,,22-Jul-25,,22-Jul-25,0,0,0,0%,367,Not Started
 W157LT,W157,W157.3530,Review Prep for Defueling SPOR for Temporary And Permanent Mitigations,,22-Jul-25,,22-Jul-25,0,0,0,0%,367,Not Started
 W157LT,W157,W157.3480,HYB Prep for Defueling Security Protected Plant Identification (SPPI) Submit to ONR,,10-Jun-25,,30-Jul-25,0,0,0,0%,361,Not Started
 W157LT,W157,W157.3510,Submit Proposed changes To TSS/TSP To ONR,,01-Oct-25,,01-Oct-25,0,0,0,0%,317,Not Started
 W157LT,W157,W157.3300,Prep for Off Site Transport All Security Issues Considered & Addressed,,28-Oct-25,,28-Oct-25,0,0,0,0%,298,Not Started
 W157LT,W157,W157.2040,Submit Proprosed Changes To TSS/TSP To ONR,01-Oct-25,01-Oct-25,01-Oct-25,01-Oct-25,1,1,1,0%,297,Not Started
 W157LT,W157,W157.2050,ONR Approval Of Any changes To TSS/TSP,02-Oct-25,29-Oct-25,02-Oct-25,29-Oct-25,20,20,20,0%,297,Not Started
 W157LT,W157,W157.2550,Review SPPI File V1 Aganist Approved Defuelling Safety case And submit To ONR,18-Feb-25,24-Feb-25,23-Jul-25,29-Jul-25,5,5,5,0%,232,Not Started
 ER7582LT,W196,W196.1005,2023 External,03-Jan-23,29-Dec-23,03-Jan-23 A,29-Dec-23 A,251,0,251,100%,,Completed
 ER7581LT,W195,W195.25190,2023 External,03-Jan-23,29-Dec-23,03-Jan-23 A,29-Dec-23 A,251,0,251,100%,,Completed
 ER7580LT,W194,W194.25280,Project Support - 2026,02-Jan-26,31-Dec-26,02-Jan-26*,31-Dec-26,254,254,254,0%,255,Not Started
 ER6360LT,W085,W085.1680,Enhance Inspection of DNB 5 Axle Trailer,05-Jun-23,14-Jul-23,05-Jun-23 A,14-Jul-23 A,1,0,30,100%,,Completed
 ER6360LT,W085,W085.1670,The Refurbishment of the TOR 3 Axle Trailer (No Longer Required),03-Jul-23,04-Jul-23,03-Jul-23 A,04-Jul-23 A,1,0,1,100%,,Completed
 ER6360LT,W085,W085.1660,Inspection of TOR 3 Axle Trailer,01-Feb-23,28-Apr-23,01-Feb-23 A,28-Apr-23 A,1,0,61,100%,,Completed
 W730LT_UN,W730,W730.2340,HYB Enhanced Defueling Rate: Station Approved Safety Case,,02-Sep-26,,02-Sep-26,0,0,0,0%,395,Not Started
 W730LT_UN,W730,W730.1020,Project Finish,,27-Mar-28,,27-Mar-28,0,0,0,0%,0,Not Started
 W730LT_UN,W730,W730.1780,## Gate D Submission - (Cost Summary)  ##,10-Mar-28,27-Mar-28,10-Mar-28,27-Mar-28,12,12,12,0%,0,Not Started
 W730LT_UN,W730,W730.2230,## HYB Enhanced Defueling Rate: B - B+ Phase Funding - (Cost Summary)  ##,03-Apr-25,10-Sep-26,03-Apr-25,10-Sep-26,362,362,362,0%,395,Not Started
 W730LT_UN,W730,W730.2040,HYB Enhanced Defueling Rate: Requirements Capture,10-Feb-26,11-Feb-26,10-Feb-26,11-Feb-26,2,2,2,0%,14,Not Started
 ER6360LT,W085,W085.1650,Paint Marked Areas,01-Jun-23,28-Jun-23,01-Jun-23 A,28-Jun-23 A,1,0,20,100%,,Completed
 ER6360LT,W085,W085.A4320,ONR Vitis to AB Painting Facilities,,01-Jun-23,,01-Jun-23 A,0,0,0,100%,,Completed
 ER6360LT,W085,W085.A4310,SL Audit Visit to AB,,28-Jun-23,,28-Jun-23 A,0,0,0,100%,,Completed
 ER6360LT,W085,W085.A4300,SL Mods for New Flasks (AB),02-May-23,28-Jul-23,02-May-23 A,28-Jul-23 A,1,0,62,100%,,Completed
 ER6360LT,W085,W085.A4290,SL Mods for New Flasks (SL),02-May-23,07-Jul-23,02-May-23 A,07-Jul-23 A,1,0,47,100%,,Completed
 ER6360LT,W085,W085.DS1910,Further Body Refurb,01-May-23,18-May-23,01-May-23 A,18-May-23 A,1,0,12,100%,,Completed
 ER7582LT,W196,W196.25230,HYA 2025 Project Start,02-Jan-25,,02-Jan-25 A,,0,0,0,100%,,Completed
 ER7582LT,W196,W196.25220,HYA 2024 Project End,,02-Dec-24,,02-Dec-24 A,0,0,0,100%,,Completed
 ER7582LT,W196,W196.25210,HYA 2024 Project Start,02-Jan-24,,02-Jan-24 A,,0,0,0,100%,,Completed
 ER7582LT,W196,W196.25200,HYA 2023 Project End,,29-Dec-23,,29-Dec-23 A,0,0,0,100%,,Completed
 ER7582LT,W196,W196.25190,HYA 2023 Project Start,03-Jan-23,,03-Jan-23 A,,0,0,0,100%,,Completed
 ER7582LT,W196,W196.25180,HYA DPCS Defueling Support Project End,,31-Dec-27,,31-Dec-30,0,0,0,0%,0,Not Started
 ER7581LT,W195,W195.25280,HRA 2025 Project Start,02-Jan-25,,02-Jan-25 A,,0,0,0,100%,,Completed
 ER7581LT,W195,W195.25270,HRA 2024 Project Start,02-Jan-24,,02-Jan-24 A,,0,0,0,100%,,Completed
 ER7581LT,W195,W195.25250,HRA DPCS Defuleing Support Project End,,03-Jan-28,,31-Dec-30,0,0,0,0%,0,Not Started
 ER7581LT,W195,W195.25240,HRA 2023 Project Start,03-Jan-23,,03-Jan-23 A,,0,0,0,100%,,Completed
 ER7581LT,W195,W195.25230,HRA 2023 Project End,,29-Dec-23,,29-Dec-23 A,0,0,0,100%,,Completed
 ER7580LT,W194,W194.25270,HPB 2025 Project End,,14-Dec-26,,29-Oct-26,0,0,0,0%,299,Not Started
 ER7580LT,W194,W194.25260,HPB 2025 Project Start,02-Jan-25,,02-Jan-25 A,,0,0,0,100%,,Completed
 ER7580LT,W194,W194.25250,HPB 2024 Project End,,31-Dec-24,,31-Dec-24 A,0,0,0,100%,,Completed
 ER7580LT,W194,W194.25240,HPB 2024 Project Start,02-Jan-24,,02-Jan-24 A,,0,0,0,100%,,Completed
 ER7580LT,W194,W194.25230,HPB 2023 Project End,,11-Mar-24,,11-Mar-24 A,0,0,0,100%,,Completed
 ER7580LT,W194,W194.25220,HPB 2023 Project Start,03-Jan-23,,03-Jan-23 A,,0,0,0,100%,,Completed
 ER7580LT,W194,W194.25210,HPB DPCS Defueling Support Project End,,14-Dec-26,,29-Oct-26,0,0,0,0%,299,Not Started
 ER7579LT,W193,W193.25260,HNB 2025 Project End,,31-Dec-25,,31-Dec-25,0,0,0,0%,0,Not Started
 ER7579LT,W193,W193.25250,HNB 2025 Project Start,02-Jan-25,,02-Jan-25 A,,0,0,0,100%,,Completed
 ER7579LT,W193,W193.25240,HNB 2024 Project End,,31-Dec-24,,31-Dec-24 A,0,0,0,100%,,Completed
 ER7579LT,W193,W193.25230,HNB 2024 Project Start,02-Jan-24,,02-Jan-24 A,,0,0,0,100%,,Completed
 ER7579LT,W193,W193.25220,HNB 2023 Project Start,03-Jan-23,,03-Jan-23 A,,0,0,0,100%,,Completed
 ER7579LT,W193,W193.25210,HNB 2023 Project End,,29-Dec-23,,29-Dec-23 A,0,0,0,100%,,Completed
 ER7743LT,W527,W527.25350,DNB 2025 Project Start,02-Jan-25,,02-Jan-25 A,,0,0,0,100%,,Completed
 ER7743LT,W527,W527.25340,DNB 2024 Project End,,31-Dec-24,,31-Dec-24 A,0,0,0,100%,,Completed
 ER7743LT,W527,W527.25330,DNB 2024 Project Start,02-Jan-24,,02-Jan-24 A,,0,0,0,100%,,Completed
 ER7743LT,W527,W527.25320,2023 DNB Project End,,29-Dec-23,,29-Dec-23 A,0,0,0,100%,,Completed
 ER7743LT,W527,W527.25310,2023 DNB Project Start,03-Jan-23,,03-Jan-23 A,,0,0,0,100%,,Completed
 W156LT,W156,W156.3120,Draft DNSSP,10-Feb-25,07-Mar-25,01-Sep-25*,19-Dec-25,80,80,80,0%,466,Not Started
 W155LT,W155,W155.3330,Draft DNSSP And Sumbit To ONR,29-Jan-25,11-Feb-25,01-Sep-25*,19-Dec-25,80,80,80,0%,225,Not Started
 ER6360LT,W085,W085.A4280,AB Flask Licensing & Modification Approval (Cat A Mod) (ONR),01-Jun-23,14-Jul-23,01-Jun-23 A,14-Jul-23 A,1,0,32,100%,,Completed
 ER7743LT,W527,W527.25300,Asset Guardian Licences and Support 2027,28-May-27,28-May-27,28-May-27*,28-May-27,1,1,1,0%,1165,Not Started
 ER7743LT,W527,W527.25290,Asset Guardian Licences and Support 2026 - 2027,28-May-26,28-May-26,28-May-26*,28-May-26,1,1,1,0%,1420,Not Started
 ER7743LT,W527,W527.25280,Asset Guardian Licences and Support 2025 - 2026,28-May-25,28-May-25,28-May-25*,28-May-25,1,1,1,0%,1673,Not Started
 ER7743LT,W527,W527.25270,Asset Guardian Licences and Support 2024 - 2027,01-Jul-24,01-Jul-24,01-Jul-24 A,01-Jul-24 A,1,0,1,100%,,Completed
 ER7743LT,W527,W527.25260,Asset Guardian Licences and Support 2023 - 2024,26-May-23,30-Jun-23,26-May-23 A,30-Jun-23 A,1,0,25,100%,,Completed
 ER7582LT,W196,W196.1030,2027 Externals,04-Jan-27,31-Dec-27,04-Jan-27,31-Dec-27,255,255,255,0%,759,Not Started
 ER7582LT,W196,W196.1025,2026 External,02-Jan-26,31-Dec-26,02-Jan-26,31-Dec-26,254,254,254,0%,1014,Not Started
 ER7582LT,W196,W196.1020,2025 External,02-Jan-25,31-Dec-25,02-Jan-25 A,31-Dec-25,253,190,253,24%,1268,In Progress
 ER7582LT,W196,W196.1015,2024 External,02-Jan-24,31-Dec-24,02-Jan-24 A,31-Dec-24 A,254,0,254,100%,,Completed
 ER7582LT,W196,W196.1000,Sunk Costs,04-Jan-21,31-Dec-24,04-Jan-21 A,31-Dec-24 A,504,0,1008,100%,,Completed
 ER7581LT,W195,W195.25220,2027 External,04-Jan-27,31-Dec-27,04-Jan-27,31-Dec-27,255,255,255,0%,759,Not Started
 ER7581LT,W195,W195.25210,2026 External,02-Jan-26,31-Dec-26,02-Jan-26,31-Dec-26,254,254,254,0%,1014,Not Started
 ER7581LT,W195,W195.1020,2025 Externals,02-Jan-25,31-Dec-25,02-Jan-25 A,31-Dec-25,253,190,253,24%,1268,In Progress
 ER7581LT,W195,W195.25200,2024 External,02-Jan-24,31-Dec-24,02-Jan-24 A,31-Dec-24 A,254,0,254,100%,,Completed
 ER7581LT,W195,W195.25180,Sunk Costs,04-Jan-21,31-Dec-24,04-Jan-21 A,31-Dec-24 A,504,0,1008,100%,,Completed
 ER6360LT,W085,W085.1640,Refurbish Trunnions and Pintle,27-Mar-23,30-Mar-23,27-Mar-23 A,30-Mar-23 A,1,0,4,100%,,Completed
 ER6360LT,W085,W085.1630,Refurbish Trunnions and Pintle,31-Mar-23,17-Apr-23,31-Mar-23 A,17-Apr-23 A,1,0,10,100%,,Completed
 ER7579LT,W193,W193.25200,2025 Externals,02-Jan-25,31-Dec-25,02-Jan-25 A,31-Dec-25,253,190,253,24%,0,In Progress
 ER7579LT,W193,W193.25190,2024 Externals,02-Jan-24,31-Dec-24,02-Jan-24 A,31-Dec-24 A,254,0,254,100%,,Completed
 ER7579LT,W193,W193.25180,2023 External,03-Jan-23,29-Dec-23,03-Jan-23 A,29-Dec-23 A,187,0,251,100%,,Completed
 ER7579LT,W193,W193.25170,Sunk Costs,01-Jan-21,31-Dec-24,01-Jan-21 A,31-Dec-24 A,1,0,1008,100%,,Completed
 ER7580LT,W194,W194.25200,2025 External,02-Jan-25,31-Dec-25,02-Jan-25 A,31-Dec-25,253,190,253,24%,509,In Progress
 ER7580LT,W194,W194.1015,2024 Externals,02-Jan-24,31-Dec-24,02-Jan-24 A,31-Dec-24 A,254,0,254,100%,,Completed
 ER7580LT,W194,W194.25190,2023 Externals,03-Jan-23,29-Dec-23,03-Jan-23 A,29-Dec-23 A,251,0,251,100%,,Completed
 ER7580LT,W194,W194.25180,Sunk Costs,01-Jan-21,31-Dec-24,01-Jan-21 A,31-Dec-24 A,504,0,1008,100%,,Completed
 ER6360LT,W085,W085.DS25320,ONR Review  (No Longer Required),01-May-24,01-May-24,01-May-24 A,01-May-24 A,1,0,0,100%,,Completed
 ER6360LT,W085,W085.SL2430,Flask 4 (SL) - Flask Licensing CO Review Cat C Mod,11-Mar-24,15-Mar-24,11-Mar-24 A,15-Mar-24 A,5,0,5,100%,,Completed
 ER6360LT,W085,W085.SL2420,Flask 4 (SL) - Flask Licensing Verification Cat C Mod,20-Feb-24,08-Mar-24,20-Feb-24 A,08-Mar-24 A,5,0,14,100%,,Completed
 ER6360LT,W085,W085.SL2410,Flask 3 (SL) - Flask Licensing CO Review Cat C Mod,04-Dec-23,08-Dec-23,04-Dec-23 A,08-Dec-23 A,5,0,5,100%,,Completed
 ER6360LT,W085,W085.SL2400,Flask 3 (SL) - Flask Licensing Verification Cat C Mod,18-Dec-23,22-Dec-23,18-Dec-23 A,22-Dec-23 A,5,0,5,100%,,Completed
 ER6360LT,W085,W085.SL2390,Flask 2 (SL) - Flask Licensing CO Review Cat C Mod,08-Aug-23,14-Aug-23,08-Aug-23 A,14-Aug-23 A,5,0,5,100%,,Completed
 ER6360LT,W085,W085.SL2380,Flask 2 (SL) - Flask Licensing Verification Cat C Mod,01-Aug-23,07-Aug-23,01-Aug-23 A,07-Aug-23 A,5,0,5,100%,,Completed
 W529LT,W529,W529.10070,TOR 2032 External Costs,02-Jan-32,31-Dec-32,02-Jan-32,31-Dec-32,256,256,256,0%,0,Not Started
 W529LT,W529,W529.10060,TOR 2031 External Costs,02-Jan-31,31-Dec-31,03-Jan-31,02-Jan-32,253,253,253,0%,255,Not Started
 W529LT,W529,W529.10050,TOR 2030 External Costs,02-Jan-30,31-Dec-30,02-Jan-30,31-Dec-30,253,253,253,0%,509,Not Started
 W529LT,W529,W529.10040,TOR 2029 External Costs,02-Jan-29,31-Dec-29,02-Jan-29,31-Dec-29,253,253,253,0%,762,Not Started
 W529LT,W529,W529.10030,TOR 2028 External Costs,03-Jan-28,29-Dec-28,03-Jan-28*,29-Dec-28,253,253,253,0%,1015,Not Started
 W529LT,W529,W529.10020,TOR 2027 External Costs,04-Jan-27,31-Dec-27,04-Jan-27*,31-Dec-27,255,255,255,0%,1268,Not Started
 W529LT,W529,W529.10010,TOR 2026 External Costs,02-Mar-26,01-Mar-27,02-Jan-26,31-Dec-26,254,254,254,0%,1523,Not Started
 W529LT,W529,W529.10000,TOR 2025 External Costs,02-Jan-25,31-Dec-25,02-Jan-25 A,31-Dec-25,253,190,253,24%,1777,In Progress
 W526LT,W526,W526.10070,HYB 2032 External Costs,02-Jan-32,31-Dec-32,02-Jan-32,31-Dec-32,256,256,256,0%,0,Not Started
 W526LT,W526,W526.10060,HYB 2031 External Costs,02-Jan-31,31-Dec-31,02-Jan-31,31-Dec-31,253,253,253,0%,0,Not Started
 W526LT,W526,W526.10050,HYB 2030 External Costs,02-Jan-30,31-Dec-30,02-Jan-30,31-Dec-30,253,253,253,0%,509,Not Started
 W526LT,W526,W526.10040,HYB 2029 External Costs,02-Jan-29,31-Dec-29,02-Jan-29,31-Dec-29,253,253,253,0%,762,Not Started
 W526LT,W526,W526.10030,HYB 2028 External Costs,03-Jan-28,29-Dec-28,03-Jan-28*,29-Dec-28,253,253,253,0%,1015,Not Started
 W526LT,W526,W526.10020,HYB 2027 External Costs,04-Jan-27,31-Dec-27,04-Jan-27,31-Dec-27,255,255,255,0%,1268,Not Started
 W526LT,W526,W526.10010,HYB 2026 External Costs,02-Jan-26,31-Dec-26,02-Jan-26,31-Dec-26,254,254,254,0%,1523,Not Started
 W526LT,W526,W526.10000,HYB 2025 External Costs,02-Jan-25,31-Dec-25,02-Jan-25 A,31-Dec-25,253,190,253,24%,1777,In Progress
 ER6360LT,W085,W085.DS25310,Flask 11 - Flask Licensing CO Review Cat C Mod  (No Longer Required),01-May-24,01-May-24,01-May-24 A,01-May-24 A,5,0,0,100%,,Completed
 ER6360LT,W085,W085.DS25300,Flask 11 - Flask Licensing Verification Cat C Mod  (No Longer Required),01-May-24,01-May-24,01-May-24 A,01-May-24 A,5,0,0,100%,,Completed
 ER6360LT,W085,W085.DS25290,Flask 10 - Flask Licensing CO Review Cat B Mod  (No Longer Required),01-May-24,01-May-24,01-May-24 A,01-May-24 A,5,0,0,100%,,Completed
 ER6360LT,W085,W085.DS25280,Flask 10 - Flask Licensing Verification Cat B Mod  (No Longer Required),01-May-24,01-May-24,01-May-24 A,01-May-24 A,5,0,0,100%,,Completed
 ER6360LT,W085,W085.DS25270,Flask 9 - Flask Licensing CO Review Cat C Mod,24-Jan-25,04-Feb-25,18-Jul-25,29-Jul-25,5,8,8,0%,36,Not Started
 ER6360LT,W085,W085.DS25260,Flask 9 - Flask Licensing Verification Cat C Mod,15-Jan-25,23-Jan-25,09-Jul-25,17-Jul-25,5,7,7,0%,36,Not Started
 ER6360LT,W085,W085.DS25250,Flask 8 - Flask Licensing CO Review Cat C Mod,12-Nov-24,21-Nov-24,28-May-25,06-Jun-25,5,8,8,0%,73,Not Started
 ER6360LT,W085,W085.DS25240,Flask 8 - Flask Licensing Verification Cat C Mod,01-Nov-24,11-Nov-24,16-May-25,27-May-25,5,7,7,0%,73,Not Started
 ER6360LT,W085,W085.DS25230,Flask 7 - Flask Licensing CO Review Cat C Mod,15-Oct-24,24-Oct-24,20-May-25,30-May-25,5,8,8,0%,78,Not Started
 ER6360LT,W085,W085.DS25220,Flask 7 - Flask Licensing Verification Cat C Mod,04-Oct-24,14-Oct-24,09-May-25,19-May-25,5,7,7,0%,78,Not Started
 ER6360LT,W085,W085.DS25210,Flask 6 - Flask Licensing CO Review Cat C Mod,01-Nov-24,12-Nov-24,09-Jun-25,18-Jun-25,5,8,8,0%,0,Not Started
 ER6360LT,W085,W085.DS25200,Flask 6 - Flask Licensing Verification Cat C Mod,23-Oct-24,31-Oct-24,29-May-25,06-Jun-25,5,7,7,0%,0,Not Started
 ER6360LT,W085,W085.DS25190,Flask 5 - Flask Licensing CO Review Cat C Mod,24-Jul-24,02-Aug-24,22-May-25,03-Jun-25,5,8,8,0%,5,Not Started
 ER6360LT,W085,W085.DS25180,Flask 5 - Flask Licensing Verification Cat C Mod,15-Jul-24,23-Jul-24,13-May-25,21-May-25,5,7,7,0%,5,Not Started
 ER6360LT,W085,W085.DS25170,Flask 4 - Flask Licensing CO Review Cat C Mod,18-Jul-24,29-Jul-24,16-Apr-25,29-Apr-25,5,8,8,0%,28,Not Started
 ER6360LT,W085,W085.DS25160,Flask 4 - Flask Licensing Verification Cat C Mod,09-Jul-24,17-Jul-24,07-Apr-25,15-Apr-25,5,7,7,0%,28,Not Started
 ER6360LT,W085,W085.DS25150,Flask 3 - Flask Licensing CO Review Cat C Mod,13-Jun-24,24-Jun-24,13-Jun-24 A,24-Jun-24 A,5,0,8,100%,,Completed
 ER6360LT,W085,W085.DS25140,Flask 3 - Flask Licensing Verification Cat C Mod,04-Jun-24,12-Jun-24,04-Jun-24 A,12-Jun-24 A,5,0,7,100%,,Completed
 ER6360LT,W085,W085.DS25130,Flask 2 - Flask Licensing CO Review Cat C Mod,26-Nov-24,05-Dec-24,08-May-25,19-May-25,5,8,8,0%,83,Not Started
 ER6360LT,W085,W085.DS25120,Flask 2 - Flask Licensing Verification Cat C Mod,15-Nov-24,25-Nov-24,28-Apr-25,07-May-25,5,7,7,0%,83,Not Started
 ER6360LT,W085,W085.1620,Pintle Recess,31-Mar-23,06-Apr-23,31-Mar-23 A,06-Apr-23 A,1,0,5,100%,,Completed
 ER6360LT,W085,W085.1610,Trunnions and Pintle,31-Mar-23,17-Apr-23,31-Mar-23 A,17-Apr-23 A,1,0,10,100%,,Completed
 ER6360LT,W085,W085.1600,Trunnions and Pintle,01-Mar-23,30-Mar-23,01-Mar-23 A,30-Mar-23 A,1,0,22,100%,,Completed
 ER6360LT,W085,W085.1590,Refurbish Trunnions and Pintle,27-Mar-23,18-Apr-23,27-Mar-23 A,18-Apr-23 A,1,0,15,100%,,Completed
 ER7743LT,W527,W527.25250,ETC 2027,04-Jan-27,31-Dec-27,04-Jan-27,31-Dec-27,255,255,255,0%,0,Not Started
 ER7743LT,W527,W527.25240,ETC 2026,02-Jan-26,31-Dec-26,02-Jan-26,31-Dec-26,254,254,254,0%,0,Not Started
 ER7743LT,W527,W527.25230,ETC 2025,02-Jan-25,31-Dec-25,01-Apr-25,31-Dec-25,190,190,190,0%,0,Not Started
 ER7743LT,W527,W527.25210,2023 Costs,03-Jan-23,29-Dec-23,03-Jan-23 A,29-Dec-23 A,251,0,251,100%,,Completed
 ER7743LT,W527,W527.3490,Sunk Costs,04-Jan-22,31-Dec-24,04-Jan-22 A,31-Dec-24 A,251,0,755,100%,,Completed
 ER6360LT,W085,W085.AB1020,Flask 1 - Flask Licensing CO Review Cat C Mod  (Needs Confimation),08-Feb-24,19-Feb-24,08-Feb-24 A,19-Feb-24 A,8,0,8,100%,,Completed
 ER6360LT,W085,W085.AB1010,Flask 1 - Flask Licensing Verification Cat C Mod (Needs Confimation),29-Jan-24,07-Feb-24,29-Jan-24 A,07-Feb-24 A,7,0,8,100%,,Completed
 ER6360LT,W085,W085.SL2370,Flask 1 (SL) - Flask Licensing CO Review Cat C Mod,13-Apr-23,19-Apr-23,13-Apr-23 A,19-Apr-23 A,5,0,5,100%,,Completed
 ER6360LT,W085,W085.SL2360,Flask 1 (SL) - Flask Licensing Verification Cat C Mod,04-Apr-23,12-Apr-23,04-Apr-23 A,12-Apr-23 A,5,0,5,100%,,Completed
 ER7743LT,W527,W527.25160,2023 Costs,03-Jan-23,29-Dec-23,03-Jan-23 A,29-Dec-23 A,1,0,251,100%,,Completed
 ER6360LT,W085,W085.1300,DECISION POINT: Skip to AB going into flask?,,12-May-23,,12-May-23 A,0,0,0,100%,,Completed
 ER6360LT,W085,W085.A6250,Transport Notification Period,09-May-23,30-May-23,09-May-23 A,30-May-23 A,1,0,15,100%,,Completed
 ER6360LT,W085,W085.A6240,EDF Deployment Process,20-Jan-23,03-Mar-23,20-Jan-23 A,03-Mar-23 A,1,0,31,100%,,Completed
 ER6360LT,W085,W085.A6230,EDF Deployment Decision,,01-Mar-23,,01-Mar-23 A,0,0,0,100%,,Completed
 ER6360LT,W085,W085.A6220,TOR Flask Transporter Refurbishment (CHANGE CONTROL TBC),20-Jan-23,19-May-23,20-Jan-23 A,19-May-23 A,1,0,82,100%,,Completed
 ER6360LT,W085,W085.DS12990,Additional Repairs,13-Feb-23,28-Mar-23,13-Feb-23 A,28-Mar-23 A,1,0,32,100%,,Completed
 ER6360LT,W085,W085.DS1860,Additional Body Repairs,03-Feb-23,27-Feb-23,03-Feb-23 A,27-Feb-23 A,1,0,17,100%,,Completed
 ER6360LT,W085,W085.A6880,SL complete SLWR scope,15-Feb-23,06-Apr-23,15-Feb-23 A,06-Apr-23 A,1,0,37,100%,,Completed
 ER6360LT,W085,W085.A6870,Author formal notification re ONR mod,13-Feb-23,15-Feb-23,13-Feb-23 A,15-Feb-23 A,55,0,3,100%,,Completed
 ER6360LT,W085,W085.A6860,Raise SLWR,01-Feb-23,10-Feb-23,01-Feb-23 A,10-Feb-23 A,5,0,8,100%,,Completed
 ER6360LT,W085,W085.DS25100,Flask 11 - Prepare Transport Paperwork  (No Longer Required),01-May-24,01-May-24,01-May-24 A,01-May-24 A,5,0,0,100%,,Completed
 ER6360LT,W085,W085.DS25080,Flask 11 - Flask Licensing Prepare Cat C Mod  (No Longer Required),01-May-24,01-May-24,01-May-24 A,01-May-24 A,5,0,0,100%,,Completed
 ER6360LT,W085,W085.DS25110,Flask 11 - Transport Flask to HNB  (No Longer Required),01-May-24,01-May-24,01-May-24 A,01-May-24 A,1,0,0,100%,,Completed
 ER6360LT,W085,W085.DS25090,Flask 11 - Flask Licensing INA Approval of Cat C  (No Longer Required),01-May-24,01-May-24,01-May-24 A,01-May-24 A,10,0,0,100%,,Completed
 ER6360LT,W085,W085.DS25060,Flask 10 - Prepare Transport Paperwork  (No Longer Required),01-May-24,01-May-24,01-May-24 A,01-May-24 A,5,0,0,100%,,Completed
 ER6360LT,W085,W085.DS25040,Flask 10 - Flask Licensing Prepare Cat B Mod  (No Longer Required),01-May-24,01-May-24,01-May-24 A,01-May-24 A,5,0,0,100%,,Completed
 ER6360LT,W085,W085.DS25070,Flask 10 - Transport Flask to HNB  (No Longer Required),01-May-24,01-May-24,01-May-24 A,01-May-24 A,1,0,0,100%,,Completed
 ER6360LT,W085,W085.DS25050,Flask 10 - Flask Licensing INA Approval of Cat B  (No Longer Required),01-May-24,01-May-24,01-May-24 A,01-May-24 A,10,0,0,100%,,Completed
 ER6360LT,W085,W085.DS25020,Flask 9 - Prepare Transport Paperwork,14-Feb-25,20-Feb-25,08-Aug-25,14-Aug-25,5,5,5,0%,36,Not Started
 ER6360LT,W085,W085.DS25000,Flask 9 - Flask Licensing Prepare Cat C Mod,08-Jan-25,14-Jan-25,02-Jul-25,08-Jul-25,5,5,5,0%,36,Not Started
 ER6360LT,W085,W085.DS25030,Flask 9 - Transport Flask to HNB,21-Feb-25,21-Feb-25,15-Aug-25,15-Aug-25,1,1,1,0%,36,Not Started
 ER6360LT,W085,W085.DS25010,Flask 9 - Flask Licensing INA Approval of Cat C,05-Feb-25,18-Feb-25,30-Jul-25,12-Aug-25,10,10,10,0%,36,Not Started
 ER6360LT,W085,W085.DS24980,Flask 8 - Prepare Transport Paperwork,03-Dec-24,09-Dec-24,18-Jun-25,24-Jun-25,5,5,5,0%,73,Not Started
 ER6360LT,W085,W085.DS24960,Flask 8 - Flask Licensing Prepare Cat C Mod,25-Oct-24,31-Oct-24,09-May-25,15-May-25,5,5,5,0%,73,Not Started
 ER6360LT,W085,W085.DS24990,Flask 8 - Transport Flask to HNB,10-Dec-24,10-Dec-24,25-Jun-25,25-Jun-25,1,1,1,0%,73,Not Started
 ER6360LT,W085,W085.DS24970,Flask 8 - Flask Licensing INA Approval of Cat C,22-Nov-24,05-Dec-24,09-Jun-25,20-Jun-25,10,10,10,0%,73,Not Started
 ER6360LT,W085,W085.DS24940,Flask 7 - Prepare Transport Paperwork,05-Nov-24,11-Nov-24,11-Jun-25,17-Jun-25,5,5,5,0%,78,Not Started
 ER6360LT,W085,W085.DS24920,Flask 7 - Flask Licensing Prepare Cat C Mod,27-Sep-24,03-Oct-24,01-May-25,08-May-25,5,5,5,0%,78,Not Started
 ER6360LT,W085,W085.DS24950,Flask 7 - Transport Flask to HNB,12-Nov-24,12-Nov-24,18-Jun-25,18-Jun-25,1,1,1,0%,78,Not Started
 ER6360LT,W085,W085.DS24930,Flask 7 - Flask Licensing INA Approval of Cat C,25-Oct-24,07-Nov-24,02-Jun-25,13-Jun-25,10,10,10,0%,78,Not Started
 ER6360LT,W085,W085.DS1850,Seal Face Repairs,09-Jan-23,20-Feb-23,09-Jan-23 A,20-Feb-23 A,22,0,31,100%,,Completed
 ER6360LT,W085,W085.DS22700,Verify Repairs and NDT Complete (EDF)  (No Longer Required),01-May-24,01-May-24,01-May-24 A,01-May-24 A,1,0,0,100%,,Completed
 ER6360LT,W085,W085.DS21680,Verify Repairs and NDT Complete (EDF),10-Jul-24,16-Jul-24,16-Jul-24 A,22-Jul-24 A,1,0,5,100%,,Completed
 ER6360LT,W085,W085.DS20220,Verify Repairs and NDT Complete (EDF),04-Dec-23,04-Dec-23,04-Dec-23 A,04-Dec-23 A,1,0,1,100%,,Completed
 ER6360LT,W085,W085.DS19640,Verify Repairs and NDT Complete (EDF),05-Sep-23,11-Sep-23,05-Sep-23 A,11-Sep-23 A,1,0,5,100%,,Completed
 ER6360LT,W085,W085.DS18100,Verify Repairs and NDT Complete (EDF),23-Nov-23,23-Nov-23,23-Nov-23 A,23-Nov-23 A,2,0,1,100%,,Completed
 ER6360LT,W085,W085.DS18090,Cavity Testing,26-Oct-23,18-Dec-23,26-Oct-23 A,18-Dec-23 A,14,0,38,100%,,Completed
 ER6360LT,W085,W085.DS18620,Verify Repairs and NDT Complete (EDF),13-Sep-23,13-Sep-23,13-Sep-23 A,13-Sep-23 A,1,0,1,100%,,Completed
 ER6360LT,W085,W085.DS1840,Verify Repairs and NDT Complete (EDF),24-Jan-23,02-Feb-23,24-Jan-23 A,02-Feb-23 A,2,0,8,100%,,Completed
 ER6360LT,W085,W085.DS1830,Complex Repair Body,03-Jan-23,23-Jan-23,03-Jan-23 A,23-Jan-23 A,14,0,15,100%,,Completed
 ER7580LT,W194,W194.25170,HNB 2022 TGN097 Inspection,,21-Nov-22,,21-Nov-22 A,0,0,0,100%,,Completed
 ER7581LT,W195,W195.2690,HRA 2022 TGN097 Inspection,,17-Nov-22,,17-Nov-22 A,0,0,0,100%,,Completed
 ER6360LT,W085,W085.SL2330,Approve LTQR,20-Feb-24,29-Feb-24,20-Feb-24 A,29-Feb-24 A,10,0,8,100%,,Completed
 ER6360LT,W085,W085.SL2350,Flask 4 (SL) - Flask Licensing INA Approval of Cat C,25-Mar-24,26-Mar-24,25-Mar-24 A,26-Mar-24 A,10,0,2,100%,,Completed
 ER6360LT,W085,W085.SL2340,Flask 4 (SL) - Flask Licensing Prepare Cat C Mod,18-Mar-24,22-Mar-24,18-Mar-24 A,22-Mar-24 A,5,0,5,100%,,Completed
 ER6360LT,W085,W085.SL2300,Approve LTQR,04-Dec-23,15-Dec-23,04-Dec-23 A,15-Dec-23 A,10,0,10,100%,,Completed
 ER6360LT,W085,W085.SL2320,Flask 3 (SL) - Flask Licensing INA Approval of Cat C,14-Dec-23,05-Jan-24,14-Dec-23 A,05-Jan-24 A,10,0,14,100%,,Completed
 ER6360LT,W085,W085.SL2310,Flask 3 (SL) - Flask Licensing Prepare Cat C Mod,11-Dec-23,15-Dec-23,11-Dec-23 A,15-Dec-23 A,5,0,5,100%,,Completed
 ER6360LT,W085,W085.SL2270,Approve LTQR,20-Feb-23,24-Feb-23,20-Feb-23 A,24-Feb-23 A,5,0,5,100%,,Completed
 ER6360LT,W085,W085.SL2290,Flask 1 (SL) - Flask Licensing INA Approval of Cat C,20-Apr-23,26-May-23,20-Apr-23 A,26-May-23 A,15,0,25,100%,,Completed
 ER6360LT,W085,W085.SL2280,Flask 1 (SL) - Flask Licensing Prepare Cat C Mod,27-Feb-23,03-Apr-23,27-Feb-23 A,03-Apr-23 A,5,0,26,100%,,Completed
 ER6360LT,W085,W085.SL2260,Approve LTQR,03-Apr-23,28-Jun-23,03-Apr-23 A,28-Jun-23 A,10,0,58,100%,,Completed
 ER6360LT,W085,W085.SL2250,Flask 2 (SL) - Flask Licensing INA Approval of Cat C,15-Aug-23,29-Aug-23,15-Aug-23 A,29-Aug-23 A,10,0,10,100%,,Completed
 ER6360LT,W085,W085.SL2240,Flask 2 (SL) - Flask Licensing Prepare Cat C Mod,29-Jun-23,31-Jul-23,29-Jun-23 A,31-Jul-23 A,5,0,23,100%,,Completed
 ER6360LT,W085,W085.DS17120,Verify Repairs and NDT Complete (EDF),02-Oct-23,02-Oct-23,02-Oct-23 A,02-Oct-23 A,2,0,1,100%,,Completed
 ER6360LT,W085,W085.DS16100,Verify Repairs and NDT Complete (EDF),01-Dec-23,01-Dec-23,01-Dec-23 A,01-Dec-23 A,5,0,1,100%,,Completed
 ER6360LT,W085,W085.DS15080,Verify Repairs and NDT Complete (EDF),11-May-23,17-May-23,11-May-23 A,17-May-23 A,5,0,5,100%,,Completed
 ER6360LT,W085,W085.DS14050,Verify Repairs and NDT Complete (EDF),17-Apr-23,21-Apr-23,17-Apr-23 A,21-Apr-23 A,5,0,5,100%,,Completed
 ER6360LT,W085,W085.DS24900,Flask 6 - Prepare Transport Paperwork,22-Nov-24,28-Nov-24,30-Jun-25,04-Jul-25,5,5,5,0%,65,Not Started
 ER6360LT,W085,W085.DS24880,Flask 6 - Flask Licensing Prepare Cat C Mod,16-Oct-24,22-Oct-24,21-May-25,28-May-25,5,5,5,0%,0,Not Started
 ER6360LT,W085,W085.DS24910,Flask 6 - Transport Flask to HNB,29-Nov-24,29-Nov-24,07-Jul-25,07-Jul-25,1,1,1,0%,65,Not Started
 ER6360LT,W085,W085.DS24860,Flask 5 - Prepare Transport Paperwork,14-Aug-24,20-Aug-24,13-Jun-25,19-Jun-25,5,5,5,0%,76,Not Started
 ER6360LT,W085,W085.DS24840,Flask 5 - Flask Licensing Prepare Cat C Mod,08-Jul-24,12-Jul-24,06-May-25*,12-May-25,5,5,5,0%,5,Not Started
 ER6360LT,W085,W085.DS24870,Flask 5 - Transport Flask to HNB,21-Aug-24,21-Aug-24,20-Jun-25,20-Jun-25,1,1,1,0%,76,Not Started
 ER6360LT,W085,W085.DS24820,Flask 4 - Prepare Transport Paperwork,08-Aug-24,14-Aug-24,12-May-25,16-May-25,5,5,5,0%,99,Not Started
 ER6360LT,W085,W085.DS24800,Flask 4 - Flask Licensing Prepare Cat C Mod,02-Jul-24,08-Jul-24,28-Oct-24 A,04-Apr-25,5,4,112,15%,28,In Progress
 ER6360LT,W085,W085.DS24830,Flask 4 - Transport Flask to HNB,15-Aug-24,15-Aug-24,19-May-25,19-May-25,1,1,1,0%,99,Not Started
 ER6360LT,W085,W085.DS24780,Flask 3 - Prepare Transport Paperwork,04-Jul-24,10-Jul-24,03-Jun-24 A,07-Jun-24 A,5,0,5,100%,,Completed
 ER6360LT,W085,W085.DS24760,Flask 3 - Flask Licensing Prepare Cat C Mod,29-Apr-24,03-Jun-24,29-Apr-24 A,03-Jun-24 A,5,0,24,100%,,Completed
 ER6360LT,W085,W085.DS24790,Flask 3 - Transport Flask to HNB,11-Jul-24,11-Jul-24,01-Jul-24 A,01-Jul-24 A,1,0,1,100%,,Completed
 ER6360LT,W085,W085.DS24740,Flask 2 - Prepare Transport Paperwork,17-Dec-24,23-Dec-24,04-Jun-25,10-Jun-25,5,5,5,0%,83,Not Started
 ER6360LT,W085,W085.DS24710,Flask 2 - Flask Licensing Prepare Cat C Mod,08-Nov-24,14-Nov-24,28-Apr-25,28-Apr-25,5,0,0,0%,83,Not Started
 ER6360LT,W085,W085.DS24750,Flask 2 - Transport Flask to HNB,24-Dec-24,24-Dec-24,11-Jun-25,11-Jun-25,1,1,1,0%,83,Not Started
 ER6360LT,W085,W085.1290,Flask 1 - Prepare Transport Paperwork,18-Mar-24,22-Mar-24,18-Mar-24 A,22-Mar-24 A,5,0,5,100%,,Completed
 ER6360LT,W085,W085.1280,Flask 1 - Flask Licensing INA Approval of Cat C,20-Feb-24,15-Mar-24,20-Feb-24 A,15-Mar-24 A,10,0,19,100%,,Completed
 ER6360LT,W085,W085.1240,Flask 1 - Flask Licensing Prepare Cat C Mod,11-Dec-23,12-Jan-24,11-Dec-23 A,12-Jan-24 A,10,0,22,100%,,Completed
 ER6360LT,W085,W085.1230,Flask 1 - Transport Flask to HNB,25-Mar-24,25-Mar-24,25-Mar-24 A,25-Mar-24 A,1,0,1,100%,,Completed
 ER6360LT,W085,W085.DS1470,Painting Trials Signed off,05-Dec-22,13-Dec-22,05-Dec-22 A,13-Dec-22 A,7,0,7,100%,,Completed
 ER6360LT,W085,W085.DS1460,Painting Trials,29-Nov-22,02-Dec-22,29-Nov-22 A,02-Dec-22 A,2,0,4,100%,,Completed
 ER6360LT,W085,W085.DS1440,Painting Trials Prep,25-Nov-22,28-Nov-22,25-Nov-22 A,28-Nov-22 A,2,0,2,100%,,Completed
 ER6360LT,W085,W085.DS17110,Cavity Testing,29-Sep-23,10-Nov-23,29-Sep-23 A,10-Nov-23 A,14,0,31,100%,,Completed
 ER6360LT,W085,W085.DS16090,Cavity Testing,05-Oct-23,08-Dec-23,05-Oct-23 A,08-Dec-23 A,14,0,47,100%,,Completed
 ER6360LT,W085,W085.DS15070,Cavity Testing,18-May-23,01-Sep-23,18-May-23 A,01-Sep-23 A,12,0,74,100%,,Completed
 ER6360LT,W085,W085.DS24690,Verify Repairs and NDT Complete (EDF),16-Oct-23,23-Oct-23,16-Oct-23 A,23-Oct-23 A,5,0,6,100%,,Completed
 ER6360LT,W085,W085.DS24670,Refurbish LSM,09-Oct-23,13-Oct-23,09-Oct-23 A,13-Oct-23 A,5,0,5,100%,,Completed
 ER6360LT,W085,W085.DS24680,Verify Repairs and NDT Complete (EDF),24-Aug-23,31-Aug-23,24-Aug-23 A,31-Aug-23 A,5,0,5,100%,,Completed
 ER6360LT,W085,W085.DS24660,Refurbish Flask Lid Topside,17-Aug-23,23-Aug-23,17-Aug-23 A,23-Aug-23 A,5,0,5,100%,,Completed
 ER6360LT,W085,W085.DS24700,Refurbish Flask Lid Underside,01-Sep-23,07-Sep-23,01-Sep-23 A,07-Sep-23 A,10,0,5,100%,,Completed
 ER6360LT,W085,W085.DS24640,Verify Repairs and NDT Complete (EDF),29-Sep-23,29-Sep-23,29-Sep-23 A,29-Sep-23 A,5,0,1,100%,,Completed
 ER6360LT,W085,W085.DS24620,Refurbish LSM,15-Aug-23,21-Sep-23,15-Aug-23 A,21-Sep-23 A,5,0,26,100%,,Completed
 ER6360LT,W085,W085.DS24630,Verify Repairs and NDT Complete (EDF),05-Sep-23,06-Sep-23,05-Sep-23 A,06-Sep-23 A,1,0,2,100%,,Completed
 ER6360LT,W085,W085.DS24610,Refurbish Flask Lid Topside,01-Aug-23,04-Sep-23,01-Aug-23 A,04-Sep-23 A,10,0,24,100%,,Completed
 ER6360LT,W085,W085.DS24650,Refurbish Flask Lid Underside,22-Aug-23,25-Aug-23,22-Aug-23 A,25-Aug-23 A,12,0,4,100%,,Completed
 ER6360LT,W085,W085.DS24590,Verify Repairs and NDT Complete (EDF),30-Nov-23,30-Nov-23,30-Nov-23 A,30-Nov-23 A,1,0,1,100%,,Completed
 ER6360LT,W085,W085.DS24570,Refurbish LSM,08-Nov-23,29-Nov-23,08-Nov-23 A,29-Nov-23 A,5,0,16,100%,,Completed
 ER6360LT,W085,W085.DS24580,Verify Repairs and NDT Complete (EDF),03-Oct-23,03-Oct-23,03-Oct-23 A,03-Oct-23 A,5,0,0,100%,,Completed
 ER6360LT,W085,W085.DS24560,Refurbish Flask Lid Topside,01-Aug-23,02-Oct-23,01-Aug-23 A,02-Oct-23 A,7,0,44,100%,,Completed
 ER6360LT,W085,W085.DS24600,Refurbish Flask Lid Underside,26-Jun-23,17-Aug-23,26-Jun-23 A,17-Aug-23 A,10,0,39,100%,,Completed
 ER6360LT,W085,W085.DS24540,Verify Repairs and NDT Complete (EDF),30-May-23,30-May-23,30-May-23 A,30-May-23 A,1,0,1,100%,,Completed
 ER6360LT,W085,W085.DS24520,Refurbish LSM,23-May-23,26-May-23,23-May-23 A,26-May-23 A,5,0,4,100%,,Completed
 ER6360LT,W085,W085.DS24530,Verify Repairs and NDT Complete (EDF),04-Apr-23,12-Apr-23,04-Apr-23 A,12-Apr-23 A,5,0,5,100%,,Completed
 ER6360LT,W085,W085.DS24510,Refurbish Flask Lid Topside,27-Mar-23,03-Apr-23,27-Mar-23 A,03-Apr-23 A,10,0,6,100%,,Completed
 ER6360LT,W085,W085.DS24550,Refurbish Flask Lid Underside,13-Apr-23,13-Apr-23,13-Apr-23 A,13-Apr-23 A,8,0,0,100%,,Completed
 ER6360LT,W085,W085.DS24490,Verify Repairs and NDT Complete (EDF),18-Apr-23,18-Apr-23,18-Apr-23 A,18-Apr-23 A,5,0,1,100%,,Completed
 ER6360LT,W085,W085.DS24470,Refurbish LSM,18-Apr-23,18-Apr-23,18-Apr-23 A,18-Apr-23 A,5,0,0,100%,,Completed
 ER6360LT,W085,W085.DS24480,Verify Repairs and NDT Complete (EDF),15-Feb-23,21-Feb-23,15-Feb-23 A,21-Feb-23 A,5,0,5,100%,,Completed
 ER6360LT,W085,W085.DS24460,Refurbish Flask Lid Topside,25-Jan-23,14-Feb-23,25-Jan-23 A,14-Feb-23 A,10,0,15,100%,,Completed
 ER6360LT,W085,W085.DS24500,Refurbish Flask Lid Underside,22-Feb-23,27-Feb-23,22-Feb-23 A,27-Feb-23 A,5,0,4,100%,,Completed
 ER6360LT,W085,W085.DS24450,Submit OMNI LSM Scope and Issue Work Order,01-Sep-23,12-Sep-23,01-Sep-23 A,12-Sep-23 A,8,0,8,100%,,Completed
 ER6360LT,W085,W085.DS24440,Approve LSM Refurb Scope (EDF),01-Sep-23,01-Sep-23,01-Sep-23 A,01-Sep-23 A,2,0,0,100%,,Completed
 ER6360LT,W085,W085.DS24430,Prepare LSM Refurb Scope,01-Sep-23,01-Sep-23,01-Sep-23 A,01-Sep-23 A,9,0,0,100%,,Completed
 ER6360LT,W085,W085.DS24420,Submit OMNI LSM Scope and Issue Work Order,16-Jan-24,19-Jan-24,16-Jan-24 A,19-Jan-24 A,8,0,4,100%,,Completed
 ER6360LT,W085,W085.DS24410,Approve LSM Refurb Scope (EDF),12-Jan-24,15-Jan-24,12-Jan-24 A,15-Jan-24 A,2,0,2,100%,,Completed
 ER6360LT,W085,W085.DS24400,Prepare LSM Refurb Scope,08-Jan-24,11-Jan-24,08-Jan-24 A,11-Jan-24 A,9,0,4,100%,,Completed
 ER6360LT,W085,W085.DS24390,Submit OMNI LSM Scope and Issue Work Order,04-Dec-23,05-Dec-23,04-Dec-23 A,05-Dec-23 A,8,0,2,100%,,Completed
 ER6360LT,W085,W085.DS24380,Approve LSM Refurb Scope (EDF),01-Dec-23,01-Dec-23,01-Dec-23 A,01-Dec-23 A,2,0,1,100%,,Completed
 ER6360LT,W085,W085.DS24370,Prepare LSM Refurb Scope,24-Nov-23,01-Dec-23,24-Nov-23 A,01-Dec-23 A,9,0,6,100%,,Completed
 ER6360LT,W085,W085.DS24360,Submit OMNI LSM Scope and Issue Work Order,15-Dec-23,18-Dec-23,15-Dec-23 A,18-Dec-23 A,8,0,2,100%,,Completed
 ER6360LT,W085,W085.DS24350,Approve LSM Refurb Scope (EDF),08-Dec-23,14-Dec-23,08-Dec-23 A,14-Dec-23 A,2,0,5,100%,,Completed
 ER6360LT,W085,W085.DS24340,Prepare LSM Refurb Scope,01-Dec-23,07-Dec-23,01-Dec-23 A,07-Dec-23 A,9,0,5,100%,,Completed
 ER6360LT,W085,W085.DS24330,Submit OMNI LSM Scope and Issue Work Order,24-Nov-23,27-Nov-23,24-Nov-23 A,27-Nov-23 A,8,0,2,100%,,Completed
 ER6360LT,W085,W085.DS24320,Approve LSM Refurb Scope (EDF),22-Nov-23,23-Nov-23,22-Nov-23 A,23-Nov-23 A,2,0,2,100%,,Completed
 ER6360LT,W085,W085.DS24310,Prepare LSM Refurb Scope,20-Nov-23,21-Nov-23,20-Nov-23 A,21-Nov-23 A,9,0,2,100%,,Completed
 ER6360LT,W085,W085.DS24300,Submit OMNI LSM Scope and Issue Work Order,05-Oct-23,06-Oct-23,05-Oct-23 A,06-Oct-23 A,8,0,2,100%,,Completed
 ER6360LT,W085,W085.DS24290,Approve LSM Refurb Scope (EDF),03-Oct-23,04-Oct-23,03-Oct-23 A,04-Oct-23 A,2,0,2,100%,,Completed
 ER6360LT,W085,W085.DS24280,Prepare LSM Refurb Scope,01-Sep-23,02-Oct-23,01-Sep-23 A,02-Oct-23 A,5,0,22,100%,,Completed
 ER6360LT,W085,W085.DS24270,Submit OMNI LSM Scope and Issue Work Order,11-Jul-23,15-Aug-23,11-Jul-23 A,15-Aug-23 A,2,0,25,100%,,Completed
 ER6360LT,W085,W085.DS24260,Approve LSM Refurb Scope (EDF),07-Jul-23,14-Aug-23,07-Jul-23 A,14-Aug-23 A,2,0,27,100%,,Completed
 ER6360LT,W085,W085.DS24250,Prepare LSM Refurb Scope,30-Jun-23,06-Jul-23,30-Jun-23 A,06-Jul-23 A,2,0,5,100%,,Completed
 ER6360LT,W085,W085.DS24240,Submit OMNI LSM Scope and Issue Work Order,28-Apr-23,28-Apr-23,28-Apr-23 A,28-Apr-23 A,1,0,1,100%,,Completed
 ER6360LT,W085,W085.DS24230,Approve LSM Refurb Scope (EDF),26-Apr-23,27-Apr-23,26-Apr-23 A,27-Apr-23 A,2,0,2,100%,,Completed
 ER6360LT,W085,W085.DS24220,Prepare LSM Refurb Scope,20-Apr-23,25-Apr-23,20-Apr-23 A,25-Apr-23 A,4,0,4,100%,,Completed
 ER6360LT,W085,W085.DS24210,Submit OMNI LSM Scope and Issue Work Order,24-Apr-23,22-May-23,24-Apr-23 A,22-May-23 A,1,0,19,100%,,Completed
 ER6360LT,W085,W085.DS24200,Approve LSM Refurb Scope (EDF),18-Apr-23,21-Apr-23,18-Apr-23 A,21-Apr-23 A,2,0,4,100%,,Completed
 ER6360LT,W085,W085.DS24190,Prepare LSM Refurb Scope,14-Apr-23,17-Apr-23,14-Apr-23 A,17-Apr-23 A,2,0,2,100%,,Completed
 ER6360LT,W085,W085.DS24180,Submit OMNI LSM Scope and Issue Work Order,17-Apr-23,17-Apr-23,17-Apr-23 A,17-Apr-23 A,0,0,1,100%,,Completed
 ER6360LT,W085,W085.DS24170,Approve LSM Refurb Scope (EDF),13-Apr-23,14-Apr-23,13-Apr-23 A,14-Apr-23 A,2,0,2,100%,,Completed
 ER6360LT,W085,W085.DS24160,Prepare LSM Refurb Scope,06-Apr-23,12-Apr-23,06-Apr-23 A,12-Apr-23 A,5,0,3,100%,,Completed
 ER6360LT,W085,W085.DS24150,Submit OMNI LSM Scope and Issue Work Order,20-Feb-23,20-Feb-23,20-Feb-23 A,20-Feb-23 A,1,0,1,100%,,Completed
 ER6360LT,W085,W085.DS24140,Approve LSM Refurb Scope (EDF),29-Nov-22,17-Feb-23,29-Nov-22 A,17-Feb-23 A,5,0,56,100%,,Completed
 ER6360LT,W085,W085.DS24130,Prepare LSM Refurb Scope,28-Nov-22,28-Nov-22,28-Nov-22 A,28-Nov-22 A,1,0,1,100%,,Completed
 ER6360LT,W085,W085.DS24120,Submit OMNI Lid Scope and Issue Work Order  (No Longer Required),01-May-24,01-May-24,01-May-24 A,01-May-24 A,8,0,0,100%,,Completed
 ER6360LT,W085,W085.DS24110,Submit OMNI Base Scope and Issue Work Order  (No Longer Required),01-May-24,01-May-24,01-May-24 A,01-May-24 A,8,0,0,100%,,Completed
 ER6360LT,W085,W085.DS24100,Submit OMNI Body Scope and Issue Work Order  (No Longer Required),01-May-24,01-May-24,01-May-24 A,01-May-24 A,8,0,0,100%,,Completed
 ER6360LT,W085,W085.DS24090,Approve Body Refurb Scope (EDF)  (No Longer Required),01-May-24,01-May-24,01-May-24 A,01-May-24 A,2,0,0,100%,,Completed
 ER6360LT,W085,W085.DS24080,Prepare Body Refurb Scope  (No Longer Required),01-May-24,01-May-24,01-May-24 A,01-May-24 A,9,0,0,100%,,Completed
 ER6360LT,W085,W085.DS24070,Approve Base Refurb Scope (EDF)  (No Longer Required),01-May-24,01-May-24,01-May-24 A,01-May-24 A,2,0,0,100%,,Completed
 ER6360LT,W085,W085.DS24060,Prepare Base Refurb Scope  (No Longer Required),15-May-24,15-May-24,15-May-24 A,15-May-24 A,9,0,0,100%,,Completed
 ER6360LT,W085,W085.DS24050,Approve Lid Refurb Scope (EDF)  (No Longer Required),01-May-24,01-May-24,01-May-24 A,01-May-24 A,2,0,0,100%,,Completed
 ER6360LT,W085,W085.DS24040,Prepare Lid Refurb Scope  (No Longer Required),20-Sep-23,01-May-24,20-Sep-23 A,01-May-24 A,9,0,155,100%,,Completed
 ER6360LT,W085,W085.DS24010,Submit OMNI Lid Scope and Issue Work Order,28-Aug-23,05-Jan-24,28-Aug-23 A,05-Jan-24 A,8,0,91,100%,,Completed
 ER6360LT,W085,W085.DS24000,Submit OMNI Base Scope and Issue Work Order (No Longer Required),01-May-24,01-May-24,01-May-24 A,01-May-24 A,8,0,0,100%,,Completed
 ER6360LT,W085,W085.DS23990,Submit OMNI Body Scope and Issue Work Order,28-Aug-23,05-Jan-24,28-Aug-23 A,05-Jan-24 A,8,0,91,100%,,Completed
 ER6360LT,W085,W085.DS23980,Approve Body Refurb Scope (EDF),21-Aug-23,25-Aug-23,21-Aug-23 A,25-Aug-23 A,2,0,4,100%,,Completed
 ER6360LT,W085,W085.DS23970,Prepare Body Refurb Scope,31-Jul-23,18-Aug-23,31-Jul-23 A,18-Aug-23 A,9,0,14,100%,,Completed
 ER6360LT,W085,W085.DS23960,Approve Base Refurb Scope (EDF) (No Longer Required),01-May-24,01-May-24,01-May-24 A,01-May-24 A,2,0,0,100%,,Completed
 ER6360LT,W085,W085.DS23950,Prepare Base Refurb Scope (No Longer Required),01-May-24,01-May-24,01-May-24 A,01-May-24 A,9,0,0,100%,,Completed
 ER6360LT,W085,W085.DS23940,Approve Lid Refurb Scope (EDF),23-Aug-23,25-Aug-23,23-Aug-23 A,25-Aug-23 A,2,0,2,100%,,Completed
 ER6360LT,W085,W085.DS23930,Prepare Lid Refurb Scope,26-Jun-23,22-Aug-23,26-Jun-23 A,22-Aug-23 A,9,0,41,100%,,Completed
 ER6360LT,W085,W085.DS23900,Submit OMNI Lid Scope and Issue Work Order,26-Sep-23,03-Nov-23,26-Sep-23 A,03-Nov-23 A,8,0,29,100%,,Completed
 ER6360LT,W085,W085.DS23890,Submit OMNI Base Scope and Issue Work Order,08-Sep-23,13-Nov-23,08-Sep-23 A,13-Nov-23 A,8,0,46,100%,,Completed
 ER6360LT,W085,W085.DS23880,Submit OMNI Body Scope and Issue Work Order,27-Jun-23,03-Nov-23,27-Jun-23 A,03-Nov-23 A,8,0,93,100%,,Completed
 ER6360LT,W085,W085.DS23870,Approve Body Refurb Scope (EDF),23-Jun-23,26-Jun-23,23-Jun-23 A,26-Jun-23 A,2,0,2,100%,,Completed
 ER6360LT,W085,W085.DS23860,Prepare Body Refurb Scope,12-Jun-23,22-Jun-23,12-Jun-23 A,22-Jun-23 A,9,0,9,100%,,Completed
 ER6360LT,W085,W085.DS23850,Approve Base Refurb Scope (EDF),06-Sep-23,10-Nov-23,06-Sep-23 A,10-Nov-23 A,2,0,48,100%,,Completed
 ER6360LT,W085,W085.DS23840,Prepare Base Refurb Scope,07-Jul-23,05-Sep-23,07-Jul-23 A,05-Sep-23 A,9,0,42,100%,,Completed
 ER6360LT,W085,W085.DS23830,Approve Lid Refurb Scope (EDF),07-Sep-23,25-Sep-23,07-Sep-23 A,25-Sep-23 A,2,0,13,100%,,Completed
 ER6360LT,W085,W085.DS23820,Prepare Lid Refurb Scope,20-Jul-23,06-Sep-23,20-Jul-23 A,06-Sep-23 A,9,0,34,100%,,Completed
 ER6360LT,W085,W085.DS23790,Submit OMNI Lid Scope and Issue Work Order,01-Dec-23,04-Dec-23,01-Dec-23 A,04-Dec-23 A,8,0,2,100%,,Completed
 ER6360LT,W085,W085.DS23780,Submit OMNI Base Scope and Issue Work Order,26-Jun-23,13-Nov-23,26-Jun-23 A,13-Nov-23 A,8,0,100,100%,,Completed
 ER6360LT,W085,W085.DS23770,Submit OMNI Body Scope and Issue Work Order,28-Apr-23,11-May-23,28-Apr-23 A,11-May-23 A,8,0,8,100%,,Completed
 ER6360LT,W085,W085.DS23760,Approve Body Refurb Scope (EDF),26-Apr-23,27-Apr-23,26-Apr-23 A,27-Apr-23 A,2,0,2,100%,,Completed
 ER6360LT,W085,W085.DS23750,Prepare Body Refurb Scope,26-Apr-23,26-Apr-23,26-Apr-23 A,26-Apr-23 A,9,0,0,100%,,Completed
 ER6360LT,W085,W085.DS23740,Approve Base Refurb Scope (EDF),22-Jun-23,23-Jun-23,22-Jun-23 A,23-Jun-23 A,2,0,2,100%,,Completed
 ER6360LT,W085,W085.DS23730,Prepare Base Refurb Scope,02-Jun-23,21-Jun-23,02-Jun-23 A,21-Jun-23 A,9,0,14,100%,,Completed
 ER6360LT,W085,W085.DS23720,Approve Lid Refurb Scope (EDF),05-Sep-23,31-Oct-23,05-Sep-23 A,31-Oct-23 A,2,0,41,100%,,Completed
 ER6360LT,W085,W085.DS23710,Prepare Lid Refurb Scope,01-Sep-23,04-Sep-23,01-Sep-23 A,04-Sep-23 A,9,0,2,100%,,Completed
 ER6360LT,W085,W085.DS23680,Submit OMNI Lid Scope and Issue Work Order,08-Jun-23,19-Jun-23,08-Jun-23 A,19-Jun-23 A,8,0,8,100%,,Completed
 ER6360LT,W085,W085.DS23670,Submit OMNI Base Scope and Issue Work Order,11-May-23,22-Nov-23,11-May-23 A,22-Nov-23 A,8,0,138,100%,,Completed
 ER6360LT,W085,W085.DS23660,Submit OMNI Body Scope and Issue Work Order,26-Apr-23,09-May-23,26-Apr-23 A,09-May-23 A,8,0,8,100%,,Completed
 ER6360LT,W085,W085.DS23650,Approve Body Refurb Scope (EDF),24-Apr-23,26-Apr-23,24-Apr-23 A,26-Apr-23 A,2,0,2,100%,,Completed
 ER6360LT,W085,W085.DS23640,Prepare Body Refurb Scope,11-Apr-23,21-Apr-23,11-Apr-23 A,21-Apr-23 A,9,0,9,100%,,Completed
 ER6360LT,W085,W085.DS23630,Approve Base Refurb Scope (EDF),09-May-23,10-May-23,09-May-23 A,10-May-23 A,2,0,2,100%,,Completed
 ER6360LT,W085,W085.DS23620,Prepare Base Refurb Scope,24-Apr-23,05-May-23,24-Apr-23 A,05-May-23 A,9,0,9,100%,,Completed
 ER6360LT,W085,W085.DS23610,Approve Lid Refurb Scope (EDF),06-Jun-23,07-Jun-23,06-Jun-23 A,07-Jun-23 A,2,0,2,100%,,Completed
 ER6360LT,W085,W085.DS23600,Prepare Lid Refurb Scope,05-Jun-23,05-Jun-23,05-Jun-23 A,05-Jun-23 A,9,0,1,100%,,Completed
 ER6360LT,W085,W085.DS23570,Submit OMNI Lid Scope and Issue Work Order,01-Sep-23,13-Sep-23,01-Sep-23 A,13-Sep-23 A,8,0,8,100%,,Completed
 ER6360LT,W085,W085.DS23560,Submit OMNI Base Scope and Issue Work Order,22-Feb-23,22-Feb-23,22-Feb-23 A,22-Feb-23 A,1,0,1,100%,,Completed
 ER6360LT,W085,W085.DS23550,Submit OMNI Body Scope and Issue Work Order,15-Feb-23,20-Feb-23,15-Feb-23 A,20-Feb-23 A,2,0,4,100%,,Completed
 ER6360LT,W085,W085.DS23540,Approve Body Refurb Scope (EDF),13-Feb-23,14-Feb-23,13-Feb-23 A,14-Feb-23 A,1,0,2,100%,,Completed
 ER6360LT,W085,W085.DS23530,Prepare Body Refurb Scope,23-Jan-23,10-Feb-23,23-Jan-23 A,10-Feb-23 A,5,0,15,100%,,Completed
 ER6360LT,W085,W085.DS23520,Approve Base Refurb Scope (EDF),20-Feb-23,21-Feb-23,20-Feb-23 A,21-Feb-23 A,2,0,2,100%,,Completed
 ER6360LT,W085,W085.DS23510,Prepare Base Refurb Scope,13-Feb-23,17-Feb-23,13-Feb-23 A,17-Feb-23 A,5,0,5,100%,,Completed
 ER6360LT,W085,W085.DS23500,Approve Lid Refurb Scope (EDF),01-Sep-23,07-Sep-23,01-Sep-23 A,07-Sep-23 A,2,0,5,100%,,Completed
 ER6360LT,W085,W085.DS23490,Prepare Lid Refurb Scope,01-Sep-23,07-Sep-23,01-Sep-23 A,07-Sep-23 A,12,0,5,100%,,Completed
 ER6360LT,W085,W085.DS23450,Submit OMNI Base Scope and Issue Work Order,14-Feb-23,16-Feb-23,14-Feb-23 A,16-Feb-23 A,2,0,3,100%,,Completed
 ER6360LT,W085,W085.DS23440,Submit OMNI Body Scope and Issue Work Order,31-Jan-23,15-Feb-23,31-Jan-23 A,15-Feb-23 A,3,0,12,100%,,Completed
 ER6360LT,W085,W085.DS23430,Approve Body Refurb Scope (EDF),27-Jan-23,30-Jan-23,27-Jan-23 A,30-Jan-23 A,2,0,2,100%,,Completed
 ER6360LT,W085,W085.DS23420,Prepare Body Refurb Scope,09-Jan-23,26-Jan-23,09-Jan-23 A,26-Jan-23 A,2,0,14,100%,,Completed
 ER6360LT,W085,W085.DS23410,Approve Base Refurb Scope (EDF),10-Feb-23,13-Feb-23,10-Feb-23 A,13-Feb-23 A,2,0,2,100%,,Completed
 ER6360LT,W085,W085.DS23400,Prepare Base Refurb Scope,27-Jan-23,09-Feb-23,27-Jan-23 A,09-Feb-23 A,7,0,10,100%,,Completed
 ER6360LT,W085,W085.DS23390,Approve Lid Refurb Scope (EDF),06-Jun-23,06-Jun-23,06-Jun-23 A,06-Jun-23 A,2,0,1,100%,,Completed
 ER6360LT,W085,W085.DS23380,Prepare Lid Refurb Scope,30-May-23,05-Jun-23,30-May-23 A,05-Jun-23 A,7,0,5,100%,,Completed
 ER6360LT,W085,W085.DS23350,Submit OMNI Lid Scope and Issue Work Order,23-Dec-22,29-Dec-22,23-Dec-22 A,29-Dec-22 A,3,0,3,100%,,Completed
 ER6360LT,W085,W085.DS23340,Submit OMNI Base Scope and Issue Work Order,26-Jan-23,13-Feb-23,26-Jan-23 A,13-Feb-23 A,1,0,13,100%,,Completed
 ER6360LT,W085,W085.DS23330,Submit OMNI Body Scope and Issue Work Order,21-Dec-22,23-Dec-22,21-Dec-22 A,23-Dec-22 A,3,0,3,100%,,Completed
 ER6360LT,W085,W085.DS23320,Approve Body Refurb Scope (EDF),19-Dec-22,20-Dec-22,19-Dec-22 A,20-Dec-22 A,2,0,2,100%,,Completed
 ER6360LT,W085,W085.DS23310,Prepare Body Refurb Scope,30-Nov-22,16-Dec-22,30-Nov-22 A,16-Dec-22 A,5,0,13,100%,,Completed
 ER6360LT,W085,W085.DS23300,Approve Base Refurb Scope (EDF),25-Jan-23,26-Jan-23,25-Jan-23 A,26-Jan-23 A,3,0,2,100%,,Completed
 ER6360LT,W085,W085.DS23290,Prepare Base Refurb Scope,21-Dec-22,24-Jan-23,21-Dec-22 A,24-Jan-23 A,10,0,22,100%,,Completed
 ER6360LT,W085,W085.DS23280,Approve Lid Refurb Scope (EDF),21-Dec-22,22-Dec-22,21-Dec-22 A,22-Dec-22 A,2,0,2,100%,,Completed
 ER6360LT,W085,W085.DS23270,Prepare Lid Refurb Scope,28-Nov-22,20-Dec-22,28-Nov-22 A,20-Dec-22 A,5,0,17,100%,,Completed
 ER6360LT,W085,W085.DS23240,Submit OMNI Lid Scope and Issue Work Order,23-Dec-22,23-Dec-22,23-Dec-22 A,23-Dec-22 A,1,0,1,100%,,Completed
 ER6360LT,W085,W085.DS23230,Submit OMNI Base Scope and Issue Work Order,20-Dec-22,22-Dec-22,20-Dec-22 A,22-Dec-22 A,3,0,3,100%,,Completed
 ER6360LT,W085,W085.DS23220,Submit OMNI Body Scope and Issue Work Order,23-Dec-22,23-Dec-22,23-Dec-22 A,23-Dec-22 A,1,0,1,100%,,Completed
 ER6360LT,W085,W085.DS23210,Approve Body Refurb Scope (EDF),30-Nov-22,22-Dec-22,30-Nov-22 A,22-Dec-22 A,2,0,17,100%,,Completed
 ER6360LT,W085,W085.DS23200,Prepare Body Refurb Scope,03-Oct-22,30-Nov-22,03-Oct-22 A,30-Nov-22 A,9,0,42,100%,,Completed
 ER6360LT,W085,W085.DS23190,Approve Base Refurb Scope (EDF),30-Nov-22,19-Dec-22,30-Nov-22 A,19-Dec-22 A,2,0,14,100%,,Completed
 ER6360LT,W085,W085.DS23180,Prepare Base Refurb Scope,23-Nov-22,29-Nov-22,23-Nov-22 A,29-Nov-22 A,7,0,5,100%,,Completed
 ER6360LT,W085,W085.DS23170,Approve Lid Refurb Scope (EDF),30-Nov-22,22-Dec-22,30-Nov-22 A,22-Dec-22 A,2,0,17,100%,,Completed
 ER6360LT,W085,W085.DS23160,Prepare Lid Refurb Scope,18-Nov-22,29-Nov-22,18-Nov-22 A,29-Nov-22 A,9,0,8,100%,,Completed
 ER6360LT,W085,W085.DS23130,Submit OMNI Lid Scope and Issue Work Order,29-Nov-22,29-Nov-22,29-Nov-22 A,29-Nov-22 A,1,0,1,100%,,Completed
 ER6360LT,W085,W085.DS23120,Submit OMNI Base Scope and Issue Work Order (inc Complex Repair),21-Dec-22,22-Dec-22,21-Dec-22 A,22-Dec-22 A,2,0,2,100%,,Completed
 ER6360LT,W085,W085.DS23110,Submit OMNI Body Scope and Issue Work Order,24-Nov-22,21-Dec-22,24-Nov-22 A,21-Dec-22 A,5,0,20,100%,,Completed
 ER6360LT,W085,W085.DS23100,Approve Body Refurb Scope (EDF),17-Nov-22,23-Nov-22,17-Nov-22 A,23-Nov-22 A,5,0,5,100%,,Completed
 ER6360LT,W085,W085.DS23090,Prepare Body Refurb Scope,15-Nov-22,16-Nov-22,15-Nov-22 A,16-Nov-22 A,2,0,2,100%,,Completed
 ER6360LT,W085,W085.DS23080,Approve Base Refurb Scope (EDF),01-Dec-22,20-Dec-22,01-Dec-22 A,20-Dec-22 A,1,0,14,100%,,Completed
 ER6360LT,W085,W085.DS23070,Prepare Base Refurb Scope,16-Nov-22,30-Nov-22,16-Nov-22 A,30-Nov-22 A,9,0,11,100%,,Completed
 ER6360LT,W085,W085.DS23060,Approve Lid Refurb Scope (EDF),28-Nov-22,28-Nov-22,28-Nov-22 A,28-Nov-22 A,1,0,1,100%,,Completed
 ER6360LT,W085,W085.DS23050,Prepare Lid Refurb Scope,18-Nov-22,25-Nov-22,18-Nov-22 A,25-Nov-22 A,8,0,6,100%,,Completed
 ER6360LT,W085,W085.DS1800,Submit OMNI Lid Scope and Issue Work Order,21-Nov-22,21-Nov-22,21-Nov-22 A,21-Nov-22 A,1,0,1,100%,,Completed
 ER6360LT,W085,W085.DS1790,Submit OMNI Base Scope and Issue Work Order,24-Nov-22,21-Dec-22,24-Nov-22 A,21-Dec-22 A,6,0,20,100%,,Completed
 ER6360LT,W085,W085.DS1780,Submit OMNI Body Scope and Issue Work Order,14-Oct-22,26-Oct-22,14-Oct-22 A,26-Oct-22 A,8,0,8,100%,,Completed
 ER6360LT,W085,W085.DS1750,Approve Body Refurb Scope (EDF),12-Oct-22,13-Oct-22,12-Oct-22 A,13-Oct-22 A,2,0,2,100%,,Completed
 ER6360LT,W085,W085.DS1740,Prepare Body Refurb Scope,03-Oct-22,11-Oct-22,03-Oct-22 A,11-Oct-22 A,7,0,7,100%,,Completed
 ER6360LT,W085,W085.DS1730,Approve Base Refurb Scope (EDF),22-Nov-22,23-Nov-22,22-Nov-22 A,23-Nov-22 A,2,0,2,100%,,Completed
 ER6360LT,W085,W085.DS1700,Prepare Base Refurb Scope,01-Nov-22,21-Nov-22,01-Nov-22 A,21-Nov-22 A,9,0,18,100%,,Completed
 ER7582LT,W196,W196.25170,Skills Report - H1H,01-Feb-23,30-Jun-23,01-Feb-23 A,30-Jun-23 A,125,0,103,100%,,Completed
 ER7581LT,W195,W195.25170,Skills Report - H1H,03-Jan-23,30-Jun-23,03-Jan-23 A,30-Jun-23 A,125,0,124,100%,,Completed
 ER7582LT,W196,W196.25160,Skills Report - Argus 700,01-Feb-23,30-Jun-23,01-Feb-23 A,30-Jun-23 A,125,0,103,100%,,Completed
 ER7581LT,W195,W195.25160,Skills Report - Argus 700,03-Jan-23,30-Jun-23,03-Jan-23 A,30-Jun-23 A,125,0,124,100%,,Completed
 ER7580LT,W194,W194.25160,Skills Report,01-Feb-23,30-May-23,01-Feb-23 A,30-May-23 A,125,0,80,100%,,Completed
 ER7579LT,W193,W193.25160,Skills Report - Argus 700,03-Jan-23,30-May-23,03-Jan-23 A,30-May-23 A,125,0,101,100%,,Completed
 W529LT,W529,W529.7580,"TGN097 R2 - Draft Report Produced, Internal Review and Issue to EDF",08-Aug-25,21-Aug-25,08-Aug-25,21-Aug-25,10,10,10,0%,1857,Not Started
 W529LT,W529,W529.7590,TGN097 R2 - EDF Review,22-Aug-25,05-Sep-25,22-Aug-25,05-Sep-25,10,10,10,0%,1857,Not Started
 W529LT,W529,W529.7600,TGN097 R2 - Update and Issue Report,08-Sep-25,08-Sep-25,08-Sep-25,08-Sep-25,1,1,1,0%,1857,Not Started
 W529LT,W529,W529.7570,TGN097 R2 - Inspection,01-Aug-25,07-Aug-25,01-Aug-25,07-Aug-25,5,5,5,0%,1857,Not Started
 W529LT,W529,W529.7560,TGN097 R2 - Plan Produced,02-Jan-25,07-Feb-25,02-Jan-25 A,07-Feb-25 A,27,0,27,100%,,Completed
 ER7582LT,W196,W196.6340,HYA 2025 - Installation R1,10-Jun-26,30-Jun-26,10-Jun-26*,30-Jun-26,15,15,15,0%,1144,Not Started
 ER7582LT,W196,W196.6330,HYA 2025 - Consolidation and Testing,09-Oct-25,30-Mar-26,09-Oct-25*,30-Mar-26,120,120,120,0%,1206,Not Started
 ER7582LT,W196,W196.6320,HYA 2025 - Go / No Go Decision,30-Jan-26,30-Jan-26,30-Jan-26*,30-Jan-26,1,1,1,0%,1247,Not Started
 ER7582LT,W196,W196.6350,HYA 2025 - Data Modifications and Amendments,03-Jan-25,31-Dec-25,03-Jan-25 A,31-Dec-25,252,190,252,24%,1268,In Progress
 ER7582LT,W196,W196.6220,HYA 2024  - Installation R1,10-Jun-25,30-Jun-25,10-Jun-25*,30-Jun-25,15,15,15,0%,1397,Not Started
 ER7582LT,W196,W196.6210,"HYA 2024 - Design, Consolidation and Testing",09-Oct-24,28-Mar-25,09-Oct-24 A,28-Mar-25 A,120,0,120,100%,,Completed
 ER7582LT,W196,W196.6200,HYA 2024 - Go / No Go Decision,30-Jan-25,30-Jan-25,03-Feb-25 A,03-Feb-25 A,1,0,1,100%,,Completed
 ER7582LT,W196,W196.6230,HYA 2024 - Data Modifications and Amendments,03-Jan-24,31-Dec-24,03-Jan-24 A,31-Dec-24 A,253,0,253,100%,,Completed
 ER7582LT,W196,W196.6080,HYA 2025 Data Modifications and Amendments- End,,31-Dec-25,,31-Dec-25,0,0,0,0%,1268,Not Started
 ER7582LT,W196,W196.6110,HYA 2025 Data Modifications and Amendments- Start,03-Jan-25,,03-Jan-25 A,,0,0,0,100%,,Completed
 ER7582LT,W196,W196.6100,HYA 2025 R2 Software Build Complete,,29-Dec-23,,29-Dec-23 A,0,0,0,100%,,Completed
 ER7582LT,W196,W196.6090,HYA 2025 R1 Software Build Complete,,02-Oct-23,,02-Oct-23 A,0,0,0,100%,,Completed
 ER7582LT,W196,W196.6180,HYA 2023 U2 - Installation,01-Nov-23,24-Nov-23,01-Nov-23 A,24-Nov-23 A,18,0,18,100%,,Completed
 ER7582LT,W196,W196.6170,HYA 2023 U2 - Consolidation and Testing,05-Sep-23,01-Dec-23,05-Sep-23 A,01-Dec-23 A,45,0,64,100%,,Completed
 ER7582LT,W196,W196.6160,HYA 2023 U2 - Go / No Go Decision,04-Sep-23,04-Sep-23,04-Sep-23 A,04-Sep-23 A,1,0,1,100%,,Completed
 ER7582LT,W196,W196.6190,HYA 2023 U2 - Software Build Specification and Data Modifications,04-Jan-23,29-Dec-23,04-Jan-23 A,29-Dec-23 A,251,0,250,100%,,Completed
 ER7582LT,W196,W196.6140,HYA 2023 U1 - Installation,01-Nov-23,24-Nov-23,01-Nov-23 A,24-Nov-23 A,18,0,18,100%,,Completed
 ER7582LT,W196,W196.6130,HYA 2023 U1 - Consolidation and Testing,05-Sep-23,01-Dec-23,05-Sep-23 A,01-Dec-23 A,45,0,64,100%,,Completed
 ER7582LT,W196,W196.6120,HYA 2023 U1 - Go / No Go Decision,04-Sep-23,04-Sep-23,04-Sep-23 A,04-Sep-23 A,1,0,1,100%,,Completed
 ER7582LT,W196,W196.6150,HYA 2023 U1 - Software Build Specification and Data Modifications,04-Jan-23,29-Dec-23,04-Jan-23 A,29-Dec-23 A,251,0,250,100%,,Completed
 ER7582LT,W196,W196.6070,HYA 2024 Data Modifications and Amendments - End,,31-Dec-24,,31-Dec-24 A,0,0,0,100%,,Completed
 ER7582LT,W196,W196.6060,HYA 2024 Data Modifications and Amendments - Start,03-Jan-24,,03-Jan-24 A,,0,0,0,100%,,Completed
 ER7582LT,W196,W196.6050,HYA 2024 R2 Software Build Complete,,02-Oct-23,,02-Oct-23 A,0,0,0,100%,,Completed
 ER7582LT,W196,W196.6040,HYA 2024 R1 Software Build Complete,,29-Dec-23,,29-Dec-23 A,0,0,0,100%,,Completed
 ER7582LT,W196,W196.6030,HYA 2023 U1 and U2 Software Build Specification and Data Modifications - End,,29-Dec-23,,29-Dec-23 A,0,0,0,100%,,Completed
 ER7582LT,W196,W196.6020,HYA 2023 U1 and U2 Software Build Specification and Data Modifications - Start,01-Feb-23,,01-Feb-23 A,,0,0,0,100%,,Completed
 ER7582LT,W196,W196.6010,HYA 2023 U2 Software Build Complete,,01-Dec-23,,01-Dec-23 A,0,0,0,100%,,Completed
 ER7582LT,W196,W196.6000,HYA 2023 U1 Software Build Complete,,01-Dec-23,,01-Dec-23 A,0,0,0,100%,,Completed
 ER7581LT,W195,W195.1255,HRA 2025 Data Modifications and Amendments - End,,31-Dec-25,,31-Dec-25,0,0,0,0%,1268,Not Started
 ER7581LT,W195,W195.1245,HRA 2025 Data Modifications and Amendments - Start,03-Jan-25,,03-Jan-25 A,,0,0,0,100%,,Completed
 ER7581LT,W195,W195.1235,HRA 2024 Data Modifications and Amendments - End,,31-Dec-24,,31-Dec-24 A,0,0,0,100%,,Completed
 ER7581LT,W195,W195.1225,HRA 2024 Data Modifications and Amendments - Start,03-Jan-24,,03-Jan-24 A,,0,0,0,100%,,Completed
 ER7581LT,W195,W195.1215,HRA 2023 U1 and U2 Software Build Specification and Data Modifications - End,,15-Dec-23,,15-Dec-23 A,0,0,0,100%,,Completed
 ER7581LT,W195,W195.1205,HRA 2023 U1 and U2 Software Build Specification and Data Modifications - Start,01-Feb-23,,01-Feb-23 A,,0,0,0,100%,,Completed
 ER7581LT,W195,W195.1075,HRA 2024  - Installation R1,10-Jun-25,30-Jun-25,10-Jun-25*,30-Jun-25,15,15,15,0%,1397,Not Started
 ER7581LT,W195,W195.1065,"HRA 2024  - Design, Consolidation and Testing",03-Feb-25,28-Mar-25,03-Feb-25 A,28-Mar-25 A,40,0,40,100%,,Completed
 ER7581LT,W195,W195.1055,HRA 2024  - Go / No Go Decision,30-Jan-25,30-Jan-25,30-Jan-25 A,30-Jan-25 A,1,0,1,100%,,Completed
 ER7581LT,W195,W195.1040,HRA 2024  - Data Modifications and Amendments,03-Jan-24,31-Dec-24,03-Jan-24 A,31-Dec-24 A,253,0,253,100%,,Completed
 ER7581LT,W195,W195.1035,HRA 2023 U2 - Installation,01-Nov-23,24-Nov-23,01-Nov-23 A,24-Nov-23 A,18,0,18,100%,,Completed
 ER7581LT,W195,W195.1025,HRA 2023 U2 - Consolidation and Testing,05-Sep-23,01-Dec-23,05-Sep-23 A,01-Dec-23 A,45,0,64,100%,,Completed
 ER7581LT,W195,W195.1015,HRA 2023 U2 - Go / No Go Decision,04-Sep-23,04-Sep-23,04-Sep-23 A,04-Sep-23 A,1,0,1,100%,,Completed
 ER7581LT,W195,W195.1005,HRA 2023 U2 - Software Build Specification and Data Modifications,04-Jan-23,15-Dec-23,04-Jan-23 A,15-Dec-23 A,251,0,242,100%,,Completed
 ER7581LT,W195,W195.1500,HRA 2023 U1 - Installation,01-Nov-23,24-Nov-23,01-Nov-23 A,24-Nov-23 A,18,0,18,100%,,Completed
 ER7581LT,W195,W195.1030,HRA 2023 U1 - Consolidation and Testing,05-Sep-23,01-Dec-23,05-Sep-23 A,01-Dec-23 A,45,0,64,100%,,Completed
 ER7581LT,W195,W195.1010,HRA 2023 U1 - Go / No Go Decision,04-Sep-23,04-Sep-23,04-Sep-23 A,04-Sep-23 A,1,0,1,100%,,Completed
 ER7581LT,W195,W195.1000,HRA 2023 U1 - Software Build Specification and Data Modifications,04-Jan-23,15-Dec-23,04-Jan-23 A,15-Dec-23 A,251,0,242,100%,,Completed
 ER7581LT,W195,W195.10100,HRA 2025 R2 Software Build Complete,,02-Oct-23,,02-Oct-23 A,0,0,0,100%,,Completed
 ER7581LT,W195,W195.10090,HRA 2024 U2 Software Build Complete,,02-Oct-23,,02-Oct-23 A,0,0,0,100%,,Completed
 ER7581LT,W195,W195.10080,HRA 2023 U2 Software Build Complete,,01-Dec-23,,01-Dec-23 A,0,0,0,100%,,Completed
 ER7743LT,W527,W527.25150,DNB DPCS Defueling Support - Project End,,31-Dec-27,,31-Dec-27,0,0,0,0%,1012,Not Started
 ER7743LT,W527,W527.3570,DNB 2025 POLARIS Software Build Complete,,02-Oct-23,,02-Oct-23 A,0,0,0,100%,,Completed
 ER7743LT,W527,W527.3560,DNB 2024 U22 Software Build Complete,,02-Oct-23,,02-Oct-23 A,0,0,0,100%,,Completed
 ER7743LT,W527,W527.3550,DNB 2023 U22 Software Build Complete,,02-Apr-24,,02-Apr-24 A,0,0,0,100%,,Completed
 ER7743LT,W527,W527.11180,DNB 2024 2.8.2 - Installation R21,23-Feb-24,04-Oct-24,23-Feb-24 A,04-Oct-24 A,10,0,156,100%,,Completed
 ER7743LT,W527,W527.11170,DNB 2024 2.8.2 - Delivery,31-Oct-23,27-Nov-23,31-Oct-23 A,27-Nov-23 A,20,0,20,100%,,Completed
 ER7743LT,W527,W527.11160,DNB 2024 2.8.2 - Testing,30-Oct-23,30-Oct-23,30-Oct-23 A,30-Oct-23 A,1,0,1,100%,,Completed
 ER7743LT,W527,W527.11150,DNB 2024 2.8.2 - Specification,23-Oct-23,27-Oct-23,23-Oct-23 A,27-Oct-23 A,5,0,5,100%,,Completed
 ER7743LT,W527,W527.11140,DNB 2024 2.8.2 - Installation R22,16-Aug-24,16-Aug-24,16-Aug-24 A,16-Aug-24 A,1,0,1,100%,,Completed
 ER7743LT,W527,W527.11130,DNB 2024 2.8.2 - Site Acceptance Testing,28-Nov-23,22-Feb-24,28-Nov-23 A,22-Feb-24 A,60,0,60,100%,,Completed
 ER7743LT,W527,W527.11120,DNB 2023 U22 - Installation R22,02-Apr-24,15-Apr-24,02-Apr-24 A,15-Apr-24 A,10,0,10,100%,,Completed
 ER7743LT,W527,W527.11110,DNB 2023 U22 - Delivery,27-Nov-23,27-Mar-24,27-Nov-23 A,27-Mar-24 A,40,0,85,100%,,Completed
 ER7743LT,W527,W527.11100,DNB 2023 U22 - Testing,11-Aug-23,24-Nov-23,11-Aug-23 A,24-Nov-23 A,40,0,75,100%,,Completed
 ER7743LT,W527,W527.11090,DNB 2023 U22 - Specification (Release 2.8.2),30-Jun-23,10-Aug-23,30-Jun-23 A,10-Aug-23 A,30,0,30,100%,,Completed
 ER7743LT,W527,W527.11080,DNB 2023 U22 - Go / No Go Decision (Go Decision Made),,29-Jun-23,,29-Jun-23 A,0,0,0,100%,,Completed
 ER7743LT,W527,W527.10070,DNB 2023 U22 - Software Build Requirement,04-Jan-23,29-Jun-23,04-Jan-23 A,29-Jun-23 A,123,0,122,100%,,Completed
 ER7743LT,W527,W527.10050,DNB 2023 U21 - Installation R21,01-Mar-24,14-Mar-24,01-Mar-24 A,14-Mar-24 A,10,0,10,100%,,Completed
 ER7743LT,W527,W527.10040,DNB 2023 U21 - Delivery,27-Nov-23,27-Mar-24,27-Nov-23 A,27-Mar-24 A,40,0,85,100%,,Completed
 ER7743LT,W527,W527.10030,DNB 2023 U21 - Testing,11-Aug-23,24-Nov-23,11-Aug-23 A,24-Nov-23 A,40,0,75,100%,,Completed
 ER7743LT,W527,W527.10020,DNB 2023 U21 - Specification (Release 2.8.2),30-Jun-23,10-Aug-23,30-Jun-23 A,10-Aug-23 A,30,0,30,100%,,Completed
 ER7743LT,W527,W527.10010,DNB 2023 U21 - Go / No Go Decision (Go Decision Made),,29-Jun-23,,29-Jun-23 A,0,0,0,100%,,Completed
 ER7743LT,W527,W527.10000,DNB 2023 U21 - Software Build Requirement,04-Jan-23,29-Jun-23,04-Jan-23 A,29-Jun-23 A,123,0,122,100%,,Completed
 W529LT,W529,W529.6420,TOR 2025 S14R1 - Installation R1,17-May-27,16-Jul-27,17-May-27,16-Jul-27,44,44,44,0%,1387,Not Started
 W529LT,W529,W529.6410,TOR 2025 S14R1 - Delivery,19-Apr-27,14-May-27,19-Apr-27,14-May-27,19,19,19,0%,1387,Not Started
 W529LT,W529,W529.6400,TOR 2025 S14R1 - Testing,25-Jan-27,16-Apr-27,25-Jan-27,16-Apr-27,58,58,58,0%,1387,Not Started
 W529LT,W529,W529.6390,TOR 2025 S14R1 - Specification,01-Jul-26,22-Jan-27,01-Jul-26,22-Jan-27,145,145,145,0%,1387,Not Started
 W529LT,W529,W529.6380,TOR 2025 S14R1 - Go / No Go Decision,,30-Jun-26,,30-Jun-26,0,0,0,0%,1387,Not Started
 W529LT,W529,W529.6370,TOR 2025 S14R1 - Software Build Requirement,02-Jan-26,30-Jun-26,02-Jan-26*,30-Jun-26,124,124,124,0%,1387,Not Started
 W529LT,W529,W529.6360,TOR 2025 S13R2 - Installation R2,12-Jan-26,27-Feb-26,12-Jan-26,27-Feb-26,35,35,35,0%,1736,Not Started
 W529LT,W529,W529.6350,TOR 2025 S13R2 - Delivery,15-Dec-25,09-Jan-26,15-Dec-25,09-Jan-26,17,17,17,0%,1736,Not Started
 W529LT,W529,W529.6340,TOR 2025 S13R2 - Testing,22-Sep-25,12-Dec-25,22-Sep-25,12-Dec-25,60,60,60,0%,1736,Not Started
 W529LT,W529,W529.6330,TOR 2025 S13R2 - Specification,01-Jul-25,19-Sep-25,01-Jul-25,19-Sep-25,58,58,58,0%,1736,Not Started
 W529LT,W529,W529.6320,TOR 2025 S13R2 - Go / No Go Decision,,30-Jun-25,,30-Jun-25,0,0,0,0%,1736,Not Started
 W529LT,W529,W529.6310,TOR 2025 S13R2 - Software Build Requirement,02-Jan-25,30-Jun-25,02-Jan-25 A,30-Jun-25,124,61,124,50%,1736,In Progress
 ER6360LT,W085,W085.DS23020,Verify Inspection and Testing Report (EDF),,01-Sep-23,,01-Sep-23 A,0,0,0,100%,,Completed
 ER6360LT,W085,W085.DS23010,Approve NDT Inspection Report (EDF),01-Sep-23,01-Sep-23,01-Sep-23 A,01-Sep-23 A,4,0,0,100%,,Completed
 ER6360LT,W085,W085.DS23000,Inspect and Clean LSM,01-Sep-23,04-Sep-23,01-Sep-23 A,04-Sep-23 A,1,0,1,100%,,Completed
 ER6360LT,W085,W085.DS22990,Verify Inspection and Testing Report (EDF),,08-Jan-24,,08-Jan-24 A,0,0,0,100%,,Completed
 ER6360LT,W085,W085.DS22980,Approve NDT Inspection Report (EDF),08-Jan-24,08-Jan-24,08-Jan-24 A,08-Jan-24 A,4,0,1,100%,,Completed
 ER6360LT,W085,W085.DS22970,Inspect and Clean LSM,01-Dec-23,05-Jan-24,01-Dec-23 A,05-Jan-24 A,1,0,23,100%,,Completed
 ER6360LT,W085,W085.DS22960,Verify Inspection and Testing Report (EDF),,30-Nov-23,,30-Nov-23 A,0,0,0,100%,,Completed
 ER6360LT,W085,W085.DS22950,Approve NDT Inspection Report (EDF),30-Nov-23,30-Nov-23,30-Nov-23 A,30-Nov-23 A,4,0,1,100%,,Completed
 ER6360LT,W085,W085.DS22940,Inspect and Clean LSM,28-Nov-23,29-Nov-23,28-Nov-23 A,29-Nov-23 A,1,0,2,100%,,Completed
 ER6360LT,W085,W085.DS22930,Verify Inspection and Testing Report (EDF),,04-Dec-23,,04-Dec-23 A,0,0,0,100%,,Completed
 ER6360LT,W085,W085.DS22920,Approve NDT Inspection Report (EDF),04-Dec-23,04-Dec-23,04-Dec-23 A,04-Dec-23 A,4,0,1,100%,,Completed
 ER6360LT,W085,W085.DS22910,Inspect and Clean LSM,01-Nov-23,01-Dec-23,01-Nov-23 A,01-Dec-23 A,1,0,23,100%,,Completed
 ER6360LT,W085,W085.DS22890,Approve NDT Inspection Report (EDF),17-Nov-23,17-Nov-23,17-Nov-23 A,17-Nov-23 A,4,0,1,100%,,Completed
 ER6360LT,W085,W085.DS22880,Inspect and Clean LSM,02-Oct-23,16-Nov-23,02-Oct-23 A,16-Nov-23 A,5,0,34,100%,,Completed
 ER6360LT,W085,W085.DS22870,Verify Inspection and Testing Report (EDF),,04-Sep-23,,04-Sep-23 A,0,0,0,100%,,Completed
 ER6360LT,W085,W085.DS22860,Approve NDT Inspection Report (EDF),31-Jul-23,04-Sep-23,31-Jul-23 A,04-Sep-23 A,4,0,25,100%,,Completed
 ER6360LT,W085,W085.DS22850,Inspect and Clean LSM,30-Jun-23,05-Jul-23,30-Jun-23 A,05-Jul-23 A,1,0,4,100%,,Completed
 ER6360LT,W085,W085.DS22840,Verify Inspection and Testing Report (EDF),,29-Jun-23,,29-Jun-23 A,0,0,0,100%,,Completed
 ER6360LT,W085,W085.DS22830,Approve NDT Inspection Report (EDF),29-Jun-23,29-Jun-23,29-Jun-23 A,29-Jun-23 A,2,0,1,100%,,Completed
 ER6360LT,W085,W085.DS22820,Inspect and Clean LSM,26-Apr-23,28-Jun-23,26-Apr-23 A,28-Jun-23 A,2,0,43,100%,,Completed
 ER6360LT,W085,W085.DS22810,Verify Inspection and Testing Report (EDF),,19-Apr-23,,19-Apr-23 A,0,0,0,100%,,Completed
 ER6360LT,W085,W085.DS22800,Approve NDT Inspection Report (EDF),18-Apr-23,19-Apr-23,18-Apr-23 A,19-Apr-23 A,2,0,2,100%,,Completed
 ER6360LT,W085,W085.DS22790,Inspect and Clean LSM,14-Apr-23,17-Apr-23,14-Apr-23 A,17-Apr-23 A,2,0,2,100%,,Completed
 ER6360LT,W085,W085.DS22780,Verify Inspection and Testing Report (EDF),,05-Apr-23,,05-Apr-23 A,0,0,0,100%,,Completed
 ER6360LT,W085,W085.DS22770,Approve NDT Inspection Report (EDF),04-Apr-23,05-Apr-23,04-Apr-23 A,05-Apr-23 A,1,0,2,100%,,Completed
 ER6360LT,W085,W085.DS22760,Inspect and Clean LSM,01-Dec-22,03-Apr-23,01-Dec-22 A,03-Apr-23 A,25,0,85,100%,,Completed
 ER6360LT,W085,W085.DS22750,Verify Inspection and Testing Report (EDF),,13-Apr-23,,13-Apr-23 A,0,0,0,100%,,Completed
 ER6360LT,W085,W085.DS22740,Approve NDT Inspection Report (EDF),13-Apr-23,13-Apr-23,13-Apr-23 A,13-Apr-23 A,1,0,1,100%,,Completed
 ER6360LT,W085,W085.DS22730,Inspect and Clean LSM,06-Apr-23,12-Apr-23,06-Apr-23 A,12-Apr-23 A,5,0,3,100%,,Completed
 ER6360LT,W085,W085.DS22720,Verify Inspection and Testing Report (EDF),,26-Nov-22,,26-Nov-22 A,0,0,0,100%,,Completed
 ER6360LT,W085,W085.DS22710,Approve NDT Inspection Report (EDF),26-Nov-22,26-Nov-22,26-Nov-22 A,26-Nov-22 A,1,0,1,100%,,Completed
 ER6360LT,W085,W085.1580,Inspect and Clean LSM,17-Oct-22,25-Nov-22,17-Oct-22 A,25-Nov-22 A,1,0,30,100%,,Completed
 W526LT,W526,W526.6360,HYB 2025 S13R7 - Installation R7,16-Jan-25,29-Jan-25,17-Feb-25 A,28-Feb-25 A,10,0,10,100%,,Completed
 W526LT,W526,W526.6350,HYB 2025 S13R7 - Delivery,02-Jan-25,15-Jan-25,03-Feb-25 A,14-Feb-25 A,10,0,10,100%,,Completed
 W526LT,W526,W526.6340,HYB 2025 S13R7 - Testing,20-Jan-25,31-Jan-25,20-Jan-25 A,31-Jan-25 A,10,0,10,100%,,Completed
 W526LT,W526,W526.6330,HYB 2025 S13R7 - Specification,06-Jan-25,17-Jan-25,06-Jan-25 A,17-Jan-25 A,10,0,10,100%,,Completed
 ER6360LT,W085,W085.DS2310,LSM Verify Repairs and NDT Complete (EDF),22-Feb-23,22-Feb-23,22-Feb-23 A,22-Feb-23 A,1,0,1,100%,,Completed
 ER6360LT,W085,W085.DS2300,Refurbish LSM,21-Feb-23,21-Feb-23,21-Feb-23 A,21-Feb-23 A,1,0,1,100%,,Completed
 ER6360LT,W085,W085.DS2290,Verify Repairs and NDT Complete (EDF),20-Mar-23,24-Mar-23,20-Mar-23 A,24-Mar-23 A,5,0,5,100%,,Completed
 ER6360LT,W085,W085.DS1690,Approve Lid Refurb Scope (EDF),02-Nov-22,18-Nov-22,02-Nov-22 A,18-Nov-22 A,2,0,13,100%,,Completed
 ER6360LT,W085,W085.DS1680,Prepare Lid Refurb Scope,24-Oct-22,01-Nov-22,24-Oct-22 A,01-Nov-22 A,9,0,7,100%,,Completed
 ER6360LT,W085,W085.DS2280,Verify Repairs and NDT Complete (EDF) T,20-Dec-22,23-Dec-22,20-Dec-22 A,23-Dec-22 A,4,0,4,100%,,Completed
 ER6360LT,W085,W085.DS2230,Refurbish Flask Lid Topside,28-Nov-22,19-Dec-22,28-Nov-22 A,19-Dec-22 A,10,0,16,100%,,Completed
 ER6360LT,W085,W085.DS1570,Inspect Flask Lid Topside,03-Oct-22,03-Oct-22,03-Oct-22 A,03-Oct-22 A,1,0,1,100%,,Completed
 ER7582LT,W196,W196.1205,TPM and JCRB Meetings Held 2023,01-Feb-23,29-Dec-23,01-Feb-23 A,29-Dec-23 A,2518,0,230,100%,,Completed
 ER7581LT,W195,W195.2505,TPM and JCRB Meetings Held - 2023,01-Feb-23,02-Jan-24,01-Feb-23 A,02-Jan-24 A,2518,0,230,100%,,Completed
 ER7743LT,W527,W527.4800,TPM and JCRB Meetings Held 2023,01-Feb-23,29-Dec-23,01-Feb-23 A,29-Dec-23 A,2473,0,229,100%,,Completed
 ER7580LT,W194,W194.1205,TPM and JCRB Meetings Held 2023,01-Feb-23,29-Dec-23,01-Feb-23 A,29-Dec-23 A,2513,0,230,100%,,Completed
 ER7579LT,W193,W193. 1205,TPM and JCRB Meetings Held - 2023,01-Feb-23,29-Dec-23,01-Feb-23 A,29-Dec-23 A,238,0,230,100%,,Completed
 ER7743LT,W527,W527.25140,"DNB TGN097 AIC - Draft Report Produced, Internal Review and Issue to EDF",13-Mar-25,26-Mar-25,13-Mar-25 A,26-Mar-25 A,10,0,10,100%,,Completed
 ER7743LT,W527,W527.25130,DNB TGN097 AIC - EDF Review,27-Mar-25,09-Apr-25,27-Mar-25 A,09-Apr-25,10,7,10,50%,1694,In Progress
 ER7743LT,W527,W527.25120,DNB TGN097 AIC - Report Issued,10-Apr-25,25-Apr-25,10-Apr-25,25-Apr-25,10,10,10,0%,1694,Not Started
 ER7743LT,W527,W527.25110,DNB TGN097 AIC - Inspection,06-Mar-25,12-Mar-25,06-Mar-25 A,12-Mar-25 A,5,0,5,100%,,Completed
 ER7743LT,W527,W527.25100,DNB TGN097 AIC - Plan Produced,07-Feb-25,03-Apr-25,07-Feb-25 A,31-Mar-25 A,40,0,37,100%,,Completed
 ER7743LT,W527,W527.25070,"DNB TGN097 POLARIS - Draft Report Produced, Internal Review and Issue to EDF",13-Mar-25,26-Mar-25,10-Mar-25 A,21-Mar-25 A,10,0,10,100%,,Completed
 ER7743LT,W527,W527.25080,DNB TGN097 POLARIS - EDF Review,27-Mar-25,09-Apr-25,24-Mar-25 A,09-Apr-25,10,7,13,50%,1694,In Progress
 ER7743LT,W527,W527.25090,DNB TGN097 POLARIS - Report Issued,10-Apr-25,25-Apr-25,10-Apr-25,25-Apr-25,10,10,10,0%,1694,Not Started
 ER7743LT,W527,W527.25030,DNB TGN097 POLARIS - Inspection,06-Mar-25,12-Mar-25,03-Mar-25 A,07-Mar-25 A,5,0,5,100%,,Completed
 ER7743LT,W527,W527.25020,DNB TGN097 POLARIS - Plan Produced,07-Feb-25,03-Apr-25,07-Feb-25 A,31-Mar-25 A,40,0,37,100%,,Completed
 ER7743LT,W527,W527.3540,DNB 2025 POLARIS TGN097 Inspection,,25-Apr-25,,25-Apr-25,0,0,0,0%,1694,Not Started
 ER7581LT,W195,W195.25150,"TGN097 R2 - Draft Report Produced, Internal Review and Issue to EDF",06-Jun-25,03-Jul-25,06-Jun-25,03-Jul-25,20,20,20,0%,1349,Not Started
 ER7581LT,W195,W195.25140,TGN097 R2 - EDF Review,04-Jul-25,17-Jul-25,04-Jul-25,17-Jul-25,10,10,10,0%,1349,Not Started
 ER7581LT,W195,W195.25130,TGN097 R2 - Report Issue,22-Aug-25,05-Sep-25,22-Aug-25,05-Sep-25,10,10,10,0%,1349,Not Started
 ER7581LT,W195,W195.25120,TGN097 R2 - Inspection,30-May-25,05-Jun-25,30-May-25*,05-Jun-25,5,5,5,0%,1349,Not Started
 ER7581LT,W195,W195.25110,TGN097 R2 - Plan Produced,11-Dec-24,07-Feb-25,11-Dec-24 A,07-Feb-25 A,40,0,40,100%,,Completed
 ER7581LT,W195,W195.25070,"HRA 2024 TGN097 R1 - Draft Report Produced, Internal Review and Issue to EDF",27-Jun-24,10-Jul-24,27-Jun-24 A,10-Jul-24 A,10,0,10,100%,,Completed
 ER7581LT,W195,W195.25080,HRA 2024 TGN097 R1 - EDF Review,11-Jul-24,30-Aug-24,11-Jul-24 A,30-Aug-24 A,10,0,36,100%,,Completed
 ER7581LT,W195,W195.25090,HRA 2024 TGN097 R1 - Report Issue,02-Sep-24,13-Sep-24,02-Sep-24 A,13-Sep-24 A,10,0,10,100%,,Completed
 ER7581LT,W195,W195.25030,HRA 2024 TGN097 R1 - Inspection,20-Jun-24,26-Jun-24,20-Jun-24 A,26-Jun-24 A,5,0,5,100%,,Completed
 ER7581LT,W195,W195.25020,HRA 2024 TGN097 R1 - Plan Produced,02-Feb-24,28-Mar-24,02-Feb-24 A,28-Mar-24 A,40,0,40,100%,,Completed
 ER7582LT,W196,W196.25150,"TGN097 U1 - Draft Report Produced, Internal Review and Issue to EDF",11-Oct-23,07-Nov-23,11-Oct-23 A,07-Nov-23 A,20,0,20,100%,,Completed
 ER7582LT,W196,W196.25140,TGN097 U1 - EDF Review,08-Nov-23,21-Nov-23,08-Nov-23 A,21-Nov-23 A,10,0,10,100%,,Completed
 ER7582LT,W196,W196.25130,TGN097 U1 - Update and Issue Report,22-Nov-23,15-Dec-23,22-Nov-23 A,15-Dec-23 A,20,0,18,100%,,Completed
 ER7582LT,W196,W196.25120,TGN097 U1 - Inspection,10-Oct-23,10-Oct-23,10-Oct-23 A,10-Oct-23 A,1,0,1,100%,,Completed
 ER7582LT,W196,W196.25110,TGN097 U1 - Plan Produced,14-Jun-23,14-Jul-23,14-Jun-23 A,14-Jul-23 A,20,0,23,100%,,Completed
 ER7582LT,W196,W196.25070,"TGN097 R2 - Draft Report Produced, Internal Review and Issue to EDF",04-Apr-25,10-Apr-25,04-Apr-25,10-Apr-25,5,5,5,0%,1437,Not Started
 ER7582LT,W196,W196.25080,TGN097 R2 - EDF Review,11-Apr-25,24-Apr-25,11-Apr-25,24-Apr-25,8,8,8,0%,1437,Not Started
 ER7582LT,W196,W196.25090,TGN097 R2 - Report Issue,25-Apr-25,01-May-25,25-Apr-25,01-May-25,5,5,5,0%,1437,Not Started
 ER7582LT,W196,W196.25030,TGN097 R2 - Inspection,28-Mar-25,03-Apr-25,28-Mar-25 A,03-Apr-25,5,3,5,50%,1437,In Progress
 ER7582LT,W196,W196.25020,TGN097 R2 - Plan Produced,02-Jan-25,07-Feb-25,02-Jan-25 A,07-Feb-25 A,27,0,27,100%,,Completed
 ER7580LT,W194,W194.25070,"TGN097 R4 - Draft Report Produced, Internal Review and Issue to EDF",12-Sep-24,25-Sep-24,12-Sep-24 A,25-Sep-24 A,10,0,10,100%,,Completed
 ER7580LT,W194,W194.25080,TGN097 R4 - EDF Review,26-Sep-24,09-Oct-24,26-Sep-24 A,09-Oct-24 A,10,0,10,100%,,Completed
 ER7580LT,W194,W194.25090,TGN097 R4 - Update and Issue Report,10-Oct-24,16-Oct-24,10-Oct-24 A,16-Oct-24 A,5,0,5,100%,,Completed
 ER7580LT,W194,W194.25030,TGN097 R4 - Inspection,05-Sep-24,11-Sep-24,05-Sep-24 A,11-Sep-24 A,5,0,5,100%,,Completed
 ER7580LT,W194,W194.25020,TGN097 R4 - Plan Produced,02-Feb-24,28-Mar-24,02-Feb-24 A,28-Mar-24 A,40,0,40,100%,,Completed
 ER7580LT,W194,W194.25150,"TGN097 R3 - Draft Report Produced, Internal Review and Issue to EDF",10-Oct-25,16-Oct-25,10-Oct-25,16-Oct-25,5,5,5,0%,546,Not Started
 ER7580LT,W194,W194.25140,TGN097 R3 - EDF Review,17-Oct-25,30-Oct-25,17-Oct-25,30-Oct-25,10,10,10,0%,546,Not Started
 ER7580LT,W194,W194.25130,TGN097 R3 - Update and Issue Report,31-Oct-25,06-Nov-25,31-Oct-25,06-Nov-25,5,5,5,0%,546,Not Started
 ER7580LT,W194,W194.25120,TGN097 R3 - Inspection,03-Oct-25,09-Oct-25,03-Oct-25*,09-Oct-25,5,5,5,0%,546,Not Started
 ER7580LT,W194,W194.25110,TGN097 R3 - Plan Produced,02-Jan-25,07-Feb-25,02-Jan-25 A,07-Feb-25 A,27,0,27,100%,,Completed
 ER7582LT,W196,W196.1560,HYA LSR - Update and Issue LSR,15-Jun-23,30-Jun-23,15-Jun-23 A,30-Jun-23 A,22,0,12,100%,,Completed
 ER7582LT,W196,W196.1550,HYA LSR - EDF Review,01-Jun-23,14-Jun-23,01-Jun-23 A,14-Jun-23 A,10,0,10,100%,,Completed
 ER7582LT,W196,W196.1540,"HYA LSR - LSR Update, Internal Reveiw and Issue to EDF",18-May-23,31-May-23,18-May-23 A,31-May-23 A,9,0,9,100%,,Completed
 ER7582LT,W196,W196.1530,HYA LSR - Recommendations Workshop,17-May-23,17-May-23,17-May-23 A,17-May-23 A,1,0,1,100%,,Completed
 ER7582LT,W196,W196.1520,HYA LSR - Issue Recommedations,09-May-23,09-May-23,09-May-23 A,09-May-23 A,1,0,1,100%,,Completed
 ER7582LT,W196,W196.1510,"HYA LSR - Data Export, Analysis and Draft Report Produced",17-Apr-23,05-May-23,17-Apr-23 A,05-May-23 A,14,0,14,100%,,Completed
 ER7582LT,W196,W196.1500,HYA LSR - Pre-data Extract,11-Apr-23,14-Apr-23,11-Apr-23 A,14-Apr-23 A,4,0,4,100%,,Completed
 ER7581LT,W195,W195.1565,HRA LSR - Update and Issue LSR,11-Dec-23,15-Dec-23,11-Dec-23 A,15-Dec-23 A,5,0,5,100%,,Completed
 ER7581LT,W195,W195.1555,HRA LSR - EDF Review,15-Nov-23,08-Dec-23,15-Nov-23 A,08-Dec-23 A,10,0,18,100%,,Completed
 ER7581LT,W195,W195.1545,"HRA LSR - LSR Update, Internal Reveiw and Issue to EDF",01-Nov-23,14-Nov-23,01-Nov-23 A,14-Nov-23 A,10,0,10,100%,,Completed
 ER7581LT,W195,W195.1535,HRA LSR - Recommendations Workshop,31-Oct-23,31-Oct-23,31-Oct-23 A,31-Oct-23 A,1,0,1,100%,,Completed
 ER7581LT,W195,W195.1525,HRA LSR - Issue Recommedations,23-Oct-23,23-Oct-23,23-Oct-23 A,23-Oct-23 A,1,0,1,100%,,Completed
 ER7581LT,W195,W195.1515,"HRA LSR - Data Export, Analysis and Draft Report Produced",02-Oct-23,20-Oct-23,02-Oct-23 A,20-Oct-23 A,15,0,15,100%,,Completed
 ER7581LT,W195,W195.1505,HRA LSR - Pre-data Extract,25-Sep-23,29-Sep-23,25-Sep-23 A,29-Sep-23 A,5,0,5,100%,,Completed
 ER7743LT,W527,W527.11060,DNB LSR - Update and Issue LSR,27-Sep-23,06-Oct-23,27-Sep-23 A,06-Oct-23 A,5,0,8,100%,,Completed
 ER7743LT,W527,W527.11010,DNB LSR - EDF Review,14-Sep-23,26-Sep-23,14-Sep-23 A,26-Sep-23 A,9,0,9,100%,,Completed
 ER7743LT,W527,W527.11030,"DNB LSR - LSR Update, Internal Reveiw and Issue to EDF",31-Aug-23,13-Sep-23,31-Aug-23 A,13-Sep-23 A,10,0,10,100%,,Completed
 ER7743LT,W527,W527.11050,DNB LSR - Recommendations Workshop,30-Aug-23,30-Aug-23,30-Aug-23 A,30-Aug-23 A,1,0,1,100%,,Completed
 ER7743LT,W527,W527.11020,DNB LSR - Issue Recommedations,21-Aug-23,21-Aug-23,21-Aug-23 A,21-Aug-23 A,1,0,1,100%,,Completed
 ER7743LT,W527,W527.11000,"DNB LSR - Data Export, Analysis and Draft Report Produced",10-Jul-23,21-Aug-23,10-Jul-23 A,21-Aug-23 A,15,0,30,100%,,Completed
 ER7743LT,W527,W527.11040,HNB LSR - Pre-data Extract,03-Jul-23,07-Jul-23,03-Jul-23 A,07-Jul-23 A,5,0,5,100%,,Completed
 ER7580LT,W194,W194.1560,HPB LSR - Update and Issue LSR,03-Apr-23,09-May-23,03-Apr-23 A,09-May-23 A,19,0,23,100%,,Completed
 ER7580LT,W194,W194.1550,HPB LSR - EDF Review,12-Apr-23,25-Apr-23,12-Apr-23 A,25-Apr-23 A,10,0,10,100%,,Completed
 ER7580LT,W194,W194.1540,"HPB LSR - LSR Update, Internal Reveiw and Issue to EDF",29-Mar-23,11-Apr-23,29-Mar-23 A,11-Apr-23 A,8,0,8,100%,,Completed
 ER7580LT,W194,W194.1530,HNB LSR - Recommendations Workshop,28-Mar-23,28-Mar-23,28-Mar-23 A,28-Mar-23 A,1,0,1,100%,,Completed
 ER7580LT,W194,W194.1520,HPB LSR - Issue Recommedations,20-Mar-23,20-Mar-23,20-Mar-23 A,20-Mar-23 A,1,0,1,100%,,Completed
 ER7580LT,W194,W194.1510,"HPB LSR - Data Export, Analysis and Draft Report Produced",27-Feb-23,17-Mar-23,27-Feb-23 A,17-Mar-23 A,15,0,15,100%,,Completed
 ER7580LT,W194,W194.1500,HPB LSR - Pre-data Extract,20-Feb-23,24-Feb-23,20-Feb-23 A,24-Feb-23 A,5,0,5,100%,,Completed
 ER7743LT,W527,W527.3520,DNB 2026 Lifetime Sustainability Review (LSR) (TBC),,06-Nov-26,,06-Nov-26*,0,0,0,0%,1305,Not Started
 ER7580LT,W194,W194.2235,HPB 2025 - R4 Software Build Complete  (No Longer Required),,01-Dec-23,,01-Dec-23 A,0,0,0,100%,,Completed
 ER7580LT,W194,W194.2155,HPB 2024 - R4 Software Build Complete  (No Longer Required),,01-Dec-23,,01-Dec-23 A,0,0,0,100%,,Completed
 ER7580LT,W194,W194.1195,HPB 2023 - R4 Software Build Complete,,11-Mar-24,,11-Mar-24 A,0,0,0,100%,,Completed
 ER7580LT,W194,W194.1355,HPB 2025 HCP35 - Installation R4,10-Feb-25,28-Feb-25,10-Feb-25 A,28-Feb-25 A,15,0,15,100%,,Completed
 ER7580LT,W194,W194.1345,HPB 2025 HCP35 - Delivery,03-Feb-25,14-Feb-25,03-Feb-25 A,14-Feb-25 A,10,0,10,100%,,Completed
 ER7580LT,W194,W194.1335,HPB 2025 HCP35 - Testing,27-Nov-24,24-Jan-25,27-Nov-24 A,24-Jan-25 A,40,0,40,100%,,Completed
 ER7580LT,W194,W194.1325,HPB 2025 HCP35 - Specification,17-Apr-24,25-Oct-24,17-Apr-24 A,25-Oct-24 A,140,0,135,100%,,Completed
 ER7580LT,W194,W194.1315,HPB 2025 R4 - Go / No Go Decision   (No Longer Required),,01-Dec-23,,01-Dec-23 A,0,0,0,100%,,Completed
 ER7580LT,W194,W194.1305,HPB 2025 R4 - Software Build Requirement  (No Longer Required),01-Dec-23,01-Dec-23,01-Dec-23 A,01-Dec-23 A,0,0,0,100%,,Completed
 ER7580LT,W194,W194.1295,HPB 2025 R33.0 - Installation R4,10-Feb-25,28-Feb-25,10-Feb-25 A,28-Feb-25 A,15,0,15,100%,,Completed
 ER7580LT,W194,W194.1285,HPB 2025 R33.0 - Delivery,09-Jan-25,22-Jan-25,09-Jan-25 A,22-Jan-25 A,10,0,10,100%,,Completed
 ER7580LT,W194,W194.1275,HPB 2025 R33.0 - Testing,21-Oct-24,29-Nov-24,21-Oct-24 A,29-Nov-24 A,30,0,30,100%,,Completed
 ER7580LT,W194,W194.1265,HPB 2025 R33.0 - Specification,11-Apr-24,30-Sep-24,11-Apr-24 A,30-Sep-24 A,120,0,120,100%,,Completed
 ER7580LT,W194,W194.1255,HPB 2025 R3 - Go / No Go Decision  (No Longer Required),,01-Dec-23,,01-Dec-23 A,0,0,0,100%,,Completed
 ER7580LT,W194,W194.1245,HPB 2025 R3 - Software Build Requirement (No Longer Required),01-Dec-23,01-Dec-23,01-Dec-23 A,01-Dec-23 A,0,0,0,100%,,Completed
 ER7580LT,W194,W1941230,HPB 2024 HCP34 - Installation R4,01-Jul-24,19-Jul-24,01-Jul-24 A,19-Jul-24 A,15,0,15,100%,,Completed
 ER7580LT,W194,W1941220,HPB 2024 HCP34 - Delivery,20-May-24,03-Jun-24,20-May-24 A,03-Jun-24 A,10,0,10,100%,,Completed
 ER7580LT,W194,W1941210,HPB 2024 HCP34 - Testing,14-Mar-24,13-May-24,14-Mar-24 A,13-May-24 A,40,0,40,100%,,Completed
 ER7580LT,W194,W1941200,HPB 2024 HCP34 - Specification,03-Jul-23,28-Mar-24,03-Jul-23 A,28-Mar-24 A,23,0,190,100%,,Completed
 ER7580LT,W194,W1941190,HPB 2024 R4 - Go / No Go Decision (No Longer Required),,01-Dec-23,,01-Dec-23 A,0,0,0,100%,,Completed
 ER7580LT,W194,W1941180,HPB 2024 R4 - Software Build Requirement (No Longer Required),01-Dec-23,01-Dec-23,01-Dec-23 A,01-Dec-23 A,0,0,0,100%,,Completed
 ER7580LT,W194,W1941170,HPB 2024 R32.0 - Installation R4,01-Jul-24,19-Jul-24,01-Jul-24 A,19-Jul-24 A,15,0,15,100%,,Completed
 ER7580LT,W194,W1941160,HPB 2024 R32.0  - Delivery,19-Apr-24,16-May-24,19-Apr-24 A,16-May-24 A,10,0,19,100%,,Completed
 ER7580LT,W194,W1941150,HPB 2024 R32.0 - Testing,06-Mar-24,18-Apr-24,06-Mar-24 A,18-Apr-24 A,30,0,30,100%,,Completed
 ER7580LT,W194,W1941140,HPB 2024 R32.0 - Specification,16-Jun-23,01-Mar-24,16-Jun-23 A,01-Mar-24 A,44,0,182,100%,,Completed
 ER7580LT,W194,W1941130,HPB 2024 R3 - Go / No Go Decision (No Longer Required),,01-Dec-23,,01-Dec-23 A,0,0,0,100%,,Completed
 ER7580LT,W194,W1941120,HPB 2024 R3 - Software Build Requirement (No Longer Required),01-Dec-23,01-Dec-23,01-Dec-23 A,01-Dec-23 A,0,0,0,100%,,Completed
 ER7580LT,W194,W194.1930,HPB 2023 R4 - Installation,27-Feb-24,11-Mar-24,27-Feb-24 A,11-Mar-24 A,10,0,10,100%,,Completed
 ER7580LT,W194,W194.1920,HPB 2023 R4 - Delivery,27-Nov-23,26-Feb-24,27-Nov-23 A,26-Feb-24 A,40,0,63,100%,,Completed
 ER7580LT,W194,W194.1910,HPB 2023 R4 - Testing,25-Sep-23,24-Nov-23,25-Sep-23 A,24-Nov-23 A,40,0,45,100%,,Completed
 ER7580LT,W194,W194.1900,HPB 2023 R4 - Specification (Release 32 and HCP 34),30-Jun-23,22-Sep-23,30-Jun-23 A,22-Sep-23 A,30,0,60,100%,,Completed
 ER7580LT,W194,W194.1130,HPB 2023 R4 - Go / No Go Decision (Go Decision Made),,29-Jun-23,,29-Jun-23 A,0,0,0,100%,,Completed
 ER7580LT,W194,W194.1120,HPB 2023 R4 - Software Build Requirement,04-Jan-23,29-Jun-23,04-Jan-23 A,29-Jun-23 A,123,0,122,100%,,Completed
 ER7580LT,W194,W194.1050,HPB 2023 R3 - Installation,25-Jan-24,07-Feb-24,25-Jan-24 A,07-Feb-24 A,10,0,10,100%,,Completed
 ER7580LT,W194,W194.1040,HPB 2023 R3 - Delivery,27-Nov-23,24-Jan-24,27-Nov-23 A,24-Jan-24 A,40,0,40,100%,,Completed
 ER7580LT,W194,W194.1030,HPB 2023 R3 - Testing,25-Sep-23,24-Nov-23,25-Sep-23 A,24-Nov-23 A,40,0,45,100%,,Completed
 ER7580LT,W194,W194.1020,HPB 2023 R3 - Specification (Release 32 and HCP 34),30-Jun-23,22-Sep-23,30-Jun-23 A,22-Sep-23 A,30,0,60,100%,,Completed
 ER7580LT,W194,W194.1010,HPB 2023 R3 - Go / No Go Decision (Go Decision Made),,29-Jun-23,,29-Jun-23 A,0,0,0,100%,,Completed
 ER7580LT,W194,W194.1000,HPB 2023 R3 - Software Build Requirement,04-Jan-23,29-Jun-23,04-Jan-23 A,29-Jun-23 A,123,0,122,100%,,Completed
 ER7579LT,W193,W193.25100,HNB 2025 R4 Software Build Complete  (No Longer Required),,29-Dec-23,,29-Dec-23 A,0,0,0,100%,,Completed
 ER7579LT,W193,W193.1255,HNB 2024 R4 Software Build Complete  (No Longer Required),,29-Dec-23,,29-Dec-23 A,0,0,0,100%,,Completed
 ER7579LT,W193,W193.11240,HNB 2024 R4 - Installation,03-Jun-24,03-Jun-24,03-Jun-24 A,03-Jun-24 A,0,0,0,100%,,Completed
 ER7579LT,W193,W193.11230,HNB 2024 R4 - Delivery,03-Jun-24,03-Jun-24,03-Jun-24 A,03-Jun-24 A,0,0,0,100%,,Completed
 ER7579LT,W193,W193.11220,HNB 2024 R4 - Testing,03-Jun-24,03-Jun-24,03-Jun-24 A,03-Jun-24 A,0,0,0,100%,,Completed
 ER7579LT,W193,W193.11210,HNB 2024 R4 - Specification,03-Jun-24,03-Jun-24,03-Jun-24 A,03-Jun-24 A,0,0,0,100%,,Completed
 ER7579LT,W193,W193.11200,HNB 2024 R4 - Go / No Go Decision  (No Longer Required),,01-Dec-23,,01-Dec-23 A,0,0,0,100%,,Completed
 ER7579LT,W193,W193.11190,HNB 2024 R4 - Software Build Requirement  (No Longer Required),01-Dec-23,01-Dec-23,01-Dec-23 A,01-Dec-23 A,0,0,0,100%,,Completed
 ER7579LT,W193,W193.11180,HNB 2024 R3 - Installation  (No Longer Required),29-Dec-23,29-Dec-23,29-Dec-23 A,29-Dec-23 A,0,0,0,100%,,Completed
 ER7579LT,W193,W193.11170,HNB 2024 R3 - Delivery  (No Longer Required),29-Dec-23,29-Dec-23,29-Dec-23 A,29-Dec-23 A,0,0,0,100%,,Completed
 ER7579LT,W193,W193.11160,HNB 2024 R3 - Testing  (No Longer Required),02-Nov-23,29-Dec-23,02-Nov-23 A,29-Dec-23 A,42,0,39,100%,,Completed
 ER7579LT,W193,W193.11150,HNB 2024 R3 - Specification  (No Longer Required),02-Oct-23,01-Nov-23,02-Oct-23 A,01-Nov-23 A,23,0,23,100%,,Completed
 ER7579LT,W193,W193.11140,HNB 2024 R3 - Go / No Go Decision  (No Longer Required),,29-Dec-23,,29-Dec-23 A,0,0,0,100%,,Completed
 ER7579LT,W193,W193.11130,HNB 2024 R3 - Software Build Requirement  (No Longer Required),29-Dec-23,29-Dec-23,29-Dec-23 A,29-Dec-23 A,0,0,0,100%,,Completed
 ER7579LT,W193,W193.11120,HNB 2023 R4 - Installation (No Go - 2023 Software Build Not Required),29-Jun-23,29-Jun-23,29-Jun-23 A,29-Jun-23 A,10,0,0,100%,,Completed
 ER7579LT,W193,W193.11110,HNB 2023 R4 - Delivery (No Go - 2023 Software Build Not Required),29-Jun-23,29-Jun-23,29-Jun-23 A,29-Jun-23 A,40,0,0,100%,,Completed
 ER7579LT,W193,W193.11100,HNB 2023 R4 - Testing (No Go - 2023 Software Build Not Required),29-Jun-23,29-Jun-23,29-Jun-23 A,29-Jun-23 A,40,0,0,100%,,Completed
 ER7579LT,W193,W193.11090,HNB 2023 R4 - Specification (No Go - 2023 Software Build Not Required),29-Jun-23,29-Jun-23,29-Jun-23 A,29-Jun-23 A,30,0,0,100%,,Completed
 ER7579LT,W193,W193.11080,HNB 2023 R4 - Go / No Go Decision (No Go - 2023 Software Build Not Required),,29-Jun-23,,29-Jun-23 A,0,0,0,100%,,Completed
 ER7579LT,W193,W193.10070,HNB 2023 R4 - Software Build Requirement,04-Jan-23,29-Jun-23,04-Jan-23 A,29-Jun-23 A,123,0,122,100%,,Completed
 ER7579LT,W193,W193.1065,HNB 2023 R4 Software Build Complete (No Go - 2023 Software Build Not Required),,29-Jun-23,,29-Jun-23 A,0,0,0,100%,,Completed
 ER7579LT,W193,W193.10050,HNB 2023 R3 - Installation (No Go - 2023 Software Build Not Required),29-Jun-23,29-Jun-23,29-Jun-23 A,29-Jun-23 A,10,0,0,100%,,Completed
 ER7579LT,W193,W193.10040,HNB 2023 R3 - Delivery (No Go - 2023 Software Build Not Required),29-Jun-23,29-Jun-23,29-Jun-23 A,29-Jun-23 A,40,0,0,100%,,Completed
 ER7579LT,W193,W193.10030,HNB 2023 R3 - Testing (No Go - 2023 Software Build Not Required),29-Jun-23,29-Jun-23,29-Jun-23 A,29-Jun-23 A,40,0,0,100%,,Completed
 ER7579LT,W193,W193.10020,HNB 2023 R3 - Specification (No Go - 2023 Software Build Not Required),29-Jun-23,29-Jun-23,29-Jun-23 A,29-Jun-23 A,30,0,0,100%,,Completed
 ER7579LT,W193,W193.10010,HNB 2023 R3 - Go / No Go Decision (No Go - 2023 Software Build Not Required),,29-Jun-23,,29-Jun-23 A,0,0,0,100%,,Completed
 ER7579LT,W193,W193.10000,HNB 2023 R3 - Software Build Requirement,04-Jan-23,29-Jun-23,04-Jan-23 A,29-Jun-23 A,123,0,122,100%,,Completed
 ER7579LT,W193,W193.25070,"TGN097 R4 - Draft Report Produced, Internal Review and Issue to EDF",01-Sep-23,28-Sep-23,01-Sep-23 A,28-Sep-23 A,20,0,20,100%,,Completed
 ER7579LT,W193,W193.25080,TGN097 R4 - EDF Review,29-Sep-23,13-Oct-23,29-Sep-23 A,13-Oct-23 A,10,0,11,100%,,Completed
 ER7579LT,W193,W193.25090,TGN097 R4 - Update and Issue Report,16-Oct-23,10-Nov-23,16-Oct-23 A,10-Nov-23 A,20,0,20,100%,,Completed
 ER7579LT,W193,W193.25030,TGN097 R4 - Inspection,11-Aug-23,11-Aug-23,11-Aug-23 A,11-Aug-23 A,1,0,1,100%,,Completed
 ER7579LT,W193,W193.25020,TGN097 R4 - Plan Produced,18-Apr-23,17-May-23,18-Apr-23 A,17-May-23 A,20,0,20,100%,,Completed
 ER7579LT,W193,W193.1560,HNB LSR - Update and Issue LSR,15-Mar-23,28-Mar-23,15-Mar-23 A,28-Mar-23 A,15,0,9,100%,,Completed
 ER7579LT,W193,W193.1550,HNB LSR - EDF Review,01-Mar-23,14-Mar-23,01-Mar-23 A,14-Mar-23 A,10,0,10,100%,,Completed
 ER7579LT,W193,W193.1540,"HNB LSR - LSR Update, Internal Reveiw and Issue to EDF",01-Mar-23,07-Mar-23,01-Mar-23 A,07-Mar-23 A,5,0,5,100%,,Completed
 ER7579LT,W193,W193.1530,HNB LSR - Recommendations Workshop,08-Feb-23,28-Feb-23,08-Feb-23 A,28-Feb-23 A,15,0,15,100%,,Completed
 ER7579LT,W193,W193.1520,HNB LSR - Issue Recommedations,01-Feb-23,13-Feb-23,01-Feb-23 A,13-Feb-23 A,9,0,9,100%,,Completed
 ER7579LT,W193,W193.1510,"HNB LSR - Data Export, Analysis and Draft Report Produced",23-Jan-23,10-Feb-23,23-Jan-23 A,10-Feb-23 A,15,0,15,100%,,Completed
 ER7579LT,W193,W193.1500,HNB LSR - Pre-data Extract,16-Jan-23,20-Jan-23,16-Jan-23 A,20-Jan-23 A,5,0,5,100%,,Completed
 ER6360LT,W085,W085.DS14550,Cavity testing,19-May-23,17-Aug-23,19-May-23 A,17-Aug-23 A,12,0,64,100%,,Completed
 ER6360LT,W085,W085.DS13530,Cavity Pressure Test,13-Mar-23,30-Mar-23,13-Mar-23 A,30-Mar-23 A,15,0,14,100%,,Completed
 ER6360LT,W085,W085.DS2220,Generate Rebuild Report,03-Oct-24,03-Oct-24,16-Sep-24 A,16-Sep-24 A,5,0,1,100%,,Completed
 ER6360LT,W085,W085.DS2270,Flask Base Cavity Testing,02-Mar-23,17-Mar-23,02-Mar-23 A,17-Mar-23 A,10,0,12,100%,,Completed
 W158LT,W158,W158.34851,2025,02-Jan-25,31-Dec-25,01-Apr-25*,31-Dec-25,190,190,190,0%,0,Not Started
 W156LT,W156,W156.34991,2025,02-Jan-25,27-Nov-25,01-Apr-25,31-Dec-25,190,190,190,0%,475,Not Started
 W156LT,W156,W156.34981,2024,01-Mar-24,30-Dec-24,01-Mar-24 A,30-Dec-24 A,210,0,210,100%,,Completed
 W155LT,W155,W155.37761,2025,02-Jan-25,31-Dec-25,01-Apr-25,31-Dec-25,190,190,190,0%,254,Not Started
 W155LT,W155,W155.37751,Year 4 2024,01-Mar-24,31-Dec-24,01-Mar-24 A,31-Dec-24 A,232,0,211,100%,,Completed
 ER7580LT,W194,W194.2000,ETC (DD-PF),01-Sep-23,31-Dec-24,01-Sep-23 A,31-Dec-24 A,0,0,338,100%,,Completed
 W526LT,W526,W526.1020,ETC (DD-PF),02-Jan-25,30-Dec-32,01-Apr-25,30-Dec-32,1966,1966,1966,0%,1,Not Started
 W526LT,W526,W526.5090,HYB 2028 Thales RFS (Scope/Requirements Capture/Proposal) for 2032 Support,,30-Jun-28,,30-Jun-28*,0,0,0,0%,1143,Not Started
 W526LT,W526,W526.5070,HYB 2028 Thales RFS (Scope/Requirements Capture/Proposal) for 2030 Support,,30-Jun-28,,30-Jun-28*,0,0,0,0%,1143,Not Started
 W526LT,W526,W526.5080,HYB 2028 Thales RFS (Scope/Requirements Capture/Proposal) for 2031 Support,,30-Jun-28,,30-Jun-28*,0,0,0,0%,1143,Not Started
 W526LT,W526,W526.3120,HYB 2031 Defueling Software Build,02-Jan-31,27-Nov-31,02-Jan-31,27-Nov-31,231,231,231,0%,0,Not Started
 W526LT,W526,W526.3100,HYB 2030 Defueling Software Build,02-Jan-30,27-Nov-30,02-Jan-30,27-Nov-30,231,231,231,0%,509,Not Started
 W526LT,W526,W526.3080,HYB 2029 Defueling Software Build,02-Jan-29,27-Nov-29,02-Jan-29*,31-Dec-29,253,253,253,0%,762,Not Started
 W526LT,W526,W526.3060,HYB 2028 Defueling Software Build,03-Jan-28,29-Nov-28,03-Jan-28,29-Nov-28,233,233,233,0%,1015,Not Started
 W526LT,W526,W526.3040,HYB 2027 Defueling Software Build,04-Jan-27,30-Nov-27,03-Jan-28,28-Nov-28,232,232,232,0%,1036,Not Started
 W526LT,W526,W526.1330,HYB Argus Support Contract - Q4 2027,01-Oct-25,31-Dec-25,01-Oct-27,29-Dec-27,64,64,64,0%,1270,Not Started
 W526LT,W526,W526.1320,HYB Argus Support Contract - Q2 2027,01-Apr-25,30-Jun-25,05-Apr-27,30-Jun-27,61,61,61,0%,1270,Not Started
 W526LT,W526,W526.1615,HYB Thales Long Term Support Contract - Q4 2031,01-Oct-31,31-Dec-31,03-Jul-31,01-Oct-31,64,64,64,0%,319,Not Started
 W526LT,W526,W526.1605,HYB Thales Long Term Support Contract - Q3 2031,01-Jul-31,30-Sep-31,28-Mar-31,02-Jul-31,65,65,65,0%,319,Not Started
 W526LT,W526,W526.1595,HYB Thales Long Term Support Contract - Q2 2031,01-Apr-31,30-Jun-31,02-Jan-31,27-Mar-31,61,61,61,0%,319,Not Started
 W526LT,W526,W526.1585,HYB Thales Long Term Support Contract - Q1 2031,02-Jan-31,31-Mar-31,02-Jan-31*,31-Mar-31,63,63,63,0%,0,Not Started
 W526LT,W526,W526.3130,HYB DPCS Long Term Support Contract 2031,02-Jan-31,31-Dec-31,02-Jan-31*,31-Dec-31,253,253,253,0%,0,Not Started
 W526LT,W526,W526.3110,HYB DPCS Long Term Support Contract 2030,02-Jan-30,31-Dec-30,02-Jan-30*,31-Dec-30,253,253,253,0%,509,Not Started
 W526LT,W526,W526.1160,HYB PES Group Support - 2031,02-Jan-31,31-Dec-31,02-Jan-31,31-Dec-31,253,253,253,0%,0,Not Started
 W526LT,W526,W526.1170,HYB Plant Control Systems & Simulators (PCS&S) Group - 2031,02-Jan-31,31-Dec-31,02-Jan-31,31-Dec-31,253,253,253,0%,0,Not Started
 W526LT,W526,W526.1140,HYB PES Group Support - 2030,02-Jan-30,31-Dec-30,02-Jan-30,31-Dec-30,253,253,253,0%,509,Not Started
 W526LT,W526,W526.1150,HYB Plant Control Systems & Simulators (PCS&S) Group - 2030,02-Jan-30,10-Dec-30,02-Jan-30,10-Dec-30,240,240,240,0%,509,Not Started
 W526LT,W526,W526.1455,HYB Thales Long Term Support Contract - Q4,02-Oct-28,29-Dec-28,02-Oct-28,29-Dec-28,63,63,63,0%,1015,Not Started
 W526LT,W526,W526.1445,HYB Thales Long Term Support Contract - Q3 2028,03-Jul-28,29-Sep-28,03-Jul-28,29-Sep-28,64,64,64,0%,1015,Not Started
 W526LT,W526,W526.1435,HYB Thales Long Term Support Contract - Q2 2028,03-Apr-28,30-Jun-28,03-Apr-28,30-Jun-28,61,61,61,0%,1015,Not Started
 W526LT,W526,W526.1425,HYB Thales Long Term Support Contract - Q1 2028,03-Jan-28,31-Mar-28,03-Jan-28,31-Mar-28,65,65,65,0%,1015,Not Started
 W526LT,W526,W526.1375,HYB Thales Long Term Support Contract - Q4 2027,01-Oct-25,31-Dec-25,01-Oct-27,29-Dec-27,64,64,64,0%,1270,Not Started
 W526LT,W526,W526.1365,HYB Thales Long Term Support Contract - Q3 2027,01-Jul-25,30-Sep-25,01-Jul-27,30-Sep-27,65,65,65,0%,1270,Not Started
 W526LT,W526,W526.1355,HYB Thales Long Term Support Contract - Q2 2027,01-Apr-25,30-Jun-25,05-Apr-27,30-Jun-27,61,61,61,0%,1270,Not Started
 W526LT,W526,W526.1345,HYB Thales Long Term Support Contract - Q1 2027,02-Jan-25,31-Mar-25,04-Jan-27*,02-Apr-27,63,63,63,0%,1268,Not Started
 W526LT,W526,W526.3090,HYB DPCS Long Term Support Contract 2029,02-Jan-29,31-Dec-29,02-Jan-29*,31-Dec-29,253,253,253,0%,762,Not Started
 W526LT,W526,W526.3070,HYB DPCS Long Term Support Contract 2028,03-Jan-28,29-Dec-28,03-Jan-28*,29-Dec-28,253,253,253,0%,1015,Not Started
 W526LT,W526,W526.1120,HYB PES Group Support - 2029,02-Jan-29,31-Dec-29,02-Jan-29,31-Dec-29,253,253,253,0%,762,Not Started
 W526LT,W526,W526.1130,HYB Plant Control Systems & Simulators (PCS&S) Group - 2029,02-Jan-29,10-Dec-29,02-Jan-29,31-Dec-29,253,253,253,0%,762,Not Started
 W526LT,W526,W526.1100,HYB PES Group Support - 2028,03-Jan-28,29-Dec-28,03-Jan-28,29-Dec-28,253,253,253,0%,1015,Not Started
 W526LT,W526,W526.1110,HYB Plant Control Systems & Simulators (PCS&S) Group - 2028,03-Jan-28,08-Dec-28,03-Jan-28,08-Dec-28,240,240,240,0%,1015,Not Started
 W526LT,W526,W526.1080,HYB PES Group Support - 2027,04-Jan-27,31-Dec-27,04-Jan-27,31-Dec-27,255,255,255,0%,1268,Not Started
 W526LT,W526,W526.1090,HYB Plant Control Systems & Simulators (PCS&S) Group - 2027,04-Jan-27,31-Dec-27,04-Jan-27*,31-Dec-27,255,255,255,0%,1268,Not Started
 W526LT,W526,W526.3050,HYB DPCS Long Term Support Contract 2027,04-Jan-27,31-Dec-27,04-Jan-27*,31-Dec-27,255,255,255,0%,1036,Not Started
 W526LT,W526,W526.1000,HYB - DPCS Defueling Support - Project Start (T -3 EOG),,03-Jan-23,,03-Jan-23 A,0,0,0,100%,,Completed
 W526LT,W526,W526.1010,HYB - DPCS Defueling Support - Project End,,31-Dec-32,,30-Dec-32,0,0,0,0%,1,Not Started
 W526LT,W526,W526.3140,HYB 2032 Defueling Software Build,02-Jan-32,26-Nov-32,02-Jan-32,26-Nov-32,231,231,231,0%,0,Not Started
 W526LT,W526,W526.1655,HYB Thales Long Term Support Contract - Q4 2032 Delivery,01-Oct-32,31-Dec-32,06-Jul-32,06-Oct-32,66,66,66,0%,62,Not Started
 W526LT,W526,W526.1645,HYB Thales Long Term Support Contract - Q3 2032 Delivery,01-Jul-32,30-Sep-32,02-Apr-32,05-Jul-32,65,65,65,0%,62,Not Started
 W526LT,W526,W526.1635,HYB Thales Long Term Support Contract - Q2 2032 Delivery,01-Apr-32,30-Jun-32,02-Jan-32,01-Apr-32,63,63,63,0%,62,Not Started
 W526LT,W526,W526.1625,HYB Thales Long Term Support Contract - Q1 2032 Delivery,02-Jan-32,31-Mar-32,02-Jan-32*,31-Mar-32,62,62,62,0%,62,Not Started
 W526LT,W526,W526.3150,HYB DPCS Long Term Support Contract 2032,02-Jan-32,31-Dec-32,02-Jan-32*,31-Dec-32,256,256,256,0%,0,Not Started
 W526LT,W526,W526.1180,HYB PES Group Support - 2032,02-Jan-32,31-Dec-32,02-Jan-32,31-Dec-32,256,256,256,0%,0,Not Started
 W526LT,W526,W526.1190,HYB Plant Control Systems & Simulators (PCS&S) Group - 2032,02-Jan-32,31-Dec-32,02-Jan-32*,31-Dec-32,256,256,256,0%,0,Not Started
 W526LT,W526,W526.1040,HYB PES Group Support - 2025,02-Jan-25,30-Dec-25,02-Jan-25 A,30-Dec-25,252,189,252,24%,1778,In Progress
 W526LT,W526,W526.1050,HYB Plant Control Systems & Simulators (PCS&S) Group - 2025,02-Jan-25,31-Dec-25,02-Jan-25 A,31-Dec-25,253,190,253,24%,1777,In Progress
 W526LT,W526,W526.1060,HYB PES Group Support - 2026,02-Jan-26,31-Dec-26,02-Jan-26,31-Dec-26,254,254,254,0%,1523,Not Started
 W526LT,W526,W526.1070,HYB Plant Control Systems & Simulators (PCS&S) Group - 2026,02-Jan-26,31-Dec-26,02-Jan-26*,31-Dec-26,254,254,254,0%,1523,Not Started
 W526LT,W526,W526.1270,HYB Argus Support Contract - Q3 2026,01-Apr-25,01-Apr-25,01-Apr-26,01-Apr-26,1,1,1,0%,1652,Not Started
 W526LT,W526,W526.1225,HYB Thales Long Term Support Contract Q1 2025,02-Jan-25,31-Mar-25,02-Jan-25 A,31-Mar-25 A,63,0,63,100%,,Completed
 W526LT,W526,W526.1235,HYB Thales Long Term Support Contract Q2 2025,02-Jan-25,27-Mar-25,01-Apr-25,30-Jun-25,61,61,61,0%,1778,Not Started
 W526LT,W526,W526.1245,HYB Thales Long Term Support Contract Q3 2025,02-Jan-25,02-Apr-25,01-Jul-25,30-Sep-25,65,65,65,0%,1778,Not Started
 W526LT,W526,W526.1255,HYB Thales Long Term Support Contract Q4 2025,02-Jan-25,31-Mar-25,01-Oct-25,30-Dec-25,63,63,63,0%,1778,Not Started
 W526LT,W526,W526.1265,HYB Argus Support Contract - Q1  2026,02-Jan-25,31-Mar-25,02-Jan-26,31-Mar-26,63,63,63,0%,1523,Not Started
 W526LT,W526,W526.1275,HYB Argus Support Contract - Q2 2026,02-Apr-25,01-Jul-25,02-Apr-26,01-Jul-26,61,61,61,0%,1652,Not Started
 W526LT,W526,W526.1285,HYB Thales Long Term Support Contract - Q1 2026,02-Jan-25,31-Mar-25,02-Jan-26,31-Mar-26,63,63,63,0%,1523,Not Started
 W526LT,W526,W526.1295,HYB Thales Long Term Support Contract - Q2 2026,02-Jan-25,27-Mar-25,01-Apr-26,30-Jun-26,61,61,61,0%,1523,Not Started
 W526LT,W526,W526.1305,HYB Thales Long Term Support Contract - Q3 2026,02-Jan-25,02-Apr-25,01-Jul-26,30-Sep-26,65,65,65,0%,1523,Not Started
 W526LT,W526,W526.1315,HYB Thales Long Term Support Contract - Q4 2026,02-Jan-25,02-Apr-25,01-Oct-26,31-Dec-26,65,65,65,0%,1523,Not Started
 W526LT,W526,W526.1325,HYB Argus Support Contract - Q1 2027,02-Jan-25,31-Mar-25,04-Jan-27*,02-Apr-27,63,63,63,0%,1268,Not Started
 W526LT,W526,W526.1335,HYB Argus Support Contract - Q3 2027,01-Jul-25,30-Sep-25,01-Jul-27,30-Sep-27,65,65,65,0%,1270,Not Started
 W526LT,W526,W526.1410,HYB Argus Support Contract - Q4 2028,02-Oct-28,29-Dec-28,02-Oct-28,29-Dec-28,63,63,63,0%,1015,Not Started
 W526LT,W526,W526.1400,HYB Argus Support Contract - Q3 2028,03-Jul-28,29-Sep-28,03-Jul-28,29-Sep-28,64,64,64,0%,1015,Not Started
 W526LT,W526,W526.1390,HYB Argus Support Contract - Q2 2028,03-Apr-28,30-Jun-28,03-Apr-28,30-Jun-28,61,61,61,0%,1015,Not Started
 W526LT,W526,W526.1380,HYB Argus Support Contract - Q1 2028,03-Jan-28,31-Mar-28,03-Jan-28,31-Mar-28,65,65,65,0%,1015,Not Started
 W526LT,W526,W526.1495,HYB Argus Support Contract - Q4 2029,01-Oct-29,31-Dec-29,01-Oct-29,31-Dec-29,64,64,64,0%,762,Not Started
 W526LT,W526,W526.1485,HYB Argus Support Contract - Q3 2029,02-Jul-29,28-Sep-29,02-Jul-29,28-Sep-29,64,64,64,0%,762,Not Started
 W526LT,W526,W526.1475,HYB Argus Support Contract - Q2 2029,03-Apr-29,29-Jun-29,03-Apr-29,29-Jun-29,62,62,62,0%,762,Not Started
 W526LT,W526,W526.1465,HYB Argus Support Contract - Q1 2029,02-Jan-29,29-Mar-29,02-Jan-29*,29-Mar-29,63,63,63,0%,762,Not Started
 W526LT,W526,W526.1535,HYB Thales Long Term Support Contract - Q4 2029,01-Oct-29,31-Dec-29,01-Oct-29,31-Dec-29,64,64,64,0%,762,Not Started
 W526LT,W526,W526.1525,HYB Thales Long Term Support Contract - Q3 2029,02-Jul-29,28-Sep-29,02-Jul-29,28-Sep-29,64,64,64,0%,762,Not Started
 W526LT,W526,W526.1515,HYB Thales Long Term Support Contract - Q2 2029,03-Apr-29,29-Jun-29,03-Apr-29,29-Jun-29,62,62,62,0%,762,Not Started
 W526LT,W526,W526.1505,HYB Thales Long Term Support Contract - Q1 2029,02-Jan-29,29-Mar-29,02-Jan-29*,29-Mar-29,63,63,63,0%,762,Not Started
 W526LT,W526,W526.1575,HYB Thales Long Term Support Contract - Q4 2030,01-Oct-30,31-Dec-30,01-Oct-30,31-Dec-30,64,64,64,0%,509,Not Started
 W526LT,W526,W526.1565,HYB Thales Long Term Support Contract - Q3 2030,01-Jul-30,30-Sep-30,01-Jul-30,30-Sep-30,65,65,65,0%,509,Not Started
 W526LT,W526,W526.1555,HYB Thales Long Term Support Contract - Q2 2030,01-Apr-30,28-Jun-30,01-Apr-30,28-Jun-30,61,61,61,0%,509,Not Started
 W526LT,W526,W526.1545,HYB Thales Long Term Support Contract - Q1 2030,02-Jan-30,29-Mar-30,02-Jan-30*,29-Mar-30,63,63,63,0%,509,Not Started
 W526LT,W526,W526.2130,HYB 2025 LSR - Final Report Produced and Issued,28-May-25,09-Jun-25,28-May-25,09-Jun-25,9,9,9,0%,1921,Not Started
 W526LT,W526,W526.2120,HYB 2025 LSR - EDF Review Comments Produced and Provided,12-May-25,27-May-25,12-May-25,27-May-25,11,11,11,0%,1921,Not Started
 W526LT,W526,W526.2110,HYB 2025 LSR - Draft Report Produced and Issued for EDF Review,24-Apr-25,09-May-25,24-Apr-25,09-May-25,11,11,11,0%,1921,Not Started
 W526LT,W526,W526.2100,HYB 2025 LSR - Recommendation Sentencing Workshop Preparation and Event,08-Apr-25,23-Apr-25,08-Apr-25,23-Apr-25,10,10,10,0%,1921,Not Started
 W526LT,W526,W526.2090,HYB 2025 LSR - Recommendations Produced and Issued,25-Mar-25,07-Apr-25,25-Mar-25 A,07-Apr-25,10,5,10,50%,1921,In Progress
 W526LT,W526,W526.2080,HYB 2025 LSR - Data Export Produced and Issued,25-Feb-25,24-Mar-25,25-Feb-25 A,24-Mar-25 A,20,0,20,100%,,Completed
 W526LT,W526,W526.2070,HYB 2025 LSR - Pre-export Data Validation Produced and Completed,02-Jan-25,24-Feb-25,02-Jan-25 A,24-Feb-25 A,38,0,38,100%,,Completed
 W526LT,W526,W526.4000,HYB 2025 Project Start,02-Jan-25,,02-Jan-25 A,,0,0,0,100%,,Completed
 W526LT,W526,W526.3020,HYB 2026 Defueling Software Build,02-Jan-26,30-Nov-26,02-Jan-26,30-Nov-26,232,232,232,0%,1545,Not Started
 W526LT,W526,W526.3030,HYB DPCS Long Term Support Contract 2026,02-Jan-26,31-Dec-26,02-Jan-26*,31-Dec-26,254,254,254,0%,1523,Not Started
 W526LT,W526,W526.4490,HYB 2026 LSR - Final Report Produced and Issued,28-May-26,09-Jun-26,28-May-26,09-Jun-26,9,9,9,0%,1668,Not Started
 W526LT,W526,W526.4500,HYB 2026 LSR - EDF Review Comments Produced and Provided,12-May-26,27-May-26,12-May-26,27-May-26,11,11,11,0%,1668,Not Started
 W526LT,W526,W526.4510,HYB 2026 LSR - Draft Report Produced and Issued for EDF Review,24-Apr-26,11-May-26,24-Apr-26,11-May-26,11,11,11,0%,1668,Not Started
 W526LT,W526,W526.4520,HYB 2026 LSR - Recommendation Sentencing Workshop Preparation and Event,10-Apr-26,23-Apr-26,10-Apr-26,23-Apr-26,10,10,10,0%,1668,Not Started
 W526LT,W526,W526.4530,HYB 2026 LSR - Recommendations Produced and Issued,25-Mar-26,09-Apr-26,25-Mar-26,09-Apr-26,10,10,10,0%,1668,Not Started
 W526LT,W526,W526.4540,HYB 2026 LSR - Data Export Produced and Issued,25-Feb-26,24-Mar-26,25-Feb-26,24-Mar-26,20,20,20,0%,1668,Not Started
 W526LT,W526,W526.4550,HYB 2026 LSR - Pre-export Data Validation Produced and Completed,02-Jan-26,24-Feb-26,02-Jan-26,24-Feb-26,38,38,38,0%,1668,Not Started
 W526LT,W526,W526.4560,HYB 2027 LSR - Final Report Produced and Issued,27-May-27,09-Jun-27,27-May-27,09-Jun-27,9,9,9,0%,1414,Not Started
 W526LT,W526,W526.4570,HYB 2027 LSR - EDF Review Comments Produced and Provided,12-May-27,26-May-27,12-May-27,26-May-27,11,11,11,0%,1414,Not Started
 W526LT,W526,W526.4580,HYB 2027 LSR - Draft Report Produced and Issued for EDF Review,26-Apr-27,11-May-27,26-Apr-27,11-May-27,11,11,11,0%,1414,Not Started
 W526LT,W526,W526.4590,HYB 2027 LSR - Recommendation Sentencing Workshop Preparation and Event,12-Apr-27,23-Apr-27,12-Apr-27,23-Apr-27,10,10,10,0%,1414,Not Started
 W526LT,W526,W526.4600,HYB 2027 LSR - Recommendations Produced and Issued,25-Mar-27,09-Apr-27,25-Mar-27,09-Apr-27,10,10,10,0%,1414,Not Started
 W526LT,W526,W526.4610,HYB 2027 LSR - Data Export Produced and Issued,25-Feb-27,24-Mar-27,25-Feb-27,24-Mar-27,20,20,20,0%,1414,Not Started
 W526LT,W526,W526.4620,HYB 2027 LSR - Pre-export Data Validation Produced and Completed,04-Jan-27,24-Feb-27,04-Jan-27*,24-Feb-27,38,38,38,0%,1414,Not Started
 W526LT,W526,W526.4630,HYB 2028 LSR - Final Report Produced and Issued,25-May-28,07-Jun-28,25-May-28,07-Jun-28,9,9,9,0%,1159,Not Started
 W526LT,W526,W526.4640,HYB 2028 LSR - EDF Review Comments Produced and Provided,10-May-28,24-May-28,10-May-28,24-May-28,11,11,11,0%,1159,Not Started
 W526LT,W526,W526.4650,HYB 2028 LSR - Draft Report Produced and Issued for EDF Review,24-Apr-28,09-May-28,24-Apr-28,09-May-28,11,11,11,0%,1159,Not Started
 W526LT,W526,W526.4660,HYB 2028 LSR - Recommendation Sentencing Workshop Preparation and Event,06-Apr-28,21-Apr-28,06-Apr-28,21-Apr-28,10,10,10,0%,1159,Not Started
 W526LT,W526,W526.4670,HYB 2028 LSR - Recommendations Produced and Issued,23-Mar-28,05-Apr-28,23-Mar-28,05-Apr-28,10,10,10,0%,1159,Not Started
 W526LT,W526,W526.4680,HYB 2028 LSR - Data Export Produced and Issued,24-Feb-28,22-Mar-28,24-Feb-28,22-Mar-28,20,20,20,0%,1159,Not Started
 W526LT,W526,W526.4690,HYB 2028 LSR - Pre-export Data Validation Produced and Completed,03-Jan-28,23-Feb-28,03-Jan-28*,23-Feb-28,38,38,38,0%,1159,Not Started
 W526LT,W526,W526.4700,HYB 2029 LSR - Final Report Produced and Issued,25-May-29,07-Jun-29,25-May-29,07-Jun-29,9,9,9,0%,906,Not Started
 W526LT,W526,W526.4710,HYB 2029 LSR - EDF Review Comments Produced and Provided,10-May-29,24-May-29,10-May-29,24-May-29,11,11,11,0%,906,Not Started
 W526LT,W526,W526.4720,HYB 2029 LSR - Draft Report Produced and Issued for EDF Review,24-Apr-29,09-May-29,24-Apr-29,09-May-29,11,11,11,0%,906,Not Started
 W526LT,W526,W526.4730,HYB 2029 LSR - Recommendation Sentencing Workshop Preparation and Event,10-Apr-29,23-Apr-29,10-Apr-29,23-Apr-29,10,10,10,0%,906,Not Started
 W526LT,W526,W526.4740,HYB 2029 LSR - Recommendations Produced and Issued,23-Mar-29,09-Apr-29,23-Mar-29,09-Apr-29,10,10,10,0%,906,Not Started
 W526LT,W526,W526.4750,HYB 2029 LSR - Data Export Produced and Issued,23-Feb-29,22-Mar-29,23-Feb-29,22-Mar-29,20,20,20,0%,906,Not Started
 W526LT,W526,W526.4760,HYB 2029 LSR - Pre-export Data Validation Produced and Completed,02-Jan-29,22-Feb-29,02-Jan-29*,22-Feb-29,38,38,38,0%,906,Not Started
 W526LT,W526,W526.4770,HYB 2030 LSR - Final Report Produced and Issued,28-May-30,07-Jun-30,28-May-30,07-Jun-30,9,9,9,0%,653,Not Started
 W526LT,W526,W526.4780,HYB 2030 LSR - EDF Review Comments Produced and Provided,10-May-30,24-May-30,10-May-30,24-May-30,11,11,11,0%,653,Not Started
 W526LT,W526,W526.4790,HYB 2030 LSR - Draft Report Produced and Issued for EDF Review,24-Apr-30,09-May-30,24-Apr-30,09-May-30,11,11,11,0%,653,Not Started
 W526LT,W526,W526.4800,HYB 2030 LSR - Recommendation Sentencing Workshop Preparation and Event,08-Apr-30,23-Apr-30,08-Apr-30,23-Apr-30,10,10,10,0%,653,Not Started
 W526LT,W526,W526.4810,HYB 2030 LSR - Recommendations Produced and Issued,25-Mar-30,05-Apr-30,25-Mar-30,05-Apr-30,10,10,10,0%,653,Not Started
 W526LT,W526,W526.4820,HYB 2030 LSR - Data Export Produced and Issued,25-Feb-30,22-Mar-30,25-Feb-30,22-Mar-30,20,20,20,0%,653,Not Started
 W526LT,W526,W526.4830,HYB 2030 LSR - Pre-export Data Validation Produced and Completed,02-Jan-30,22-Feb-30,02-Jan-30*,22-Feb-30,38,38,38,0%,653,Not Started
 W526LT,W526,W526.4840,HYB 2031 LSR - Final Report Produced and Issued,28-May-31,09-Jun-31,28-May-31,09-Jun-31,9,9,9,0%,400,Not Started
 W526LT,W526,W526.4850,HYB 2031 LSR - EDF Review Comments Produced and Provided,12-May-31,27-May-31,12-May-31,27-May-31,11,11,11,0%,400,Not Started
 W526LT,W526,W526.4860,HYB 2031 LSR - Draft Report Produced and Issued for EDF Review,24-Apr-31,09-May-31,24-Apr-31,09-May-31,11,11,11,0%,400,Not Started
 W526LT,W526,W526.4870,HYB 2031 LSR - Recommendation Sentencing Workshop Preparation and Event,08-Apr-31,23-Apr-31,08-Apr-31,23-Apr-31,10,10,10,0%,400,Not Started
 W526LT,W526,W526.4880,HYB 2031 LSR - Recommendations Produced and Issued,25-Mar-31,07-Apr-31,25-Mar-31,07-Apr-31,10,10,10,0%,400,Not Started
 W526LT,W526,W526.4890,HYB 2031 LSR - Data Export Produced and Issued,25-Feb-31,24-Mar-31,25-Feb-31,24-Mar-31,20,20,20,0%,400,Not Started
 W526LT,W526,W526.4900,HYB 2031 LSR - Pre-export Data Validation Produced and Completed,02-Jan-31,24-Feb-31,02-Jan-31*,24-Feb-31,38,38,38,0%,400,Not Started
 W526LT,W526,W526.4910,HYB 2032 LSR - Final Report Produced and Issued,26-May-32,08-Jun-32,26-May-32,08-Jun-32,9,9,9,0%,147,Not Started
 W526LT,W526,W526.4920,HYB 2032 LSR - EDF Review Comments Produced and Provided,11-May-32,25-May-32,11-May-32,25-May-32,11,11,11,0%,147,Not Started
 W526LT,W526,W526.4930,HYB 2032 LSR - Draft Report Produced and Issued for EDF Review,23-Apr-32,10-May-32,23-Apr-32,10-May-32,11,11,11,0%,147,Not Started
 W526LT,W526,W526.4940,HYB 2032 LSR - Recommendation Sentencing Workshop Preparation and Event,09-Apr-32,22-Apr-32,09-Apr-32,22-Apr-32,10,10,10,0%,147,Not Started
 W526LT,W526,W526.4950,HYB 2032 LSR - Recommendations Produced and Issued,24-Mar-32,08-Apr-32,24-Mar-32,08-Apr-32,10,10,10,0%,147,Not Started
 W526LT,W526,W526.4960,HYB 2032 LSR - Data Export Produced and Issued,25-Feb-32,23-Mar-32,25-Feb-32,23-Mar-32,20,20,20,0%,147,Not Started
 W526LT,W526,W526.4970,HYB 2032 LSR - Pre-export Data Validation Produced and Completed,02-Jan-32,24-Feb-32,02-Jan-32*,24-Feb-32,38,38,38,0%,147,Not Started
 W526LT,W526,W526.5110,HYB 2028 TGN097 Inspection,,01-Sep-28,,01-Sep-28*,0,0,0,0%,1099,Not Started
 W526LT,W526,W526.5120,HYB 2031 TGN097 Inspection,,01-Sep-31,,01-Sep-31*,0,0,0,0%,342,Not Started
 W730LT_UN,W730,W730.1170,>>>OUTGOING ENABLER (W157 - HYB Security Plan) - EC / Station Approved,,23-Feb-28,,23-Feb-28,0,0,0,0%,23,Not Started
 W529LT,W529,W529.5120,TOR 2031 TGN097 Inspection,,01-Sep-31,,01-Sep-31*,0,0,0,0%,342,Not Started
 W529LT,W529,W529.5110,TOR 2028 TGN097 Inspection,,01-Sep-28,,01-Sep-28*,0,0,0,0%,1099,Not Started
 ER6360LT,W085,W085.A6340,Tender Return Period Transport (AB),09-Jun-23,03-Jun-24,09-Jun-23 A,01-Apr-25,20,0,460,100%,131,In Progress
 ER6360LT,W085,W085.A6320,Issue CETS for Transport (AB),17-Aug-22,28-Feb-23,17-Aug-22 A,28-Feb-23 A,10,0,136,100%,,Completed
 W529LT,W529,W529.4970,TOR 2032 LSR - Pre-export Data Validation Produced and Completed,02-Jan-32,24-Feb-32,02-Jan-32*,24-Feb-32,38,38,38,0%,147,Not Started
 W529LT,W529,W529.4960,TOR 2032 LSR - Asset Guardian Data Export Produced and Issued,25-Feb-32,23-Mar-32,25-Feb-32,23-Mar-32,20,20,20,0%,147,Not Started
 W529LT,W529,W529.4950,TOR 2032 LSR - Recommendations Produced and Issued,24-Mar-32,08-Apr-32,24-Mar-32,08-Apr-32,10,10,10,0%,147,Not Started
 W529LT,W529,W529.4940,TOR 2032 LSR - Recommendation Sentencing Workshop Preparation and Event,09-Apr-32,22-Apr-32,09-Apr-32,22-Apr-32,10,10,10,0%,147,Not Started
 W529LT,W529,W529.4930,TOR 2032 LSR - Draft Report Produced and Issued for EDF Review,23-Apr-32,10-May-32,23-Apr-32,10-May-32,11,11,11,0%,147,Not Started
 W529LT,W529,W529.4920,TOR 2032 LSR - EDF Review Comments Produced and Provided,11-May-32,25-May-32,11-May-32,25-May-32,11,11,11,0%,147,Not Started
 W529LT,W529,W529.4910,TOR 2032 LSR - Final Report Produced and Issued,26-May-32,08-Jun-32,26-May-32,08-Jun-32,9,9,9,0%,147,Not Started
 W529LT,W529,W529.4900,TOR 2031 LSR - Pre-export Data Validation Produced and Completed,02-Jan-31,24-Feb-31,02-Jan-31*,24-Feb-31,38,38,38,0%,400,Not Started
 W529LT,W529,W529.4890,TOR 2031 LSR - Data Export Produced and Issued,25-Feb-31,24-Mar-31,25-Feb-31,24-Mar-31,20,20,20,0%,400,Not Started
 W529LT,W529,W529.4880,TOR 2031 LSR - Recommendations Produced and Issued,25-Mar-31,07-Apr-31,25-Mar-31,07-Apr-31,10,10,10,0%,400,Not Started
 W529LT,W529,W529.4870,TOR 2031 LSR - Recommendation Sentencing Workshop Preparation and Event,08-Apr-31,23-Apr-31,08-Apr-31,23-Apr-31,10,10,10,0%,400,Not Started
 W529LT,W529,W529.4860,TOR 2031 LSR - Draft Report Produced and Issued for EDF Review,24-Apr-31,09-May-31,24-Apr-31,09-May-31,11,11,11,0%,400,Not Started
 W529LT,W529,W529.4850,TOR 2031 LSR - EDF Review Comments Produced and Provided,12-May-31,27-May-31,12-May-31,27-May-31,11,11,11,0%,400,Not Started
 W529LT,W529,W529.4840,TOR 2031 LSR - Final Report Produced and Issued,28-May-31,09-Jun-31,28-May-31,09-Jun-31,9,9,9,0%,400,Not Started
 W529LT,W529,W529.4830,TOR 2030 LSR - Pre-export Data Validation Produced and Completed,02-Jan-30,22-Feb-30,02-Jan-30*,22-Feb-30,38,38,38,0%,653,Not Started
 W529LT,W529,W529.4820,TOR 2030 LSR - Data Export Produced and Issued,25-Feb-30,22-Mar-30,25-Feb-30,22-Mar-30,20,20,20,0%,653,Not Started
 W529LT,W529,W529.4810,TOR 2030 LSR - Recommendations Produced and Issued,25-Mar-30,05-Apr-30,25-Mar-30,05-Apr-30,10,10,10,0%,653,Not Started
 W529LT,W529,W529.4800,TOR 2030 LSR - Recommendation Sentencing Workshop Preparation and Event,08-Apr-30,23-Apr-30,08-Apr-30,23-Apr-30,10,10,10,0%,653,Not Started
 W529LT,W529,W529.4790,TOR 2030 LSR - Draft Report Produced and Issued for EDF Review,24-Apr-30,09-May-30,24-Apr-30,09-May-30,11,11,11,0%,653,Not Started
 W529LT,W529,W529.4780,TOR 2030 LSR - EDF Review Comments Produced and Provided,10-May-30,24-May-30,10-May-30,24-May-30,11,11,11,0%,653,Not Started
 W529LT,W529,W529.4770,TOR 2030 LSR - Final Report Produced and Issued,28-May-30,07-Jun-30,28-May-30,07-Jun-30,9,9,9,0%,653,Not Started
 W529LT,W529,W529.4760,TOR 2029 LSR - Pre-export Data Validation Produced and Completed,02-Jan-29,22-Feb-29,02-Jan-29*,22-Feb-29,38,38,38,0%,906,Not Started
 W529LT,W529,W529.4750,TOR 2029 LSR - Data Export Produced and Issued,23-Feb-29,22-Mar-29,23-Feb-29,22-Mar-29,20,20,20,0%,906,Not Started
 W529LT,W529,W529.4740,TOR 2029 LSR - Recommendations Produced and Issued,23-Mar-29,09-Apr-29,23-Mar-29,09-Apr-29,10,10,10,0%,906,Not Started
 W529LT,W529,W529.4730,TOR 2029 LSR - Recommendation Sentencing Workshop Preparation and Event,10-Apr-29,23-Apr-29,10-Apr-29,23-Apr-29,10,10,10,0%,906,Not Started
 W529LT,W529,W529.4720,TOR 2029 LSR - Draft Report Produced and Issued for EDF Review,24-Apr-29,09-May-29,24-Apr-29,09-May-29,11,11,11,0%,906,Not Started
 W529LT,W529,W529.4710,TOR 2029 LSR - EDF Review Comments Produced and Provided,10-May-29,24-May-29,10-May-29,24-May-29,11,11,11,0%,906,Not Started
 W529LT,W529,W529.4700,TOR 2029 LSR - Final Report Produced and Issued,25-May-29,07-Jun-29,25-May-29,07-Jun-29,9,9,9,0%,906,Not Started
 W529LT,W529,W529.4690,TOR 2028 LSR - Pre-export Data Validation Produced and Completed,03-Jan-28,23-Feb-28,03-Jan-28*,23-Feb-28,38,38,38,0%,1015,Not Started
 W529LT,W529,W529.4680,TOR 2028 LSR - Data Export Produced and Issued,24-Feb-28,22-Mar-28,24-Feb-28,22-Mar-28,20,20,20,0%,1159,Not Started
 W529LT,W529,W529.4670,TOR 2028 LSR - Recommendations Produced and Issued,23-Mar-28,05-Apr-28,23-Mar-28,05-Apr-28,10,10,10,0%,1159,Not Started
 W529LT,W529,W529.4660,TOR 2028 LSR - Recommendation Sentencing Workshop Preparation and Event,06-Apr-28,21-Apr-28,06-Apr-28,21-Apr-28,10,10,10,0%,1159,Not Started
 W529LT,W529,W529.4650,TOR 2028 LSR - Draft Report Produced and Issued for EDF Review,24-Apr-28,09-May-28,24-Apr-28,09-May-28,11,11,11,0%,1159,Not Started
 W529LT,W529,W529.4640,TOR 2028 LSR - EDF Review Comments Produced and Provided,10-May-28,24-May-28,10-May-28,24-May-28,11,11,11,0%,1159,Not Started
 W529LT,W529,W529.4630,TOR 2028 LSR - Final Report Produced and Issued,25-May-28,07-Jun-28,25-May-28,07-Jun-28,9,9,9,0%,1159,Not Started
 W529LT,W529,W529.4620,TOR 2027 LSR - Pre-export Data Validation Produced and Completed,02-Mar-27,26-Apr-27,01-Mar-27*,23-Apr-27,38,38,38,0%,1374,Not Started
 W529LT,W529,W529.4610,TOR 2027 LSR - Data Export Produced and Issued,27-Apr-27,25-May-27,26-Apr-27,24-May-27,20,20,20,0%,1374,Not Started
 W529LT,W529,W529.4600,TOR 2027 LSR - Recommendations Produced and Issued,26-May-27,09-Jun-27,25-May-27,08-Jun-27,10,10,10,0%,1374,Not Started
 W529LT,W529,W529.4590,TOR 2027 LSR - Recommendation Sentencing Workshop Preparation and Event,10-Jun-27,23-Jun-27,09-Jun-27,22-Jun-27,10,10,10,0%,1374,Not Started
 W529LT,W529,W529.4580,TOR 2027 LSR - Draft Report Produced and Issued for EDF Review,24-Jun-27,08-Jul-27,23-Jun-27,07-Jul-27,11,11,11,0%,1374,Not Started
 W529LT,W529,W529.4570,TOR 2027 LSR - EDF Review Comments Produced and Provided,09-Jul-27,23-Jul-27,08-Jul-27,22-Jul-27,11,11,11,0%,1374,Not Started
 W529LT,W529,W529.4560,TOR 2027 LSR - Final Report Produced and Issued,26-Jul-27,05-Aug-27,23-Jul-27,04-Aug-27,9,9,9,0%,1374,Not Started
 W529LT,W529,W529.4550,TOR 2026 LSR - Pre-export Data Validation Produced and Completed,02-Mar-26,24-Apr-26,02-Jan-26,24-Feb-26,38,38,38,0%,1668,Not Started
 W529LT,W529,W529.4540,TOR 2026 LSR - Data Export Produced and Issued,27-Apr-26,26-May-26,25-Feb-26,24-Mar-26,20,20,20,0%,1668,Not Started
 W529LT,W529,W529.4530,TOR 2026 LSR - Recommendations Produced and Issued,27-May-26,09-Jun-26,25-Mar-26,09-Apr-26,10,10,10,0%,1668,Not Started
 W529LT,W529,W529.4520,TOR 2026 LSR - Recommendation Sentencing Workshop Preparation and Event,10-Jun-26,23-Jun-26,10-Apr-26,23-Apr-26,10,10,10,0%,1668,Not Started
 W529LT,W529,W529.4510,TOR 2026 LSR - Draft Report Produced and Issued for EDF Review,24-Jun-26,08-Jul-26,24-Apr-26,11-May-26,11,11,11,0%,1668,Not Started
 W529LT,W529,W529.4500,TOR 2026 LSR - EDF Review Comments Produced and Provided,09-Jul-26,23-Jul-26,12-May-26,27-May-26,11,11,11,0%,1668,Not Started
 W529LT,W529,W529.4490,TOR 2026 LSR - Final Report Produced and Issued,24-Jul-26,05-Aug-26,28-May-26,09-Jun-26,9,9,9,0%,1668,Not Started
 W529LT,W529,W529.3030,TOR DPCS Long Term Support Contract 2026,02-Mar-26,01-Mar-27,02-Jan-26*,31-Dec-26,254,254,254,0%,1523,Not Started
 W529LT,W529,W529.3020,TOR 2026 Defueling Software Build,02-Mar-26,28-Jan-27,02-Jan-26*,31-Dec-26,254,254,254,0%,1523,Not Started
 W529LT,W529,W529.4000,TOR 2025 Project Start,02-Jan-25,,02-Jan-25 A,,0,0,0,100%,,Completed
 W529LT,W529,W529.3010,TOR DPCS Long Term Support Contract 2025,03-Jan-25,31-Dec-25,03-Jan-25 A,31-Dec-25,252,190,252,8%,1777,In Progress
 W529LT,W529,W529.2070,TOR 2025 LSR - Pre-export Data Validation Produced and Completed,03-Mar-25,31-Mar-25,03-Mar-25 A,31-Mar-25 A,21,0,21,100%,,Completed
 W529LT,W529,W529.2080,TOR 2025 LSR - Data Export Produced and Issued,01-Apr-25,17-Apr-25,01-Apr-25,17-Apr-25,13,13,13,0%,1929,Not Started
 W529LT,W529,W529.2090,TOR 2025 LSR - Recommendations Produced and Issued,22-Apr-25,22-Apr-25,22-Apr-25,22-Apr-25,1,1,1,0%,1929,Not Started
 W529LT,W529,W529.2100,TOR 2025 LSR - Recommendation Sentencing Workshop Preparation and Event,23-Apr-25,23-Apr-25,23-Apr-25,23-Apr-25,1,1,1,0%,1929,Not Started
 W529LT,W529,W529.2110,TOR 2025 LSR - Draft Report Produced and Issued for EDF Review,24-Apr-25,08-May-25,24-Apr-25,08-May-25,10,10,10,0%,1929,Not Started
 W529LT,W529,W529.2120,TOR 2025 LSR - EDF Review Comments Produced and Provided,09-May-25,20-May-25,09-May-25,20-May-25,8,8,8,0%,1929,Not Started
 W529LT,W529,W529.2130,TOR 2025 LSR - Final Report Produced and Issued,21-May-25,28-May-25,21-May-25,28-May-25,5,5,5,0%,1929,Not Started
 W156LT,W156,W156.10013,"Substantive D/SPPIF, SVAs and SPORs completion (awaiting final Safety Case Approval)",,09-May-22,,09-May-22 A,0,0,0,100%,,Completed
 W155LT,W155,W155.10013,"Substantive D/SPPIF, SVAs and SPORs completion (awaiting final Safety Case Approval)",,12-Jul-22,,12-Jul-22 A,0,0,0,100%,,Completed
 W158LT,W158,W158.10013,"Substantive D/SPPIF, SVAs and SPORs completion (awaiting final Safety Case Approval)",,26-Aug-22,,26-Aug-22 A,0,0,0,100%,,Completed
 W529LT,W529,W529.1545,TOR Thales Long Term Support Contract - Q1 2030,02-Jan-30,29-Mar-30,02-Jan-30*,29-Mar-30,63,63,63,0%,509,Not Started
 W529LT,W529,W529.1555,TOR Thales Long Term Support Contract - Q2 2030,01-Apr-30,28-Jun-30,01-Apr-30,28-Jun-30,61,61,61,0%,509,Not Started
 W529LT,W529,W529.1565,TOR Thales Long Term Support Contract - Q3 2030,01-Jul-30,30-Sep-30,01-Jul-30,30-Sep-30,65,65,65,0%,509,Not Started
 W529LT,W529,W529.1575,TOR Thales Long Term Support Contract - Q4 2030,01-Oct-30,31-Dec-30,01-Oct-30,31-Dec-30,64,64,64,0%,509,Not Started
 W529LT,W529,W529.1505,TOR Thales Long Term Support Contract - Q1 2029,02-Jan-29,29-Mar-29,02-Jan-29*,29-Mar-29,63,63,63,0%,762,Not Started
 W529LT,W529,W529.1515,TOR Thales Long Term Support Contract - Q2 2029,03-Apr-29,29-Jun-29,03-Apr-29,29-Jun-29,62,62,62,0%,762,Not Started
 W529LT,W529,W529.1525,TOR Thales Long Term Support Contract - Q3 2029,02-Jul-29,28-Sep-29,02-Jul-29,28-Sep-29,64,64,64,0%,762,Not Started
 W529LT,W529,W529.1535,TOR Thales Long Term Support Contract - Q4 2029,01-Oct-29,31-Dec-29,01-Oct-29,31-Dec-29,64,64,64,0%,762,Not Started
 W529LT,W529,W529.1465,TOR Argus Support Contract - Q1 2029,02-Jan-29,29-Mar-29,02-Jan-29*,29-Mar-29,63,63,63,0%,762,Not Started
 W529LT,W529,W529.1475,TOR Argus Support Contract - Q2 2029,03-Apr-29,29-Jun-29,03-Apr-29,29-Jun-29,62,62,62,0%,762,Not Started
 W529LT,W529,W529.1485,TOR Argus Support Contract - Q3 2029,02-Jul-29,28-Sep-29,02-Jul-29,28-Sep-29,64,64,64,0%,762,Not Started
 W529LT,W529,W529.1495,TOR Argus Support Contract - Q4 2029,01-Oct-29,31-Dec-29,01-Oct-29,31-Dec-29,64,64,64,0%,762,Not Started
 W529LT,W529,W529.1335,TOR Argus Support Contract - Q4 2027,01-Oct-27,31-Dec-27,01-Oct-27,31-Dec-27,66,66,66,0%,1268,Not Started
 W529LT,W529,W529.1325,TOR Argus Support Contract - Q2 2027,01-Apr-27,30-Jun-27,01-Apr-27,30-Jun-27,63,63,63,0%,1268,Not Started
 W529LT,W529,W529.1315,TOR Thales Long Term Support Contract - Q4 2026,01-Oct-26,31-Dec-26,01-Oct-26,31-Dec-26,65,65,65,0%,1523,Not Started
 W529LT,W529,W529.1305,TOR Thales Long Term Support Contract - Q3 2026,01-Jul-26,30-Sep-26,01-Jul-26,30-Sep-26,65,65,65,0%,1523,Not Started
 W529LT,W529,W529.1295,TOR Thales Long Term Support Contract - Q2 2026,01-Apr-26,30-Jun-26,01-Apr-26,30-Jun-26,61,61,61,0%,1523,Not Started
 W529LT,W529,W529.1285,TOR Thales Long Term Support Contract - Q1 2026,02-Jan-26,31-Mar-26,02-Jan-26,31-Mar-26,63,63,63,0%,1523,Not Started
 W529LT,W529,W529.1275,TOR Argus Support Contract - Q2 2026,01-Apr-26,30-Jun-26,02-Jan-26,31-Mar-26,63,63,63,0%,1584,Not Started
 W529LT,W529,W529.1265,TOR Argus Support Contract - Q1 2026,02-Jan-26,31-Mar-26,02-Jan-26*,31-Mar-26,63,63,63,0%,1523,Not Started
 W529LT,W529,W529.1255,TOR Thales Long Term Support Contract Q4 2025 Delivery,01-Oct-25,31-Dec-25,01-Oct-25,31-Dec-25,64,64,64,0%,1777,Not Started
 W529LT,W529,W529.1245,TOR Thales Long Term Support Contract Q3 2025 Delivery,01-Jul-25,30-Sep-25,01-Jul-25,30-Sep-25,65,65,65,0%,1777,Not Started
 W529LT,W529,W529.1215,TOR Argus Support Contract Q4,01-Oct-25,31-Dec-25,01-Oct-25,31-Dec-25,64,64,64,0%,1777,Not Started
 W529LT,W529,W529.1205,TOR Argus Support Contract Q2 2025,01-Apr-25,30-Jun-25,01-Apr-25,30-Jun-25,61,61,61,0%,1777,Not Started
 W529LT,W529,W529.1230,TOR Thales Long Term Support Contract Q2 2025,01-Apr-25,30-Jun-25,01-Apr-25,30-Jun-25,61,61,61,0%,1777,Not Started
 W529LT,W529,W529.1220,TOR Thales Long Term Support Contract Q1 2025,02-Jan-25,31-Mar-25,02-Jan-25 A,31-Mar-25 A,1,0,63,100%,,Completed
 W529LT,W529,W529.1210,TOR Argus Support Contract Q3,01-Jul-25,30-Sep-25,01-Jul-25,30-Sep-25,65,65,65,0%,1777,Not Started
 W529LT,W529,W529.1200,TOR Argus Support Contract Q1 2025,02-Jan-25,31-Mar-25,02-Jan-25 A,31-Mar-25 A,63,0,63,100%,,Completed
 W529LT,W529,W529.1070,TOR Plant Control Systems & Simulators (PCS&S) Group - 2026,02-Jan-26,31-Dec-26,02-Jan-26*,31-Dec-26,254,254,254,0%,1523,Not Started
 W529LT,W529,W529.1060,TOR PES Group Support - 2026,02-Jan-26,31-Dec-26,02-Jan-26*,31-Dec-26,254,254,254,0%,1523,Not Started
 W529LT,W529,W529.1050,TOR Plant Control Systems & Simulators (PCS&S) Group - 2025,02-Jan-25,31-Dec-25,02-Jan-25 A,31-Dec-25,253,190,253,24%,1777,In Progress
 W529LT,W529,W529.1040,TOR PES Group Support - 2025,02-Jan-25,30-Dec-25,02-Jan-25 A,30-Dec-25,252,189,252,24%,1778,In Progress
 W529LT,W529,W529.1190,TOR Plant Control Systems & Simulators (PCS&S) Group - 2032,02-Jan-32,31-Dec-32,02-Jan-32,31-Dec-32,256,256,256,0%,0,Not Started
 W529LT,W529,W529.1180,TOR PES Group Support - 2032,02-Jan-32,31-Dec-32,02-Jan-32,31-Dec-32,256,256,256,0%,0,Not Started
 W529LT,W529,W529.3150,TOR DPCS Long Term Support Contract 2032,02-Jan-32,31-Dec-32,02-Jan-32,31-Dec-32,256,256,256,0%,0,Not Started
 W529LT,W529,W529.1625,TOR Thales Long Term Support Contract - Q1 2032,02-Jan-32,31-Mar-32,02-Jan-32*,31-Mar-32,62,62,62,0%,0,Not Started
 W529LT,W529,W529.1635,TOR Thales Long Term Support Contract - Q2 2032,01-Apr-32,30-Jun-32,01-Apr-32,30-Jun-32,63,63,63,0%,0,Not Started
 W529LT,W529,W529.1645,TOR Thales Long Term Support Contract - Q3 2032,01-Jul-32,30-Sep-32,01-Jul-32,30-Sep-32,65,65,65,0%,0,Not Started
 W529LT,W529,W529.1655,TOR Thales Long Term Support Contract - Q4 2032,01-Oct-32,31-Dec-32,01-Oct-32,31-Dec-32,66,66,66,0%,0,Not Started
 W529LT,W529,W529.3140,TOR 2032 Defueling Software Build,02-Jan-32,26-Nov-32,02-Jan-32*,26-Nov-32,231,231,231,0%,0,Not Started
 W529LT,W529,W529.1010,TOR - DPCS Defueling Support - Project End,,31-Dec-32,,30-Dec-32,0,0,0,0%,1,Not Started
 W529LT,W529,W529.1000,TOR - DPCS Defueling Support - Project Start (T-3 EOG),,01-Feb-23,,01-Feb-23 A,0,0,0,100%,,Completed
 ER6360LT,W085,W085.A6290,Contract in place for Flask Transport (AB),,31-Aug-23,,31-Aug-23 A,0,0,0,100%,,Completed
 ER6360LT,W085,W085.1011,EDF TASK - Upload Flask Quality Plan into Configurator,14-Oct-24,14-Oct-24,03-Dec-24 A,03-Dec-24 A,1,0,1,100%,,Completed
 ER6360LT,W085,W085.1001,EDF TASK - Entry into FLASK Configurator MOVE ME,11-Oct-24,11-Oct-24,02-Dec-24 A,02-Dec-24 A,1,0,1,100%,,Completed
 ER6360LT,W085,W085.SL004,Cost Summary - Flask 4 (SL),03-Jan-23,19-Feb-24,03-Jan-23 A,19-Feb-24 A,150,0,286,100%,,Completed
 ER6360LT,W085,W085.SL003,Cost Summary - Flask 3 (SL),01-Dec-22,06-Nov-23,01-Dec-22 A,06-Nov-23 A,148,0,234,100%,,Completed
 ER6360LT,W085,W085.SL002,Cost Summary - Flask 2 (SL),30-May-22,24-Feb-23,30-May-22 A,24-Feb-23 A,169,0,189,100%,,Completed
 ER6360LT,W085,W085.SL001,Cost Summary - Flask 1 (SL),30-May-22,26-May-23,30-May-22 A,26-May-23 A,169,0,250,100%,,Completed
 ER6360LT,W085,W085.1570,Issue CAT A Mod to ONR,,21-Nov-22,,21-Nov-22 A,0,0,0,100%,,Completed
 W158LT,W158,W158.2420,Review and Update SPORs (Approved Initial Safety Cases),10-Jan-23,10-Jan-23,10-Jan-23 A,10-Jan-23 A,1,0,1,100%,,Completed
 W156LT,W156,W156.3320,DNSSP submitted to ONR,,28-May-25,,19-Dec-25,0,0,0,0%,466,Not Started
 W156LT,W156,W156.3310,ONR approval of DNSSP,29-May-25,18-Jun-25,22-Dec-25,14-Jan-26,15,15,15,0%,466,Not Started
 ER6360LT,W085,W085.A1470,Gate D PRC Review,01-May-25,02-May-25,30-Sep-25,01-Oct-25,1,1,1,0%,5,Not Started
 ER6360LT,W085,W085.DS1035,Transport of Final 5 Refurbished Flasks,19-Aug-24,14-Nov-24,18-Jun-25,15-Sep-25,63,63,63,0%,5,Not Started
 ER6360LT,W085,W085.DS1020,Cost Summary Final 5 Flasks,23-Jan-23,04-Dec-24,23-Jan-23 A,09-Jul-25,321,68,622,80%,32,In Progress
 ER6360LT,W085,W085.DS1030,Transport of First 6 Refurbished Flasks,09-Dec-24,05-Mar-25,15-Jul-25,07-Oct-25,60,60,60,0%,0,Not Started
 W158LT,W158,W158.2620,ONR Approval of Defuelling NSSP,01-Feb-23,04-Sep-23,01-Feb-23 A,04-Sep-23 A,20,0,147,100%,,Completed
 W158LT,W158,W158.2610,Submit Defuelling Nuclear Site Security Plan to ONR,01-Dec-22,05-Dec-22,01-Dec-22 A,05-Dec-22 A,30,0,2,100%,,Completed
 W155LT,W155,W155.3310,ONR Approval of Defuelling NSSP,12-Feb-25,11-Mar-25,22-Dec-25,21-Jan-26,20,20,20,0%,225,Not Started
 ER6360LT,W085,W085.SL2200,Flask 1 (SL) - Flask Licensing ONR Approval of Cat C,01-Jun-23,01-Jun-23,01-Jun-23 A,01-Jun-23 A,30,0,1,100%,,Completed
 ER6360LT,W085,W085.M1080,Flask 4 E123 (SL) - INA Approval,,02-Apr-24,,02-Apr-24 A,0,0,0,100%,,Completed
 ER6360LT,W085,W085.M1070,Flask 3 E130 (SL) - INA Approval,,05-Jan-24,,05-Jan-24 A,0,0,0,100%,,Completed
 ER6360LT,W085,W085.M1060,Flask 2 E134 (SL) - INA Approval,,01-Aug-23,,01-Aug-23 A,0,0,0,100%,,Completed
 ER6360LT,W085,W085.M1050,Flask 1 E128 (SL) - ONR Approval,,07-Jul-23,,07-Jul-23 A,0,0,0,100%,,Completed
 ER6360LT,W085,W085.M1040,Flask 11 - LTQR Approval,,04-Dec-24,,09-Jul-25,0,0,0,0%,32,Not Started
 ER6360LT,W085,W085.M1030,Flask 10 - LTQR Approval,,06-Nov-24,,11-Jun-25,0,0,0,0%,83,Not Started
 ER6360LT,W085,W085.M1020,Flask 9 - INA Approval,,18-Feb-25,,12-Aug-25,0,0,0,0%,39,Not Started
 ER6360LT,W085,W085.M1010,Flask 8 - INA Approval,,05-Dec-24,,20-Jun-25,0,0,0,0%,76,Not Started
 ER6360LT,W085,W085.M1000,Flask 7 - INA Approval,,07-Nov-24,,13-Jun-25,0,0,0,0%,81,Not Started
 W529LT,W529,W529.3050,TOR DPCS Long Term Support Contract 2027,02-Mar-27,28-Feb-28,04-Jan-27,31-Dec-27,255,255,255,0%,1268,Not Started
 W529LT,W529,W529.1090,TOR Plant Control Systems & Simulators (PCS&S) Group - 2027,04-Jan-27,31-Dec-27,04-Jan-27*,31-Dec-27,255,255,255,0%,1268,Not Started
 W529LT,W529,W529.1080,TOR PES Group Support - 2027,04-Jan-27,31-Dec-27,04-Jan-27*,31-Dec-27,255,255,255,0%,1268,Not Started
 W529LT,W529,W529.1110,TOR Plant Control Systems & Simulators (PCS&S) Group - 2028,03-Jan-28,29-Dec-28,03-Jan-28*,29-Dec-28,253,253,253,0%,1015,Not Started
 W529LT,W529,W529.1100,TOR PES Group Support - 2028,03-Jan-28,29-Dec-28,03-Jan-28*,29-Dec-28,253,253,253,0%,1015,Not Started
 W529LT,W529,W529.1130,TOR Plant Control Systems & Simulators (PCS&S) Group - 2029,02-Jan-29,31-Dec-29,02-Jan-29,31-Dec-29,253,253,253,0%,762,Not Started
 W529LT,W529,W529.1120,TOR PES Group Support - 2029,02-Jan-29,31-Dec-29,02-Jan-29*,31-Dec-29,253,253,253,0%,762,Not Started
 W529LT,W529,W529.3070,TOR DPCS Long Term Support Contract 2028,03-Jan-28,29-Dec-28,30-Nov-28,29-Nov-29,253,253,253,0%,782,Not Started
 W529LT,W529,W529.3090,TOR DPCS Long Term Support Contract 2029,02-Jan-29,31-Dec-29,03-Jan-28,29-Dec-28,253,253,253,0%,1015,Not Started
 W529LT,W529,W529.1345,TOR Thales Long Term Support Contract - Q1 2027,04-Jan-27,31-Mar-27,04-Jan-27*,31-Mar-27,61,61,61,0%,1268,Not Started
 W529LT,W529,W529.1355,TOR Thales Long Term Support Contract - Q2 2027,01-Apr-27,30-Jun-27,01-Apr-27,30-Jun-27,63,63,63,0%,1268,Not Started
 W529LT,W529,W529.1365,TOR Thales Long Term Support Contract - Q3 2027,01-Jul-27,30-Sep-27,01-Jul-27,30-Sep-27,65,65,65,0%,1268,Not Started
 W529LT,W529,W529.1375,TOR Thales Long Term Support Contract - Q4 2027,01-Oct-27,31-Dec-27,01-Oct-27,31-Dec-27,66,66,66,0%,1268,Not Started
 W529LT,W529,W529.1425,TOR Thales Long Term Support Contract - Q1 2028 Delivery,03-Jan-28,31-Mar-28,03-Jan-28*,31-Mar-28,65,65,65,0%,1015,Not Started
 W529LT,W529,W529.1435,TOR Thales Long Term Support Contract - Q2 2028,03-Apr-28,30-Jun-28,03-Apr-28,30-Jun-28,61,61,61,0%,1015,Not Started
 W529LT,W529,W529.1445,TOR Thales Long Term Support Contract - Q3 2028,03-Jul-28,29-Sep-28,03-Jul-28,29-Sep-28,64,64,64,0%,1015,Not Started
 W529LT,W529,W529.1455,TOR Thales Long Term Support Contract - Q4 2028,02-Oct-28,29-Dec-28,02-Oct-28,29-Dec-28,63,63,63,0%,1015,Not Started
 W529LT,W529,W529.1150,TOR Plant Control Systems & Simulators (PCS&S) Group - 2030,02-Jan-30,31-Dec-30,02-Jan-30,31-Dec-30,253,253,253,0%,509,Not Started
 W529LT,W529,W529.1140,TOR PES Group Support - 2030,02-Jan-30,31-Dec-30,02-Jan-30,31-Dec-30,253,253,253,0%,509,Not Started
 W529LT,W529,W529.1170,TOR Plant Control Systems & Simulators (PCS&S) Group - 2031,02-Jan-31,31-Dec-31,03-Jan-31,02-Jan-32,253,253,253,0%,255,Not Started
 W529LT,W529,W529.1160,TOR PES Group Support - 2031,02-Jan-31,31-Dec-31,03-Jan-31,02-Jan-32,253,253,253,0%,255,Not Started
 W529LT,W529,W529.3110,TOR DPCS Long Term Support Contract 2030,02-Jan-30,31-Dec-30,02-Jan-30,31-Dec-30,253,253,253,0%,509,Not Started
 W529LT,W529,W529.3130,TOR DPCS Long Term Support Contract 2031,02-Jan-31,31-Dec-31,03-Jan-31,02-Jan-32,253,253,253,0%,255,Not Started
 W529LT,W529,W529.1585,TOR Thales Long Term Support Contract - Q1 2031,02-Jan-31,31-Mar-31,02-Jan-31*,31-Mar-31,63,63,63,0%,256,Not Started
 W529LT,W529,W529.1595,TOR Thales Long Term Support Contract - Q2 2031,01-Apr-31,30-Jun-31,01-Apr-31,30-Jun-31,61,61,61,0%,256,Not Started
 W529LT,W529,W529.1605,TOR Thales Long Term Support Contract - Q3 2031,01-Jul-31,30-Sep-31,01-Jul-31,30-Sep-31,65,65,65,0%,256,Not Started
 W529LT,W529,W529.1615,TOR Thales Long Term Support Contract - Q4 2031,01-Oct-31,31-Dec-31,01-Oct-31,31-Dec-31,64,64,64,0%,256,Not Started
 W529LT,W529,W529.1320,TOR Argus Support Contract - Q1 2027,04-Jan-27,31-Mar-27,04-Jan-27*,31-Mar-27,61,61,61,0%,1268,Not Started
 W529LT,W529,W529.1330,TOR Argus Support Contract - Q3 2027,01-Jul-27,30-Sep-27,01-Jul-27,30-Sep-27,65,65,65,0%,1268,Not Started
 W529LT,W529,W529.1385,TOR Argus Support Contract - Q1 2028 Delivery,03-Jan-28,31-Mar-28,03-Jan-28*,31-Mar-28,65,65,65,0%,1015,Not Started
 W529LT,W529,W529.1395,TOR Argus Support Contract - Q2 2028,03-Apr-28,30-Jun-28,03-Apr-28,30-Jun-28,61,61,61,0%,1015,Not Started
 W529LT,W529,W529.1405,TOR Argus Support Contract - Q3 2028,03-Jul-28,29-Sep-28,03-Jul-28,29-Sep-28,64,64,64,0%,1015,Not Started
 W529LT,W529,W529.1415,TOR Argus Support Contract - Q4 2028,02-Oct-28,29-Dec-28,02-Oct-28,29-Dec-28,63,63,63,0%,1015,Not Started
 W529LT,W529,W529.5100,TOR 2025 R2 TGN097 Inspection Complete,,08-Sep-25,,08-Sep-25,0,0,0,0%,1857,Not Started
 W529LT,W529,W529.3040,TOR 2027 Defueling Software Build,02-Mar-27,26-Jan-28,04-Jan-27*,30-Nov-27,232,232,232,0%,1268,Not Started
 W529LT,W529,W529.3060,TOR 2028 Defueling Software Build,03-Jan-28,29-Nov-28,03-Jan-28*,29-Nov-28,233,233,233,0%,782,Not Started
 W529LT,W529,W529.3080,TOR 2029 Defueling Software Build,02-Jan-29,27-Nov-29,03-Jan-28,27-Nov-28,231,231,231,0%,1015,Not Started
 W529LT,W529,W529.3100,TOR 2030 Defueling Software Build,02-Jan-30,27-Nov-30,02-Jan-30*,27-Nov-30,231,231,231,0%,509,Not Started
 W529LT,W529,W529.3120,TOR 2031 Defueling Software Build,02-Jan-31,27-Nov-31,03-Jan-31*,28-Nov-31,231,231,231,0%,255,Not Started
 W529LT,W529,00,ETC (DD-PF),02-Jan-25,30-Dec-32,01-Apr-25,30-Dec-32,1966,1966,1966,0%,1,Not Started
 ER6360LT,W085,W085.DS22690,Approve Flask LTQRs (Reduced Duration),21-Nov-24,04-Dec-24,26-Jun-25,09-Jul-25,10,10,10,0%,32,Not Started
 ER6360LT,W085,W085.DS22680,Produce Flask LTQRs (Reduced Duration),07-Nov-24,20-Nov-24,12-Jun-25,25-Jun-25,10,10,10,0%,32,Not Started
 ER6360LT,W085,W085.DS22670,Verify Testing (EDF)  (No Longer Required),01-May-24,01-May-24,01-May-24 A,01-May-24 A,2,0,0,100%,,Completed
 ER6360LT,W085,W085.DS22620,Generate Rebuild Report  (No Longer Required),01-May-24,01-May-24,01-May-24 A,01-May-24 A,10,0,0,100%,,Completed
 ER6360LT,W085,W085.DS22610,"Assemble Flask, Deflection and Leak Tests  (No Longer Required)",01-May-24,01-May-24,01-May-24 A,01-May-24 A,2,0,0,100%,,Completed
 ER6360LT,W085,W085.DS22600,Verify All Parts Ready for Assembly  (No Longer Required),01-May-24,01-May-24,01-May-24 A,01-May-24 A,1,0,0,100%,,Completed
 ER6360LT,W085,W085.DS22520,Verify Painting Complete (EDF)  (No Longer Required),01-May-24,01-May-24,01-May-24 A,01-May-24 A,2,0,0,100%,,Completed
 ER6360LT,W085,W085.DS22460,Paint Lid Topside  (No Longer Required),01-May-24,01-May-24,01-May-24 A,01-May-24 A,1,0,0,100%,,Completed
 ER6360LT,W085,W085.DS22450,Verify Painting Complete (EDF)  (No Longer Required),01-May-24,01-May-24,01-May-24 A,01-May-24 A,2,0,0,100%,,Completed
 ER6360LT,W085,W085.DS22380,Paint Flask Base  (No Longer Required),01-May-24,01-May-24,01-May-24 A,01-May-24 A,12,0,0,100%,,Completed
 ER6360LT,W085,W085.DS22370,Verify Painting Complete (EDF)  (No Longer Required),01-May-24,01-May-24,01-May-24 A,01-May-24 A,2,0,0,100%,,Completed
 ER6360LT,W085,W085.DS22330,Paint Flask Body  (No Longer Required),01-May-24,01-May-24,01-May-24 A,01-May-24 A,12,0,0,100%,,Completed
 ER6360LT,W085,W085.DS22320,Approve Refurbishment Report  (No Longer Required),01-May-24,01-May-24,01-May-24 A,01-May-24 A,9,0,0,100%,,Completed
 ER6360LT,W085,W085.DS22310,Produce Refurbishment Report  (No Longer Required),01-May-24,01-May-24,01-May-24 A,01-May-24 A,14,0,0,100%,,Completed
 ER6360LT,W085,W085.DS22250,Verify Repairs and NDT Complete (EDF)  (No Longer Required),01-May-24,01-May-24,01-May-24 A,01-May-24 A,1,0,0,100%,,Completed
 ER6360LT,W085,W085.DS22240,Refurbish Lid Underside  (No Longer Required),31-May-24,31-May-24,31-May-24 A,31-May-24 A,2,0,0,100%,,Completed
 ER6360LT,W085,W085.DS22230,Refurbish Lid Topside  (No Longer Required),01-May-24,01-May-24,01-May-24 A,01-May-24 A,1,0,0,100%,,Completed
 ER6360LT,W085,W085.DS22220,Verify Repairs and NDT Complete (EDF)  (No Longer Required),01-May-24,01-May-24,01-May-24 A,01-May-24 A,1,0,0,100%,,Completed
 ER6360LT,W085,W085.DS22210,Refurbish LSM  (No Longer Required),01-May-24,01-May-24,01-May-24 A,01-May-24 A,1,0,0,100%,,Completed
 ER6360LT,W085,W085.DS22200,Verify Repairs and NDT Complete (EDF)  (No Longer Required),01-May-24,01-May-24,01-May-24 A,01-May-24 A,5,0,0,100%,,Completed
 ER6360LT,W085,W085.DS22180,Cavity Testing  (No Longer Required),01-May-24,01-May-24,01-May-24 A,01-May-24 A,11,0,0,100%,,Completed
 ER6360LT,W085,W085.DS22170,Verify Repairs and NDT Complete (EDF)  (No Longer Required),01-May-24,01-May-24,01-May-24 A,01-May-24 A,3,0,0,100%,,Completed
 ER6360LT,W085,W085.DS22160,Refurbish Flask Base  (No Longer Required),01-May-24,12-Jul-24,01-May-24 A,12-Jul-24 A,9,0,51,100%,,Completed
 ER6360LT,W085,W085.DS22150,Verify Repairs and NDT Complete (EDF)  (No Longer Required),01-May-24,01-May-24,01-May-24 A,01-May-24 A,5,0,0,100%,,Completed
 ER6360LT,W085,W085.DS22110,Refurbish Flask Body  (No Longer Required),01-May-24,01-May-24,01-May-24 A,01-May-24 A,15,0,0,100%,,Completed
 ER6360LT,W085,W085.DS22080,Approve Inspection and Testing Report (EDF)  (No Longer Required),,05-Jan-24,,05-Jan-24 A,0,0,0,100%,,Completed
 ER6360LT,W085,W085.DS22070,Approve NDT Inspection Report (EDF),20-Sep-23,05-Jan-24,20-Sep-23 A,05-Jan-24 A,5,0,75,100%,,Completed
 ER6360LT,W085,W085.DS22010,Inspect and Clean LSM,14-Sep-23,19-Sep-23,14-Sep-23 A,19-Sep-23 A,1,0,4,100%,,Completed
 ER6360LT,W085,W085.DS21990,Approve NDT Inspection Report (EDF),24-May-24,31-May-24,24-May-24 A,31-May-24 A,5,0,5,100%,,Completed
 ER6360LT,W085,W085.DS21930,Minor Repairs and DPI,05-Sep-23,23-May-24,05-Sep-23 A,23-May-24 A,3,0,182,100%,,Completed
 ER6360LT,W085,W085.DS21920,Inspect Flask Lid,28-Aug-23,04-Sep-23,28-Aug-23 A,04-Sep-23 A,1,0,4,100%,,Completed
 ER6360LT,W085,W085.DS21890,Approve NDT Inspection Report (EDF),16-May-24,22-May-24,16-May-24 A,22-May-24 A,5,0,5,100%,,Completed
 ER6360LT,W085,W085.DS21820,Minor Repairs and DPI,08-May-24,14-May-24,08-May-24 A,14-May-24 A,1,0,5,100%,,Completed
 ER6360LT,W085,W085.DS21810,Inspect Flask Base,20-Mar-24,08-May-24,20-Mar-24 A,08-May-24 A,1,0,32,100%,,Completed
 ER6360LT,W085,W085.DS21800,Approve NDT Inspection Report (EDF),16-May-24,22-May-24,16-May-24 A,22-May-24 A,1,0,5,100%,,Completed
 ER6360LT,W085,W085.DS21760,Minor Repairs and DPI,26-Jul-23,15-May-24,26-Jul-23 A,15-May-24 A,2,0,204,100%,,Completed
 ER6360LT,W085,W085.DS21750,Inspect Flask Body,30-Jun-23,25-Jul-23,30-Jun-23 A,25-Jul-23 A,2,0,18,100%,,Completed
 ER6360LT,W085,W085.DS21740,Transit of Eleventh Flask from EDF,,01-Jun-22,,01-Jun-22 A,0,0,0,100%,,Completed
 ER6360LT,W085,W085.DS21700,Gate C-D Flask 11 Cost Summary  (No Longer Required),30-Jun-23,01-May-24,30-Jun-23 A,01-May-24 A,289,0,212,100%,,Completed
 ER6360LT,W085,W085.DS21670,Approve Flask LTQRs (Reduce Duration),24-Oct-24,06-Nov-24,29-May-25,11-Jun-25,10,10,10,0%,32,Not Started
 ER6360LT,W085,W085.DS21660,Produce Flask LTQRs (Reduced Duration),10-Oct-24,23-Oct-24,14-May-25,28-May-25,10,10,10,0%,32,Not Started
 ER6360LT,W085,W085.DS21650,Verify Testing and Approve Report (EDF)  (No Longer Required),01-May-24,01-May-24,01-May-24 A,01-May-24 A,5,0,0,100%,,Completed
 ER6360LT,W085,W085.DS21600,Generate Rebuild Report  (No Longer Required),01-May-24,01-May-24,01-May-24 A,01-May-24 A,5,0,0,100%,,Completed
 ER6360LT,W085,W085.DS21590,"Assemble Flask, Deflection and Leak Tests  (No Longer Required)",01-May-24,01-May-24,01-May-24 A,01-May-24 A,2,0,0,100%,,Completed
 ER6360LT,W085,W085.DS21580,Verify All Parts Ready for Assembly  (No Longer Required),01-May-24,01-May-24,01-May-24 A,01-May-24 A,1,0,0,100%,,Completed
 ER6360LT,W085,W085.DS21500,Verify Painting Complete (EDF),03-Oct-24,09-Oct-24,07-May-25,13-May-25,2,5,5,0%,32,Not Started
 ER6360LT,W085,W085.DS21440,Paint Lid Topside,12-Sep-24,02-Oct-24,23-Sep-24 A,06-May-25,1,23,156,50%,32,In Progress
 ER6360LT,W085,W085.DS21430,Verify Painting Complete (EDF)  (No Longer Required),01-May-24,01-May-24,01-May-24 A,01-May-24 A,1,0,0,100%,,Completed
 ER6360LT,W085,W085.DS21360,Paint Flask Base  (No Longer Required),01-May-24,01-May-24,01-May-24 A,01-May-24 A,12,0,0,100%,,Completed
 ER6360LT,W085,W085.DS21350,Verify Painting Complete (EDF)  (No Longer Required),01-May-24,01-May-24,01-May-24 A,01-May-24 A,1,0,0,100%,,Completed
 ER6360LT,W085,W085.DS21310,Paint Flask Body  (No Longer Required),01-May-24,01-May-24,01-May-24 A,01-May-24 A,12,0,0,100%,,Completed
 ER6360LT,W085,W085.DS21300,Approve Refurbishment Report,24-Jun-24,05-Jul-24,15-Jul-24 A,26-Jul-24 A,5,0,10,100%,,Completed
 ER6360LT,W085,W085.DS21290,Produce Refurbishment Report,03-Jun-24,21-Jun-24,01-Jul-24 A,12-Jul-24 A,15,0,10,100%,,Completed
 ER6360LT,W085,W085.DS21230,Verify Repairs and NDT Complete (EDF),04-Jun-24,10-Jun-24,16-Jul-24 A,22-Jul-24 A,1,0,5,100%,,Completed
 ER6360LT,W085,W085.DS21220,Refurbish Lid Underside,22-Mar-24,03-Jun-24,22-Mar-24 A,15-Jul-24 A,2,0,78,100%,,Completed
 ER6360LT,W085,W085.DS21210,Refurbish Lid Topside,22-Mar-24,09-Jul-24,22-Mar-24 A,15-Jul-24 A,1,0,78,100%,,Completed
 ER6360LT,W085,W085.DS21200,Verify Repairs and NDT Complete (EDF)  (No Longer Required),01-May-24,01-May-24,01-May-24 A,01-May-24 A,1,0,0,100%,,Completed
 ER6360LT,W085,W085.DS21190,Refurbish LSM  (No Longer Required),01-May-24,01-May-24,01-May-24 A,01-May-24 A,1,0,0,100%,,Completed
 ER6360LT,W085,W085.DS21180,Verify Repairs and NDT Complete (EDF) (No Longer Required),01-May-24,01-May-24,01-May-24 A,01-May-24 A,5,0,0,100%,,Completed
 ER6360LT,W085,W085.DS21160,Cavity Testing (No Longer Required),01-May-24,01-May-24,01-May-24 A,01-May-24 A,5,0,0,100%,,Completed
 ER6360LT,W085,W085.DS21150,Verify Repairs and NDT Complete (EDF) (No Longer Required),01-May-24,01-May-24,01-May-24 A,01-May-24 A,3,0,0,100%,,Completed
 ER6360LT,W085,W085.DS21140,Refurbish Flask Base (No Longer Required),01-May-24,01-May-24,01-May-24 A,01-May-24 A,5,0,0,100%,,Completed
 ER6360LT,W085,W085.DS21130,Verify Repairs and NDT Complete (EDF)  (No Longer Required),01-May-24,01-May-24,01-May-24 A,01-May-24 A,5,0,0,100%,,Completed
 ER6360LT,W085,W085.DS21090,Refurbish Flask Body (No Longer Required),22-Mar-24,01-May-24,22-Mar-24 A,01-May-24 A,15,0,26,100%,,Completed
 ER6360LT,W085,W085.DS21050,Approve NDT Inspection Report (EDF),31-Jul-23,03-Aug-23,31-Jul-23 A,03-Aug-23 A,5,0,3,100%,,Completed
 ER6360LT,W085,W085.DS20990,Inspect and Clean LSM,20-Apr-23,28-Jul-23,20-Apr-23 A,28-Jul-23 A,1,0,68,100%,,Completed
 ER6360LT,W085,W085.DS20970,Approve NDT Inspection Report (EDF),30-Jun-23,28-Jul-23,30-Jun-23 A,28-Jul-23 A,5,0,20,100%,,Completed
 ER6360LT,W085,W085.DS20910,Minor Repairs and DPI,27-Jun-23,30-Jun-23,27-Jun-23 A,30-Jun-23 A,3,0,3,100%,,Completed
 ER6360LT,W085,W085.DS20900,Inspect Flask Lid,27-Jun-23,27-Jun-23,27-Jun-23 A,27-Jun-23 A,1,0,1,100%,,Completed
 ER6360LT,W085,W085.DS20870,Approve NDT Inspection Report (EDF) (No Longer Required),01-May-24,01-May-24,01-May-24 A,01-May-24 A,5,0,0,100%,,Completed
 ER6360LT,W085,W085.DS20800,Minor Repairs and DPI (No Longer Required),01-May-24,01-May-24,01-May-24 A,01-May-24 A,1,0,0,100%,,Completed
 ER6360LT,W085,W085.DS20790,Inspect Flask Base (No Longer Required),01-May-24,01-May-24,01-May-24 A,01-May-24 A,1,0,0,100%,,Completed
 ER6360LT,W085,W085.DS20780,Approve NDT Inspection Report (EDF),28-Jul-23,28-Jul-23,28-Jul-23 A,28-Jul-23 A,1,0,0,100%,,Completed
 ER6360LT,W085,W085.DS20740,Minor Repairs and DPI,21-Jul-23,27-Sep-23,21-Jul-23 A,27-Sep-23 A,1,0,47,100%,,Completed
 ER6360LT,W085,W085.DS20730,Inspect Flask Body,01-Mar-23,20-Jul-23,01-Mar-23 A,20-Jul-23 A,1,0,96,100%,,Completed
 ER6360LT,W085,W085.DS20720,Transit of Tenth Flask from EDF,,01-Jun-22,,01-Jun-22 A,0,0,0,100%,,Completed
 ER6360LT,W085,W085.DS20680,Gate C-D Flask 10 Cost Summary  (No Longer Required),01-Mar-23,01-May-24,01-Mar-23 A,01-May-24 A,280,0,294,100%,,Completed
 ER6360LT,W085,W085.DS20650,Approve Flask LTQRs,12-Dec-24,07-Jan-25,18-Jun-25,01-Jul-25,10,10,10,0%,36,Not Started
 ER6360LT,W085,W085.DS20640,Produce Flask LTQRs,28-Nov-24,11-Dec-24,04-Jun-25,17-Jun-25,10,10,10,0%,36,Not Started
 ER6360LT,W085,W085.DS20630,Verify Testing and Approve Report (EDF),21-Nov-24,27-Nov-24,28-May-25,03-Jun-25,5,5,5,0%,36,Not Started
 ER6360LT,W085,W085.DS20580,Generate Rebuild Report,15-Nov-24,20-Nov-24,21-May-25,27-May-25,5,4,4,0%,36,Not Started
 ER6360LT,W085,W085.DS20570,"Assemble Flask, Deflection and Leak Tests",23-Sep-24,14-Nov-24,19-May-25,20-May-25,2,2,2,0%,36,Not Started
 ER6360LT,W085,W085.DS20560,Verify All Parts Ready for Assembly,18-Sep-24,20-Sep-24,15-May-25,16-May-25,1,2,2,0%,36,Not Started
 ER6360LT,W085,W085.DS20480,Verify Painting Complete (EDF),09-Sep-24,13-Sep-24,09-Dec-24 A,13-Dec-24 A,2,0,5,100%,,Completed
 ER6360LT,W085,W085.DS20420,Paint Lid Topside,16-Aug-24,06-Sep-24,04-Nov-24 A,06-Dec-24 A,2,0,25,100%,,Completed
 ER6360LT,W085,W085.DS20410,Verify Painting Complete (EDF),23-Aug-24,30-Aug-24,08-May-25,14-May-25,1,5,5,0%,36,Not Started
 ER6360LT,W085,W085.DS20340,Paint Flask Base (To be Confirmed),02-Aug-24,22-Aug-24,14-Apr-25*,07-May-25,12,15,15,0%,36,Not Started
 ER6360LT,W085,W085.DS20330,Verify Painting Complete (EDF),11-Sep-24,17-Sep-24,28-Apr-25,02-May-25,1,5,5,0%,43,Not Started
 ER6360LT,W085,W085.DS20290,Paint Flask Body,02-Aug-24,10-Sep-24,23-Aug-24 A,25-Apr-25,12,8,170,80%,43,In Progress
 ER6360LT,W085,W085.DS20280,Approve Refurbishment Report,07-Aug-24,20-Aug-24,24-Apr-25,08-May-25,9,10,10,0%,44,Not Started
 ER6360LT,W085,W085.DS20270,Produce Refurbishment Report,17-Jul-24,06-Aug-24,01-Apr-25,23-Apr-25,14,15,15,0%,44,Not Started
 ER6360LT,W085,W085.DS20210,Verify Repairs and NDT Complete (EDF),19-Dec-23,19-Dec-23,19-Dec-23 A,19-Dec-23 A,1,0,1,100%,,Completed
 ER6360LT,W085,W085.DS20200,Refurbish Lid Underside,09-Oct-23,18-Dec-23,09-Oct-23 A,18-Dec-23 A,2,0,51,100%,,Completed
 ER6360LT,W085,W085.DS20190,Refurbish Lid Topside,11-Sep-23,01-Dec-23,11-Sep-23 A,01-Dec-23 A,1,0,60,100%,,Completed
 ER6360LT,W085,W085.DS20180,Verify Repairs and NDT Complete (EDF),12-Sep-24,18-Sep-24,10-Feb-25 A,14-Feb-25 A,1,0,5,100%,,Completed
 ER6360LT,W085,W085.DS20170,Refurbish LSM,27-Aug-24,11-Sep-24,28-Oct-24 A,07-Feb-25 A,1,0,72,100%,,Completed
 ER6360LT,W085,W085.DS20160,Verify Repairs and NDT Complete (EDF) (No Longer Required),16-Jul-24,16-Jul-24,25-Mar-25 A,31-Mar-25 A,5,0,5,100%,,Completed
 ER6360LT,W085,W085.DS20140,Cavity Testing (No Longer Required),05-Jul-24,15-Jul-24,27-Aug-24 A,24-Mar-25 A,5,0,147,100%,,Completed
 ER6360LT,W085,W085.DS20130,Verify Repairs and NDT Complete (EDF),13-Dec-23,13-Dec-23,13-Dec-23 A,13-Dec-23 A,5,0,1,100%,,Completed
 ER6360LT,W085,W085.DS20120,Refurbish Flask Base,10-Oct-23,12-Dec-23,10-Oct-23 A,12-Dec-23 A,8,0,46,100%,,Completed
 ER6360LT,W085,W085.DS20110,Verify Repairs and NDT Complete (EDF),18-Dec-23,18-Dec-23,18-Dec-23 A,18-Dec-23 A,5,0,1,100%,,Completed
 ER6360LT,W085,W085.DS20070,Refurbish Body,05-Sep-23,01-Dec-23,05-Sep-23 A,01-Dec-23 A,14,0,64,100%,,Completed
 ER6360LT,W085,W085.DS20030,Approve NDT Inspection Report (EDF),18-Oct-23,24-Oct-23,18-Oct-23 A,24-Oct-23 A,5,0,5,100%,,Completed
 ER6360LT,W085,W085.DS19970,Inspect Components,17-Oct-23,17-Oct-23,17-Oct-23 A,17-Oct-23 A,1,0,1,100%,,Completed
 ER6360LT,W085,W085.DS19950,Approve NDT Inspection Report (EDF),23-Jun-23,30-Jun-23,23-Jun-23 A,30-Jun-23 A,5,0,5,100%,,Completed
 ER6360LT,W085,W085.DS19890,Minor Repairs and DPI,20-Jun-23,23-Jun-23,20-Jun-23 A,23-Jun-23 A,3,0,3,100%,,Completed
 ER6360LT,W085,W085.DS19880,Inspect Flask Lid,20-Jun-23,20-Jun-23,20-Jun-23 A,20-Jun-23 A,1,0,1,100%,,Completed
 ER6360LT,W085,W085.DS19850,Approve NDT Inspection Report (EDF),13-Jun-23,19-Jun-23,13-Jun-23 A,19-Jun-23 A,5,0,5,100%,,Completed
 ER6360LT,W085,W085.DS19780,Minor Repairs and DPI,12-Jun-23,12-Jun-23,12-Jun-23 A,12-Jun-23 A,1,0,1,100%,,Completed
 ER6360LT,W085,W085.DS19770,Inspect Flask Body,12-Jun-23,12-Jun-23,12-Jun-23 A,12-Jun-23 A,1,0,1,100%,,Completed
 ER6360LT,W085,W085.DS19760,Approve NDT Inspection Report (EDF),09-Jun-23,09-Jun-23,09-Jun-23 A,09-Jun-23 A,1,0,1,100%,,Completed
 ER6360LT,W085,W085.DS19720,Minor Repairs and DPI,07-Jun-23,08-Jun-23,07-Jun-23 A,08-Jun-23 A,2,0,2,100%,,Completed
 ER6360LT,W085,W085.DS19710,Inspect Flask Body,05-Jun-23,06-Jun-23,05-Jun-23 A,06-Jun-23 A,2,0,2,100%,,Completed
 ER6360LT,W085,W085.DS19700,Transit of Ninth Flask from EDF,,01-Jun-22,,01-Jun-22 A,0,0,0,100%,,Completed
 ER6360LT,W085,W085.DS19660,Gate C-D Flask 9 Cost Summary,05-Jun-23,21-Feb-25,05-Jun-23 A,15-Aug-25,270,95,559,5%,36,In Progress
 ER6360LT,W085,W085.DS19630,Approve Flask LTQRs,11-Oct-24,24-Oct-24,24-Apr-25,08-May-25,10,10,10,0%,73,Not Started
 ER6360LT,W085,W085.DS19620,Produce Flask LTQRs,27-Sep-24,10-Oct-24,01-Apr-25*,23-Apr-25,10,15,15,0%,73,Not Started
 ER6360LT,W085,W085.DS19610,Verify Testing (EDF),20-Sep-24,26-Sep-24,23-Dec-24 A,24-Jan-25 A,5,0,21,100%,,Completed
 ER6360LT,W085,W085.DS19560,Generate Rebuild Report,17-Sep-24,19-Sep-24,21-Nov-24 A,06-Dec-24 A,10,0,12,100%,,Completed
 ER6360LT,W085,W085.DS19550,"Assemble Flask, Deflection and Leak Tests",20-Aug-24,16-Sep-24,26-Sep-24 A,20-Nov-24 A,2,0,40,100%,,Completed
 ER6360LT,W085,W085.DS19540,Verify All Parts Ready for Assembly,15-Aug-24,19-Aug-24,23-Sep-24 A,25-Sep-24 A,5,0,3,100%,,Completed
 ER6360LT,W085,W085.DS19460,Verify Painting Complete (EDF),08-Aug-24,14-Aug-24,16-Sep-24 A,20-Sep-24 A,2,0,5,100%,,Completed
 ER6360LT,W085,W085.DS19400,Paint Lid Topside,03-Jul-24,07-Aug-24,01-Aug-24 A,30-Aug-24 A,1,0,21,100%,,Completed
 ER6360LT,W085,W085.DS19390,Verify Painting Complete (EDF),08-Aug-24,14-Aug-24,16-Sep-24 A,20-Sep-24 A,1,0,5,100%,,Completed
 ER6360LT,W085,W085.DS19320,Paint Flask Base,03-Jul-24,07-Aug-24,24-Jun-24 A,30-Aug-24 A,12,0,49,100%,,Completed
 ER6360LT,W085,W085.DS19310,Verify Painting Complete (EDF),08-Aug-24,14-Aug-24,16-Sep-24 A,20-Sep-24 A,1,0,5,100%,,Completed
 ER6360LT,W085,W085.DS19270,Paint Flask Body,03-Jul-24,07-Aug-24,08-Jul-24 A,30-Aug-24 A,12,0,39,100%,,Completed
 ER6360LT,W085,W085.DS19260,Approve Refurbishment Report,01-May-24,16-May-24,01-May-24 A,16-May-24 A,9,0,10,100%,,Completed
 ER6360LT,W085,W085.DS19250,Produce Refurbishment Report,10-Apr-24,30-Apr-24,10-Apr-24 A,30-Apr-24 A,14,0,15,100%,,Completed
 ER6360LT,W085,W085.DS19190,Verify Repairs and NDT Complete (EDF),12-Dec-23,12-Dec-23,12-Dec-23 A,12-Dec-23 A,1,0,1,100%,,Completed
 ER6360LT,W085,W085.DS19180,Refurbish Lid Underside,12-Sep-23,11-Dec-23,12-Sep-23 A,11-Dec-23 A,2,0,65,100%,,Completed
 ER6360LT,W085,W085.DS19170,Refurbish Lid Topside,01-Sep-23,04-Sep-23,01-Sep-23 A,04-Sep-23 A,1,0,2,100%,,Completed
 ER6360LT,W085,W085.DS19160,Verify Repairs and NDT Complete (EDF),02-Aug-24,08-Aug-24,23-Jul-24 A,29-Jul-24 A,1,0,5,100%,,Completed
 ER6360LT,W085,W085.DS19150,Refurbish LSM,25-Jan-24,01-Aug-24,25-Jan-24 A,22-Jul-24 A,1,0,124,100%,,Completed
 ER6360LT,W085,W085.DS19140,Verify Repairs and NDT Complete (EDF),29-May-24,29-May-24,29-May-24 A,29-May-24 A,5,0,1,100%,,Completed
 ER6360LT,W085,W085.DS19120,Cavity Testing,13-May-24,28-May-24,13-May-24 A,28-May-24 A,14,0,11,100%,,Completed
 ER6360LT,W085,W085.DS19110,Verify Repairs and NDT Complete (EDF),19-Dec-23,19-Dec-23,19-Dec-23 A,19-Dec-23 A,5,0,1,100%,,Completed
 ER6360LT,W085,W085.DS19100,Refurbish Flask Base,12-Oct-23,19-Dec-23,12-Oct-23 A,19-Dec-23 A,15,0,48,100%,,Completed
 ER6360LT,W085,W085.DS19090,Verify Repairs and NDT Complete (EDF),12-Dec-23,12-Dec-23,12-Dec-23 A,12-Dec-23 A,5,0,1,100%,,Completed
 ER6360LT,W085,W085.DS19050,Refurbish Flask Body,01-Sep-23,11-Dec-23,01-Sep-23 A,11-Dec-23 A,15,0,72,100%,,Completed
 ER6360LT,W085,W085.DS19010,Approve NDT Inspection Report (EDF),03-Oct-23,03-Oct-23,03-Oct-23 A,03-Oct-23 A,5,0,1,100%,,Completed
 ER6360LT,W085,W085.DS18950,Inspect Components,02-Oct-23,02-Oct-23,02-Oct-23 A,02-Oct-23 A,1,0,1,100%,,Completed
 ER6360LT,W085,W085.DS18930,Approve NDT Inspection Report (EDF),19-Apr-23,25-Apr-23,19-Apr-23 A,25-Apr-23 A,5,0,5,100%,,Completed
 ER6360LT,W085,W085.DS18870,Minor Repairs and DPI,19-Apr-23,19-Apr-23,19-Apr-23 A,19-Apr-23 A,3,0,0,100%,,Completed
 ER6360LT,W085,W085.DS18860,Inspect Flask Lid,28-Feb-23,28-Feb-23,28-Feb-23 A,28-Feb-23 A,1,0,1,100%,,Completed
 ER6360LT,W085,W085.DS18830,Approve NDT Inspection Report (EDF),19-Apr-23,12-May-23,19-Apr-23 A,12-May-23 A,5,0,16,100%,,Completed
 ER6360LT,W085,W085.DS18760,Minor Repairs and DPI,12-Apr-23,18-Apr-23,12-Apr-23 A,18-Apr-23 A,5,0,5,100%,,Completed
 ER6360LT,W085,W085.DS18750,Inspect Flask Body,28-Feb-23,28-Feb-23,28-Feb-23 A,28-Feb-23 A,1,0,1,100%,,Completed
 ER6360LT,W085,W085.DS18740,Approve NDT Inspection Report (EDF),12-Apr-23,12-Apr-23,12-Apr-23 A,12-Apr-23 A,1,0,1,100%,,Completed
 ER6360LT,W085,W085.DS18700,Minor Repairs and DPI,03-Apr-23,11-Apr-23,03-Apr-23 A,11-Apr-23 A,5,0,5,100%,,Completed
 ER6360LT,W085,W085.DS18690,Inspect Flask Body,27-Feb-23,27-Feb-23,27-Feb-23 A,27-Feb-23 A,1,0,1,100%,,Completed
 ER6360LT,W085,W085.DS18680,Transit of Eighth Flask from EDF,,01-Jun-22,,01-Jun-22 A,0,0,0,100%,,Completed
 ER6360LT,W085,W085.DS18640,Gate C-D Flask 8 Cost Summary,27-Feb-23,10-Dec-24,27-Feb-23 A,25-Jun-25,260,58,587,12%,73,In Progress
 ER6360LT,W085,W085.DS18610,Approve Flask LTQRs,13-Sep-24,26-Sep-24,29-Nov-24 A,30-Apr-25,10,20,104,75%,78,In Progress
 ER6360LT,W085,W085.DS18600,Produce Flask LTQRs,30-Aug-24,12-Sep-24,18-Oct-24 A,31-Oct-24 A,10,0,10,100%,,Completed
 ER6360LT,W085,W085.DS18590,Verify Testing and Approve Report (EDF),22-Aug-24,29-Aug-24,16-Sep-24 A,30-Sep-24 A,5,0,11,100%,,Completed
 ER6360LT,W085,W085.DS18540,Generate Rebuild Report,15-Aug-24,21-Aug-24,13-Aug-24 A,19-Aug-24 A,5,0,5,100%,,Completed
 ER6360LT,W085,W085.DS18530,"Assemble Flask, Deflection and Leak Tests",18-Jul-24,14-Aug-24,11-Jul-24 A,12-Aug-24 A,14,0,23,100%,,Completed
 ER6360LT,W085,W085.DS18520,Verify All Parts Ready for Assembly,15-Jul-24,17-Jul-24,08-Jul-24 A,10-Jul-24 A,1,0,3,100%,,Completed
 ER6360LT,W085,W085.DS18440,Verify Painting Complete (EDF),05-Jul-24,11-Jul-24,01-Jul-24 A,05-Jul-24 A,1,0,5,100%,,Completed
 ER6360LT,W085,W085.DS18380,Paint Flask Topside,03-Jun-24,04-Jul-24,03-Jun-24 A,28-Jun-24 A,4,0,20,100%,,Completed
 ER6360LT,W085,W085.DS18370,Verify Painting Complete (EDF),08-Jul-24,12-Jul-24,01-Jul-24 A,05-Jul-24 A,1,0,5,100%,,Completed
 ER6360LT,W085,W085.DS18300,Paint Flask Base,08-May-24,05-Jul-24,08-May-24 A,05-Jul-24 A,12,0,42,100%,,Completed
 ER6360LT,W085,W085.DS18290,Verify Painting Complete (EDF),27-Jun-24,03-Jul-24,01-Jul-24 A,05-Jul-24 A,1,0,5,100%,,Completed
 ER6360LT,W085,W085.DS18250,Paint Flask Body,03-Jun-24,26-Jun-24,03-Jun-24 A,28-Jun-24 A,12,0,20,100%,,Completed
 ER6360LT,W085,W085.DS18240,Approve Refurbishment Report,23-Apr-24,30-Apr-24,23-Apr-24 A,30-Apr-24 A,10,0,6,100%,,Completed
 ER6360LT,W085,W085.DS18230,Produce Refurbishment Report,02-Apr-24,22-Apr-24,02-Apr-24 A,22-Apr-24 A,15,0,15,100%,,Completed
 ER6360LT,W085,W085.DS18170,Verify Repairs and NDT Complete (EDF),22-Sep-23,22-Sep-23,22-Sep-23 A,22-Sep-23 A,1,0,1,100%,,Completed
 ER6360LT,W085,W085.DS18160,Refurbish Flask Lid Underside,14-Sep-23,21-Sep-23,14-Sep-23 A,21-Sep-23 A,2,0,6,100%,,Completed
 ER6360LT,W085,W085.DS18150,Refurbish Flask Lid Topside,01-Sep-23,12-Sep-23,01-Sep-23 A,12-Sep-23 A,1,0,8,100%,,Completed
 ER6360LT,W085,W085.DS18140,Verify Repairs and NDT Complete (EDF),27-Nov-23,27-Nov-23,27-Nov-23 A,27-Nov-23 A,5,0,1,100%,,Completed
 ER6360LT,W085,W085.DS18130,Refurbish LSM,01-Nov-23,24-Nov-23,01-Nov-23 A,24-Nov-23 A,5,0,18,100%,,Completed
 ER6360LT,W085,W085.DS18120,Verify Repairs and NDT Complete (EDF),19-Dec-23,19-Dec-23,19-Dec-23 A,19-Dec-23 A,5,0,1,100%,,Completed
 ER6360LT,W085,W085.DS18080,Refurbish Flask Base,28-Sep-23,22-Nov-23,28-Sep-23 A,22-Nov-23 A,15,0,40,100%,,Completed
 ER6360LT,W085,W085.DS18070,Verify Repairs and NDT Complete (EDF),25-Oct-23,25-Oct-23,25-Oct-23 A,25-Oct-23 A,5,0,1,100%,,Completed
 ER6360LT,W085,W085.DS18030,Refurbish Flask Body,07-Aug-23,24-Oct-23,07-Aug-23 A,24-Oct-23 A,15,0,56,100%,,Completed
 ER6360LT,W085,W085.DS17990,Approve NDT Inspection Report (EDF),15-May-23,16-May-23,15-May-23 A,16-May-23 A,1,0,2,100%,,Completed
 ER6360LT,W085,W085.DS17930,Inspect Components,11-May-23,12-May-23,11-May-23 A,12-May-23 A,2,0,2,100%,,Completed
 ER6360LT,W085,W085.DS17910,Approve NDT Inspection Report (EDF),03-May-23,10-May-23,03-May-23 A,10-May-23 A,5,0,5,100%,,Completed
 ER6360LT,W085,W085.DS17850,Minor Repairs and DPI,11-Apr-23,03-May-23,11-Apr-23 A,03-May-23 A,1,0,15,100%,,Completed
 ER6360LT,W085,W085.DS17840,Inspect Flask Lid,24-Jan-23,16-Feb-23,24-Jan-23 A,16-Feb-23 A,1,0,18,100%,,Completed
 ER6360LT,W085,W085.DS17810,Approve NDT Inspection Report (EDF),11-Apr-23,11-Apr-23,11-Apr-23 A,11-Apr-23 A,5,0,0,100%,,Completed
 ER6360LT,W085,W085.DS17750,Minor Repairs and DPI,20-Feb-23,06-Apr-23,20-Feb-23 A,06-Apr-23 A,5,0,34,100%,,Completed
 ER6360LT,W085,W085.DS17730,Inspect Flask Base,30-Jan-23,17-Feb-23,30-Jan-23 A,17-Feb-23 A,1,0,15,100%,,Completed
 ER6360LT,W085,W085.DS17720,Approve NDT Inspection Report (EDF),17-Feb-23,23-Feb-23,17-Feb-23 A,23-Feb-23 A,1,0,5,100%,,Completed
 ER6360LT,W085,W085.DS17690,Minor Repairs and DPI,16-Feb-23,16-Feb-23,16-Feb-23 A,16-Feb-23 A,5,0,1,100%,,Completed
 ER6360LT,W085,W085.DS17670,Inspect Flask Body,23-Jan-23,15-Feb-23,23-Jan-23 A,15-Feb-23 A,1,0,18,100%,,Completed
 ER6360LT,W085,W085.DS17660,Transit of Seventh Flask from EDF,,01-Jun-22,,01-Jun-22 A,0,0,0,100%,,Completed
 ER6360LT,W085,W085.DS17620,Gate C-D Flask 7 Cost Summary,23-Jan-23,12-Nov-24,23-Jan-23 A,18-Jun-25,241,53,607,20%,78,In Progress
 ER6360LT,W085,W085.DS17590,Approve Flask LTQRs,02-Oct-24,15-Oct-24,07-May-25,20-May-25,10,10,10,0%,0,Not Started
 ER6360LT,W085,W085.DS17580,Produce Flask LTQRs,18-Sep-24,01-Oct-24,22-Apr-25,06-May-25,10,10,10,0%,0,Not Started
 ER6360LT,W085,W085.DS17570,Verify Testing and Approve Report (EDF),19-Sep-24,25-Sep-24,13-Mar-25 A,17-Apr-25,5,13,26,10%,0,In Progress
 ER6360LT,W085,W085.DS17520,Generate Rebuild Report,18-Sep-24,18-Sep-24,27-Dec-24 A,28-Feb-25 A,5,0,45,100%,,Completed
 ER6360LT,W085,W085.DS17510,"Assemble Flask, Deflection and Leak Tests",19-Jul-24,17-Sep-24,27-Nov-24 A,24-Dec-24 A,20,0,20,100%,,Completed
 ER6360LT,W085,W085.DS17500,Verify All Parts Ready for Assembly,16-Jul-24,18-Jul-24,22-Nov-24 A,26-Nov-24 A,1,0,3,100%,,Completed
 ER6360LT,W085,W085.DS17420,Verify Painting Complete (EDF),09-Jul-24,15-Jul-24,01-Aug-24 A,07-Aug-24 A,1,0,5,100%,,Completed
 ER6360LT,W085,W085.DS17360,Paint Flask Lid Topside,02-Apr-24,08-Jul-24,02-Apr-24 A,31-Jul-24 A,7,0,85,100%,,Completed
 ER6360LT,W085,W085.DS17350,Verify Painting Complete (EDF),09-Jul-24,09-Jul-24,01-Aug-24 A,06-Aug-24 A,1,0,4,100%,,Completed
 ER6360LT,W085,W085.DS17280,Paint Flask Base,15-Apr-24,30-Apr-24,15-Apr-24 A,30-Apr-24 A,11,0,12,100%,,Completed
 ER6360LT,W085,W085.DS17270,Verify Painting Complete (EDF),09-Jul-24,15-Jul-24,01-Aug-24 A,07-Aug-24 A,1,0,5,100%,,Completed
 ER6360LT,W085,W085.DS17230,Paint Flask Body,02-Apr-24,08-Jul-24,02-Apr-24 A,31-Jul-24 A,10,0,85,100%,,Completed
 ER6360LT,W085,W085.DS17220,Approve Refurbishment Report,26-Jan-24,08-Mar-24,26-Jan-24 A,08-Mar-24 A,5,0,31,100%,,Completed
 ER6360LT,W085,W085.DS17210,Produce Refurbishment Report,14-Nov-23,25-Jan-24,14-Nov-23 A,25-Jan-24 A,10,0,50,100%,,Completed
 ER6360LT,W085,W085.DS17150,Verify Repairs and NDT Complete (EDF),08-Sep-23,14-Sep-23,08-Sep-23 A,14-Sep-23 A,5,0,5,100%,,Completed
 ER6360LT,W085,W085.DS17100,Verify Repairs and NDT Complete (EDF),11-Mar-24,18-Mar-24,11-Mar-24 A,18-Mar-24 A,5,0,6,100%,,Completed
 ER6360LT,W085,W085.DS17060,Refurbish Flask Base,23-Jun-23,01-Nov-23,23-Jun-23 A,01-Nov-23 A,15,0,93,100%,,Completed
 ER6360LT,W085,W085.DS17050,Verify Repairs and NDT Complete (EDF),26-May-23,03-Jun-24,26-May-23 A,01-Apr-25,5,0,469,100%,0,In Progress
 ER6360LT,W085,W085.DS17030,Refurbish Flask Body,08-May-23,25-May-23,08-May-23 A,25-May-23 A,15,0,13,100%,,Completed
 ER6360LT,W085,W085.DS16900,Verify Inspection and Testing Report (EDF),,30-Nov-22,,30-Nov-22 A,0,0,0,100%,,Completed
 ER6360LT,W085,W085.DS16890,Approve NDT Inspection Report (EDF),21-Oct-22,30-Nov-22,21-Oct-22 A,30-Nov-22 A,5,0,35,100%,,Completed
 ER6360LT,W085,W085.DS16880,Submit NDT Reports,,20-Oct-22,,20-Oct-22 A,0,0,0,100%,,Completed
 ER6360LT,W085,W085.DS16870,Produce Final NDT Inspection Report,16-Oct-22,20-Oct-22,16-Oct-22 A,20-Oct-22 A,5,0,5,100%,,Completed
 ER6360LT,W085,W085.DS16860,3rd Party Sign-off,16-Oct-22,17-Oct-22,16-Oct-22 A,17-Oct-22 A,2,0,2,100%,,Completed
 ER6360LT,W085,W085.DS16850,Undertake DPI,12-Oct-22,14-Oct-22,12-Oct-22 A,14-Oct-22 A,3,0,3,100%,,Completed
 ER6360LT,W085,W085.DS16840,Conduct Full Visual Inspection,10-Oct-22,11-Oct-22,10-Oct-22 A,11-Oct-22 A,2,0,2,100%,,Completed
 ER6360LT,W085,W085.DS16830,Minor Repairs,04-Oct-22,09-Oct-22,04-Oct-22 A,09-Oct-22 A,5,0,5,100%,,Completed
 ER6360LT,W085,W085.DS16820,Blast Flask Lid,02-Oct-22,03-Oct-22,02-Oct-22 A,03-Oct-22 A,2,0,2,100%,,Completed
 ER6360LT,W085,W085.DS16790,Approve NDT Inspection Report (EDF),23-Oct-22,30-Nov-22,23-Oct-22 A,30-Nov-22 A,5,0,34,100%,,Completed
 ER6360LT,W085,W085.DS16780,Submit NDT Reports,,21-Oct-22,,21-Oct-22 A,0,0,0,100%,,Completed
 ER6360LT,W085,W085.DS16770,Produce Final NDT Inspection Report,20-Oct-22,21-Oct-22,20-Oct-22 A,21-Oct-22 A,2,0,2,100%,,Completed
 ER6360LT,W085,W085.DS16760,3rd Party Sign-off,20-Oct-22,20-Oct-22,20-Oct-22 A,20-Oct-22 A,1,0,1,100%,,Completed
 ER6360LT,W085,W085.DS16750,Undertake DPI,19-Oct-22,19-Oct-22,19-Oct-22 A,19-Oct-22 A,1,0,1,100%,,Completed
 ER6360LT,W085,W085.DS16740,Conduct Full Visual Inspection,18-Oct-22,18-Oct-22,18-Oct-22 A,18-Oct-22 A,1,0,1,100%,,Completed
 ER6360LT,W085,W085.DS16730,Minor Repairs,17-Oct-22,17-Oct-22,17-Oct-22 A,17-Oct-22 A,1,0,1,100%,,Completed
 ER6360LT,W085,W085.DS16720,Blast Flask Base,16-Oct-22,16-Oct-22,16-Oct-22 A,16-Oct-22 A,1,0,1,100%,,Completed
 ER6360LT,W085,W085.DS16710,Insert in Yellow box and Turn,14-Oct-22,14-Oct-22,14-Oct-22 A,14-Oct-22 A,1,0,1,100%,,Completed
 ER6360LT,W085,W085.DS16700,3rd Party Sign-off,14-Oct-22,04-Nov-22,14-Oct-22 A,04-Nov-22 A,1,0,19,100%,,Completed
 ER6360LT,W085,W085.DS16690,Undertake DPI and Produce Report,12-Oct-22,13-Oct-22,12-Oct-22 A,13-Oct-22 A,2,0,2,100%,,Completed
 ER6360LT,W085,W085.DS16680,Conduct Full Visual Inspection,11-Oct-22,11-Oct-22,11-Oct-22 A,11-Oct-22 A,1,0,1,100%,,Completed
 ER6360LT,W085,W085.DS16670,Minor Repairs,05-Oct-22,10-Oct-22,05-Oct-22 A,10-Oct-22 A,5,0,5,100%,,Completed
 ER6360LT,W085,W085.DS16660,Blast Flask body,03-Oct-22,04-Oct-22,03-Oct-22 A,04-Oct-22 A,1,0,2,100%,,Completed
 ER6360LT,W085,W085.DS16650,Clean Flask,02-Oct-22,02-Oct-22,02-Oct-22 A,02-Oct-22 A,1,0,1,100%,,Completed
 ER6360LT,W085,W085.DS16640,Transit of Sixth Flask from EDF,,01-Jun-22,,01-Jun-22 A,0,0,0,100%,,Completed
 ER6360LT,W085,W085.DS16630,Flask 6 - Flask Licensing INA Approval of Cat C,13-Nov-24,26-Nov-24,19-Jun-25,02-Jul-25,10,10,10,0%,0,Not Started
 ER6360LT,W085,W085.DS16600,Gate C-D Flask 6 Cost Summary,02-Oct-22,26-Nov-24,02-Oct-22 A,02-Jul-25,246,63,694,50%,0,In Progress
 ER6360LT,W085,W085.DS16570,Approve Flask LTQRs,24-Jun-24,05-Jul-24,30-Sep-24 A,02-Dec-24 A,10,0,46,100%,,Completed
 ER6360LT,W085,W085.DS16560,Produce Flask LTQRs,10-Jun-24,21-Jun-24,22-Jul-24 A,02-Aug-24 A,10,0,10,100%,,Completed
 ER6360LT,W085,W085.DS16550,Verify Testing and Approve Report (EDF),10-Jun-24,14-Jun-24,02-Jul-24 A,19-Jul-24 A,5,0,14,100%,,Completed
 ER6360LT,W085,W085.DS16500,Generate Rebuild Report,13-May-24,07-Jun-24,13-May-24 A,01-Apr-25,7,0,226,100%,27,In Progress
 ER6360LT,W085,W085.DS16490,"Assemble Flask, Deflection and Leak Tests",23-Apr-24,10-May-24,23-Apr-24 A,10-May-24 A,20,0,13,100%,,Completed
 ER6360LT,W085,W085.DS16480,Verify All Parts Ready for Assembly,22-Apr-24,22-Apr-24,22-Apr-24 A,22-Apr-24 A,2,0,1,100%,,Completed
 ER6360LT,W085,W085.DS16400,Verify Painting Complete (EDF),15-Apr-24,19-Apr-24,15-Apr-24 A,19-Apr-24 A,1,0,5,100%,,Completed
 ER6360LT,W085,W085.DS16340,Paint Flask Lid Topside,04-Mar-24,12-Apr-24,04-Mar-24 A,12-Apr-24 A,6,0,28,100%,,Completed
 ER6360LT,W085,W085.DS16330,Verify Painting Complete (EDF),15-Apr-24,19-Apr-24,15-Apr-24 A,19-Apr-24 A,1,0,5,100%,,Completed
 ER6360LT,W085,W085.DS16260,Paint Flask Base,04-Mar-24,12-Apr-24,04-Mar-24 A,12-Apr-24 A,15,0,28,100%,,Completed
 ER6360LT,W085,W085.DS16250,Verify Painting Complete (EDF),15-Apr-24,19-Apr-24,15-Apr-24 A,19-Apr-24 A,1,0,5,100%,,Completed
 ER6360LT,W085,W085.DS16210,Paint Flask Body,12-Feb-24,12-Apr-24,12-Feb-24 A,12-Apr-24 A,16,0,43,100%,,Completed
 ER6360LT,W085,W085.DS16200,Approve Refurbishment Report,03-Oct-23,16-Oct-23,03-Oct-23 A,16-Oct-23 A,9,0,10,100%,,Completed
 ER6360LT,W085,W085.DS16190,Produce Refurbishment Report (Completion Pack),01-Sep-23,03-Jun-24,01-Sep-23 A,01-Apr-25,14,0,401,100%,27,In Progress
 ER6360LT,W085,W085.DS16130,Verify Repairs and NDT Complete (EDF),07-Sep-23,08-Sep-23,07-Sep-23 A,08-Sep-23 A,1,0,2,100%,,Completed
 ER6360LT,W085,W085.DS16080,Verify Repairs and NDT Complete (EDF),11-Dec-23,11-Dec-23,11-Dec-23 A,11-Dec-23 A,5,0,1,100%,,Completed
 ER6360LT,W085,W085.DS16040,Refurbish Flask Base,08-Aug-23,24-Nov-23,08-Aug-23 A,24-Nov-23 A,2,0,78,100%,,Completed
 ER6360LT,W085,W085.DS16030,Verify Repairs and NDT Complete (EDF),08-Aug-23,11-Aug-23,08-Aug-23 A,11-Aug-23 A,5,0,4,100%,,Completed
 ER6360LT,W085,W085.DS15990,Refurbish Flask Body,11-May-23,03-Jun-24,11-May-23 A,01-Apr-25,3,0,480,100%,27,In Progress
 ER6360LT,W085,W085.DS15900,Conduct Full Visual Inspection,03-Jul-22,03-Jul-22,03-Jul-22 A,03-Jul-22 A,1,0,1,100%,,Completed
 ER6360LT,W085,W085.DS15890,"Blast Flask Pintle, Trunnion, etc.",01-Jul-22,01-Jul-22,01-Jul-22 A,01-Jul-22 A,1,0,1,100%,,Completed
 ER6360LT,W085,W085.DS15880,Verify Inspection and Testing Report (EDF),,28-Nov-22,,28-Nov-22 A,0,0,0,100%,,Completed
 ER6360LT,W085,W085.DS15870,Approve NDT Inspection Report (EDF),11-Oct-22,28-Nov-22,11-Oct-22 A,28-Nov-22 A,5,0,42,100%,,Completed
 ER6360LT,W085,W085.DS15860,Submit NDT Reports,,10-Oct-22,,10-Oct-22 A,0,0,0,100%,,Completed
 ER6360LT,W085,W085.DS15850,Produce Final NDT Inspection Report,07-Oct-22,10-Oct-22,07-Oct-22 A,10-Oct-22 A,3,0,3,100%,,Completed
 ER6360LT,W085,W085.DS15840,3rd Party Sign-off,07-Oct-22,10-Oct-22,07-Oct-22 A,10-Oct-22 A,3,0,3,100%,,Completed
 ER6360LT,W085,W085.DS15830,Undertake DPI,05-Oct-22,06-Oct-22,05-Oct-22 A,06-Oct-22 A,2,0,2,100%,,Completed
 ER6360LT,W085,W085.DS15820,Conduct Full Visual Inspection,02-Oct-22,04-Oct-22,02-Oct-22 A,04-Oct-22 A,3,0,3,100%,,Completed
 ER6360LT,W085,W085.DS15810,Minor Repairs,01-Jul-22,04-Jul-22,01-Jul-22 A,04-Jul-22 A,2,0,2,100%,,Completed
 ER6360LT,W085,W085.DS15800,Blast Flask Lid,01-Jul-22,01-Jul-22,01-Jul-22 A,01-Jul-22 A,1,0,1,100%,,Completed
 ER6360LT,W085,W085.DS15790,Verify Inspection and Testing Complete,,28-Nov-22,,28-Nov-22 A,0,0,0,100%,,Completed
 ER6360LT,W085,W085.DS15770,Approve NDT Inspection Report (EDF),23-Oct-22,28-Nov-22,23-Oct-22 A,28-Nov-22 A,5,0,32,100%,,Completed
 ER6360LT,W085,W085.DS15760,Submit NDT Reports,,21-Oct-22,,21-Oct-22 A,0,0,0,100%,,Completed
 ER6360LT,W085,W085.DS15750,Produce Final NDT Inspection Report,11-Oct-22,21-Oct-22,11-Oct-22 A,21-Oct-22 A,10,0,10,100%,,Completed
 ER6360LT,W085,W085.DS15740,3rd Party Sign-off,11-Oct-22,11-Oct-22,11-Oct-22 A,11-Oct-22 A,1,0,1,100%,,Completed
 ER6360LT,W085,W085.DS15730,Undertake DPI,10-Oct-22,10-Oct-22,10-Oct-22 A,10-Oct-22 A,1,0,1,100%,,Completed
 ER6360LT,W085,W085.DS15720,Conduct Full Visual Inspection,09-Oct-22,09-Oct-22,09-Oct-22 A,09-Oct-22 A,1,0,1,100%,,Completed
 ER6360LT,W085,W085.DS15710,Minor Repairs,07-Oct-22,07-Oct-22,07-Oct-22 A,07-Oct-22 A,1,0,1,100%,,Completed
 ER6360LT,W085,W085.DS15700,Blast Flask Base,06-Oct-22,06-Oct-22,06-Oct-22 A,06-Oct-22 A,1,0,1,100%,,Completed
 ER6360LT,W085,W085.DS15690,Insert in Yellow box and Turn,06-Oct-22,06-Oct-22,06-Oct-22 A,06-Oct-22 A,1,0,1,100%,,Completed
 ER6360LT,W085,W085.DS15680,3rd Party Sign-off,06-Oct-22,06-Oct-22,06-Oct-22 A,06-Oct-22 A,1,0,1,100%,,Completed
 ER6360LT,W085,W085.DS15670,Undertake DPI,05-Oct-22,05-Oct-22,05-Oct-22 A,05-Oct-22 A,1,0,1,100%,,Completed
 ER6360LT,W085,W085.DS15660,Conduct Full Visual Inspection,02-Oct-22,04-Oct-22,02-Oct-22 A,04-Oct-22 A,3,0,3,100%,,Completed
 ER6360LT,W085,W085.DS15650,Minor Repairs,12-Jul-22,02-Oct-22,12-Jul-22 A,02-Oct-22 A,10,0,69,100%,,Completed
 ER6360LT,W085,W085.DS15640,Blast Flask body,11-Jul-22,12-Jul-22,11-Jul-22 A,12-Jul-22 A,1,0,1,100%,,Completed
 ER6360LT,W085,W085.DS15630,Clean Flask,11-Jul-22,11-Jul-22,11-Jul-22 A,11-Jul-22 A,1,0,1,100%,,Completed
 ER6360LT,W085,W085.DS15620,Transit of Fifth Flask from EDF,,01-Jun-22,,01-Jun-22 A,0,0,0,100%,,Completed
 ER6360LT,W085,W085.DS15610,Flask 5 - Flask Licensing INA Approve Cat C Mod,05-Aug-24,16-Aug-24,04-Jun-25,17-Jun-25,10,10,10,0%,5,Not Started
 ER6360LT,W085,W085.DS15580,Gate C-D Flask 5 Cost Summary,11-Jul-22,16-Aug-24,11-Jul-22 A,17-Jun-25,117,52,742,70%,5,In Progress
 ER6360LT,W085,W085.DS15560,Writeup Pressure Test Report and Submit,11-Oct-22,11-Oct-22,11-Oct-22 A,11-Oct-22 A,1,0,1,100%,,Completed
 ER6360LT,W085,W085.DS15550,Approve Flask LTQRs,18-Jun-24,01-Jul-24,15-Jul-24 A,26-Jul-24 A,10,0,10,100%,,Completed
 ER6360LT,W085,W085.DS15540,Produce Flask LTQRs,03-Jun-24,17-Jun-24,01-Jul-24 A,12-Jul-24 A,10,0,10,100%,,Completed
 ER6360LT,W085,W085.DS15530,Verify Testing and Approve Report (EDF),20-May-24,28-May-24,20-May-24 A,28-May-24 A,5,0,6,100%,,Completed
 ER6360LT,W085,W085.DS15480,Generate Rebuild Report,13-May-24,17-May-24,13-May-24 A,17-May-24 A,5,0,5,100%,,Completed
 ER6360LT,W085,W085.DS15470,"Assemble Flask, Deflection and Leak Tests",24-Apr-24,10-May-24,24-Apr-24 A,10-May-24 A,15,0,12,100%,,Completed
 ER6360LT,W085,W085.DS15460,Verify All Parts Ready for Assembly,23-Apr-24,23-Apr-24,23-Apr-24 A,23-Apr-24 A,2,0,1,100%,,Completed
 ER6360LT,W085,W085.DS15380,Verify Painting Complete (EDF),17-Apr-24,22-Apr-24,17-Apr-24 A,22-Apr-24 A,1,0,4,100%,,Completed
 ER6360LT,W085,W085.DS15320,Paint Flask Lid Topside,24-Jan-24,16-Apr-24,24-Jan-24 A,16-Apr-24 A,6,0,58,100%,,Completed
 ER6360LT,W085,W085.DS15310,Verify Painting Complete (EDF),11-Oct-23,11-Oct-23,11-Oct-23 A,11-Oct-23 A,1,0,1,100%,,Completed
 ER6360LT,W085,W085.DS15240,Paint Flask Base,02-Oct-23,10-Oct-23,02-Oct-23 A,10-Oct-23 A,12,0,7,100%,,Completed
 ER6360LT,W085,W085.DS15230,Verify Painting Complete (EDF),17-Apr-24,22-Apr-24,17-Apr-24 A,22-Apr-24 A,1,0,4,100%,,Completed
 ER6360LT,W085,W085.DS15190,Paint Flask Body,12-Oct-23,16-Apr-24,12-Oct-23 A,16-Apr-24 A,10,0,129,100%,,Completed
 ER6360LT,W085,W085.DS15180,Approve Refurbishment Report (Completion pack),31-Aug-23,13-Nov-23,31-Aug-23 A,13-Nov-23 A,10,0,53,100%,,Completed
 ER6360LT,W085,W085.DS15170,Produce Refurbishment Report (Completion pack),09-Aug-23,02-Oct-23,09-Aug-23 A,02-Oct-23 A,15,0,38,100%,,Completed
 ER6360LT,W085,W085.DS15110,Verify Repairs and NDT Complete (EDF),27-Jul-23,07-Sep-23,27-Jul-23 A,07-Sep-23 A,5,0,30,100%,,Completed
 ER6360LT,W085,W085.DS15060,Verify Repairs and NDT Complete (EDF),01-Sep-23,07-Sep-23,01-Sep-23 A,07-Sep-23 A,5,0,5,100%,,Completed
 ER6360LT,W085,W085.DS15020,Refurbish Flask Base,24-Apr-23,10-May-23,24-Apr-23 A,10-May-23 A,10,0,11,100%,,Completed
 ER6360LT,W085,W085.DS15010,Verify Repairs and NDT Complete (EDF),21-Apr-23,27-Apr-23,21-Apr-23 A,27-Apr-23 A,5,0,5,100%,,Completed
 ER6360LT,W085,W085.DS14970,Refurbish Flask Body,10-Apr-23,21-Apr-23,10-Apr-23 A,21-Apr-23 A,5,0,8,100%,,Completed
 ER6360LT,W085,W085.DS14880,Conduct Full Visual Inspection,03-Jul-22,03-Jul-22,03-Jul-22 A,03-Jul-22 A,1,0,1,100%,,Completed
 ER6360LT,W085,W085.DS14870,"Blast Flask Pintle, Trunnion, etc.",01-Jul-22,01-Jul-22,01-Jul-22 A,01-Jul-22 A,1,0,1,100%,,Completed
 ER6360LT,W085,W085.DS14860,Verify Inspection and Testing Report (EDF),,01-Nov-22,,01-Nov-22 A,0,0,0,100%,,Completed
 ER6360LT,W085,W085.DS14850,Approve NDT Inspection Report (EDF),27-Oct-22,01-Nov-22,27-Oct-22 A,01-Nov-22 A,5,0,5,100%,,Completed
 ER6360LT,W085,W085.DS14840,Submit NDT Reports,,26-Oct-22,,26-Oct-22 A,0,0,0,100%,,Completed
 ER6360LT,W085,W085.DS14830,Produce Final NDT Inspection Report,15-Aug-22,26-Oct-22,15-Aug-22 A,26-Oct-22 A,2,0,62,100%,,Completed
 ER6360LT,W085,W085.DS14820,3rd Party Sign-off,15-Aug-22,16-Aug-22,15-Aug-22 A,16-Aug-22 A,1,0,1,100%,,Completed
 ER6360LT,W085,W085.DS14810,Undertake DPI,14-Aug-22,15-Aug-22,14-Aug-22 A,15-Aug-22 A,1,0,1,100%,,Completed
 ER6360LT,W085,W085.DS14800,Conduct Full Visual Inspection,14-Aug-22,14-Aug-22,14-Aug-22 A,14-Aug-22 A,1,0,1,100%,,Completed
 ER6360LT,W085,W085.DS14790,Minor Repairs,01-Jul-22,12-Aug-22,01-Jul-22 A,12-Aug-22 A,3,0,37,100%,,Completed
 ER6360LT,W085,W085.DS14780,Blast Flask Lid,01-Jul-22,01-Jul-22,01-Jul-22 A,01-Jul-22 A,1,0,1,100%,,Completed
 ER6360LT,W085,W085.DS14770,Verify Inspection and Testing Complete,12-Oct-22,04-Nov-22,12-Oct-22 A,04-Nov-22 A,1,0,21,100%,,Completed
 ER6360LT,W085,W085.DS14750,Approve NDT Inspection Report (EDF),06-Oct-22,11-Oct-22,06-Oct-22 A,11-Oct-22 A,5,0,5,100%,,Completed
 ER6360LT,W085,W085.DS14740,Submit NDT Reports,,05-Oct-22,,05-Oct-22 A,0,0,0,100%,,Completed
 ER6360LT,W085,W085.DS14730,1,04-Oct-22,05-Oct-22,04-Oct-22 A,05-Oct-22 A,2,0,2,100%,,Completed
 ER6360LT,W085,W085.DS14720,3rd Party Sign-off,04-Oct-22,04-Oct-22,04-Oct-22 A,04-Oct-22 A,1,0,1,100%,,Completed
 ER6360LT,W085,W085.DS14710,Undertake DPI,03-Oct-22,03-Oct-22,03-Oct-22 A,03-Oct-22 A,1,0,1,100%,,Completed
 ER6360LT,W085,W085.DS14700,Conduct Full Visual Inspection,02-Oct-22,02-Oct-22,02-Oct-22 A,02-Oct-22 A,1,0,1,100%,,Completed
 ER6360LT,W085,W085.DS14690,Minor Repairs,09-Sep-22,02-Oct-22,09-Sep-22 A,02-Oct-22 A,1,0,19,100%,,Completed
 ER6360LT,W085,W085.DS14680,Blast Flask Base,01-Sep-22,08-Sep-22,01-Sep-22 A,08-Sep-22 A,1,0,7,100%,,Completed
 ER6360LT,W085,W085.DS14670,Insert in Yellow box and Turn,01-Sep-22,01-Sep-22,01-Sep-22 A,01-Sep-22 A,1,0,1,100%,,Completed
 ER6360LT,W085,W085.DS14660,3rd Party Sign-off,02-Oct-22,02-Oct-22,02-Oct-22 A,02-Oct-22 A,1,0,1,100%,,Completed
 ER6360LT,W085,W085.DS14650,Undertake DPI and Produce Report,26-Aug-22,02-Oct-22,26-Aug-22 A,02-Oct-22 A,2,0,30,100%,,Completed
 ER6360LT,W085,W085.DS14640,Conduct Full Visual Inspection,11-Aug-22,11-Aug-22,11-Aug-22 A,11-Aug-22 A,1,0,0,100%,,Completed
 ER6360LT,W085,W085.DS14630,Minor Repairs,10-Aug-22,10-Aug-22,10-Aug-22 A,10-Aug-22 A,3,0,0,100%,,Completed
 ER6360LT,W085,W085.DS14620,Blast Flask body,01-Jul-22,03-Jul-22,01-Jul-22 A,03-Jul-22 A,1,0,1,100%,,Completed
 ER6360LT,W085,W085.DS14610,Clean Flask,01-Jul-22,01-Jul-22,01-Jul-22 A,01-Jul-22 A,1,0,1,100%,,Completed
 ER6360LT,W085,W085.DS14600,Transit of Fourth Flask from EDF,,01-Jun-22,,01-Jun-22 A,0,0,0,100%,,Completed
 ER6360LT,W085,W085.DS14590,Flask 4 - Flask Licensing INA Approval of Cat C,30-Jul-24,12-Aug-24,30-Apr-25,14-May-25,10,10,10,0%,28,Not Started
 ER6360LT,W085,W085.DS14560,Gate C-D Flask 4 Cost Summary,01-Jul-22,12-Aug-24,01-Jul-22 A,14-May-25,135,29,725,70%,28,In Progress
 ER6360LT,W085,W085.DS14530,Approve Flask LTQRs,04-Mar-24,26-Apr-24,04-Mar-24 A,26-Apr-24 A,10,0,38,100%,,Completed
 ER6360LT,W085,W085.DS14520,Produce Flask LTQRs,25-Jan-24,19-Feb-24,25-Jan-24 A,19-Feb-24 A,10,0,18,100%,,Completed
 ER6360LT,W085,W085.DS14510,Verify Testing and Approve Report (EDF),22-Jan-24,26-Jan-24,22-Jan-24 A,26-Jan-24 A,5,0,5,100%,,Completed
 ER6360LT,W085,W085.DS14460,Generate Rebuild Report,07-Dec-23,19-Jan-24,07-Dec-23 A,19-Jan-24 A,5,0,29,100%,,Completed
 ER6360LT,W085,W085.DS14450,"Assemble Flask, Deflection and Leak Tests",01-Dec-23,06-Dec-23,01-Dec-23 A,06-Dec-23 A,20,0,4,100%,,Completed
 ER6360LT,W085,W085.DS14440,Verify All Parts Ready for Assembly,03-Nov-23,28-Nov-23,03-Nov-23 A,28-Nov-23 A,1,0,18,100%,,Completed
 ER6360LT,W085,W085.DS14360,Verify Painting Complete (EDF),16-Oct-23,16-Oct-23,16-Oct-23 A,16-Oct-23 A,1,0,1,100%,,Completed
 ER6360LT,W085,W085.DS14300,Paint Flask Lid Topside,25-Sep-23,13-Oct-23,25-Sep-23 A,13-Oct-23 A,3,0,15,100%,,Completed
 ER6360LT,W085,W085.DS14290,Verify Painting Complete (EDF),25-Sep-23,25-Sep-23,25-Sep-23 A,25-Sep-23 A,1,0,1,100%,,Completed
 ER6360LT,W085,W085.DS14220,Paint Flask Base,25-Aug-23,22-Sep-23,25-Aug-23 A,22-Sep-23 A,13,0,20,100%,,Completed
 ER6360LT,W085,W085.DS14210,Verify Painting Complete (EDF),16-Oct-23,16-Oct-23,16-Oct-23 A,16-Oct-23 A,1,0,1,100%,,Completed
 ER6360LT,W085,W085.DS14170,Paint Flask Body,25-Sep-23,13-Oct-23,25-Sep-23 A,13-Oct-23 A,12,0,15,100%,,Completed
 ER6360LT,W085,W085.DS14160,Approve Refurbishment Report,14-Aug-23,14-Sep-23,14-Aug-23 A,14-Sep-23 A,10,0,23,100%,,Completed
 ER6360LT,W085,W085.DS14150,Produce Refurbishment Report,01-Aug-23,11-Aug-23,01-Aug-23 A,11-Aug-23 A,10,0,8,100%,,Completed
 ER6360LT,W085,W085.DS14090,Verify Repairs and NDT Complete (EDF),13-Apr-23,19-Apr-23,13-Apr-23 A,19-Apr-23 A,5,0,5,100%,,Completed
 ER6360LT,W085,W085.DS14040,Verify Repairs and NDT Complete (EDF),18-Aug-23,07-Sep-23,18-Aug-23 A,07-Sep-23 A,5,0,14,100%,,Completed
 ER6360LT,W085,W085.DS14000,Refurbish Flask Base,31-Mar-23,14-Apr-23,31-Mar-23 A,14-Apr-23 A,4,0,9,100%,,Completed
 ER6360LT,W085,W085.DS13990,Verify Repairs and NDT Complete (EDF),29-Mar-23,29-Mar-23,29-Mar-23 A,29-Mar-23 A,5,0,1,100%,,Completed
 ER6360LT,W085,W085.DS13950,Refurbish Flask Body,17-Feb-23,18-May-23,17-Feb-23 A,18-May-23 A,19,0,61,100%,,Completed
 ER6360LT,W085,W085.DS13860,Conduct Full Visual Inspection,02-Jul-22,02-Jul-22,02-Jul-22 A,02-Jul-22 A,1,0,1,100%,,Completed
 ER6360LT,W085,W085.DS13850,"Blast Flask Pintle, Trunnion, etc.",01-Jul-22,01-Jul-22,01-Jul-22 A,01-Jul-22 A,1,0,1,100%,,Completed
 ER6360LT,W085,W085.DS13840,Verify Inspection and Testing Report (EDF),,01-Nov-22,,01-Nov-22 A,0,0,0,100%,,Completed
 ER6360LT,W085,W085.DS13830,Approve NDT Inspection Report (EDF),16-Aug-22,01-Nov-22,16-Aug-22 A,01-Nov-22 A,5,0,78,100%,,Completed
 ER6360LT,W085,W085.DS13820,Submit NDT Reports,,16-Aug-22,,16-Aug-22 A,0,0,0,100%,,Completed
 ER6360LT,W085,W085.DS13810,Produce Final NDT Inspection Report,14-Aug-22,16-Aug-22,14-Aug-22 A,16-Aug-22 A,2,0,2,100%,,Completed
 ER6360LT,W085,W085.DS13800,3rd Party Sign-off,14-Aug-22,15-Aug-22,14-Aug-22 A,15-Aug-22 A,1,0,1,100%,,Completed
 ER6360LT,W085,W085.DS13790,Undertake DPI,13-Aug-22,14-Aug-22,13-Aug-22 A,14-Aug-22 A,1,0,1,100%,,Completed
 ER6360LT,W085,W085.DS13780,Conduct Full Visual Inspection,13-Aug-22,13-Aug-22,13-Aug-22 A,13-Aug-22 A,1,0,1,100%,,Completed
 ER6360LT,W085,W085.DS13770,Minor Repairs,01-Jul-22,12-Aug-22,01-Jul-22 A,12-Aug-22 A,3,0,43,100%,,Completed
 ER6360LT,W085,W085.DS13760,Blast Flask Lid,01-Jul-22,01-Jul-22,01-Jul-22 A,01-Jul-22 A,1,0,1,100%,,Completed
 ER6360LT,W085,W085.DS13750,Verify Inspection and Testing Complete,,01-Nov-22,,01-Nov-22 A,0,0,0,100%,,Completed
 ER6360LT,W085,W085.DS13730,Approve NDT Inspection Report (EDF),01-Oct-22,01-Nov-22,01-Oct-22 A,01-Nov-22 A,5,0,32,100%,,Completed
 ER6360LT,W085,W085.DS13720,Submit NDT Reports,,01-Oct-22,,01-Oct-22 A,0,0,0,100%,,Completed
 ER6360LT,W085,W085.DS13710,Produce Final NDT Inspection Report,07-Aug-22,01-Oct-22,07-Aug-22 A,01-Oct-22 A,2,0,55,100%,,Completed
 ER6360LT,W085,W085.DS13700,3rd Party Sign-off,07-Aug-22,07-Aug-22,07-Aug-22 A,07-Aug-22 A,1,0,1,100%,,Completed
 ER6360LT,W085,W085.DS13690,Undertake DPI,06-Aug-22,06-Aug-22,06-Aug-22 A,06-Aug-22 A,1,0,1,100%,,Completed
 ER6360LT,W085,W085.DS13680,Conduct Full Visual Inspection,05-Aug-22,05-Aug-22,05-Aug-22 A,05-Aug-22 A,1,0,1,100%,,Completed
 ER6360LT,W085,W085.DS13670,Minor Repairs,04-Aug-22,04-Aug-22,04-Aug-22 A,04-Aug-22 A,1,0,1,100%,,Completed
 ER6360LT,W085,W085.DS13660,Blast Flask Base,03-Aug-22,03-Aug-22,03-Aug-22 A,03-Aug-22 A,1,0,1,100%,,Completed
 ER6360LT,W085,W085.DS13650,Insert in Yellow box and Turn,03-Aug-22,03-Aug-22,03-Aug-22 A,03-Aug-22 A,1,0,1,100%,,Completed
 ER6360LT,W085,W085.DS13640,3rd Party Sign-off,03-Aug-22,03-Aug-22,03-Aug-22 A,03-Aug-22 A,1,0,1,100%,,Completed
 ER6360LT,W085,W085.DS13630,Undertake DPI,01-Aug-22,02-Aug-22,01-Aug-22 A,02-Aug-22 A,2,0,2,100%,,Completed
 ER6360LT,W085,W085.DS13620,Conduct Full Visual Inspection,29-Jul-22,29-Jul-22,29-Jul-22 A,29-Jul-22 A,1,0,1,100%,,Completed
 ER6360LT,W085,W085.DS13610,Minor Repairs,16-Jun-22,28-Jul-22,16-Jun-22 A,28-Jul-22 A,6,0,43,100%,,Completed
 ER6360LT,W085,W085.DS13600,Blast Flask body,15-Jun-22,16-Jun-22,15-Jun-22 A,16-Jun-22 A,1,0,1,100%,,Completed
 ER6360LT,W085,W085.DS13590,Clean Flask,15-Jun-22,15-Jun-22,15-Jun-22 A,15-Jun-22 A,1,0,1,100%,,Completed
 ER6360LT,W085,W085.DS13580,Transit of Third Flask from EDF,,01-Jun-22,,01-Jun-22 A,0,0,0,100%,,Completed
 ER6360LT,W085,W085.DS13570,Flask 3 - Flask Licensing INA Approval of Cat C,25-Jun-24,08-Jul-24,25-Jun-24 A,26-Jun-24 A,10,0,1,100%,,Completed
 ER6360LT,W085,W085.DS13540,Gate C-D Flask 3 Cost Summary,15-Jun-22,08-Jul-24,15-Jun-22 A,08-Jul-24 A,131,0,522,100%,,Completed
 ER6360LT,W085,W085.DS13510,Approve Flask LTQRs,03-Jan-24,08-Jan-24,03-Jan-24 A,08-Jan-24 A,10,0,4,100%,,Completed
 ER6360LT,W085,W085.DS13500,Produce Flask LTQRs,01-Sep-23,19-Sep-23,01-Sep-23 A,19-Sep-23 A,10,0,12,100%,,Completed
 ER6360LT,W085,W085.DS13490,Verify Testing and Approve Report (EDF),20-Sep-23,20-Oct-23,20-Sep-23 A,20-Oct-23 A,5,0,23,100%,,Completed
 ER6360LT,W085,W085.DS13440,Generate Rebuild Report,19-Sep-23,19-Sep-23,19-Sep-23 A,19-Sep-23 A,5,0,1,100%,,Completed
 ER6360LT,W085,W085.DS13430,"Assemble Flask, Deflection and Leak Tests",27-Jul-23,18-Sep-23,27-Jul-23 A,18-Sep-23 A,15,0,37,100%,,Completed
 ER6360LT,W085,W085.DS13420,Verify All Parts Ready for Assembly,17-May-23,07-Sep-23,17-May-23 A,07-Sep-23 A,1,0,80,100%,,Completed
 ER6360LT,W085,W085.DS13340,Verify Painting Complete (EDF),16-May-23,16-May-23,16-May-23 A,16-May-23 A,1,0,1,100%,,Completed
 ER6360LT,W085,W085.DS13280,Paint Flask Lid Topside,26-Apr-23,15-May-23,26-Apr-23 A,15-May-23 A,5,0,12,100%,,Completed
 ER6360LT,W085,W085.DS13270,Verify Painting Complete (EDF),25-Apr-23,25-Apr-23,25-Apr-23 A,25-Apr-23 A,1,0,1,100%,,Completed
 ER6360LT,W085,W085.DS13200,Paint Flask Base,11-Apr-23,24-Apr-23,11-Apr-23 A,24-Apr-23 A,13,0,10,100%,,Completed
 ER6360LT,W085,W085.DS13190,Verify Painting Complete (EDF),16-May-23,16-May-23,16-May-23 A,16-May-23 A,1,0,1,100%,,Completed
 ER6360LT,W085,W085.DS13150,Paint Flask Body,26-Apr-23,15-May-23,26-Apr-23 A,15-May-23 A,10,0,12,100%,,Completed
 ER6360LT,W085,W085.DS13140,Approve Refurbishment Report,11-May-23,23-May-23,11-May-23 A,23-May-23 A,9,0,9,100%,,Completed
 ER6360LT,W085,W085.DS13130,Produce Refurbishment Report,19-Apr-23,10-May-23,19-Apr-23 A,10-May-23 A,14,0,14,100%,,Completed
 ER6360LT,W085,W085.DS13070,Verify Repairs and NDT Complete (EDF),28-Feb-23,27-Mar-23,28-Feb-23 A,27-Mar-23 A,5,0,20,100%,,Completed
 ER6360LT,W085,W085.DS13020,Verify Repairs and NDT Complete (EDF),23-Feb-23,27-Mar-23,23-Feb-23 A,27-Mar-23 A,5,0,23,100%,,Completed
 ER6360LT,W085,W085.DS12980,Refurbish Base,31-Jan-23,22-Feb-23,31-Jan-23 A,22-Feb-23 A,17,0,17,100%,,Completed
 ER6360LT,W085,W085.DS12970,Verify Repairs and NDT Complete (EDF),31-Jan-23,10-Feb-23,31-Jan-23 A,10-Feb-23 A,5,0,9,100%,,Completed
 ER6360LT,W085,W085.DS12930,Refurbish Body,22-Dec-22,30-Jan-23,22-Dec-22 A,30-Jan-23 A,20,0,31,100%,,Completed
 ER6360LT,W085,W085.DS12850,Undertake DPI,07-Jun-22,09-Jun-22,07-Jun-22 A,09-Jun-22 A,2,0,2,100%,,Completed
 ER6360LT,W085,W085.DS12840,Conduct Full Visual Inspection,06-Jun-22,07-Jun-22,06-Jun-22 A,07-Jun-22 A,1,0,1,100%,,Completed
 ER6360LT,W085,W085.DS12830,"Blast Flask Pintle, Trunnion, etc.",05-Jun-22,06-Jun-22,05-Jun-22 A,06-Jun-22 A,1,0,1,100%,,Completed
 ER6360LT,W085,W085.DS12820,Verify Inspection and Testing Report (EDF),,08-Nov-22,,08-Nov-22 A,0,0,0,100%,,Completed
 ER6360LT,W085,W085.DS12810,Approve NDT Inspection Report (EDF),27-Oct-22,08-Nov-22,27-Oct-22 A,08-Nov-22 A,5,0,11,100%,,Completed
 ER6360LT,W085,W085.DS12800,Submit NDT Reports,,26-Oct-22,,26-Oct-22 A,0,0,0,100%,,Completed
 ER6360LT,W085,W085.DS12790,Produce Final NDT Inspection Report,03-Aug-22,26-Oct-22,03-Aug-22 A,26-Oct-22 A,2,0,72,100%,,Completed
 ER6360LT,W085,W085.DS12780,3rd Party Sign-off,03-Aug-22,03-Aug-22,03-Aug-22 A,03-Aug-22 A,1,0,1,100%,,Completed
 ER6360LT,W085,W085.DS12770,Undertake DPI,02-Aug-22,02-Aug-22,02-Aug-22 A,02-Aug-22 A,1,0,1,100%,,Completed
 ER6360LT,W085,W085.DS12760,Conduct Full Visual Inspection,26-Jul-22,01-Aug-22,26-Jul-22 A,01-Aug-22 A,1,0,6,100%,,Completed
 ER6360LT,W085,W085.DS12750,Minor Repairs,06-Jun-22,25-Jul-22,06-Jun-22 A,25-Jul-22 A,3,0,43,100%,,Completed
 ER6360LT,W085,W085.DS12740,Blast Flask Lid,06-Jun-22,06-Jun-22,06-Jun-22 A,06-Jun-22 A,1,0,1,100%,,Completed
 ER6360LT,W085,W085.DS12730,Verify Inspection and Testing Complete,,26-Oct-22,,26-Oct-22 A,0,0,0,100%,,Completed
 ER6360LT,W085,W085.DS12710,Approve NDT Inspection Report (EDF),11-Oct-22,26-Oct-22,11-Oct-22 A,26-Oct-22 A,5,0,14,100%,,Completed
 ER6360LT,W085,W085.DS12700,Submit NDT Reports,,10-Oct-22,,10-Oct-22 A,0,0,0,100%,,Completed
 ER6360LT,W085,W085.DS12690,Produce Final NDT Inspection Report,23-Aug-22,10-Oct-22,23-Aug-22 A,10-Oct-22 A,2,0,41,100%,,Completed
 ER6360LT,W085,W085.DS12680,3rd Party Sign-off,02-Oct-22,10-Oct-22,02-Oct-22 A,10-Oct-22 A,1,0,7,100%,,Completed
 ER6360LT,W085,W085.DS12670,Undertake DPI,22-Aug-22,22-Aug-22,22-Aug-22 A,22-Aug-22 A,1,0,0,100%,,Completed
 ER6360LT,W085,W085.DS12660,Conduct Full Visual Inspection,22-Aug-22,22-Aug-22,22-Aug-22 A,22-Aug-22 A,1,0,0,100%,,Completed
 ER6360LT,W085,W085.DS12650,Minor Repairs,08-Aug-22,19-Aug-22,08-Aug-22 A,19-Aug-22 A,1,0,10,100%,,Completed
 ER6360LT,W085,W085.DS12640,Blast Flask Base,07-Aug-22,07-Aug-22,07-Aug-22 A,07-Aug-22 A,1,0,1,100%,,Completed
 ER6360LT,W085,W085.DS12630,Insert in Yellow box and Turn,07-Aug-22,07-Aug-22,07-Aug-22 A,07-Aug-22 A,1,0,1,100%,,Completed
 ER6360LT,W085,W085.DS12620,3rd Party Sign-off,07-Aug-22,07-Aug-22,07-Aug-22 A,07-Aug-22 A,1,0,1,100%,,Completed
 ER6360LT,W085,W085.DS12610,Undertake DPI,04-Aug-22,05-Aug-22,04-Aug-22 A,05-Aug-22 A,2,0,2,100%,,Completed
 ER6360LT,W085,W085.DS12600,Conduct Full Visual Inspection,03-Aug-22,03-Aug-22,03-Aug-22 A,03-Aug-22 A,1,0,1,100%,,Completed
 ER6360LT,W085,W085.DS12590,Minor Repairs,06-Jun-22,02-Aug-22,06-Jun-22 A,02-Aug-22 A,8,0,50,100%,,Completed
 ER6360LT,W085,W085.DS12580,Blast Flask body,05-Jun-22,06-Jun-22,05-Jun-22 A,06-Jun-22 A,1,0,1,100%,,Completed
 ER6360LT,W085,W085.DS12570,Clean Flask,05-Jun-22,05-Jun-22,05-Jun-22 A,05-Jun-22 A,1,0,1,100%,,Completed
 ER6360LT,W085,W085.DS12560,Transit of Second Flask from EDF,,01-Jul-22,,01-Jul-22 A,0,0,0,100%,,Completed
 ER6360LT,W085,W085.DS12550,Flask 2 - Flask Licensing INA Approval of Cat C,06-Dec-24,19-Dec-24,20-May-25,03-Jun-25,10,10,10,0%,83,Not Started
 ER6360LT,W085,W085.DS12520,Gate C-D Flask 2 Cost Summary,05-Jun-22,08-Dec-23,05-Jun-22 A,08-Dec-23 A,128,0,385,100%,,Completed
 ER6360LT,W085,W085.TSP1140,EDF Inspection of Flasks post Transport,30-May-22,30-May-22,30-May-22 A,30-May-22 A,1,0,1,100%,,Completed
 ER6360LT,W085,W085.TSP1130,Flask Transport Window,09-May-22,27-May-22,09-May-22 A,27-May-22 A,15,0,15,100%,,Completed
 ER6360LT,W085,W085.TSP1120,Preps for Handover and Transport,06-May-22,06-May-22,06-May-22 A,06-May-22 A,1,0,1,100%,,Completed
 ER6360LT,W085,W085.TSP1110,Supplier RAMS Submission for Transport,03-May-22,04-May-22,03-May-22 A,04-May-22 A,2,0,2,100%,,Completed
 ER6360LT,W085,W085.TSP1090,Approval of Transport RAMS,05-May-22,05-May-22,05-May-22 A,05-May-22 A,1,0,1,100%,,Completed
 ER6360LT,W085,W085.TSP1070,Prepare Req for TSP Handover,22-Apr-22,29-Apr-22,22-Apr-22 A,29-Apr-22 A,6,0,6,100%,,Completed
 ER6360LT,W085,W085.TSP1060,Prepare Req for Flask Transport,28-Apr-22,29-Apr-22,28-Apr-22 A,29-Apr-22 A,2,0,2,100%,,Completed
 ER6360LT,W085,W085.TSP1050,Flask Transport Return Period,25-Apr-22,27-Apr-22,25-Apr-22 A,27-Apr-22 A,3,0,3,100%,,Completed
 ER6360LT,W085,W085.TSP1040,Handover Pricing Return Period,19-Apr-22,21-Apr-22,19-Apr-22 A,21-Apr-22 A,3,0,3,100%,,Completed
 ER6360LT,W085,W085.TSP1030,Issue Flask Transport Spec for Pricing,,22-Apr-22,,22-Apr-22 A,0,0,0,100%,,Completed
 ER6360LT,W085,W085.TSP1020,Issue Handover Spec for Pricing,,14-Apr-22,,14-Apr-22 A,0,0,0,100%,,Completed
 ER6360LT,W085,W085.TSP1010,Draft Specs for TSP Handover,01-Apr-22,14-Apr-22,01-Apr-22 A,14-Apr-22 A,5,0,10,100%,,Completed
 ER6360LT,W085,W085.TSP1000,Draft Specs for Flask Transport (Mammout),01-Apr-22,22-Apr-22,01-Apr-22 A,22-Apr-22 A,0,0,14,100%,,Completed
 ER6360LT,W085,W085.DS2260,Approve Flask LTQRs,25-Oct-24,07-Nov-24,20-Jan-25 A,25-Apr-25,10,17,68,50%,83,In Progress
 ER6360LT,W085,W085.DS2250,Produce Flask LTQRs,11-Oct-24,24-Oct-24,18-Nov-24 A,29-Nov-24 A,10,0,10,100%,,Completed
 ER6360LT,W085,W085.DS2240,Verify Testing and Approve Report (EDF),04-Oct-24,10-Oct-24,17-Sep-24 A,30-Sep-24 A,5,0,10,100%,,Completed
 ER6360LT,W085,W085.DS2190,"Assemble Flask, Deflection and Leak Tests",28-Jul-23,23-Oct-23,28-Jul-23 A,23-Oct-23 A,15,0,61,100%,,Completed
 ER6360LT,W085,W085.DS2170,Verify All Parts Ready for Assembly,25-Jul-23,01-Aug-23,25-Jul-23 A,01-Aug-23 A,1,0,5,100%,,Completed
 ER6360LT,W085,W085.DS2090,Verify Painting Complete (EDF),03-Jul-23,01-Aug-23,03-Jul-23 A,01-Aug-23 A,1,0,21,100%,,Completed
 ER6360LT,W085,W085.DS2030,Paint Lid Topside,20-Jun-23,03-Jul-23,20-Jun-23 A,03-Jul-23 A,5,0,10,100%,,Completed
 ER6360LT,W085,W085.DS2020,Verify Painting Complete (EDF),19-Jun-23,19-Jun-23,19-Jun-23 A,19-Jun-23 A,1,0,1,100%,,Completed
 ER6360LT,W085,W085.DS1950,Paint Flask Base,19-May-23,16-Jun-23,19-May-23 A,16-Jun-23 A,12,0,20,100%,,Completed
 ER6360LT,W085,W085.DS1940,Verify Painting Complete (EDF),03-Jul-23,01-Aug-23,03-Jul-23 A,01-Aug-23 A,1,0,21,100%,,Completed
 ER6360LT,W085,W085.DS1900,Paint Flask Body,20-Jun-23,03-Jul-23,20-Jun-23 A,03-Jul-23 A,8,0,10,100%,,Completed
 ER6360LT,W085,W085.DS1890,Approve Refurbishment Report,19-Apr-23,03-May-23,19-Apr-23 A,03-May-23 A,10,0,10,100%,,Completed
 ER6360LT,W085,W085.DS1880,Produce Refurbishment Report,27-Mar-23,18-Apr-23,27-Mar-23 A,18-Apr-23 A,14,0,15,100%,,Completed
 ER6360LT,W085,W085.DS1820,Verify Repairs and NDT Complete (EDF),26-Jan-23,21-Feb-23,26-Jan-23 A,21-Feb-23 A,5,0,19,100%,,Completed
 ER6360LT,W085,W085.DS1810,Refurbish Flask Lid,03-Jan-23,25-Jan-23,03-Jan-23 A,25-Jan-23 A,10,0,20,100%,,Completed
 ER6360LT,W085,W085.DS1770,Verify Repairs and NDT Complete (EDF),21-Feb-23,01-Mar-23,21-Feb-23 A,01-Mar-23 A,2,0,7,100%,,Completed
 ER6360LT,W085,W085.DS1760,Refurbish Flask Base,22-Dec-22,26-Jan-23,22-Dec-22 A,26-Jan-23 A,8,0,28,100%,,Completed
 ER6360LT,W085,W085.DS1720,Verify Repairs and NDT Complete (EDF),28-Nov-22,30-Nov-22,28-Nov-22 A,30-Nov-22 A,3,0,3,100%,,Completed
 ER6360LT,W085,W085.DS1710,Refurbish Flask Body,26-Oct-22,25-Nov-22,26-Oct-22 A,25-Nov-22 A,3,0,27,100%,,Completed
 ER6360LT,W085,W085.DS1650,Approve Inspection and Testing Report (EDF),,29-May-22,,29-May-22 A,0,0,0,100%,,Completed
 ER6360LT,W085,W085.DS1630,Approve NDT Inspection Report (EDF),25-May-22,29-May-22,25-May-22 A,29-May-22 A,5,0,5,100%,,Completed
 ER6360LT,W085,W085.DS1620,Submit NDT Reports,,24-May-22,,24-May-22 A,0,0,0,100%,,Completed
 ER6360LT,W085,W085.DS1610,Produce Final NDT Inspection Report,23-May-22,24-May-22,23-May-22 A,24-May-22 A,2,0,2,100%,,Completed
 ER6360LT,W085,W085.DS1600,3rd Party Sign-off,23-May-22,23-May-22,23-May-22 A,23-May-22 A,1,0,1,100%,,Completed
 ER6360LT,W085,W085.DS1590,Undertake DPI,21-May-22,22-May-22,21-May-22 A,22-May-22 A,2,0,2,100%,,Completed
 ER6360LT,W085,W085.DS1580,Conduct Full Visual Inspection,20-May-22,20-May-22,20-May-22 A,20-May-22 A,1,0,1,100%,,Completed
 ER6360LT,W085,W085.DS1560,"Blast Flask Pintle, Trunnion, etc.",19-May-22,19-May-22,19-May-22 A,19-May-22 A,1,0,1,100%,,Completed
 ER6360LT,W085,W085.DS1550,Verify Inspection and Testing Report (EDF),,12-Oct-22,,12-Oct-22 A,0,0,0,100%,,Completed
 ER6360LT,W085,W085.DS1530,Approve NDT Inspection Report (EDF),09-Oct-22,12-Oct-22,09-Oct-22 A,12-Oct-22 A,4,0,4,100%,,Completed
 ER6360LT,W085,W085.DS1520,Inspect Flask Lid Underside,04-Oct-22,08-Oct-22,04-Oct-22 A,08-Oct-22 A,5,0,5,100%,,Completed
 ER6360LT,W085,W085.DS1450,Verify Inspection and Testing Complete,,05-Oct-22,,05-Oct-22 A,0,0,0,100%,,Completed
 ER6360LT,W085,W085.DS1430,Approve NDT Inspection Report (EDF),01-Oct-22,05-Oct-22,01-Oct-22 A,05-Oct-22 A,5,0,5,100%,,Completed
 ER6360LT,W085,W085.DS1420,Inspect Flask Base,,01-Oct-22,,01-Oct-22 A,0,0,0,100%,,Completed
 ER6360LT,W085,W085.DS1410,Produce Final NDT Inspection Report,17-Jul-22,18-Jul-22,17-Jul-22 A,18-Jul-22 A,2,0,2,100%,,Completed
 ER6360LT,W085,W085.DS1400,3rd Party Sign-off,17-Jul-22,17-Jul-22,17-Jul-22 A,17-Jul-22 A,1,0,1,100%,,Completed
 ER6360LT,W085,W085.DS1390,Undertake DPI,16-Jul-22,16-Jul-22,16-Jul-22 A,16-Jul-22 A,1,0,1,100%,,Completed
 ER6360LT,W085,W085.DS1380,Conduct Full Visual Inspection,14-Jul-22,15-Jul-22,14-Jul-22 A,15-Jul-22 A,2,0,2,100%,,Completed
 ER6360LT,W085,W085.DS1370,Minor Repairs,11-Jul-22,13-Jul-22,11-Jul-22 A,13-Jul-22 A,3,0,3,100%,,Completed
 ER6360LT,W085,W085.DS1360,Blast Flask Base,10-Jul-22,10-Jul-22,10-Jul-22 A,10-Jul-22 A,1,0,1,100%,,Completed
 ER6360LT,W085,W085.DS1350,Insert in Yellow box and Turn,09-Jul-22,09-Jul-22,09-Jul-22 A,09-Jul-22 A,1,0,1,100%,,Completed
 ER6360LT,W085,W085.DS1340,3rd Party Sign-off,09-Jul-22,09-Jul-22,09-Jul-22 A,09-Jul-22 A,1,0,1,100%,,Completed
 ER6360LT,W085,W085.DS1330,Undertake DPI,07-Jul-22,08-Jul-22,07-Jul-22 A,08-Jul-22 A,2,0,2,100%,,Completed
 ER6360LT,W085,W085.DS1320,Conduct Full Visual Inspection,06-Jul-22,06-Jul-22,06-Jul-22 A,06-Jul-22 A,1,0,1,100%,,Completed
 ER6360LT,W085,W085.DS1310,Minor Repairs,26-May-22,05-Jul-22,26-May-22 A,05-Jul-22 A,2,0,41,100%,,Completed
 ER6360LT,W085,W085.DS1300,Blast Flask body,24-May-22,25-May-22,24-May-22 A,25-May-22 A,1,0,1,100%,,Completed
 ER6360LT,W085,W085.DS1290,Clean Flask,24-May-22,24-May-22,24-May-22 A,24-May-22 A,1,0,1,100%,,Completed
 ER6360LT,W085,W085.DS1280,Vacuum Dry,19-Dec-22,23-Dec-22,19-Dec-22 A,23-Dec-22 A,5,0,5,100%,,Completed
 ER6360LT,W085,W085.DS1270,Leak Testing on Valve,25-Jul-22,16-Dec-22,25-Jul-22 A,16-Dec-22 A,5,0,105,100%,,Completed
 ER6360LT,W085,W085.DS1260,Trunnion Deflection Test,30-May-22,06-Jun-22,30-May-22 A,06-Jun-22 A,5,0,5,100%,,Completed
 ER6360LT,W085,W085.DS1250,Pintle Deflection Test,23-May-22,27-May-22,23-May-22 A,27-May-22 A,5,0,5,100%,,Completed
 ER6360LT,W085,W085.DS1240,Base Void Pressure Test,16-May-22,20-May-22,16-May-22 A,20-May-22 A,5,0,5,100%,,Completed
 ER6360LT,W085,W085.DS1230,Approve Rebuild Assembly Plans (EDF),17-Oct-22,21-Oct-22,17-Oct-22 A,21-Oct-22 A,5,0,5,100%,,Completed
 ER6360LT,W085,W085.DS1220,Produce Rebuild Assembly Plans,03-Oct-22,14-Oct-22,03-Oct-22 A,14-Oct-22 A,10,0,10,100%,,Completed
 ER6360LT,W085,W085.DS1190,Assemble Coating Enclosure,03-May-22,03-Nov-22,03-May-22 A,03-Nov-22 A,10,0,133,100%,,Completed
 ER6360LT,W085,W085.DS1180,Develop Painting Procedures,03-May-22,24-Nov-22,03-May-22 A,24-Nov-22 A,5,0,148,100%,,Completed
 ER6360LT,W085,W085.DS1170,Develop Painting Facitilies,03-May-22,09-May-22,03-May-22 A,09-May-22 A,5,0,5,100%,,Completed
 ER6360LT,W085,W085.DS1160,Place Order for Coating Enclosure,,03-May-22,,03-May-22 A,0,0,0,100%,,Completed
 ER6360LT,W085,W085.DS1090,Bay Preparations,03-May-22,16-May-22,03-May-22 A,16-May-22 A,10,0,10,100%,,Completed
 ER6360LT,W085,W085.DS1040,Transit of First Flask from EDF,,01-Jun-22,,01-Jun-22 A,0,0,0,100%,,Completed
 ER6360LT,W085,W085.SL2190,Review all documentation and compile LTQR pack,06-Feb-24,19-Feb-24,06-Feb-24 A,19-Feb-24 A,10,0,10,100%,,Completed
 ER6360LT,W085,W085.SL2130,Final Assembly,05-Feb-24,05-Feb-24,05-Feb-24 A,05-Feb-24 A,20,0,1,100%,,Completed
 ER6360LT,W085,W085.SL2080,Flask External grit blast (surface prep for paint),22-May-23,02-Feb-24,22-May-23 A,02-Feb-24 A,20,0,180,100%,,Completed
 ER6360LT,W085,W085.SL2030,External condition inspection (EDF review point),21-Mar-23,19-May-23,21-Mar-23 A,19-May-23 A,40,0,40,100%,,Completed
 ER6360LT,W085,W085.SL1970,Masking ready for grit blast,25-Jan-23,20-Mar-23,25-Jan-23 A,20-Mar-23 A,40,0,39,100%,,Completed
 ER6360LT,W085,W085.SL1930,"Trunnion Removal, Thread Gauging, Recess Clean and Paint",10-Jan-23,24-Jan-23,10-Jan-23 A,24-Jan-23 A,15,0,11,100%,,Completed
 ER6360LT,W085,W085.SL1900,Flask Stripdown,03-Jan-23,09-Jan-23,03-Jan-23 A,09-Jan-23 A,5,0,5,100%,,Completed
 ER6360LT,W085,W085.SL1890,Review all documentation and compile LTQR pack,24-Oct-23,06-Nov-23,24-Oct-23 A,06-Nov-23 A,10,0,10,100%,,Completed
 ER6360LT,W085,W085.SL1830,Final Assembly,03-Oct-23,23-Oct-23,03-Oct-23 A,23-Oct-23 A,20,0,15,100%,,Completed
 ER6360LT,W085,W085.SL1780,Flask Body and Lid External Grit Blast and Paint,18-Apr-23,02-Oct-23,18-Apr-23 A,02-Oct-23 A,20,0,116,100%,,Completed
 ER6360LT,W085,W085.SL1730,Flask Body Inspections & 35m Weld Inspections,09-Mar-23,17-Apr-23,09-Mar-23 A,17-Apr-23 A,38,0,26,100%,,Completed
 ER6360LT,W085,W085.SL1670,"Flask Grit Blast, Internal Paint and Cavity Test",23-Jan-23,08-Mar-23,23-Jan-23 A,08-Mar-23 A,25,0,33,100%,,Completed
 ER6360LT,W085,W085.SL1630,Trunnion and Pintle Inspections,22-Dec-22,20-Jan-23,22-Dec-22 A,20-Jan-23 A,15,0,19,100%,,Completed
 ER6360LT,W085,W085.SL1600,Flask Stripdown,01-Dec-22,21-Dec-22,01-Dec-22 A,21-Dec-22 A,15,0,15,100%,,Completed
 ER6360LT,W085,W085.SL1590,Review all documentation and compile LTQR pack,06-Feb-23,24-Feb-23,06-Feb-23 A,24-Feb-23 A,10,0,15,100%,,Completed
 ER6360LT,W085,W085.SL1580,Final Assembly,29-Nov-22,03-Feb-23,29-Nov-22 A,03-Feb-23 A,20,0,46,100%,,Completed
 ER6360LT,W085,W085.SL1520,Flask External grit blast and Paint,09-Nov-22,28-Nov-22,09-Nov-22 A,28-Nov-22 A,20,0,14,100%,,Completed
 ER6360LT,W085,W085.SL1470,Flask Body Inspections and 35m Weld Inspections,03-Nov-22,09-Nov-22,03-Nov-22 A,09-Nov-22 A,5,0,5,100%,,Completed
 ER6360LT,W085,W085.SL1440,Cavity cover plate 35m weld inspection,27-Oct-22,02-Nov-22,27-Oct-22 A,02-Nov-22 A,10,0,5,100%,,Completed
 ER6360LT,W085,W085.SL1430,External condition inspection (EDF review point),20-Oct-22,26-Oct-22,20-Oct-22 A,26-Oct-22 A,5,0,5,100%,,Completed
 ER6360LT,W085,W085.SL1420,Internal painting,06-Oct-22,19-Oct-22,06-Oct-22 A,19-Oct-22 A,10,0,10,100%,,Completed
 ER6360LT,W085,W085.SL1410,Water Level Valve insert interspace test,13-Oct-22,19-Oct-22,13-Oct-22 A,19-Oct-22 A,5,0,5,100%,,Completed
 ER6360LT,W085,W085.SL1400,Purge valve insert interspace test,13-Oct-22,19-Oct-22,13-Oct-22 A,19-Oct-22 A,5,0,5,100%,,Completed
 ER6360LT,W085,W085.SL1390,Grit blast flask externals and internals,22-Sep-22,05-Oct-22,22-Sep-22 A,05-Oct-22 A,10,0,10,100%,,Completed
 ER6360LT,W085,W085.SL1380,Remove RWLs,15-Sep-22,21-Sep-22,15-Sep-22 A,21-Sep-22 A,5,0,5,100%,,Completed
 ER6360LT,W085,W085.SL1370,Masking ready for grit blast,08-Sep-22,14-Sep-22,08-Sep-22 A,14-Sep-22 A,5,0,5,100%,,Completed
 ER6360LT,W085,W085.SL1360,Refit Pintle and load test,06-Sep-22,07-Sep-22,06-Sep-22 A,07-Sep-22 A,2,0,2,100%,,Completed
 ER6360LT,W085,W085.SL1350,"Pintle removal, thread gauging,  recess clean and paint",22-Aug-22,05-Sep-22,22-Aug-22 A,05-Sep-22 A,10,0,10,100%,,Completed
 ER6360LT,W085,W085.SL1340,Trunnion refit and load test,06-Sep-22,07-Sep-22,06-Sep-22 A,07-Sep-22 A,2,0,2,100%,,Completed
 ER6360LT,W085,W085.SL1330,"Trunnion Removal, Thread Gauging, Recess Clean and Paint",22-Aug-22,05-Sep-22,22-Aug-22 A,05-Sep-22 A,10,0,10,100%,,Completed
 ER6360LT,W085,W085.SL1320,"Lid/LSM Stripdown, Gritblast Underside and Paint",08-Aug-22,19-Aug-22,08-Aug-22 A,19-Aug-22 A,10,0,10,100%,,Completed
 ER6360LT,W085,W085.SL1310,Valve and Shield Plug Removal,08-Aug-22,19-Aug-22,08-Aug-22 A,19-Aug-22 A,10,0,10,100%,,Completed
 ER6360LT,W085,W085.SL1300,Flask Stripdown and Lid Removal,08-Aug-22,08-Aug-22,08-Aug-22 A,08-Aug-22 A,0,0,0,100%,,Completed
 ER6360LT,W085,W085.SL1290,Review all documentation and compile LTQR pack,20-Mar-23,31-Mar-23,20-Mar-23 A,31-Mar-23 A,10,0,10,100%,,Completed
 ER6360LT,W085,W085.SL1280,Final Assembly,07-Mar-23,17-Mar-23,07-Mar-23 A,17-Mar-23 A,20,0,9,100%,,Completed
 ER6360LT,W085,W085.SL1220,Flask Body and Lid External Grit Blast and Paint,01-Dec-22,06-Mar-23,01-Dec-22 A,06-Mar-23 A,15,0,65,100%,,Completed
 ER6360LT,W085,W085.SL1180,Flask External grit blast (surface prep for paint),20-Oct-22,26-Oct-22,20-Oct-22 A,26-Oct-22 A,5,0,5,100%,,Completed
 ER6360LT,W085,W085.SL1170,Mask for grit blast,13-Oct-22,19-Oct-22,13-Oct-22 A,19-Oct-22 A,5,0,5,100%,,Completed
 ER6360LT,W085,W085.SL1160,Vacuum dry base void,06-Oct-22,12-Oct-22,06-Oct-22 A,12-Oct-22 A,5,0,5,100%,,Completed
 ER6360LT,W085,W085.SL1150,Base void "bubble test",22-Sep-22,05-Oct-22,22-Sep-22 A,05-Oct-22 A,7,0,10,100%,,Completed
 ER6360LT,W085,W085.SL1140,Cavity cover plate 35m weld inspection,13-Sep-22,21-Sep-22,13-Sep-22 A,21-Sep-22 A,7,0,7,100%,,Completed
 ER6360LT,W085,W085.SL1130,External condition inspection (EDF review point),06-Sep-22,12-Sep-22,06-Sep-22 A,12-Sep-22 A,5,0,5,100%,,Completed
 ER6360LT,W085,W085.SL1120,Internal painting,11-Aug-22,02-Sep-22,11-Aug-22 A,02-Sep-22 A,8,0,16,100%,,Completed
 ER6360LT,W085,W085.SL1110,Water Level Valve insert interspace test,26-Aug-22,02-Sep-22,26-Aug-22 A,02-Sep-22 A,5,0,5,100%,,Completed
 ER6360LT,W085,W085.SL1100,Purge valve insert interspace test,16-Aug-22,05-Sep-22,16-Aug-22 A,05-Sep-22 A,5,0,14,100%,,Completed
 ER6360LT,W085,W085.SL1090,Grit blast flask externals and internals,01-Aug-22,10-Aug-22,01-Aug-22 A,10-Aug-22 A,8,0,8,100%,,Completed
 ER6360LT,W085,W085.SL1080,Remove RWLs,26-Jul-22,29-Jul-22,26-Jul-22 A,29-Jul-22 A,4,0,4,100%,,Completed
 ER6360LT,W085,W085.SL1070,Masking ready for grit blast,20-Jul-22,25-Jul-22,20-Jul-22 A,25-Jul-22 A,4,0,4,100%,,Completed
 ER6360LT,W085,W085.SL1060,Refit Pintle and load test,12-Jul-22,12-Jul-22,12-Jul-22 A,12-Jul-22 A,1,0,1,100%,,Completed
 ER6360LT,W085,W085.SL1050,"Pintle removal, thread gauging,  recess clean and paint",22-Jun-22,11-Jul-22,22-Jun-22 A,11-Jul-22 A,14,0,14,100%,,Completed
 ER6360LT,W085,W085.SL1040,Trunnion refit and load test,12-Jul-22,12-Jul-22,12-Jul-22 A,12-Jul-22 A,1,0,1,100%,,Completed
 ER6360LT,W085,W085.SL1030,"Trunnion Removal, Thread Gauging, Recess Clean and Paint",22-Jun-22,11-Jul-22,22-Jun-22 A,11-Jul-22 A,14,0,14,100%,,Completed
 ER6360LT,W085,W085.SL1020,"Lid/LSM Stripdown, Gritblast Underside and Paint",30-May-22,21-Jun-22,30-May-22 A,21-Jun-22 A,10,0,15,100%,,Completed
 ER6360LT,W085,W085.SL1010,Valve and Shield Plug Removal,30-May-22,21-Jun-22,30-May-22 A,21-Jun-22 A,10,0,15,100%,,Completed
 ER6360LT,W085,W085.SL1000,Flask Stripdown and Lid Removal,09-May-22,27-May-22,09-May-22 A,27-May-22 A,15,0,15,100%,,Completed
 ER7581LT,W195,W195.2000,ETC (DD-PF),01-Sep-23,31-Dec-24,01-Sep-23 A,31-Dec-24 A,0,0,338,100%,,Completed
 ER7582LT,W196,W196.2000,ETC (DD) 2024,02-Jan-24,31-Dec-24,02-Jan-24 A,31-Dec-24 A,0,0,253,100%,,Completed
 ER7743LT,W527,W527.1000,ETC (DD-PF) 2024,01-Sep-23,31-Dec-24,01-Sep-23 A,31-Dec-24 A,0,0,338,100%,,Completed
 W158LT,W158,W158.24600,Reactor Equivalence Confirmed by NSG Group Head,18-Nov-22,18-Nov-22,18-Nov-22 A,18-Nov-22 A,5,0,0,100%,,Completed
 W158LT,W158,W158.24500,Sign Station Defuelling QP- Ready to Implement Defuelling Security Regime,01-Mar-23,13-Mar-23,01-Mar-23 A,13-Mar-23 A,20,0,8,100%,,Completed
 W156LT,W156,W156.24600,Reactor Equivalence Confirmed by NSG Group Head,01-Feb-23,31-Dec-26,01-Feb-23 A,31-Dec-26,484,444,991,51%,221,In Progress
 W156LT,W156,W156.24500,Sign Station Defuelling QP- Ready to Implement Defuelling Security Regime,03-Apr-23,17-Apr-23,03-Apr-23 A,17-Apr-23 A,9,0,9,100%,,Completed
 W155LT,W155,W155.24600,Reactor Equivalence Confirmed by NSG Group Head,01-Feb-23,31-Dec-26,01-Feb-23 A,31-Dec-26,484,444,991,50%,0,In Progress
 W155LT,W155,W155.24500,Sign Station Defuelling QP- Ready to Implement Defuelling Security Regime,03-Apr-23,17-Apr-23,03-Apr-23 A,17-Apr-23 A,9,0,9,100%,,Completed
 W158LT,W158,W158.34841,Update Site SRCL & Submit to ONR (Full Safety Cases) (No Longer Required),01-Oct-24,07-Oct-24,01-Oct-24 A,07-Oct-24 A,5,0,5,100%,,Completed
 W158LT,W158,W158.34811,Revise SPPI File Against Issued Full Safety Cases (No Longer Required),01-Oct-24,07-Oct-24,01-Oct-24 A,07-Oct-24 A,5,0,5,100%,,Completed
 W158LT,W158,W158.34821,Review and Update SPORS (Full Safety Cases) (No Longer Required),01-Oct-24,07-Oct-24,01-Oct-24 A,07-Oct-24 A,5,0,5,100%,,Completed
 W158LT,W158,W158.34831,Issue Revised SPORS (Full Safety Cases) (No Longer Required),01-Oct-24,01-Oct-24,01-Oct-24 A,01-Oct-24 A,1,0,1,100%,,Completed
 W158LT,W158,W158.5010,>>> INCOMING ENABLER (W211) Review SPPI File  Against  Basic Full Safety Cases(No Longer Required),,03-Feb-25,,03-Mar-25 A,0,0,0,100%,,Completed
 W158LT,W158,W158.5000,>>> MIRROR INCOMING ENABLER (W211) Review SPPI File Against Issued Basic Full Safety Cases (No Longer Required),,24-Oct-24,,24-Oct-24 A,0,0,0,100%,,Completed
 ER6360LT,W085,W085.1270,6 FFiR Flasks refurbished for defueling resilience for all AGRs,,18-Feb-25,,26-Jun-24 A,0,0,0,100%,,Completed
 ER6360LT,W085,A6940,Tender Scoring PJB of Previous Lessons Learned,18-Mar-22,24-Mar-22,18-Mar-22 A,24-Mar-22 A,5,0,5,100%,,Completed
 W158LT,W158,W158.10003,Finalised Security Protected Plant Identification assessment and security regime commitments to ONR prior to defuelling,,28-Nov-22,,28-Nov-22 A,0,0,0,100%,,Completed
 W158LT,W158,W158.2410,ONR Final Review of D/SPPI,10-Jan-23,10-Jan-23,10-Jan-23 A,10-Jan-23 A,1,0,1,100%,,Completed
 W156LT,W156,W156.34971,Final ONR review of D/SPPI,07-Feb-25,13-Feb-25,07-Feb-25 A,13-Feb-25 A,5,0,5,100%,,Completed
 W156LT,W156,W156.10003,Finalised Security Protected Plant Identification assessment and security regime commitments to ONR prior to defuelling,,13-Feb-25,,13-Feb-25 A,0,0,0,100%,,Completed
 W155LT,W155,W155.3220,Final ONR review of D/SPPI,03-Feb-25,07-Feb-25,20-Nov-24 A,13-Feb-25 A,60,0,58,100%,,Completed
 W155LT,W155,W155.10003,Finalised Security Protected Plant Identification assessment and security regime commitments to ONR prior to defuelling,,07-Feb-25,,13-Feb-25 A,0,0,0,100%,,Completed
 ER6360LT,W085,W085.DS1010,Transportation From TSP,03-May-22,09-May-22,03-May-22 A,09-May-22 A,5,0,5,100%,,Completed
 ER6360LT,W085,A6920,NG Board Approval of Selected strategy,04-Apr-22,08-Apr-22,04-Apr-22 A,08-Apr-22 A,5,0,5,100%,,Completed
 ER6360LT,W085,A7090,Lessons Learned OPEX Review ahead of moving to next phase,07-Mar-22,18-Mar-22,07-Mar-22 A,18-Mar-22 A,10,0,10,100%,,Completed
 ER6360LT,W085,A6910,Contract Awarded for Phase 2,,29-Apr-22,,29-Apr-22 A,0,0,0,100%,,Completed
 ER6360LT,W085,A6900,Issue Phase 2 Contract,14-Apr-22,29-Apr-22,14-Apr-22 A,29-Apr-22 A,2,0,9,100%,,Completed
 ER6360LT,W085,A6890,Approve Phase 2 Req,12-Apr-22,13-Apr-22,12-Apr-22 A,13-Apr-22 A,2,0,2,100%,,Completed
 ER6360LT,W085,A6880,Initial Funding Released in SAP,,11-Apr-22,,11-Apr-22 A,0,0,0,100%,,Completed
 ER6360LT,W085,A6870,Create Phase 2 Req,08-Apr-22,11-Apr-22,08-Apr-22 A,11-Apr-22 A,2,0,2,100%,,Completed
 ER6360LT,W085,A6860,Early Release Approval,,08-Apr-22,,08-Apr-22 A,0,0,0,100%,,Completed
 ER6360LT,W085,A6720,Draft Phase 2 Contract,04-Apr-22,07-Apr-22,04-Apr-22 A,07-Apr-22 A,4,0,4,100%,,Completed
 ER6360LT,W085,A6710,Phase 2 Strategy Selected,,01-Apr-22,,01-Apr-22 A,0,0,0,100%,,Completed
 ER6360LT,W085,A6700,Prepare Change Note / Paperwork for Early Release of Funding,21-Mar-22,08-Apr-22,21-Mar-22 A,08-Apr-22 A,10,0,15,100%,,Completed
 ER6360LT,W085,A6690,Tender Scoring,21-Mar-22,01-Apr-22,21-Mar-22 A,01-Apr-22 A,10,0,10,100%,,Completed
 ER6360LT,W085,A6450,Tender Clarification,21-Mar-22,01-Apr-22,21-Mar-22 A,01-Apr-22 A,10,0,10,100%,,Completed
 ER6360LT,W085,A6430,Create Scoring Matrix,07-Mar-22,21-Mar-22,07-Mar-22 A,21-Mar-22 A,10,0,10,100%,,Completed
 ER6360LT,W085,A6420,Phase 2 Tender Issued,,01-Mar-22,,01-Mar-22 A,0,0,0,100%,,Completed
 ER7579LT,W193,W194.3010,Thales RFS (Scope/Requirements Capture/Proposal) for 2025 Support,,01-Jul-22,,01-Jul-22 A,0,0,0,100%,,Completed
 ER7579LT,W193,W193.3000,Thales RFS (Scope/Requirements Capture/Proposal) for 2024 Support,,01-Jul-22,,01-Jul-22 A,0,0,0,100%,,Completed
 ER7580LT,W194,W194.3010,Thales RFS (Scope/Requirements Capture/Proposal) for 2025 Support,,01-Jul-22,,01-Jul-22 A,0,0,0,100%,,Completed
 ER7580LT,W194,W194.3000,Thales RFS (Scope/Requirements Capture/Proposal) for 2024 Support,,01-Jul-22,,01-Jul-22 A,0,0,0,100%,,Completed
 ER7582LT,W196,W196.3020,Thales RFS (Scope/Requirements Capture/Proposal) for 2026 Support,,30-Jun-22,,30-Jun-22 A,0,0,0,100%,,Completed
 ER7582LT,W196,W196.3010,Thales RFS (Scope/Requirements Capture/Proposal) for 2025 Support,,30-Jun-22,,30-Jun-22 A,0,0,0,100%,,Completed
 ER7582LT,W196,W196.3000,Thales RFS (Scope/Requirements Capture/Proposal) for 2024 Support,,30-Jun-22,,30-Jun-22 A,0,0,0,100%,,Completed
 ER7581LT,W195,W195.3020,Thales RFS (Scope/Requirements Capture/Proposal) for 2026 Support,,30-Jun-22,,30-Jun-22 A,0,0,0,100%,,Completed
 ER7581LT,W195,W195.3010,Thales RFS (Scope/Requirements Capture/Proposal) for 2025 Support,,30-Jun-22,,30-Jun-22 A,0,0,0,100%,,Completed
 ER7581LT,W195,W195.3000,Thales RFS (Scope/Requirements Capture/Proposal) for 2024 Support,,30-Jun-22,,30-Jun-22 A,0,0,0,100%,,Completed
 W730LT_UN,W730,W730.1160,>>>OUTGOING ENABLER (W295) Safety Cases Authored,,23-Jul-27,,23-Jul-27,0,0,0,0%,175,Not Started
 ER7579LT,W193,W193.0020,Project End,,31-Dec-25,,31-Dec-25,0,0,0,0%,0,Not Started
 ER7579LT,W193,W193.0010,Project Start,,01-Jan-21,,01-Jan-21 A,0,0,0,100%,,Completed
 ER7743LT,W527,W527.0070,DNB 2022 LSR - Final Report Produced and Issued,25-Nov-22,06-Dec-22,25-Nov-22 A,06-Dec-22 A,11,0,7,100%,,Completed
 ER7743LT,W527,W527.0060,DNB 2022 LSR - EDF Review Comments Produced and Provided,09-Nov-22,25-Nov-22,09-Nov-22 A,25-Nov-22 A,13,0,13,100%,,Completed
 ER7743LT,W527,W527.0050,DNB 2022 LSR - Draft Report Produced and Issued for EDF Review,01-Nov-22,08-Nov-22,01-Nov-22 A,08-Nov-22 A,6,0,6,100%,,Completed
 ER7743LT,W527,W527.0040,DNB 2022 LSR - Recommendations Sentencing Workshop Preparation and Event,02-Nov-22,02-Nov-22,02-Nov-22 A,02-Nov-22 A,1,0,1,100%,,Completed
 ER7743LT,W527,W527.0030,DNB 2022 LSR - Recommendations Produced and Issued,26-Oct-22,26-Oct-22,26-Oct-22 A,26-Oct-22 A,0,0,0,100%,,Completed
 ER7743LT,W527,W527.0020,DNB 2022 LSR - Asset Guardian Data Export Produced and Complete,30-Aug-22,23-Sep-22,30-Aug-22 A,23-Sep-22 A,19,0,18,100%,,Completed
 ER7743LT,W527,W527.0010,DNB 2022 LSR - Asset Guardian Pre-export Data Validation Produced and Complete,04-Jan-22,26-Aug-22,04-Jan-22 A,26-Aug-22 A,163,0,164,100%,,Completed
 ER7582LT,W196,W196.0360,HYA 2022 LSR - Final Report Produced and Issued,03-May-22,13-May-22,03-May-22 A,13-May-22 A,9,0,9,100%,,Completed
 ER7582LT,W196,W196.0350,HYA 2022 LSR - EDF Review Comments Produced and Provided,03-May-22,05-May-22,03-May-22 A,05-May-22 A,11,0,3,100%,,Completed
 ER7582LT,W196,W196.0340,HYA 2022 LSR - Draft Report Produced and Issued for EDF Review,19-Apr-22,04-May-22,19-Apr-22 A,04-May-22 A,11,0,11,100%,,Completed
 ER7582LT,W196,W196.0330,HYA 2022 LSR - Recommendation Sentencing Workshop Preparation and Event,14-Apr-22,14-Apr-22,14-Apr-22 A,14-Apr-22 A,10,0,0,100%,,Completed
 ER7582LT,W196,W196.0320,HYA 2022 LSR - Recommendations Produced and Issued,25-Mar-22,07-Apr-22,25-Mar-22 A,07-Apr-22 A,10,0,10,100%,,Completed
 ER7582LT,W196,W196.0310,HYA 2022 LSR - Asset Guardian Data Export Produced and Issued,25-Feb-22,24-Mar-22,25-Feb-22 A,24-Mar-22 A,20,0,20,100%,,Completed
 ER7582LT,W196,W196.0300,HYA 2022 LSR - Asset Guardian Pre-export Data Validation Produced and Completed,04-Jan-22,24-Feb-22,04-Jan-22 A,24-Feb-22 A,38,0,38,100%,,Completed
 ER7581LT,W195,W195.0260,HRA 2022 LSR - Final Report Produced and Issued,07-Sep-22,31-Oct-22,07-Sep-22 A,31-Oct-22 A,10,0,39,100%,,Completed
 ER7581LT,W195,W195.0250,HRA 2022 LSR - EDF Review Comments Produced and Provided,19-Aug-22,20-Sep-22,19-Aug-22 A,20-Sep-22 A,10,0,22,100%,,Completed
 ER7581LT,W195,W195.0240,HRA 2022 LSR - Draft Report Produced and Issued for EDF Review,01-Sep-22,21-Sep-22,01-Sep-22 A,21-Sep-22 A,4,0,15,100%,,Completed
 ER7581LT,W195,W195.0230,HRA 2022 LSR - Recommendation Sentencing Workshop Preparation and Event,08-Aug-22,07-Sep-22,08-Aug-22 A,07-Sep-22 A,5,0,22,100%,,Completed
 ER7581LT,W195,W195.0220,HRA 2022 LSR - Recommendations Prodcued and Issued,08-Aug-22,19-Aug-22,08-Aug-22 A,19-Aug-22 A,10,0,10,100%,,Completed
 ER7581LT,W195,W195.0210,HRA 2022 LSR - Asset Guardian Data Export Produced and Complete,11-Jul-22,05-Aug-22,11-Jul-22 A,05-Aug-22 A,20,0,20,100%,,Completed
 ER7581LT,W195,W195.0200,HRA 2022 LSR - Asset Guardian Pre-export Data Validation Produced and Complete,04-Jan-22,08-Jul-22,04-Jan-22 A,08-Jul-22 A,128,0,129,100%,,Completed
 ER7580LT,W194,W194.0070,HPB 2022 LSR - Final Report Produced and Issued,14-Mar-22,31-Mar-22,14-Mar-22 A,31-Mar-22 A,14,0,14,100%,,Completed
 ER7580LT,W194,W194.0060,HPB 2022 LSR - EDF Review Comments Produced and Provided,01-Mar-22,11-Mar-22,01-Mar-22 A,11-Mar-22 A,9,0,8,100%,,Completed
 ER7580LT,W194,W194.0050,HPB 2022 LSR - Draft Report Produced and Issued for EDF Review,23-Feb-22,01-Mar-22,23-Feb-22 A,01-Mar-22 A,0,0,5,100%,,Completed
 ER7580LT,W194,W194.0040,HPB 2022 LSR - Recommendation Sentencing Workshop Preparation and Event,16-Feb-22,22-Feb-22,16-Feb-22 A,22-Feb-22 A,0,0,4,100%,,Completed
 ER7580LT,W194,W194.0030,HPB 2022 LSR - Recommendations Produced and Issued,02-Feb-22,15-Feb-22,02-Feb-22 A,15-Feb-22 A,0,0,9,100%,,Completed
 ER7580LT,W194,W194.0020,HPB 2022 LSR - Asset Guardian Data Export Produced and Complete,04-Jan-22,01-Feb-22,04-Jan-22 A,01-Feb-22 A,20,0,21,100%,,Completed
 ER7580LT,W194,W194.0010,HPB 2022 LSR - Asset Guardian Pre-export Data Validation Produced and Complete,15-Dec-21,04-Jan-22,15-Dec-21 A,04-Jan-22 A,1,0,12,100%,,Completed
 ER7579LT,W193,W193.1042,HNB 2022 LSR - Final Report Produced and Issued,28-Mar-22,06-Apr-22,28-Mar-22 A,06-Apr-22 A,34,0,7,100%,,Completed
 ER7579LT,W193,W193.1041,HNB 2022 LSR - EDF Review Comments Produced and Provided,02-Feb-22,25-Mar-22,02-Feb-22 A,25-Mar-22 A,29,0,38,100%,,Completed
 ER7579LT,W193,W193.1040,HNB 2022 LSR - Draft Report Produced and Issued for EDF Review,26-Jan-22,01-Feb-22,26-Jan-22 A,01-Feb-22 A,0,0,4,100%,,Completed
 ER7579LT,W193,W193.1030,HNB 2022 LSR - Recommendation Sentencing Workshop Preparation and Event,21-Jan-22,25-Jan-22,21-Jan-22 A,25-Jan-22 A,1,0,3,100%,,Completed
 ER7579LT,W193,W193.1020,HNB 2022 LSR - Recommendations Produced and Issued,07-Jan-22,20-Jan-22,07-Jan-22 A,20-Jan-22 A,1,0,9,100%,,Completed
 ER7579LT,W193,W193.1010,HNB 2022 LSR - Asset Guardian Data Export Produced and Complete,15-Dec-21,06-Jan-22,15-Dec-21 A,06-Jan-22 A,1,0,13,100%,,Completed
 ER7579LT,W193,W193.1000,HNB 2022 LSR - Asset Guardian Pre-export Data Validation Produced and Complete,01-Dec-21,14-Dec-21,01-Dec-21 A,14-Dec-21 A,1,0,9,100%,,Completed
 W730LT_UN,W730,W730.1010,Project Start,03-Feb-25,,03-Feb-25 A,,0,0,0,100%,,Completed
 ER7743LT,W527,W527.1797,Cost Engineer Support 2027,04-Jan-27,31-Dec-27,04-Jan-27,31-Dec-27,255,255,255,0%,1012,Not Started
 ER7743LT,W527,W527.1667,Cost Engineer support 2026,05-Jan-26,31-Dec-26,05-Jan-26,31-Dec-26,253,253,253,0%,1267,Not Started
 ER7743LT,W527,W527.1503,Cost Engineer support 2025,02-Jan-25,31-Dec-25,02-Jan-25 A,31-Dec-25,253,190,253,24%,1521,In Progress
 ER7743LT,W527,W527.1334,Cost Engineer Support 2024,02-Jan-24,31-Dec-24,02-Jan-24 A,31-Dec-24 A,254,0,254,100%,,Completed
 ER7743LT,W527,W527.1187,Cost Engineer support 2023,04-Jan-23,29-Dec-23,04-Jan-23 A,29-Dec-23 A,251,0,250,100%,,Completed
 ER7743LT,W527,W527.1140,Cost Engineer Support 2022,04-Jan-22,30-Dec-22,04-Jan-22 A,30-Dec-22 A,251,0,251,100%,,Completed
 ER6360LT,W085,W085.1560,Flask 6 - INA Approval,,26-Nov-24,,02-Jul-25,0,0,0,0%,68,Not Started
 ER6360LT,W085,W085.1550,Flask 5 - INA Approval,,16-Aug-24,,17-Jun-25,0,0,0,0%,5,Not Started
 ER6360LT,W085,W085.1540,Flask 4 - INA Approval,,12-Aug-24,,14-May-25,0,0,0,0%,28,Not Started
 ER6360LT,W085,W085.1530,Flask 3 - INA Approval,,08-Jul-24,,01-Aug-24 A,0,0,0,100%,,Completed
 ER6360LT,W085,W085.1520,Flask 2 - INA Approval,,19-Dec-24,,03-Jun-25,0,0,0,0%,89,Not Started
 ER6360LT,W085,W085.1510,Flask 1 - INA Approval,,01-Mar-24,,01-Mar-24 A,0,0,0,100%,,Completed
 ER6360LT,W085,W085.A5820,Flask 1 - Flask Licensing ONR Approval of Cat C (No Longer Required),01-Aug-23,01-Aug-23,01-Aug-23 A,01-Aug-23 A,30,0,1,100%,,Completed
 ER7582LT,W196,W196.1380,HYA 2023 Software Build,04-Jan-23,29-Dec-23,04-Jan-23 A,29-Dec-23 A,231,0,250,100%,,Completed
 ER7582LT,W196,W196.1360,HYA 2022 Software Build,04-Jan-22,30-Dec-22,04-Jan-22 A,30-Dec-22 A,231,0,250,100%,,Completed
 ER7581LT,W195,W195.1340,HRA 2022 Software Build,04-Jan-22,01-Dec-22,04-Jan-22 A,01-Dec-22 A,231,0,232,100%,,Completed
 ER7580LT,W194,W194.1351,DPCS Long Term Support Contract 2023,04-Jan-23,29-Dec-23,04-Jan-23 A,29-Dec-23 A,251,0,250,100%,,Completed
 ER7580LT,W194,W194.1320,DPCS Long Term Support Contract 2022,04-Jan-22,30-Dec-22,04-Jan-22 A,30-Dec-22 A,250,0,251,100%,,Completed
 ER7580LT,W194,W194.1330,Argus Support Contract 2022,04-Jan-22,30-Dec-22,04-Jan-22 A,30-Dec-22 A,250,0,251,100%,,Completed
 ER7580LT,W194,W194.1171,HPB 2022 Software Build,04-Jan-22,02-Dec-22,04-Jan-22 A,02-Dec-22 A,211,0,233,100%,,Completed
 ER7580LT,W194,W194.10280,Issue Paper to NSSB Secretary,,06-Dec-21,,06-Dec-21 A,0,0,0,100%,,Completed
 ER7580LT,W194,W194.10050,NSSB Sanction Approval for 2022,,14-Dec-21,,14-Dec-21 A,0,0,0,100%,,Completed
 ER7580LT,W194,W194.10260,Plan Scope in Primavera (If Required),21-Oct-21,22-Oct-21,21-Oct-21 A,22-Oct-21 A,5,0,1,100%,,Completed
 ER7580LT,W194,W194.10250,Estimate Scope (If Required),28-Oct-21,29-Oct-21,28-Oct-21 A,29-Oct-21 A,5,0,1,100%,,Completed
 ER7580LT,W194,W194.10240,Ensure Alignment of Schedule & Estimate (If Required),28-Oct-21,29-Oct-21,28-Oct-21 A,29-Oct-21 A,3,0,1,100%,,Completed
 ER7580LT,W194,W194.10230,Hold Risk Workshop (If Required),28-Oct-21,29-Oct-21,28-Oct-21 A,29-Oct-21 A,1,0,1,100%,,Completed
 ER7580LT,W194,W194.10220,Complete Risk Log with Estimates (If Required),28-Oct-21,29-Oct-21,28-Oct-21 A,29-Oct-21 A,2,0,1,100%,,Completed
 ER7580LT,W194,W194.10210,Update Schedule/Estimate from Risk Log & Add Provisions (If Required),28-Oct-21,29-Oct-21,28-Oct-21 A,29-Oct-21 A,2,0,1,100%,,Completed
 ER7580LT,W194,W194.10200,Update NSSB Paper,01-Dec-21,02-Dec-21,01-Dec-21 A,02-Dec-21 A,2,0,2,100%,,Completed
 ER7580LT,W194,W194.10190,PCL Validate & Approve Baseline Package for NSSB Submission,03-Dec-21,03-Dec-21,03-Dec-21 A,03-Dec-21 A,1,0,1,100%,,Completed
 ER7580LT,W194,W194.10180,NSSB Members Review Documentation,07-Dec-21,13-Dec-21,07-Dec-21 A,13-Dec-21 A,5,0,5,100%,,Completed
 ER7580LT,W194,W194.10170,Present Paper to NSSB,14-Dec-21,14-Dec-21,14-Dec-21 A,14-Dec-21 A,1,0,1,100%,,Completed
 ER7580LT,W194,W194.10160,Address NSSB Comments,15-Dec-21,21-Dec-21,15-Dec-21 A,21-Dec-21 A,5,0,5,100%,,Completed
 ER7580LT,W194,W194.10150,Obtain 'Post-NSSB Meeting Signatures',22-Dec-21,23-Dec-21,22-Dec-21 A,23-Dec-21 A,2,0,2,100%,,Completed
 ER7580LT,W194,W194.10140,Revise Project Definition Document (PDD) (If Required),19-Oct-21,20-Oct-21,19-Oct-21 A,20-Oct-21 A,5,0,1,100%,,Completed
 ER7580LT,W194,W194.10130,Confirm NSSB Board Availability,,18-Oct-21,,18-Oct-21 A,0,0,0,100%,,Completed
 ER7580LT,W194,W194.10120,Obtain 'Pre-NSSB Signatures',06-Dec-21,06-Dec-21,06-Dec-21 A,06-Dec-21 A,1,0,1,100%,,Completed
 ER7580LT,W194,W194.10110,Request Direction Sanction Approval,24-Dec-21,29-Dec-21,24-Dec-21 A,29-Dec-21 A,2,0,2,100%,,Completed
 ER7580LT,W194,W194.10100,Finance Shuffle Budgets,30-Dec-21,31-Dec-21,30-Dec-21 A,31-Dec-21 A,2,0,2,100%,,Completed
 ER7580LT,W194,W194.10090,Plan Peer Review & SMART Check / Address Comments,28-Oct-21,29-Oct-21,28-Oct-21 A,29-Oct-21 A,5,0,1,100%,,Completed
 ER7580LT,W194,W194.10080,Estimate Peer Review / Address Comments,28-Oct-21,29-Oct-21,28-Oct-21 A,29-Oct-21 A,5,0,1,100%,,Completed
 W158LT,W158,W158.140,Estimate Peer Review / Address Comments,10-Dec-21,10-Dec-21,10-Dec-21 A,10-Dec-21 A,5,0,0,100%,,Completed
 W158LT,W158,W158.0130,Plan Peer Review & SMART Check / Address Comments,10-Dec-21,10-Dec-21,10-Dec-21 A,10-Dec-21 A,5,0,0,100%,,Completed
 W158LT,W158,W158.02-0070,Finance Shuffle Budgets,01-Feb-22,01-Feb-22,01-Feb-22 A,01-Feb-22 A,0,0,0,100%,,Completed
 W158LT,W158,W158.02-0060,Request Direction Sanction Approval,01-Feb-22,01-Feb-22,01-Feb-22 A,01-Feb-22 A,0,0,0,100%,,Completed
 W158LT,W158,W158.0120,Obtain 'Pre-NSSB Signatures',13-Dec-21,13-Dec-21,13-Dec-21 A,13-Dec-21 A,5,0,0,100%,,Completed
 W158LT,W158,W158.0110,Confirm NSSB Board Availability,,01-Oct-21,,01-Oct-21 A,0,0,0,100%,,Completed
 W158LT,W158,W158.0030,Revise Project Definition Document (PDD) (If Required),01-Oct-21,07-Oct-21,01-Oct-21 A,07-Oct-21 A,5,0,5,100%,,Completed
 W158LT,W158,W158.02-0040,Obtain 'Post-NSSB Meeting Signatures',01-Feb-22,01-Feb-22,01-Feb-22 A,01-Feb-22 A,0,0,0,100%,,Completed
 W158LT,W158,W158.02-0030,Address NSSB Comments,04-Jan-22,04-Jan-22,04-Jan-22 A,04-Jan-22 A,0,0,0,100%,,Completed
 W158LT,W158,W158.02-0020,Present Paper to NSSB (14th Dec),14-Dec-21,14-Dec-21,14-Dec-21 A,14-Dec-21 A,1,0,0,100%,,Completed
 W158LT,W158,W158.02-0010,NSSB Members Review Documentation,13-Dec-21,13-Dec-21,13-Dec-21 A,13-Dec-21 A,5,0,0,100%,,Completed
 W158LT,W158,W158.0090,PCL Validate & Approve Baseline Package for NSSB Submission,10-Dec-21,10-Dec-21,10-Dec-21 A,10-Dec-21 A,3,0,0,100%,,Completed
 W158LT,W158,W158.0080,Update NSSB Paper,10-Dec-21,10-Dec-21,10-Dec-21 A,10-Dec-21 A,2,0,0,100%,,Completed
 W158LT,W158,W158.0070,Update Schedule/Estimate from Risk Log & Add Provisions (If Required),10-Dec-21,10-Dec-21,10-Dec-21 A,10-Dec-21 A,2,0,0,100%,,Completed
 W158LT,W158,W158.0060,Complete Risk Log with Estimates (If Required),08-Dec-21,09-Dec-21,08-Dec-21 A,09-Dec-21 A,2,0,1,100%,,Completed
 W158LT,W158,W158.0050,Hold Risk Workshop (If Required),08-Dec-21,08-Dec-21,08-Dec-21 A,08-Dec-21 A,1,0,0,100%,,Completed
 W158LT,W158,W158.0040,Ensure Alignment of Schedule & Estimate (If Required),06-Dec-21,07-Dec-21,06-Dec-21 A,07-Dec-21 A,3,0,1,100%,,Completed
 W158LT,W158,W158.0020,Estimate Scope (If Required),08-Oct-21,08-Oct-21,08-Oct-21 A,08-Oct-21 A,0,0,0,100%,,Completed
 W158LT,W158,W158.0010,Plan Scope in Primavera (If Required),01-Oct-21,07-Oct-21,01-Oct-21 A,07-Oct-21 A,5,0,5,100%,,Completed
 W158LT,W158,W158.02-0050,NSSB Sanction Approval,,26-Jan-22,,26-Jan-22 A,0,0,0,100%,,Completed
 W158LT,W158,W158.0100,Issue Paper to NSSB Secretary (7th Dec),,10-Dec-21,,10-Dec-21 A,0,0,0,100%,,Completed
 ER7579LT,W193,W193.1350,DPCS Long Term Support Contract 2023,04-Jan-23,29-Dec-23,04-Jan-23 A,29-Dec-23 A,251,0,250,100%,,Completed
 ER7579LT,W193,W193.2490,HNB 2022 Software Build Complete,,30-Dec-22,,30-Dec-22 A,0,0,0,100%,,Completed
 ER7579LT,W193,W193.2480,HNB 2022 Lifetime Sustainability Review (LSR) issued,,06-Apr-22,,06-Apr-22 A,0,0,0,100%,,Completed
 ER7579LT,W193,W193.10280,Issue Paper to NSSB Secretary,,08-Dec-21,,08-Dec-21 A,0,0,0,100%,,Completed
 ER7579LT,W193,W193.10270,NSSB Sanction Approval  for 2022,,14-Dec-21,,14-Dec-21 A,0,0,0,100%,,Completed
 ER7579LT,W193,W193.10260,Plan Scope in Primavera (If Required),21-Oct-21,22-Oct-21,21-Oct-21 A,22-Oct-21 A,5,0,1,100%,,Completed
 ER7579LT,W193,W193.10250,Estimate Scope (If Required),18-Oct-21,18-Oct-21,18-Oct-21 A,18-Oct-21 A,5,0,0,100%,,Completed
 ER7579LT,W193,W193.10240,Ensure Alignment of Schedule & Estimate (If Required),28-Oct-21,28-Oct-21,28-Oct-21 A,28-Oct-21 A,3,0,0,100%,,Completed
 ER7579LT,W193,W193.10230,Hold Risk Workshop (If Required),26-Oct-21,26-Oct-21,26-Oct-21 A,26-Oct-21 A,1,0,0,100%,,Completed
 ER7579LT,W193,W193.10220,Complete Risk Log with Estimates (If Required),29-Oct-21,29-Oct-21,29-Oct-21 A,29-Oct-21 A,2,0,0,100%,,Completed
 ER7579LT,W193,W193.10210,Update Schedule/Estimate from Risk Log & Add Provisions (If Required),29-Oct-21,29-Oct-21,29-Oct-21 A,29-Oct-21 A,2,0,0,100%,,Completed
 ER7579LT,W193,W193.10200,Update NSSB Paper,29-Oct-21,29-Oct-21,29-Oct-21 A,29-Oct-21 A,2,0,0,100%,,Completed
 ER7579LT,W193,W193.10190,PCL Validate & Approve Baseline Package for NSSB Submission,01-Dec-21,03-Dec-21,01-Dec-21 A,03-Dec-21 A,3,0,3,100%,,Completed
 ER7579LT,W193,W193.10180,NSSB Members Review Documentation,09-Dec-21,13-Dec-21,09-Dec-21 A,13-Dec-21 A,3,0,3,100%,,Completed
 ER7579LT,W193,W193.10170,Present Paper to NSSB,14-Dec-21,14-Dec-21,14-Dec-21 A,14-Dec-21 A,1,0,1,100%,,Completed
 ER7579LT,W193,W193.10160,Address NSSB Comments,15-Dec-21,21-Dec-21,15-Dec-21 A,21-Dec-21 A,5,0,5,100%,,Completed
 ER7579LT,W193,W193.10150,Obtain 'Post-NSSB Meeting Signatures',22-Dec-21,23-Dec-21,22-Dec-21 A,23-Dec-21 A,2,0,2,100%,,Completed
 ER7579LT,W193,W193.10140,Revise Project Definition Document (PDD) (If Required),18-Oct-21,20-Oct-21,18-Oct-21 A,20-Oct-21 A,5,0,2,100%,,Completed
 ER7579LT,W193,W193.10130,Confirm NSSB Board Availability,,18-Oct-21,,18-Oct-21 A,0,0,0,100%,,Completed
 ER7579LT,W193,W193.10120,Obtain 'Pre-NSSB Signatures',06-Dec-21,08-Dec-21,06-Dec-21 A,08-Dec-21 A,3,0,3,100%,,Completed
 ER7579LT,W193,W193.10110,Request Direction Sanction Approval,24-Dec-21,29-Dec-21,24-Dec-21 A,29-Dec-21 A,2,0,2,100%,,Completed
 ER7579LT,W193,W193.10100,Finance Shuffle Budgets,30-Dec-21,31-Dec-21,30-Dec-21 A,31-Dec-21 A,2,0,2,100%,,Completed
 ER7579LT,W193,W193.10090,Plan Peer Review & SMART Check / Address Comments,29-Oct-21,29-Oct-21,29-Oct-21 A,29-Oct-21 A,5,0,0,100%,,Completed
 ER7579LT,W193,W193.10080,Estimate Peer Review / Address Comments,28-Oct-21,28-Oct-21,28-Oct-21 A,28-Oct-21 A,5,0,0,100%,,Completed
 ER7579LT,W193,W193.1200,HNB PES Group Support - 2021,01-Apr-21,31-Dec-21,01-Apr-21 A,31-Dec-21 A,0,0,190,100%,,Completed
 ER7579LT,W193,W193.1210,HNB PES Group Support - 2022,04-Jan-22,30-Dec-22,04-Jan-22 A,30-Dec-22 A,249,0,251,100%,,Completed
 ER7579LT,W193,W193.1220,HNB PES Group Support - 2023,04-Jan-23,28-Dec-23,04-Jan-23 A,28-Dec-23 A,252,0,249,100%,,Completed
 ER7579LT,W193,W193.1230,CTO C&I Systems Group - 2021,01-Apr-21,31-Dec-21,01-Apr-21 A,31-Dec-21 A,0,0,189,100%,,Completed
 ER7579LT,W193,W193.1240,CTO C&I Systems Group - 2022,04-Jan-22,30-Dec-22,04-Jan-22 A,30-Dec-22 A,231,0,251,100%,,Completed
 ER7579LT,W193,W193.1250,CTO C&I Systems Group - 2023,03-Jan-23,28-Dec-23,03-Jan-23 A,28-Dec-23 A,0,0,250,100%,,Completed
 ER7579LT,W193,W193.1060,7000796830 - Thales Long Term Support Contract Q2 2021,01-Apr-21,30-Jun-21,01-Apr-21 A,30-Jun-21 A,0,0,61,100%,,Completed
 ER7579LT,W193,W193.1260,7000796830 - Thales Long Term Support Contract Q3 2021,01-Jul-21,01-Jul-21,01-Jul-21 A,01-Jul-21 A,0,0,1,100%,,Completed
 ER7579LT,W193,W193.1270,7000796830 - Thales Long Term Support Contract Q4 2021,01-Nov-21,02-Nov-21,01-Nov-21 A,02-Nov-21 A,0,0,1,100%,,Completed
 ER7579LT,W193,W193.1070,7000794821 - Thales Long Term Support Contract Q1 2021,01-Jan-21,31-Mar-21,01-Jan-21 A,31-Mar-21 A,0,0,63,100%,,Completed
 ER7579LT,W193,W193.1300,DPCS Long Term Support Contract 2021,01-Jan-21,31-Dec-21,01-Jan-21 A,31-Dec-21 A,1,0,253,100%,,Completed
 ER7579LT,W193,W193.1310,Argus Support Contract 2021,01-Apr-21,31-Dec-21,01-Apr-21 A,31-Dec-21 A,1,0,190,100%,,Completed
 ER7579LT,W193,W193.1320,DPCS Long Term Support Contract 2022,04-Jan-22,30-Dec-22,04-Jan-22 A,30-Dec-22 A,252,0,251,100%,,Completed
 ER7579LT,W193,W193.1330,Argus Support Contract 2022,04-Jan-22,30-Dec-22,04-Jan-22 A,30-Dec-22 A,230,0,251,100%,,Completed
 ER7579LT,W193,W193.1150,HNB 2021 Defuelling Software Build,01-Apr-21,30-Nov-21,01-Apr-21 A,30-Nov-21 A,169,0,169,100%,,Completed
 ER7579LT,W193,W193.1140,HNB 2021 Lifetime Sustainability Review (LSR) issued,01-Apr-21,02-Sep-21,01-Apr-21 A,02-Sep-21 A,126,0,105,100%,,Completed
 ER7579LT,W193,W193.1170,HNB 2022 Software Build - Update 36,04-Jan-22,30-Dec-22,04-Jan-22 A,30-Dec-22 A,230,0,251,100%,,Completed
 ER7579LT,W193,W193.1190,HNB 2023 R3 Software Build Complete (No Go - 2023 Software Build Not Required),,29-Jun-23,,29-Jun-23 A,0,0,0,100%,,Completed
 ER7579LT,W193,W193.1180,HNB 2023 Lifetime Sustainability Review (LSR) Complete,,14-Mar-23,,14-Mar-23 A,0,0,0,100%,,Completed
 ER7579LT,W193,W193.1050,7000802036 - Argus Support Contract 2021,01-Apr-21,30-Jun-21,01-Apr-21 A,30-Jun-21 A,0,0,61,100%,,Completed
 ER7579LT,W193,W193.2000,ETC (DD-PF),02-Jan-25,30-Apr-27,01-Apr-25,31-Dec-25,190,190,190,0%,0,Not Started
 ER7579LT,W193,W193.2010,HNB PES Group Support - 2024,02-Jan-24,31-Dec-24,02-Jan-24 A,31-Dec-24 A,254,0,254,100%,,Completed
 ER7579LT,W193,W193.2020,CTO C&I Systems Group - 2024,02-Jan-24,31-Dec-24,02-Jan-24 A,31-Dec-24 A,0,0,254,100%,,Completed
 ER7579LT,W193,W193.2030,HNB PES Group Support - 2025,02-Jan-25,31-Dec-25,02-Jan-25 A,31-Dec-25,253,190,253,24%,0,In Progress
 ER7579LT,W193,W193.2040,Plant Control Systems & Simulators (PCS&S) Group,02-Jan-25,31-Dec-25,02-Jan-25 A,31-Dec-25,253,190,253,24%,0,In Progress
 ER7579LT,W193,W193.2070,Thales Long Term Support Contract Q1 2022,04-Jan-22,31-Jan-22,04-Jan-22 A,31-Jan-22 A,0,0,19,100%,,Completed
 ER7579LT,W193,W193.2080,Thales Long Term Support Contract Q2 2022,01-Apr-22,01-Apr-22,01-Apr-22 A,01-Apr-22 A,0,0,1,100%,,Completed
 ER7579LT,W193,W193.2090,Thales Long Term Support Contract Q3 2022,01-Jul-22,01-Jul-22,01-Jul-22 A,01-Jul-22 A,0,0,1,100%,,Completed
 ER7579LT,W193,W193.2100,Thales Long Term Support Contract Q4 2022,03-Oct-22,03-Oct-22,03-Oct-22 A,03-Oct-22 A,0,0,1,100%,,Completed
 ER7579LT,W193,W193.2110,Thales Long Term Support Contract Q1 2023,04-Jan-23,04-Jan-23,04-Jan-23 A,04-Jan-23 A,1,0,1,100%,,Completed
 ER7579LT,W193,W193.2120,Thales Long Term Support Contract Q2 2023,03-Apr-23,03-Apr-23,03-Apr-23 A,03-Apr-23 A,1,0,1,100%,,Completed
 ER7579LT,W193,W193.2130,Thales Long Term Support Contract Q3 2023,03-Jul-23,03-Jul-23,03-Jul-23 A,03-Jul-23 A,1,0,1,100%,,Completed
 ER7579LT,W193,W193.2140,Thales Long Term Support Contract Q4 2023,02-Oct-23,02-Oct-23,02-Oct-23 A,02-Oct-23 A,1,0,1,100%,,Completed
 ER7579LT,W193,W193.2190,HNB 2024 R3 Software Build Complete  (No Longer Required),,29-Dec-23,,29-Dec-23 A,0,0,0,100%,,Completed
 ER7579LT,W193,W193.2200,HNB 2024 Lifetime Sustainability Review (LSR) issued (No Longer Required),,29-Dec-23,,29-Dec-23 A,0,0,0,100%,,Completed
 ER7579LT,W193,W193.2210,Thales Long Term Support Contract Q1 2024,02-Jan-24,28-Mar-24,02-Jan-24 A,28-Mar-24 A,63,0,63,100%,,Completed
 ER7579LT,W193,W193.2220,Thales Long Term Support Contract Q2 2024,02-Apr-24,28-Jun-24,02-Apr-24 A,28-Jun-24 A,62,0,62,100%,,Completed
 ER7579LT,W193,W193.2230,Thales Long Term Support Contract Q3 2024,01-Jul-24,29-Oct-24,01-Jul-24 A,29-Oct-24 A,65,0,86,100%,,Completed
 ER7579LT,W193,W193.2240,Thales Long Term Support Contract Q4 2024,01-Oct-24,31-Dec-24,01-Oct-24 A,31-Dec-24 A,64,0,64,100%,,Completed
 ER7579LT,W193,W193.2280,HNB 2025 R3 Software Build Complete  (No Longer Required),,29-Dec-23,,29-Dec-23 A,0,0,0,100%,,Completed
 ER7579LT,W193,W193.2290,HNB 2025 Lifetime Sustainability Review (LSR) issued  (No Longer Required),,29-Dec-23,,29-Dec-23 A,0,0,0,100%,,Completed
 ER7579LT,W193,W193.2300,Thales Long Term Support Contract Q1 2025  (No Longer Required),01-Dec-23,01-Dec-23,01-Dec-23 A,01-Dec-23 A,0,0,0,100%,,Completed
 ER7579LT,W193,W193.2310,Thales Long Term Support Contract Q2 2025  (No Longer Required),01-Dec-23,01-Dec-23,01-Dec-23 A,01-Dec-23 A,0,0,0,100%,,Completed
 ER7579LT,W193,W193.2320,Thales Long Term Support Contract Q3 2025  (No Longer Required),01-Dec-23,01-Dec-23,01-Dec-23 A,01-Dec-23 A,0,0,0,100%,,Completed
 ER7579LT,W193,W193.2330,Thales Long Term Support Contract Q4 2025  (No Longer Required),01-Dec-23,02-Jan-24,01-Dec-23 A,02-Jan-24 A,0,0,19,100%,,Completed
 ER7579LT,W193,W193.2340,Argus Support Contract - 6 Month 2022 Jan,04-Jan-22,31-Jan-22,04-Jan-22 A,31-Jan-22 A,0,0,19,100%,,Completed
 ER7579LT,W193,W193.2350,Argus Support Contract - 6 Month 2022 Jul,04-Jul-22,04-Jul-22,04-Jul-22 A,04-Jul-22 A,0,0,1,100%,,Completed
 ER7579LT,W193,W193.2360,HNB 2022 TGN097 Inspection,,30-Dec-22,,30-Dec-22 A,0,0,0,100%,,Completed
 ER7579LT,W193,W193.2370,HNB 2023 R4 TGN097 Inspection Complete,,10-Nov-23,,10-Nov-23 A,0,0,0,100%,,Completed
 ER7579LT,W193,W193.2380,HNB 2024 R3 TGN097 Inspection Complete  (No Longer Required),,29-Dec-23,,29-Dec-23 A,0,0,0,100%,,Completed
 ER7579LT,W193,W193.2400,HNB 2022 DPCS ALR2 Submission,,31-Aug-22,,31-Aug-22 A,0,0,0,100%,,Completed
 ER7579LT,W193,W193.2410,HNB 2023 DPCS ALR2 Submission,,31-Aug-23,,31-Aug-23 A,0,0,0,100%,,Completed
 ER7579LT,W193,W193.2420,HNB 2024 DPCS ALR2 Submission  (No Longer Required),,29-Dec-23,,29-Dec-23 A,0,0,0,100%,,Completed
 ER7579LT,W193,W193.2430,HNB 2025 DPCS ALR2 Submission  (No Longer Required),,29-Dec-23,,29-Dec-23 A,0,0,0,100%,,Completed
 ER7743LT,W527,W527.1888,Worldgrid Software Modification Support (LAMPS) - Q4 2027,01-Oct-27,31-Dec-27,01-Oct-27,31-Dec-27,66,66,66,0%,1012,Not Started
 ER7743LT,W527,W527.1817,Worldgrid Software Modification Support (LAMPS) - Q3 2027,01-Jul-27,30-Sep-27,01-Jul-27,30-Sep-27,65,65,65,0%,1078,Not Started
 ER7743LT,W527,W527.1653,Worldgrid Long Term Support Contract Q1 2026,05-Jan-26,31-Mar-26,05-Jan-26,31-Mar-26,62,62,62,0%,1458,Not Started
 ER7743LT,W527,W527.1703,Worldgrid Long Term Support Contract Q2 2026,01-Apr-26,30-Jun-26,01-Apr-26,30-Jun-26,61,61,61,0%,1397,Not Started
 ER7743LT,W527,W527.1756,Worldgrid Software Modification Support (LAMPS) - Q4 2026,01-Oct-26,31-Dec-26,01-Oct-26,31-Dec-26,65,65,65,0%,1267,Not Started
 ER7743LT,W527,W527.1735,Worldgrid Software Modification Support (LAMPS) - Q3 2026,01-Jul-26,30-Sep-26,01-Jul-26,30-Sep-26,65,65,65,0%,1332,Not Started
 ER7743LT,W527,W527.1651,Worldgrid System Engineering Support (SQEP) Q1 2026,05-Jan-26,31-Mar-26,05-Jan-26,31-Mar-26,62,62,62,0%,1458,Not Started
 ER7743LT,W527,W527.1701,Worldgrid System Engineering Support (SQEP) Q2 2026,01-Apr-26,30-Jun-26,01-Apr-26*,30-Jun-26,61,61,61,0%,1397,Not Started
 ER7743LT,W527,W527.1245,Atos Software Modification Support (LAMPS) - Q2 2023,03-Apr-23,03-Apr-23,03-Apr-23 A,03-Apr-23 A,1,0,1,100%,,Completed
 ER7743LT,W527,W527.1286,Eviden (formerly Atos) Software Modification Support (LAMPS) - Q4 2023,02-Oct-23,02-Oct-23,02-Oct-23 A,02-Oct-23 A,1,0,1,100%,,Completed
 ER7743LT,W527,W527.1806,Thales POLARIS & AIC Support Contract Q2 2022,01-Apr-27,30-Jun-27,01-Apr-27,30-Jun-27,63,63,63,0%,1143,Not Started
 ER7743LT,W527,W527.1815,Thales POLARIS & AIC Support Contract Q3 2027,01-Jul-27,30-Sep-27,01-Jul-27,30-Sep-27,65,65,65,0%,1078,Not Started
 ER7743LT,W527,W527.1885,Thales POLARIS & AIC Support Contract Q4 2027,01-Oct-27,31-Dec-27,01-Oct-27,31-Dec-27,66,66,66,0%,1012,Not Started
 ER7743LT,W527,W527.1785,Thales POLARIS & AIC Support Contract Q1 2027,04-Jan-27,31-Mar-27,04-Jan-27,31-Mar-27,61,61,61,0%,1012,Not Started
 ER7743LT,W527,W527.1754,Thales POLARIS & AIC Support Contract Q4 2026,01-Oct-26,31-Dec-26,01-Oct-26,31-Dec-26,65,65,65,0%,1267,Not Started
 ER7743LT,W527,W527.1732,Thales POLARIS & AIC Support Contract Q3 2026,01-Jul-26,30-Sep-26,01-Jul-26,30-Sep-26,65,65,65,0%,1332,Not Started
 ER7743LT,W527,W527.1705,Thales POLARIS & AIC Support Contract Q2 2026,01-Apr-26,30-Jun-26,01-Apr-26,30-Jun-26,61,61,61,0%,1397,Not Started
 ER7743LT,W527,W527.1655,Thales POLARIS & AIC Support Contract Q1 2026,05-Jan-26,31-Mar-26,05-Jan-26,31-Mar-26,62,62,62,0%,1267,Not Started
 ER7743LT,W527,W527.1624,Thales POLARIS & AIC Support Contract Q4 2025,01-Oct-25,31-Dec-25,01-Oct-25,31-Dec-25,64,64,64,0%,1521,Not Started
 ER7743LT,W527,W527.1594,Thales POLARIS & AIC Support Contract Q3 2025,01-Jul-25,30-Sep-25,01-Jul-25,30-Sep-25,65,65,65,0%,1585,Not Started
 ER7743LT,W527,W527.1574,Thales POLARIS & AIC Support Contract Q2 2025,01-Apr-25,30-Jun-25,01-Apr-25,30-Jun-25,61,61,61,0%,1650,Not Started
 ER7743LT,W527,W527.1492,Thales POLARIS & AIC Support Contract Q1 2025,02-Jan-25,31-Mar-25,02-Jan-25 A,31-Mar-25 A,63,0,63,100%,,Completed
 ER7743LT,W527,W527.1454,Thales POLARIS & AIC Support Contract Q4 2024,01-Oct-24,31-Dec-24,01-Oct-24 A,31-Dec-24 A,64,0,64,100%,,Completed
 ER7743LT,W527,W527.1425,Thales POLARIS & AIC Support Contract Q3 2024,01-Jul-24,30-Sep-24,01-Jul-24 A,30-Sep-24 A,65,0,65,100%,,Completed
 ER7743LT,W527,W527.1402,Thales POLARIS & AIC Support Contract Q2 2024,02-Apr-24,28-Jun-24,02-Apr-24 A,28-Jun-24 A,62,0,62,100%,,Completed
 ER7743LT,W527,W527.1324,Thales POLARIS & AIC Support Contract Q1 2024,02-Jan-24,28-Mar-24,02-Jan-24 A,28-Mar-24 A,63,0,63,100%,,Completed
 ER7743LT,W527,W527.1284,Thales POLARIS & AIC Support Contract Q4 2023,02-Oct-23,02-Oct-23,02-Oct-23 A,02-Oct-23 A,1,0,1,100%,,Completed
 ER7743LT,W527,W527.1264,Thales POLARIS & AIC Support Contract Q3 2023,03-Jul-23,03-Jul-23,03-Jul-23 A,03-Jul-23 A,1,0,1,100%,,Completed
 ER7743LT,W527,W527.1243,Thales POLARIS & AIC Support Contract Q2 2023,03-Apr-23,03-Apr-23,03-Apr-23 A,03-Apr-23 A,1,0,1,100%,,Completed
 ER7743LT,W527,W527.1175,Thales POLARIS & AIC Support Contract Q1 2023,04-Jan-23,04-Jan-23,04-Jan-23 A,04-Jan-23 A,1,0,0,100%,,Completed
 ER7743LT,W527,W527.3480,Thales POLARIS & AIC Support Contract Q4 2022,03-Oct-22,03-Oct-22,03-Oct-22 A,03-Oct-22 A,1,0,1,100%,,Completed
 ER7743LT,W527,W527.3470,Thales POLARIS & AIC Support Contract Q3 2022,01-Jul-22,01-Jul-22,01-Jul-22 A,01-Jul-22 A,1,0,1,100%,,Completed
 ER7743LT,W527,W527.1100,Thales POLARIS & AIC Support Contract Q2 2022,01-Apr-22,01-Apr-22,01-Apr-22 A,01-Apr-22 A,0,0,1,100%,,Completed
 ER7743LT,W527,W527.1020,Thales POLARIS & AIC Support Contract Q1 2022,04-Jan-22,05-Jan-22,04-Jan-22 A,05-Jan-22 A,63,0,1,100%,,Completed
 ER7743LT,W527,W527.1805,Worldgrid Long Term Support Contract Q2 2027,01-Apr-27,30-Jun-27,01-Apr-27,30-Jun-27,63,63,63,0%,1143,Not Started
 ER7743LT,W527,W527.1883,Worldgrid Long Term Support Contract Q4 2027,01-Oct-27,31-Dec-27,01-Oct-27,31-Dec-27,66,66,66,0%,1012,Not Started
 ER7743LT,W527,W527.1802,Worldgrid System Engineering Support (SQEP) Q2 2027,01-Apr-27,30-Jun-27,01-Apr-27*,30-Jun-27,63,63,63,0%,1143,Not Started
 ER7743LT,W527,W527.1809,Worldgrid System Engineering Support (SQEP) Q3 2027,01-Jul-27,30-Sep-27,01-Jul-27*,30-Sep-27,65,65,65,0%,1078,Not Started
 ER7743LT,W527,W527.1783,Worldgrid Long Term Support Contract Q1 2027,04-Jan-27,31-Mar-27,04-Jan-27,31-Mar-27,61,61,61,0%,1012,Not Started
 ER7743LT,W527,W527.1812,Worldgrid Long Term Support Contract Q3 2027,01-Jul-27,30-Sep-27,01-Jul-27,30-Sep-27,65,65,65,0%,1078,Not Started
 ER7743LT,W527,W527.1752,Worldgrid Long Term Support Contract Q4 2026,01-Oct-26,31-Dec-26,01-Oct-26,31-Dec-26,65,65,65,0%,1267,Not Started
 ER7743LT,W527,W527.1731,Worldgrid Long Term Support Contract Q3 2026,01-Jul-26,30-Sep-26,01-Jul-26,30-Sep-26,65,65,65,0%,1332,Not Started
 ER7743LT,W527,W527.1623,Worldgrid Long Term Support Contract Q4 2025,01-Oct-25,31-Dec-25,01-Oct-25,31-Dec-25,64,64,64,0%,1521,Not Started
 ER7743LT,W527,W527.1592,Worldgrid Long Term Support Contract Q3 2025,01-Jul-25,30-Sep-25,01-Jul-25,30-Sep-25,65,65,65,0%,1585,Not Started
 ER7743LT,W527,W527.1572,Worldgrid Long Term Support Contract Q2 2025,01-Apr-25,30-Jun-25,01-Apr-25,30-Jun-25,61,61,61,0%,1650,Not Started
 ER7743LT,W527,W527.1491,Worldgrid Long Term Support Contract Q1 2025,02-Jan-25,31-Mar-25,02-Jan-25 A,31-Mar-25 A,63,0,63,100%,,Completed
 ER7743LT,W527,W527.1452,Eviden Long Term Support Contract Q4 2024,01-Oct-24,31-Dec-24,01-Oct-24 A,31-Dec-24 A,64,0,64,100%,,Completed
 ER7743LT,W527,W527.1422,Eviden Long Term Support Contract Q3 2024,01-Jul-24,30-Sep-24,01-Jul-24 A,30-Sep-24 A,65,0,65,100%,,Completed
 ER7743LT,W527,W527.1401,Eviden Long Term Support Contract Q2 2024,02-Apr-24,28-Jun-24,02-Apr-24 A,28-Jun-24 A,41,0,62,100%,,Completed
 ER7743LT,W527,W527.1322,Eviden Long Term Support Contract Q1 2024,02-Jan-24,28-Mar-24,02-Jan-24 A,28-Mar-24 A,63,0,63,100%,,Completed
 ER7743LT,W527,W527.1282,Eviden (formerly Atos) Long Term Support Contract Q4 2023,02-Oct-23,02-Oct-23,02-Oct-23 A,02-Oct-23 A,1,0,1,100%,,Completed
 ER7743LT,W527,W527.1262,Eviden  (formerly Atos) Long Term Support Contract Q3 2023,03-Jul-23,03-Jul-23,03-Jul-23 A,03-Jul-23 A,1,0,1,100%,,Completed
 ER7743LT,W527,W527.1242,Atos Long Term Support Contract Q2 2023,03-Apr-23,03-Apr-23,03-Apr-23 A,03-Apr-23 A,1,0,1,100%,,Completed
 ER7743LT,W527,W527.1173,Atos Long Term Support Contract Q1 2023,04-Jan-23,04-Jan-23,04-Jan-23 A,04-Jan-23 A,1,0,0,100%,,Completed
 ER7743LT,W527,W527.3270,Atos Long Term Support Contract Q4 2022,03-Oct-22,03-Oct-22,03-Oct-22 A,03-Oct-22 A,1,0,1,100%,,Completed
 ER7743LT,W527,W527.3260,Atos Long Term Support Contract Q3 2022,01-Jul-22,01-Jul-22,01-Jul-22 A,01-Jul-22 A,1,0,1,100%,,Completed
 ER7743LT,W527,W527.3250,Atos Long Term Support Contract Q2 2022,01-Apr-22,01-Apr-22,01-Apr-22 A,01-Apr-22 A,60,0,1,100%,,Completed
 ER7743LT,W527,W527.3240,Atos Long Term Support Contract Q1 2022,04-Jan-22,05-Jan-22,04-Jan-22 A,05-Jan-22 A,63,0,1,100%,,Completed
 ER7582LT,W196,W196.10050,NSSB Sanction Approval for 2022,,14-Dec-21,,14-Dec-21 A,0,0,0,100%,,Completed
 ER7581LT,W195,W195.0140,Estimate Peer Review / Address Comments,28-Oct-21,29-Oct-21,28-Oct-21 A,29-Oct-21 A,5,0,1,100%,,Completed
 ER7581LT,W195,W195.0130,Plan Peer Review & SMART Check / Address Comments,28-Oct-21,29-Oct-21,28-Oct-21 A,29-Oct-21 A,5,0,1,100%,,Completed
 ER7581LT,W195,W195.10070,Finance Shuffle Budgets,30-Dec-21,31-Dec-21,30-Dec-21 A,31-Dec-21 A,2,0,2,100%,,Completed
 ER7581LT,W195,W195.10060,Request Direction Sanction Approval,24-Dec-21,29-Dec-21,24-Dec-21 A,29-Dec-21 A,2,0,2,100%,,Completed
 ER7581LT,W195,W195.0120,Obtain 'Pre-NSSB Signatures',07-Dec-21,08-Dec-21,07-Dec-21 A,08-Dec-21 A,2,0,2,100%,,Completed
 ER7581LT,W195,W195.0110,Confirm NSSB Board Availability,,18-Oct-21,,18-Oct-21 A,0,0,0,100%,,Completed
 ER7581LT,W195,W195.0030,Revise Project Definition Document (PDD) (If Required),27-Oct-21,28-Oct-21,27-Oct-21 A,28-Oct-21 A,5,0,1,100%,,Completed
 ER7581LT,W195,W195.10040,Obtain 'Post-NSSB Meeting Signatures',22-Dec-21,23-Dec-21,22-Dec-21 A,23-Dec-21 A,2,0,2,100%,,Completed
 ER7581LT,W195,W195.10030,Address NSSB Comments,15-Dec-21,21-Dec-21,15-Dec-21 A,21-Dec-21 A,5,0,5,100%,,Completed
 ER7581LT,W195,W195.10020,Present Paper to NSSB,14-Dec-21,14-Dec-21,14-Dec-21 A,14-Dec-21 A,1,0,1,100%,,Completed
 ER7581LT,W195,W195.10010,NSSB Members Review Documentation,09-Dec-21,13-Dec-21,09-Dec-21 A,13-Dec-21 A,3,0,3,100%,,Completed
 ER7581LT,W195,W195.0090,PCL Validate & Approve Baseline Package for NSSB Submission,03-Dec-21,06-Dec-21,03-Dec-21 A,06-Dec-21 A,2,0,2,100%,,Completed
 ER7581LT,W195,W195.0080,Update NSSB Paper,01-Dec-21,02-Dec-21,01-Dec-21 A,02-Dec-21 A,2,0,2,100%,,Completed
 ER7581LT,W195,W195.0070,Update Schedule/Estimate from Risk Log & Add Provisions (If Required),28-Oct-21,29-Oct-21,28-Oct-21 A,29-Oct-21 A,2,0,1,100%,,Completed
 ER7581LT,W195,W195.0060,Complete Risk Log with Estimates (If Required),28-Oct-21,29-Oct-21,28-Oct-21 A,29-Oct-21 A,2,0,1,100%,,Completed
 ER7581LT,W195,W195.0050,Hold Risk Workshop (If Required),28-Oct-21,29-Oct-21,28-Oct-21 A,29-Oct-21 A,1,0,1,100%,,Completed
 ER7581LT,W195,W195.0040,Ensure Alignment of Schedule & Estimate (If Required),28-Oct-21,29-Oct-21,28-Oct-21 A,29-Oct-21 A,3,0,1,100%,,Completed
 ER7581LT,W195,W195.0020,Estimate Scope (If Required),19-Oct-21,20-Oct-21,19-Oct-21 A,20-Oct-21 A,5,0,1,100%,,Completed
 ER7581LT,W195,W195.0010,Plan Scope in Primavera (If Required),18-Oct-21,19-Oct-21,18-Oct-21 A,19-Oct-21 A,5,0,1,100%,,Completed
 ER7581LT,W195,W195.10050,NSSB Sanction Approval  for 2022,,14-Dec-21,,14-Dec-21 A,0,0,0,100%,,Completed
 ER7581LT,W195,W195.0100,Issue Paper to NSSB Secretary,,08-Dec-21,,08-Dec-21 A,0,0,0,100%,,Completed
 ER6360LT,W085,W085.1440,Cost Summary Sellafield Flasks,09-May-22,01-May-24,09-May-22 A,01-May-24 A,311,0,500,100%,,Completed
 ER6360LT,W085,W085.1260,Phase C - D Kick-off,,24-May-22,,24-May-22 A,0,0,0,100%,,Completed
 ER6360LT,W085,W085.1250,Purchase NDA Flasks,,03-May-22,,03-May-22 A,0,0,0,100%,,Completed
 ER6360LT,W085,W085.1220,Contract Placed for Phase 2a,,03-May-22,,03-May-22 A,0,0,0,100%,,Completed
 ER6360LT,W085,W085.1210,Flasks Delivered to Storage Location,,02-Jan-25,,15-Sep-25,0,0,0,0%,5,Not Started
 ER6360LT,W085,W085.1200,NDA Spares Delivered,,15-Aug-22,,15-Aug-22 A,0,0,0,100%,,Completed
 ER6360LT,W085,W085.1190,>>>OUTGOING ENABLER (W104) Final Number of Flasks & Spares for Remediation,,31-Mar-22,,31-Mar-22 A,0,0,0,100%,,Completed
 ER6360LT,W085,W085.1180,>>>OUTGOING ENABLER (W104) 6th Flask Available,,19-Dec-24,,02-Jul-25,0,0,0,0%,68,Not Started
 ER6360LT,W085,W085.1170,>>>OUTGOING ENABLER (W104) 1st Flask Available,,02-Apr-24,,02-Apr-24 A,0,0,0,100%,,Completed
 ER6360LT,W085,W085.1160,Support,01-Feb-22,29-Apr-22,01-Feb-22 A,29-Apr-22 A,63,0,61,100%,,Completed
 ER6360LT,W085,W085.1140,Flask 1 - Refurbishment Complete,,01-Dec-23,,01-Dec-23 A,0,0,0,100%,,Completed
 ER6360LT,W085,A7450,Yellow Box - Cost Summary,03-Aug-20,01-Mar-21,03-Aug-20 A,01-Mar-21 A,100,0,147,100%,,Completed
 ER6360LT,W085,A7440,Ready for Dispatch,,12-May-22,,12-May-22 A,0,0,0,100%,,Completed
 ER6360LT,W085,A7420,Functional Testing (Ready for use),25-Jan-21,01-Mar-21,25-Jan-21 A,01-Mar-21 A,2,0,26,100%,,Completed
 ER6360LT,W085,A7410,Inspection,11-Jan-21,20-Jan-21,11-Jan-21 A,20-Jan-21 A,2,0,7,100%,,Completed
 ER6360LT,W085,A7400,Perform PLT,14-Jan-21,22-Jan-21,14-Jan-21 A,22-Jan-21 A,4,0,7,100%,,Completed
 ER6360LT,W085,A7390,Manufacture Yellow Box and PLT Equipment,02-Nov-20,13-Jan-21,02-Nov-20 A,13-Jan-21 A,32,0,50,100%,,Completed
 ER6360LT,W085,A7380,Procure Materials,18-Sep-20,30-Oct-20,18-Sep-20 A,30-Oct-20 A,15,0,30,100%,,Completed
 ER6360LT,W085,A7370,Produce BOM,15-Sep-20,17-Sep-20,15-Sep-20 A,17-Sep-20 A,3,0,3,100%,,Completed
 ER6360LT,W085,A7360,EDF Review Approve Quality Plan,08-Sep-20,14-Sep-20,08-Sep-20 A,14-Sep-20 A,10,0,5,100%,,Completed
 ER6360LT,W085,A7350,Produce Quality Plan,01-Sep-20,07-Sep-20,01-Sep-20 A,07-Sep-20 A,5,0,5,100%,,Completed
 ER6360LT,W085,A7340,EDF Review and Approve Design and Procedures for FAT/PLT,18-Sep-20,01-Oct-20,18-Sep-20 A,01-Oct-20 A,10,0,9,100%,,Completed
 ER6360LT,W085,A7330,Produce Design and Procedures for FAT/PLT,09-Sep-20,17-Sep-20,09-Sep-20 A,17-Sep-20 A,7,0,7,100%,,Completed
 ER6360LT,W085,A7320,EDF Review and Approve Final Design,04-Sep-20,08-Sep-20,04-Sep-20 A,08-Sep-20 A,6,0,3,100%,,Completed
 ER6360LT,W085,A7310,Produce Final Design,10-Aug-20,03-Sep-20,10-Aug-20 A,03-Sep-20 A,20,0,18,100%,,Completed
 ER6360LT,W085,A7300,EDF Initial Design Review,03-Aug-20,03-Aug-20,03-Aug-20 A,03-Aug-20 A,0,0,0,100%,,Completed
 ER6360LT,W085,A7290,Produce Initial Design,03-Aug-20,20-Aug-20,03-Aug-20 A,20-Aug-20 A,14,0,14,100%,,Completed
 ER6360LT,W085,W085.1130,Progress Lessons Learned Review - First Flask Condition,07-Mar-22,25-Mar-22,07-Mar-22 A,25-Mar-22 A,15,0,15,100%,,Completed
 ER6360LT,W085,W085.1120,Progress Lessons Learned Review - First Flask Condition,09-Jan-23,13-Jan-23,09-Jan-23 A,13-Jan-23 A,20,0,5,100%,,Completed
 ER6360LT,W085,W085.1110,Progress Lessons Learned Review- Spent Fuel Transport Capability (B5) / Fleetwide Spent Fuel Projects,04-Jan-21,12-Feb-21,04-Jan-21 A,12-Feb-21 A,20,0,30,100%,,Completed
 ER6360LT,W085,W085.1100,First Flask Condition - Lessons Learned Review Complete,,25-Mar-22,,25-Mar-22 A,0,0,0,100%,,Completed
 ER6360LT,W085,W085.1090,First Flask Remediation - Lessons Learned Review Complete,,01-Dec-23,,01-Dec-23 A,0,0,0,100%,,Completed
 ER6360LT,W085,W085.1080,Spent Fuel Transport Capability (B5) / Fleetwide Spent Fuel Projects - Lessons Learned Review Complete,,12-Feb-21,,12-Feb-21 A,0,0,0,100%,,Completed
 ER6360LT,W085,W085.A1210,Summary for REGION 1 Further Flasks in Readiness W085,02-Jan-18,18-Dec-24,02-Jan-18 A,15-Sep-25,1,115,1947,83%,5,In Progress
 ER6360LT,W085,W085.1070,Approval of Quality plans,08-Jul-20,28-Jul-20,08-Jul-20 A,28-Jul-20 A,15,0,15,100%,,Completed
 ER6360LT,W085,W085.1060,Produce Quality plans,22-Jun-20,27-Jul-20,22-Jun-20 A,27-Jul-20 A,20,0,25,100%,,Completed
 ER6360LT,W085,W085.1050,Approval of NDE procedures,08-Jul-20,28-Jul-20,08-Jul-20 A,28-Jul-20 A,15,0,15,100%,,Completed
 ER6360LT,W085,W085.1040,Produce NDE procedures,22-Jun-20,27-Jul-20,22-Jun-20 A,27-Jul-20 A,20,0,25,100%,,Completed
 ER6360LT,W085,W085.1030,CHX Access for collection of Bale arms,21-Sep-20,22-Sep-20,21-Sep-20 A,22-Sep-20 A,14,0,1,100%,,Completed
 ER6360LT,W085,W085.1020,Multi-team workshop,24-Jun-20,30-Jun-20,24-Jun-20 A,30-Jun-20 A,5,0,5,100%,,Completed
 ER6360LT,W085,W085.1010,Collection of CHX bale arms,,22-Sep-20,,22-Sep-20 A,0,0,0,100%,,Completed
 ER6360LT,W085,W085.1000,Asset Transfer of CHX bale arms,09-Mar-20,27-Mar-20,09-Mar-20 A,27-Mar-20 A,15,0,15,100%,,Completed
 ER6360LT,W085,W085.A7280,Operational Handover with NDA and SL,03-Dec-24,02-Jan-25,18-Aug-25,15-Sep-25,20,20,20,0%,16,Not Started
 ER6360LT,W085,W085.A7250,Flasks Available for Collection,,27-Dec-24,,30-Jul-25,0,0,0,0%,34,Not Started
 ER6360LT,W085,W085.A7240,Storage & Deployment Strategy Complete,,19-Sep-22,,19-Sep-22 A,0,0,0,100%,,Completed
 ER6360LT,W085,A7230,Update & Approve Storage & Deployment Strategy,03-Feb-21,30-Jul-21,03-Feb-21 A,30-Jul-21 A,40,0,124,100%,,Completed
 ER6360LT,W085,A7220,>>>OUTGOING ENABLER (W104) Early Indication of Flask Condition,,30-Sep-21,,30-Sep-21 A,0,0,0,100%,,Completed
 ER6360LT,W085,A7210,Four NDA Flasks Asset Transfer Complete (Decision Complete: No Asset Transfer),,29-May-20,,29-May-20 A,0,0,0,100%,,Completed
 ER6360LT,W085,W085.A7200,ETC (DD-PF),03-Jun-24,30-Apr-25,01-Jul-24 A,30-Sep-25,204,126,318,80%,5,In Progress
 ER6360LT,W085,W085.A7190,Actuals (PS-29-Apr-2022),02-Jan-18,28-Feb-20,02-Jan-18 A,28-Feb-20 A,548,0,547,100%,,Completed
 ER6360LT,W085,A7180,Negotiate Hire Agreement with DRS for Bale Arms,02-Jan-20,21-Feb-20,02-Jan-20 A,21-Feb-20 A,37,0,37,100%,,Completed
 ER6360LT,W085,A7170,Hire of the DRS Bale Arms,18-Mar-20,01-Jul-20,18-Mar-20 A,01-Jul-20 A,46,0,72,100%,,Completed
 ER6360LT,W085,A7150,Contractor project management B+-C - cost summary,02-Mar-20,25-Feb-22,02-Mar-20 A,25-Feb-22 A,345,0,503,100%,,Completed
 ER6360LT,W085,W085.A7140,Flask Licensing & Modification Preparation (Cat A Mod),03-May-22,21-Nov-22,03-May-22 A,21-Nov-22 A,20,0,141,100%,,Completed
 ER6360LT,W085,A7130,Discovery Milestone: Early Indication of Flask Condition,,29-Sep-21,,29-Sep-21 A,0,0,0,100%,,Completed
 ER6360LT,W085,A5280,Manufacture special tools - LTM,23-Jul-20,27-Oct-20,23-Jul-20 A,27-Oct-20 A,73,0,67,100%,,Completed
 ER6360LT,W085,A5270,Manufacture special tools - Park Stand and LSM,01-Sep-20,26-Oct-20,01-Sep-20 A,26-Oct-20 A,38,0,39,100%,,Completed
 ER6360LT,W085,A5260,EDF review and approval tool designs,22-Jun-20,22-Jun-20,22-Jun-20 A,22-Jun-20 A,15,0,1,100%,,Completed
 ER6360LT,W085,A5250,Produce tooling design,03-Feb-20,22-Jun-20,03-Feb-20 A,22-Jun-20 A,40,0,97,100%,,Completed
 ER6360LT,W085,A5130,Transportation of Flasks to Contractor Workshop Complete - HNB,,29-Jun-20,,29-Jun-20 A,0,0,0,100%,,Completed
 ER6360LT,W085,A5080,INS to return SFD adminstrative costs to inform Cost Benefit Analysis,01-Apr-19,26-Apr-19,01-Apr-19 A,26-Apr-19 A,18,0,17,100%,,Completed
 ER6360LT,W085,A5070,INS to return Pre-Assembly Quotes for Routine & Non-Routine Spares,01-Apr-19,26-Apr-19,01-Apr-19 A,26-Apr-19 A,18,0,17,100%,,Completed
 ER6360LT,W085,A5060,EDF Issue Formal Letter to NDA to initiate negotiations,,03-May-19,,03-May-19 A,0,0,0,100%,,Completed
 ER6360LT,W085,A5050,Decision Point: Include Paint Work in Flask Remedial Tender or Not?,,04-Feb-19,,04-Feb-19 A,0,0,0,100%,,Completed
 ER6360LT,W085,A5040,Review RFI Returns for Flask Paint Work,25-Jan-19,04-Feb-19,25-Jan-19 A,04-Feb-19 A,7,0,6,100%,,Completed
 ER6360LT,W085,A5030,EDF decision making on way forward with ownership arrangements,11-Oct-18,15-Mar-19,11-Oct-18 A,15-Mar-19 A,109,0,109,100%,,Completed
 ER6360LT,W085,A5020,Review requirement to obtain quotes for Haulage / Road Transport of Flasks,23-Jul-19,02-Dec-19,23-Jul-19 A,02-Dec-19 A,93,0,93,100%,,Completed
 ER6360LT,W085,A5010,WOLF Team review specification LT/FFIR/SPEC /001/19 & confirm delivery timescales,14-Jan-19,31-Jan-19,14-Jan-19 A,31-Jan-19 A,14,0,13,100%,,Completed
 ER6360LT,W085,A5000,Draft & Issue Specification for WOLF Modelling,14-Jan-19,30-Jan-19,14-Jan-19 A,30-Jan-19 A,13,0,12,100%,,Completed
 ER6360LT,W085,A4990,Review Maintenance Capacity,25-Oct-18,31-Dec-18,25-Oct-18 A,31-Dec-18 A,46,0,46,100%,,Completed
 ER6360LT,W085,A4980,Prepare ITT for Flask Remedial Works Tender,10-Jun-19,12-Jul-19,10-Jun-19 A,12-Jul-19 A,25,0,25,100%,,Completed
 ER6360LT,W085,A4970,Approve Recovery Plan - Rebuild,03-Jun-19,12-Jul-19,03-Jun-19 A,12-Jul-19 A,30,0,30,100%,,Completed
 ER6360LT,W085,A4960,Review Recovery Plan - Rebuild,01-Mar-19,24-May-19,01-Mar-19 A,24-May-19 A,58,0,57,100%,,Completed
 ER6360LT,W085,A4950,Author Recovery Plan - Rebuild,02-Jan-19,31-Jan-19,02-Jan-19 A,31-Jan-19 A,22,0,21,100%,,Completed
 ER6360LT,W085,A4940,Approve Recovery Plan - Refurbish,12-Jun-19,01-Jul-19,12-Jun-19 A,01-Jul-19 A,14,0,14,100%,,Completed
 ER6360LT,W085,A4930,Review Recovery Plan - Refurbish,03-Jun-19,09-Jul-19,03-Jun-19 A,09-Jul-19 A,27,0,27,100%,,Completed
 ER6360LT,W085,A4920,Author Recovery Plan - Refurbish,02-Jan-19,26-Apr-19,02-Jan-19 A,26-Apr-19 A,81,0,81,100%,,Completed
 ER6360LT,W085,A4910,Approve Recovery Plan - Inspect,03-Jun-19,12-Jul-19,03-Jun-19 A,12-Jul-19 A,30,0,30,100%,,Completed
 ER6360LT,W085,A4900,Review Recovery Plan - Inspect,21-Jan-19,24-May-19,21-Jan-19 A,24-May-19 A,87,0,86,100%,,Completed
 ER6360LT,W085,A4890,Author Recovery Plan - Inspect,05-Nov-18,21-Dec-18,05-Nov-18 A,21-Dec-18 A,35,0,35,100%,,Completed
 ER6360LT,W085,A4880,Approve Recovery Plan - Unbox,03-Jun-19,18-Jul-19,03-Jun-19 A,18-Jul-19 A,34,0,34,100%,,Completed
 ER6360LT,W085,A4840,Early work to prepare for CETS for Flask Remedial Works Tender,01-Nov-18,12-Dec-18,01-Nov-18 A,12-Dec-18 A,30,0,29,100%,,Completed
 ER6360LT,W085,A4830,Request further detailed indicative quotes for Crane transport to railhead,02-Jan-19,31-Jan-19,02-Jan-19 A,31-Jan-19 A,22,0,21,100%,,Completed
 ER6360LT,W085,A4820,RFI Return Period for Flask Paint Work,07-Jan-19,24-Jan-19,07-Jan-19 A,24-Jan-19 A,14,0,14,100%,,Completed
 ER6360LT,W085,A4810,Issue RFI for Flask Paint Work to Supply Chain,,04-Jan-19,,04-Jan-19 A,0,0,0,100%,,Completed
 ER6360LT,W085,A4800,Prepare RFI for Flask Paint Work,19-Nov-18,04-Jan-19,19-Nov-18 A,04-Jan-19 A,32,0,32,100%,,Completed
 ER6360LT,W085,A4790,Review Recovery Plan - Unbox,21-Jan-19,24-May-19,21-Jan-19 A,24-May-19 A,87,0,86,100%,,Completed
 ER6360LT,W085,A4770,Request indicative quotes from DRS for bespoke transport services,18-Oct-18,03-Dec-18,18-Oct-18 A,03-Dec-18 A,32,0,32,100%,,Completed
 ER6360LT,W085,A4760,Author Recovery Plan - Unbox,19-Oct-18,07-Dec-18,19-Oct-18 A,07-Dec-18 A,36,0,36,100%,,Completed
 ER6360LT,W085,A4750,Author & Issue Initial Inspection Summary,11-Sep-18,31-Oct-18,11-Sep-18 A,31-Oct-18 A,37,0,36,100%,,Completed
 ER6360LT,W085,A4740,Finalise Contract for Flask Remedial Works,23-Jan-20,31-Jan-20,23-Jan-20 A,31-Jan-20 A,7,0,7,100%,,Completed
 ER6360LT,W085,A4730,Gate B+-C Procurement Support - Cost Summary,02-Mar-20,03-May-22,02-Mar-20 A,03-May-22 A,380,0,546,100%,,Completed
 ER6360LT,W085,A4710,Spares Strategy Issued to INS LT/EAN/DGSF/009/AGR/18 Rev000,,19-Oct-18,,19-Oct-18 A,0,0,0,100%,,Completed
 ER6360LT,W085,W085.A4700,Handover of Life Time Records for all Flasks & Spares Complete,,18-Dec-24,,23-Jul-25,0,0,0,0%,32,Not Started
 ER6360LT,W085,A4690,Tier 3 Spares Purchase Complete,,30-Oct-20,,30-Oct-20 A,0,0,0,100%,,Completed
 ER6360LT,W085,A4680,Tier 1 & 2 Spares Purchase Complete,,15-Dec-20,,15-Dec-20 A,0,0,0,100%,,Completed
 ER6360LT,W085,A4670,Tier 2 Spares Purchase Complete,,15-Dec-20,,15-Dec-20 A,0,0,0,100%,,Completed
 ER6360LT,W085,A4650,Pre-assembly of valves (B39),16-Dec-20,18-Jun-21,16-Dec-20 A,18-Jun-21 A,97,0,126,100%,,Completed
 ER6360LT,W085,W085.A4630,All identified Spares Recovered & Remediation Works Complete,,04-Dec-24,,09-Jul-25,0,0,0,0%,32,Not Started
 ER6360LT,W085,A4620,Work Instruction issued to contractor & Flask Remediation Works Commence,,29-Apr-22,,29-Apr-22 A,0,0,0,100%,,Completed
 ER6360LT,W085,A4610,Flask Dismantle & Inspection Report issued to EDF,,01-Mar-22,,01-Mar-22 A,0,0,0,100%,,Completed
 ER6360LT,W085,A4590,Transportation of Flasks to Contractor Workshop Complete,,29-Jun-20,,29-Jun-20 A,0,0,0,100%,,Completed
 ER6360LT,W085,A4570,Contractor Flask Workshop Mobilised,,02-Nov-20,,02-Nov-20 A,0,0,0,100%,,Completed
 ER6360LT,W085,A4560,Flask Transportation Plan Approved & Issued to Contractor,,30-Jun-20,,30-Jun-20 A,0,0,0,100%,,Completed
 ER6360LT,W085,A4550,Flask Remedial Works Tender Evaluation Period Complete,,25-Sep-19,,25-Sep-19 A,0,0,0,100%,,Completed
 ER6360LT,W085,A4540,CETS for Flask Remedial Works Complete [inc. ITT],,12-Jul-19,,12-Jul-19 A,0,0,0,100%,,Completed
 ER6360LT,W085,A4530,Flask Lifetime Strategy Approved,,08-Apr-19,,08-Apr-19 A,0,0,0,100%,,Completed
 ER6360LT,W085,A4520,Review of Licensing & B39 Arrangements Complete,,30-Nov-18,,30-Nov-18 A,0,0,0,100%,,Completed
 ER6360LT,W085,A4510,Spares Cost Benefit Analysis Approved,,07-Jun-19,,07-Jun-19 A,0,0,0,100%,,Completed
 ER6360LT,W085,A4500,Spares Recovery Plans [remediated for future spares stocks] Approved,,12-Jul-19,,12-Jul-19 A,0,0,0,100%,,Completed
 ER6360LT,W085,A4490,INS intial comments on Consumable Spares received by EDF,,25-Oct-18,,25-Oct-18 A,0,0,0,100%,,Completed
 ER6360LT,W085,A4480,EDF receive INS Quotes for Non Routine Spares,,29-Mar-19,,29-Mar-19 A,0,0,0,100%,,Completed
 ER6360LT,W085,A4470,Quality Plans for Non-Routine Spares Approved by EDF,,31-Dec-18,,31-Dec-18 A,0,0,0,100%,,Completed
 ER6360LT,W085,A4460,Phase 2 of E118 Survey Complete,,15-Feb-19,,15-Feb-19 A,0,0,0,100%,,Completed
 ER6360LT,W085,A4450,EDF Acceptance of E118 Survey Report,,29-Mar-19,,29-Mar-19 A,0,0,0,100%,,Completed
 ER6360LT,W085,W085.A4430,Gate C-D Flask Storage - Cost Summary,30-Dec-24,02-May-25,11-Sep-25,07-Oct-25,24,19,19,0%,0,Not Started
 ER6360LT,W085,A4410,"Undertake Phase 2 of E118 Survey [deferred scope from Gate A-B, Trend Log #08]",15-Oct-18,15-Feb-19,15-Oct-18 A,15-Feb-19 A,87,0,86,100%,,Completed
 ER6360LT,W085,A4400,Carryout Contractual Negotiations with NDA to agree arrangements,17-Jun-19,29-May-20,17-Jun-19 A,29-May-20 A,204,0,242,100%,,Completed
 ER6360LT,W085,A4370,Flask Transportation - Cost Summary,15-Jun-20,29-Jun-20,15-Jun-20 A,29-Jun-20 A,51,0,10,100%,,Completed
 ER6360LT,W085,A4360,Gate B-C Flask Lifetime Strategy - Cost Summary,25-Oct-18,08-Apr-19,25-Oct-18 A,08-Apr-19 A,115,0,114,100%,,Completed
 ER6360LT,W085,A4350,Gate B-C NDA Flask / Spares Consolidation - Cost Summary,11-Oct-18,29-May-20,11-Oct-18 A,29-May-20 A,374,0,412,100%,,Completed
 ER6360LT,W085,A4340,Gate B-C Flask Remedial Works - Spares Cost Benefit Analysis & Recovery Plans - Cost Summary,11-Oct-18,12-Jul-19,11-Oct-18 A,12-Jul-19 A,190,0,190,100%,,Completed
 ER6360LT,W085,A4330,Gate B-C Flask Remedial Works - Condition Survey - Cost Summary,15-Oct-18,12-Apr-19,15-Oct-18 A,12-Apr-19 A,127,0,127,100%,,Completed
 ER6360LT,W085,A4310,Preparation for flask transportation - cost summary,02-Dec-19,15-Jun-20,02-Dec-19 A,15-Jun-20 A,107,0,133,100%,,Completed
 ER6360LT,W085,A4300,Gate B- B+  Procurement - Flask Remedial Works Cost Summary,01-Nov-18,22-Jan-20,01-Nov-18 A,22-Jan-20 A,309,0,309,100%,,Completed
 ER6360LT,W085,A4280,ONR Engagement for Acknowledgement of additional flasks B-C,04-Jan-21,13-May-22,04-Jan-21 A,13-May-22 A,120,0,344,100%,,Completed
 ER6360LT,W085,W085.A4270,SL Flask Licensing & Modification Approval (Cat A Mod) (ONR),28-Nov-22,31-May-23,28-Nov-22 A,31-May-23 A,35,0,125,100%,,Completed
 ER6360LT,W085,W085.A4260,Produce lifetime deployment strategy,03-May-22,16-Sep-22,03-May-22 A,16-Sep-22 A,40,0,96,100%,,Completed
 ER6360LT,W085,A4250,NDA EDF Commercial Arrangements Complete for 4 NDA owned flasks (closed - not actioned),,29-May-20,,29-May-20 A,0,0,0,100%,,Completed
 ER6360LT,W085,A4240,Confirm EDF preferred strategy for handling of NDA Flasks,11-Oct-18,05-Dec-18,11-Oct-18 A,05-Dec-18 A,40,0,40,100%,,Completed
 ER6360LT,W085,A4160,Discovery Milestone: Final number of flasks & spares for remediation defined,,29-Jun-21,,29-Jun-21 A,0,0,0,100%,,Completed
 ER6360LT,W085,A4130,Tier 1 spares procurement,20-Jan-20,15-Dec-20,20-Jan-20 A,15-Dec-20 A,232,0,232,100%,,Completed
 ER6360LT,W085,A4110,Instruction to purchase spares (to NDA),02-Jan-20,08-Jan-20,02-Jan-20 A,08-Jan-20 A,5,0,5,100%,,Completed
 ER6360LT,W085,A4050,Task Request issued to INS for Consumable Spares,,23-Oct-18,,23-Oct-18 A,0,0,0,100%,,Completed
 ER6360LT,W085,A4060,INS initial comments returned to EDF,24-Oct-18,25-Oct-18,24-Oct-18 A,25-Oct-18 A,2,0,1,100%,,Completed
 ER6360LT,W085,A4040,Author INS Task Request for Spares Quotes,11-Oct-18,23-Oct-18,11-Oct-18 A,23-Oct-18 A,9,0,8,100%,,Completed
 ER6360LT,W085,A4030,Review Operational Impact of entering flasks into service early,25-Oct-18,19-Dec-18,25-Oct-18 A,19-Dec-18 A,40,0,40,100%,,Completed
 ER6360LT,W085,A4020,INS prepare quality plans,01-Nov-18,30-Nov-18,01-Nov-18 A,30-Nov-18 A,22,0,21,100%,,Completed
 ER6360LT,W085,A4010,Discovery Milestone: INS provide indicative timescale for delivery of quotes for Non-Routine Spares,,25-Oct-18,,25-Oct-18 A,0,0,0,100%,,Completed
 ER6360LT,W085,A3950,Issue Task Request for Non-Routine Spares to INS,,23-Oct-18,,23-Oct-18 A,0,0,0,100%,,Completed
 ER6360LT,W085,A3990,INS issue quotes to EDF for Non-Routine Spares,25-Mar-19,29-Mar-19,25-Mar-19 A,29-Mar-19 A,5,0,4,100%,,Completed
 ER6360LT,W085,A3980,INS tender period,02-Jan-19,22-Mar-19,02-Jan-19 A,22-Mar-19 A,58,0,57,100%,,Completed
 ER6360LT,W085,A3970,EDF approve quality plans,01-Nov-18,31-Dec-18,01-Nov-18 A,31-Dec-18 A,41,0,40,100%,,Completed
 ER6360LT,W085,A4000,EDF review quotes,01-Apr-19,12-Apr-19,01-Apr-19 A,12-Apr-19 A,10,0,10,100%,,Completed
 ER6360LT,W085,A3960,INS initial comments returned to EDF,24-Oct-18,25-Oct-18,24-Oct-18 A,25-Oct-18 A,2,0,1,100%,,Completed
 ER6360LT,W085,A3940,Issue Task Request for Routine Spares to INS,,23-Oct-18,,23-Oct-18 A,0,0,0,100%,,Completed
 ER6360LT,W085,A3930,INS issue quotes to EDF for Routine Spares,25-Mar-19,29-Mar-19,25-Mar-19 A,29-Mar-19 A,5,0,4,100%,,Completed
 ER6360LT,W085,A3920,INS liaison with Sellafield,01-Nov-18,22-Mar-19,01-Nov-18 A,22-Mar-19 A,99,0,98,100%,,Completed
 ER6360LT,W085,A3910,EDF response,24-Oct-18,25-Oct-18,24-Oct-18 A,25-Oct-18 A,2,0,1,100%,,Completed
 ER6360LT,W085,A3900,Issue Spares Strategy to INS LT/EAN/DGSF/009/AGR/18 Rev000,11-Oct-18,19-Oct-18,11-Oct-18 A,19-Oct-18 A,7,0,6,100%,,Completed
 ER6360LT,W085,A3890,Author INS Task Request for Spares Quotes,23-Oct-18,23-Oct-18,23-Oct-18 A,23-Oct-18 A,1,0,0,100%,,Completed
 ER6360LT,W085,A3880,Decision Point: Enter Flasks Straight into Service or place in storage?,,30-Nov-18,,30-Nov-18 A,0,0,0,100%,,Completed
 ER6360LT,W085,W085.A3830,Issue Work Instruction to Contractor & Flask Remedial Works Commence,,03-May-22,,03-May-22 A,0,0,0,100%,,Completed
 ER6360LT,W085,A3790,Author Agreed Contract for Flask Remedial Works,16-Jan-20,22-Jan-20,16-Jan-20 A,22-Jan-20 A,5,0,5,100%,,Completed
 ER6360LT,W085,A3760,Contract Negotiations for Flask Remedial Works,02-Jan-20,15-Jan-20,02-Jan-20 A,15-Jan-20 A,10,0,10,100%,,Completed
 ER6360LT,W085,A3740,Agree Post Tender Assessment Criteria,30-May-19,01-Jul-19,30-May-19 A,01-Jul-19 A,23,0,22,100%,,Completed
 ER6360LT,W085,A3730,Flask Spares Strategy Complete LT/EAN/DGSF/009/AGR/18,,27-Jul-18,,27-Jul-18 A,0,0,0,100%,,Completed
 ER6360LT,W085,A3710,Issue Flask Transportation Plan LT/REP/DGSF/009/AGR/18 Rev002,,30-Jun-20,,30-Jun-20 A,0,0,0,100%,,Completed
 ER6360LT,W085,A3700,Approve Flask Transportation Plan Rev002,01-Oct-19,22-Jun-20,01-Oct-19 A,22-Jun-20 A,111,0,183,100%,,Completed
 ER6360LT,W085,A3690,Update Flask Transportation Plan,21-Oct-19,31-Jan-20,21-Oct-19 A,31-Jan-20 A,72,0,72,100%,,Completed
 ER6360LT,W085,A3680,Finalise Flask Transportation plan with chosen Flask Remedial Works Contractor,18-May-20,29-May-20,18-May-20 A,29-May-20 A,9,0,9,100%,,Completed
 ER6360LT,W085,A3670,Review Maintenance Contracts & Sellafield / B39 requirements for entering new flasks into the system,25-Oct-18,30-Nov-18,25-Oct-18 A,30-Nov-18 A,27,0,26,100%,,Completed
 ER6360LT,W085,A3660,Carryout Risk profiling [WOLF - Recovery Times],19-Jul-21,30-Jul-21,19-Jul-21 A,30-Jul-21 A,60,0,10,100%,,Completed
 ER6360LT,W085,A3650,Assess Liabilities Costs,25-Oct-18,30-Nov-18,25-Oct-18 A,30-Nov-18 A,27,0,26,100%,,Completed
 ER6360LT,W085,A3630,Carryout Risk Workshops,25-Oct-18,09-Nov-18,25-Oct-18 A,09-Nov-18 A,12,0,11,100%,,Completed
 ER6360LT,W085,A3610,Update Spares Spares Strategy & Re-issue LT/EAN/DGSF/009/AGR/18 Rev001,18-Mar-19,12-Apr-19,18-Mar-19 A,12-Apr-19 A,20,0,19,100%,,Completed
 ER6360LT,W085,A3560,Tender Summary Report Compiled & preferred supplier identified for Flask Remedial Works,26-Sep-19,02-Jan-20,26-Sep-19 A,02-Jan-20 A,67,0,67,100%,,Completed
 ER6360LT,W085,A3540,EDF review quotes,01-Apr-19,12-Apr-19,01-Apr-19 A,12-Apr-19 A,10,0,9,100%,,Completed
 ER6360LT,W085,A3530,INS initial comments returned to EDF,24-Oct-18,25-Oct-18,24-Oct-18 A,25-Oct-18 A,2,0,1,100%,,Completed
 ER6360LT,W085,A3520,Approve Spares Cost Benefit Analysis,03-Jun-19,07-Jun-19,03-Jun-19 A,07-Jun-19 A,5,0,5,100%,,Completed
 ER6360LT,W085,A3510,Review Spares Cost Benefit Analysis,13-May-19,31-May-19,13-May-19 A,31-May-19 A,14,0,13,100%,,Completed
 ER6360LT,W085,A3500,Approve Flask Lifetime Strategy Paper,01-Apr-19,08-Apr-19,01-Apr-19 A,08-Apr-19 A,6,0,5,100%,,Completed
 ER6360LT,W085,A3490,Author Flask Lifetime Strategy Paper,03-Dec-18,11-Jan-19,03-Dec-18 A,11-Jan-19 A,27,0,26,100%,,Completed
 ER6360LT,W085,A3420,Approve Spares Recovery Plans,06-Jun-19,12-Jul-19,06-Jun-19 A,12-Jul-19 A,27,0,27,100%,,Completed
 ER6360LT,W085,A3410,Author Spares Recovery Plans,19-Oct-18,26-Apr-19,19-Oct-18 A,26-Apr-19 A,131,0,131,100%,,Completed
 ER6360LT,W085,A3380,Approve Flask Transportation Plan LT/REP/DGSF/009/AGR/18 Rev001,29-Oct-18,31-Oct-18,29-Oct-18 A,31-Oct-18 A,3,0,2,100%,,Completed
 ER6360LT,W085,A3370,Review Flask Transportation Plan LT/REP/DGSF/009/AGR/18 Rev000,11-Oct-18,23-Oct-18,11-Oct-18 A,23-Oct-18 A,9,0,8,100%,,Completed
 ER6360LT,W085,A3360,Review Flask Lifetime Strategy Paper,14-Jan-19,29-Mar-19,14-Jan-19 A,29-Mar-19 A,55,0,54,100%,,Completed
 ER6360LT,W085,A3350,Review Spares Recovery Plans,21-Jan-19,09-Jul-19,21-Jan-19 A,09-Jul-19 A,118,0,118,100%,,Completed
 ER6360LT,W085,A3330,Update Flask Remedial Works Tender - Contingency Assumptions,01-Apr-19,12-Apr-19,01-Apr-19 A,12-Apr-19 A,10,0,10,100%,,Completed
 ER6360LT,W085,A3320,Carryout EDF Review E118 Survey Report [LSM24],18-Mar-19,29-Mar-19,18-Mar-19 A,29-Mar-19 A,10,0,9,100%,,Completed
 ER6360LT,W085,A3310,Sellafield produce Survey Report for LSM24,18-Feb-19,14-Mar-19,18-Feb-19 A,14-Mar-19 A,19,0,18,100%,,Completed
 ER6360LT,W085,A3240,Author INS Task Request for quotes,23-Oct-18,23-Oct-18,23-Oct-18 A,23-Oct-18 A,1,0,0,100%,,Completed
 ER6360LT,W085,A3230,Carryout Spares Cost Benefit Analysis - Recover V Buy,28-Mar-19,31-May-19,28-Mar-19 A,31-May-19 A,43,0,42,100%,,Completed
 ER6360LT,W085,A3210,E118 Flask Lid Lifted [KMS.SP],,10-Sep-18,,10-Sep-18 A,0,0,0,100%,,Completed
 ER6360LT,W085,A3200,Pre-Maintenance Testing (Condition Surveys) Complete [KMS.SP],,10-Sep-18,,10-Sep-18 A,0,0,0,100%,,Completed
 ER6360LT,W085,A3190,RFI Procurement Strategy Confirmed [KMS.SP],,31-Jul-18,,31-Jul-18 A,0,0,0,100%,,Completed
 ER6360LT,W085,A3180,RFI Review & Evaluation Period Complete [KMS.SP],,17-Jul-18,,17-Jul-18 A,0,0,0,100%,,Completed
 ER6360LT,W085,A3160,Modifications History Flask Safety Case to be uploaded to AMS/CDMS,03-Jul-18,04-Jul-18,03-Jul-18 A,04-Jul-18 A,2,0,2,100%,,Completed
 ER6360LT,W085,A3150,INS Review Period,30-Jul-18,31-Aug-18,30-Jul-18 A,31-Aug-18 A,24,0,23,100%,,Completed
 ER6360LT,W085,A3140,E118 Survey Requirements Issue to INS,,27-Jul-18,,27-Jul-18 A,0,0,0,100%,,Completed
 ER6360LT,W085,A3130,E118 Survey Requirements Review & Approve by DA,29-May-18,27-Jul-18,29-May-18 A,27-Jul-18 A,44,0,43,100%,,Completed
 ER6360LT,W085,A3120,E118 Survey Requirements Specified [Report],14-May-18,25-May-18,14-May-18 A,25-May-18 A,10,0,10,100%,,Completed
 ER6360LT,W085,A3110,Impact of FFiR on Liabilities & Cost Benefit Analysis Complete,,22-Aug-18,,22-Aug-18 A,0,0,0,100%,,Completed
 ER6360LT,W085,A3100,Update Report & Incorporate Comments,07-Aug-18,22-Aug-18,07-Aug-18 A,22-Aug-18 A,12,0,12,100%,,Completed
 ER6360LT,W085,A3090,NLA Review Period,16-Jul-18,06-Aug-18,16-Jul-18 A,06-Aug-18 A,16,0,15,100%,,Completed
 ER6360LT,W085,A3080,Report on FFiR Impact on Liabilities & Cost Benefit Analysis Issued to NLA,,13-Jul-18,,13-Jul-18 A,0,0,0,100%,,Completed
 ER6360LT,W085,A3070,Approve & Issue Report on FFiR Impact on Liabilities & Cost Benefit Analysis,02-Jul-18,13-Jul-18,02-Jul-18 A,13-Jul-18 A,10,0,10,100%,,Completed
 ER6360LT,W085,A3060,Author Report on FFiR Impact on Liabilities & Cost Benefit Analysis,11-Jun-18,29-Jun-18,11-Jun-18 A,29-Jun-18 A,15,0,14,100%,,Completed
 ER6360LT,W085,A3050,Carryout Cost Benefit Analysis of FFiR Impact on Liabilities,14-May-18,15-Jun-18,14-May-18 A,15-Jun-18 A,24,0,23,100%,,Completed
 ER6360LT,W085,A3040,Carryout Review of FFiR Impact on Liabilities,14-May-18,15-Jun-18,14-May-18 A,15-Jun-18 A,24,0,24,100%,,Completed
 ER6360LT,W085,A3030,Review of Impact of FFiR on Liabilities & Cost Benefit Analysis Complete,,22-Aug-18,,22-Aug-18 A,0,0,0,100%,,Completed
 ER6360LT,W085,A3010,Flask Modifications Safety Case Approved,,31-May-18,,31-May-18 A,0,0,0,100%,,Completed
 ER6360LT,W085,A2980,Gate B+-C Flask Remediation - Preparation Cost Summary,02-Nov-20,29-Apr-22,02-Nov-20 A,29-Apr-22 A,358,0,376,100%,,Completed
 ER6360LT,W085,A2920,Gate B Major Schemes PRC Approval,,25-Sep-18,,25-Sep-18 A,0,0,0,100%,,Completed
 ER6360LT,W085,A2910,Gate B Major Schemes PRC Submission,,17-Sep-18,,17-Sep-18 A,0,0,0,100%,,Completed
 ER6360LT,W085,A2900,Gate A Major Schemes PRC Approval,,21-Mar-18,,21-Mar-18 A,0,0,0,100%,,Completed
 ER6360LT,W085,A2890,Gate A Major Schemes PRC Submission,,13-Mar-18,,13-Mar-18 A,0,0,0,100%,,Completed
 ER6360LT,W085,A2880,Gate A-B Programme Management WBS Cost Summary,12-Apr-18,31-Oct-18,12-Apr-18 A,31-Oct-18 A,142,0,141,100%,,Completed
 ER6360LT,W085,A2860,Gate A-B Flask Transportation WBS Cost Summary,11-May-18,11-Oct-18,11-May-18 A,11-Oct-18 A,108,0,107,100%,,Completed
 ER6360LT,W085,W085.A2850,Remediation & Assembly of 6 Flasks Complete,,19-Dec-24,,02-Jul-25,0,0,0,0%,68,Not Started
 ER6360LT,W085,W085.A2830,Testing & Commissioning of SL Flasks & Spares Complete,,19-Feb-24,,19-Feb-24 A,0,0,0,100%,,Completed
 ER6360LT,W085,A2820,Contract Awarded for Undertaking Flask Remedial Works,,31-Jan-20,,31-Jan-20 A,0,0,0,100%,,Completed
 ER6360LT,W085,A2810,Issue Tender for Undertaking Flask Remedial Works,,12-Jul-19,,12-Jul-19 A,0,0,0,100%,,Completed
 ER6360LT,W085,A2800,Condition Surveys Pre-Maintenance Testing Report Complete,,10-Sep-18,,10-Sep-18 A,0,0,0,100%,,Completed
 ER6360LT,W085,A2770,Hold IRM,10-Oct-18,10-Oct-18,10-Oct-18 A,10-Oct-18 A,1,0,1,100%,,Completed
 ER6360LT,W085,A2760,Hold IRM,11-Apr-18,11-Apr-18,11-Apr-18 A,11-Apr-18 A,1,0,1,100%,,Completed
 ER6360LT,W085,A2740,Carryout Quality Assurance & Audit of Flasks & Spares Phase 1,02-Mar-20,28-Jan-22,02-Mar-20 A,28-Jan-22 A,347,0,483,100%,,Completed
 ER6360LT,W085,W085.A2660,Gate C - D Project Management and Engineering Support - Cost Summary,03-Jun-24,30-Apr-25,03-Jun-24 A,29-Sep-25,334,125,337,80%,5,In Progress
 ER6360LT,W085,W085.A2600,Gate C-D Flask 1 Cost Summary,24-May-22,07-Nov-24,24-May-22 A,25-Apr-25,97,17,739,85%,83,In Progress
 ER6360LT,W085,A2580,Gate B-B+ Programme Management - Cost Summary,10-Oct-18,12-Dec-19,10-Oct-18 A,12-Dec-19 A,299,0,298,100%,,Completed
 ER6360LT,W085,A2570,Gate A-B Flask Safety Case WBS Cost Summary,11-May-18,08-Jun-18,11-May-18 A,08-Jun-18 A,20,0,20,100%,,Completed
 ER6360LT,W085,A2550,Gate A-B Additional Spares WBS Cost Summary,11-May-18,27-Jul-18,11-May-18 A,27-Jul-18 A,55,0,54,100%,,Completed
 ER6360LT,W085,A2540,Gate A-B Additional Maintenance Impact Assessment WBS Cost Summary,11-May-18,27-Jul-18,11-May-18 A,27-Jul-18 A,55,0,54,100%,,Completed
 ER6360LT,W085,A2500,Gate A-B Procurement WBS Cost Summary,03-Apr-18,31-Jul-18,03-Apr-18 A,31-Jul-18 A,84,0,83,100%,,Completed
 ER6360LT,W085,A2490,Gate A-B Condition Surveys WBS Cost Summary,11-May-18,24-Aug-18,11-May-18 A,24-Aug-18 A,75,0,74,100%,,Completed
 ER6360LT,W085,W085.A2410,Handover of Life Time Records for all Flasks & Spares,05-Dec-24,18-Dec-24,10-Jul-25,23-Jul-25,10,10,10,0%,32,Not Started
 ER6360LT,W085,A2380,All Impact Assessments Complete,,27-Jul-18,,27-Jul-18 A,0,0,0,100%,,Completed
 ER6360LT,W085,W085.A2370,WOLF Assumptions Reviewed,,03-Feb-25,,15-Sep-25,0,0,0,0%,15,Not Started
 ER6360LT,W085,A2340,WOLF Assumptions Reviewed,,31-Aug-18,,31-Aug-18 A,0,0,0,100%,,Completed
 ER6360LT,W085,A2330,WOLF Assumptions Reviewed,,29-Jan-18,,29-Jan-18 A,0,0,0,100%,,Completed
 ER6360LT,W085,A1950,Procure materials for flask equipment,26-Jun-20,28-Jul-20,26-Jun-20 A,28-Jul-20 A,20,0,23,100%,,Completed
 ER6360LT,W085,A1940,Carry out Flask Training for TSP Engineering (Off-Site),31-Jan-20,02-Nov-20,31-Jan-20 A,02-Nov-20 A,130,0,190,100%,,Completed
 ER6360LT,W085,A1930,Kick off meeting and site inspection at flask refurbishing works,03-Feb-20,07-Feb-20,03-Feb-20 A,07-Feb-20 A,5,0,5,100%,,Completed
 ER6360LT,W085,A1920,Engage with Regulators & Obtain Permits (EG: Environmental Agency),01-Sep-20,10-Feb-21,01-Sep-20 A,10-Feb-21 A,114,0,114,100%,,Completed
 ER6360LT,W085,A1870,Contract Awarded for Flask Remedial Works,,31-Jan-20,,31-Jan-20 A,0,0,0,100%,,Completed
 ER6360LT,W085,A1860,Preferred supplier for Flask Remedial Works Confirmed,,02-Jan-20,,02-Jan-20 A,0,0,0,100%,,Completed
 ER6360LT,W085,A1850,Tender Review & Evaluation Period,03-Sep-19,25-Sep-19,03-Sep-19 A,25-Sep-19 A,17,0,17,100%,,Completed
 ER6360LT,W085,A1840,Tender Return Period,18-Jul-19,02-Sep-19,18-Jul-19 A,02-Sep-19 A,32,0,32,100%,,Completed
 ER6360LT,W085,A1820,Prepare CETS for Flask Remedial Works Tender,17-Apr-19,28-Jun-19,17-Apr-19 A,28-Jun-19 A,49,0,48,100%,,Completed
 ER6360LT,W085,A1830,Tender for Flask Remedial Works Issued,,12-Jul-19,,12-Jul-19 A,0,0,0,100%,,Completed
 ER6360LT,W085,A1790,Review Additional Maintenance,04-Jun-18,15-Jun-18,04-Jun-18 A,15-Jun-18 A,10,0,9,100%,,Completed
 ER6360LT,W085,A1780,Prepare Additional Maintenance,11-May-18,01-Jun-18,11-May-18 A,01-Jun-18 A,15,0,14,100%,,Completed
 ER6360LT,W085,A1770,Verify Modifications History Flask Safety Case,25-May-18,29-May-18,25-May-18 A,29-May-18 A,2,0,1,100%,,Completed
 ER6360LT,W085,A1760,Review Additional Spares,04-Jun-18,15-Jun-18,04-Jun-18 A,15-Jun-18 A,10,0,9,100%,,Completed
 ER6360LT,W085,A1750,Prepare Additional Spares,11-May-18,01-Jun-18,11-May-18 A,01-Jun-18 A,15,0,14,100%,,Completed
 ER6360LT,W085,A1740,Approve Modifications History Flask Safety Case,29-May-18,02-Jul-18,29-May-18 A,02-Jul-18 A,24,0,24,100%,,Completed
 ER6360LT,W085,A1700,Produce Pre-Maintenance Testing (Condition Surveys) Report [Scope Change to B-C],24-Aug-18,24-Aug-18,24-Aug-18 A,24-Aug-18 A,1,0,0,100%,,Completed
 ER6360LT,W085,A1690,Confirm Resource Requirements (Internal or External?),11-May-18,06-Jul-18,11-May-18 A,06-Jul-18 A,40,0,40,100%,,Completed
 ER6360LT,W085,A1680,Specify Site Equipment Required,11-May-18,06-Jul-18,11-May-18 A,06-Jul-18 A,40,0,40,100%,,Completed
 ER6360LT,W085,A1670,Approve Flask Transportation Plan LT/REP/DGSF/009/AGR/18,11-Jul-18,20-Jul-18,11-Jul-18 A,20-Jul-18 A,8,0,8,100%,,Completed
 ER6360LT,W085,A1660,Review Flask Transportation Plan,04-Jun-18,10-Jul-18,04-Jun-18 A,10-Jul-18 A,27,0,26,100%,,Completed
 ER6360LT,W085,A1650,Review Scope Documents,26-Apr-18,02-May-18,26-Apr-18 A,02-May-18 A,5,0,4,100%,,Completed
 ER6360LT,W085,A1640,Prepare Scope Documents,12-Apr-18,25-Apr-18,12-Apr-18 A,25-Apr-18 A,10,0,10,100%,,Completed
 ER6360LT,W085,A1620,RFI Procurement Strategy Confirmed,18-Jul-18,31-Jul-18,18-Jul-18 A,31-Jul-18 A,10,0,9,100%,,Completed
 ER6360LT,W085,A1610,RFI Review & Evaluation Period,25-Jun-18,17-Jul-18,25-Jun-18 A,17-Jul-18 A,17,0,17,100%,,Completed
 ER6360LT,W085,A1600,RFI Return Period,25-Apr-18,22-Jun-18,25-Apr-18 A,22-Jun-18 A,41,0,40,100%,,Completed
 ER6360LT,W085,A1590,RFI Prepared for Undertaking Flask Remedial Works,03-Apr-18,23-Apr-18,03-Apr-18 A,23-Apr-18 A,15,0,15,100%,,Completed
 ER6360LT,W085,A1580,RFI Issued to Supply Chain,24-Apr-18,24-Apr-18,24-Apr-18 A,24-Apr-18 A,1,0,1,100%,,Completed
 ER6360LT,W085,W085.A1440,Gate D PRC Paper Preparation [FEEDS TO SUMMARY SCHEDULE],19-Dec-24,03-Feb-25,02-Sep-25,15-Sep-25,10,10,10,0%,5,Not Started
 ER6360LT,W085,W085.A1500,Approve Refurbishment Report,,02-May-25,,07-Oct-25,0,0,0,0%,0,Not Started
 ER6360LT,W085,W085.A1460,Gate D PRC Paper Submission,01-May-25,01-May-25,30-Sep-25,30-Sep-25,1,1,1,0%,5,Not Started
 ER6360LT,W085,W085.A1450,Internal L&T Review,04-Feb-25,30-Apr-25,16-Sep-25,29-Sep-25,1,10,10,0%,5,Not Started
 ER6360LT,W085,A1310,Update Flask Transportation Plan incorporating information from RFI Evaluation,24-Oct-18,26-Oct-18,24-Oct-18 A,26-Oct-18 A,3,0,2,100%,,Completed
 ER6360LT,W085,A1280,RFI Options Reviewed,04-Apr-19,19-Apr-19,04-Apr-19 A,19-Apr-19 A,11,0,11,100%,,Completed
 ER6360LT,W085,A1260,Approve Additional Spares,18-Jun-18,27-Jul-18,18-Jun-18 A,27-Jul-18 A,30,0,29,100%,,Completed
 ER6360LT,W085,A1250,Approve Additional Maintenance,18-Jun-18,27-Jul-18,18-Jun-18 A,27-Jul-18 A,30,0,29,100%,,Completed
 ER6360LT,W085,A1230,Carry out Pre-Maintenance Testing (Condition Surveys),03-Sep-18,10-Sep-18,03-Sep-18 A,10-Sep-18 A,6,0,6,100%,,Completed
 ER6360LT,W085,A1220,Specify Site Access Arrangements,11-May-18,06-Jul-18,11-May-18 A,06-Jul-18 A,40,0,40,100%,,Completed
 ER6360LT,W085,A1200,Prepare Flask Transportation Plan,11-May-18,01-Jun-18,11-May-18 A,01-Jun-18 A,15,0,14,100%,,Completed
 ER6360LT,W085,A1130,Gate B PRC Paper Preparation,09-Jul-18,31-Aug-18,09-Jul-18 A,31-Aug-18 A,39,0,38,100%,,Completed
 ER6360LT,W085,A1190,Gate B IRM Paper Approval,,10-Oct-18,,10-Oct-18 A,0,0,0,100%,,Completed
 ER6360LT,W085,A1180,Gate B IRM Paper Submission,,28-Sep-18,,28-Sep-18 A,0,0,0,100%,,Completed
 ER6360LT,W085,A1170,PRC Actions Close Out,25-Sep-18,27-Sep-18,25-Sep-18 A,27-Sep-18 A,3,0,3,100%,,Completed
 ER6360LT,W085,A1160,Gate B PRC Paper Approval,,18-Sep-18,,18-Sep-18 A,0,0,0,100%,,Completed
 ER6360LT,W085,A1150,Gate B PRC Paper Submission,,10-Sep-18,,10-Sep-18 A,0,0,0,100%,,Completed
 ER6360LT,W085,A1140,Internal L&T Review,03-Sep-18,10-Sep-18,03-Sep-18 A,10-Sep-18 A,6,0,6,100%,,Completed
 ER6360LT,W085,A1120,Prepare Modifications History Flask Safety Case,11-May-18,24-May-18,11-May-18 A,24-May-18 A,10,0,9,100%,,Completed
 ER6360LT,W085,A1110,Approve Scope Documents,03-May-18,10-May-18,03-May-18 A,10-May-18 A,5,0,5,100%,,Completed
 ER6360LT,W085,A1080,Gate A PRC Paper Preparation,02-Jan-18,29-Jan-18,02-Jan-18 A,29-Jan-18 A,20,0,20,100%,,Completed
 ER6360LT,W085,A1070,Gate A IRM Paper Approval,,11-Apr-18,,11-Apr-18 A,0,0,0,100%,,Completed
 ER6360LT,W085,A1060,Gate A IRM Paper Submission,,29-Mar-18,,29-Mar-18 A,0,0,0,100%,,Completed
 ER6360LT,W085,A1050,PRC Actions Close Out,13-Feb-18,26-Feb-18,13-Feb-18 A,26-Feb-18 A,10,0,10,100%,,Completed
 ER6360LT,W085,A1040,Gate A PRC Paper Approval,,13-Feb-18,,13-Feb-18 A,0,0,0,100%,,Completed
 ER6360LT,W085,A1030,Gate A PRC Paper Submission,,05-Feb-18,,05-Feb-18 A,0,0,0,100%,,Completed
 ER6360LT,W085,A1020,Internal L&T Review,30-Jan-18,05-Feb-18,30-Jan-18 A,05-Feb-18 A,5,0,5,100%,,Completed
 ER6360LT,W085,A1010,Project Definition Document [FEEDS TO SUMMARY SCHEDULE],02-Jan-18,29-Jan-18,02-Jan-18 A,29-Jan-18 A,20,0,20,100%,,Completed
 ER6360LT,W085,A5300,Transport 7 flasks from Heysham,22-Jun-20,29-Jun-20,22-Jun-20 A,29-Jun-20 A,46,0,5,100%,,Completed
 ER6360LT,W085,A5310,Transport 1 flask from HNB,18-Jun-20,19-Jun-20,18-Jun-20 A,19-Jun-20 A,2,0,2,100%,,Completed
 ER6360LT,W085,A5320,Transport 3 flasks from TOR,15-Jun-20,19-Jun-20,15-Jun-20 A,19-Jun-20 A,5,0,5,100%,,Completed
 ER6360LT,W085,A5330,Flask no.1,02-Nov-20,28-Jan-22,02-Nov-20 A,28-Jan-22 A,63,0,314,100%,,Completed
 ER6360LT,W085,A5340,Flask no.2,06-Nov-20,28-Jan-22,06-Nov-20 A,28-Jan-22 A,59,0,310,100%,,Completed
 ER6360LT,W085,A5350,Flask no.3,13-Nov-20,31-Jan-22,13-Nov-20 A,31-Jan-22 A,62,0,305,100%,,Completed
 ER6360LT,W085,A5360,Flask no.4,20-Nov-20,28-Jan-22,20-Nov-20 A,28-Jan-22 A,64,0,300,100%,,Completed
 ER6360LT,W085,A5370,Flask no.5,27-Nov-20,01-Mar-22,27-Nov-20 A,01-Mar-22 A,64,0,317,100%,,Completed
 ER6360LT,W085,A5380,Flask no.6,04-Dec-20,01-Mar-22,04-Dec-20 A,01-Mar-22 A,64,0,312,100%,,Completed
 ER6360LT,W085,A5390,Flask no.7,11-Dec-20,01-Mar-22,11-Dec-20 A,01-Mar-22 A,64,0,307,100%,,Completed
 ER6360LT,W085,A5400,Flask no.8,18-Dec-20,31-Mar-22,18-Dec-20 A,31-Mar-22 A,64,0,324,100%,,Completed
 ER6360LT,W085,A5410,Flask no.9,29-Dec-20,31-Mar-22,29-Dec-20 A,31-Mar-22 A,64,0,319,100%,,Completed
 ER6360LT,W085,A5420,Flask no.10,01-Feb-21,31-Mar-22,01-Feb-21 A,31-Mar-22 A,57,0,296,100%,,Completed
 ER6360LT,W085,A5430,Flask no.11,05-Feb-21,31-Mar-22,05-Feb-21 A,31-Mar-22 A,58,0,292,100%,,Completed
 ER6360LT,W085,A5480,Inspection report issued,,31-Mar-22,,31-Mar-22 A,0,0,0,100%,,Completed
 ER6360LT,W085,A5490,EDF review inspection report,01-Mar-22,31-Mar-22,01-Mar-22 A,31-Mar-22 A,1,0,23,100%,,Completed
 ER6360LT,W085,A6180,Investigate options for flasks storage,07-Sep-20,25-Feb-21,07-Sep-20 A,25-Feb-21 A,35,0,120,100%,,Completed
 ER6360LT,W085,A6190,Identify flasks storage location,07-Sep-20,18-Jun-21,07-Sep-20 A,18-Jun-21 A,126,0,198,100%,,Completed
 ER6360LT,W085,A6200,Preparation and readiness for flask receipt,01-Jul-21,30-Jul-21,01-Jul-21 A,30-Jul-21 A,125,0,22,100%,,Completed
 ER6360LT,W085,W085.A6210,Flask Collection from contractor / Delivery to Storage Location / Final Handover to EDF,30-Dec-24,02-Jan-25,11-Sep-25,15-Sep-25,3,3,3,0%,5,Not Started
 ER6360LT,W085,A6230,WOLF Assumptions Reviewed,,04-May-22,,04-May-22 A,0,0,0,100%,,Completed
 ER6360LT,W085,A6220,Gate C PRC Paper Preparation,04-Apr-22,04-May-22,04-Apr-22 A,04-May-22 A,20,0,20,100%,,Completed
 ER6360LT,W085,A6320,Gate C PRC Paper Approved,,24-May-22,,24-May-22 A,0,0,0,100%,,Completed
 ER6360LT,W085,A6250,Gate C PRC Paper Submission,,11-May-22,,11-May-22 A,0,0,0,100%,,Completed
 ER6360LT,W085,A6240,Internal L&T Review,05-May-22,06-May-22,05-May-22 A,06-May-22 A,2,0,2,100%,,Completed
 ER6360LT,W085,A6350,Review refurbishment scope,25-Feb-22,25-Feb-22,25-Feb-22 A,25-Feb-22 A,1,0,1,100%,,Completed
 ER6360LT,W085,A6360,Approve refurbishment scope (CETS),28-Feb-22,28-Feb-22,28-Feb-22 A,28-Feb-22 A,1,0,1,100%,,Completed
 ER6360LT,W085,A6370,Prepare refurbishment scope,01-Feb-22,24-Feb-22,01-Feb-22 A,24-Feb-22 A,18,0,18,100%,,Completed
 ER6360LT,W085,A6380,Issue ITT for Phase 2,,28-Feb-22,,28-Feb-22 A,0,0,0,100%,,Completed
 ER6360LT,W085,A6390,Prepare and Issue Tender,25-Feb-22,04-Mar-22,25-Feb-22 A,04-Mar-22 A,2,0,4,100%,,Completed
 ER6360LT,W085,A6400,Tender Return Period,01-Mar-22,18-Mar-22,01-Mar-22 A,18-Mar-22 A,14,0,14,100%,,Completed
 ER6360LT,W085,W085.A6410,Place contract for phase 2 (C - D),,03-May-22,,03-May-22 A,0,0,0,100%,,Completed
 ER6360LT,W085,W085.A6440,Final Acceptance of flasks by EDF (HOLD POINT - ONR MOD),19-Dec-24,27-Dec-24,24-Jul-25,30-Jul-25,5,5,5,0%,34,Not Started
 ER6360LT,W085,A6460,Write CETS,21-Oct-19,01-Nov-19,21-Oct-19 A,01-Nov-19 A,10,0,10,100%,,Completed
 ER6360LT,W085,A6470,Approve CETS,04-Nov-19,07-Nov-19,04-Nov-19 A,07-Nov-19 A,4,0,4,100%,,Completed
 ER6360LT,W085,A6480,Issue ITT & CETS,28-Nov-19,28-Nov-19,28-Nov-19 A,28-Nov-19 A,0,0,0,100%,,Completed
 ER6360LT,W085,A6490,Tender return period,28-Nov-19,18-Dec-19,28-Nov-19 A,18-Dec-19 A,15,0,15,100%,,Completed
 ER6360LT,W085,A6500,Review tenders,02-Dec-19,03-Jan-20,02-Dec-19 A,03-Jan-20 A,22,0,22,100%,,Completed
 ER6360LT,W085,A6510,Final decision on flasks transportation,06-Jan-20,10-Jan-20,06-Jan-20 A,10-Jan-20 A,5,0,5,100%,,Completed
 ER6360LT,W085,A6520,Add flask transport to station plans,30-Mar-20,15-May-20,30-Mar-20 A,15-May-20 A,30,0,32,100%,,Completed
 ER6360LT,W085,A6530,Award contract for flask transportation,,31-Jan-20,,31-Jan-20 A,0,0,0,100%,,Completed
 ER6360LT,W085,A6540,Obtain new flask lifting bale arms (Kone Cranes),01-Jul-20,17-Jul-20,01-Jul-20 A,17-Jul-20 A,0,0,13,100%,,Completed
 ER6360LT,W085,A6550,Inspect CHX bale arms for lifting integrity,01-Oct-20,21-Oct-20,01-Oct-20 A,21-Oct-20 A,15,0,14,100%,,Completed
 ER6360LT,W085,A6560,Procure consumables,26-Jun-20,28-Jul-20,26-Jun-20 A,28-Jul-20 A,20,0,23,100%,,Completed
 ER6360LT,W085,A6570,Inspect tools and equipment,30-Oct-20,02-Nov-20,30-Oct-20 A,02-Nov-20 A,1,0,2,100%,,Completed
 ER6360LT,W085,A6580,EDF approval to proceed (Procurement),22-Jun-20,22-Jun-20,22-Jun-20 A,22-Jun-20 A,0,0,1,100%,,Completed
 ER6360LT,W085,A6590,Consolidate flask inspection report,01-Jun-21,31-Mar-22,01-Jun-21 A,31-Mar-22 A,53,0,214,100%,,Completed
 ER6360LT,W085,A6670,EDF review of NDT/inspection reports,02-Nov-20,31-Mar-22,02-Nov-20 A,31-Mar-22 A,128,0,357,100%,,Completed
 ER6360LT,W085,A6780,Deliver spares to contractor,25-Apr-22,15-Aug-22,25-Apr-22 A,15-Aug-22 A,5,0,78,100%,,Completed
 ER6360LT,W085,A6790,Tier 2 spares procurement,09-Jan-20,15-Dec-20,09-Jan-20 A,15-Dec-20 A,239,0,239,100%,,Completed
 ER6360LT,W085,A6800,Tier 3 spares procurement,09-Jan-20,30-Oct-20,09-Jan-20 A,30-Oct-20 A,239,0,206,100%,,Completed
 ER6360LT,W085,W085.A6810,Review & approve lifetime deployment strategy,19-Sep-22,19-Sep-22,19-Sep-22 A,19-Sep-22 A,20,0,1,100%,,Completed
 ER6360LT,W085,W085.DS1000,Cost Summary First 6 Flasks,03-May-22,29-Dec-23,03-May-22 A,29-Dec-23 A,148,0,420,100%,,Completed
 ER6360LT,W085,A6830,Design Authority specification for storage,01-Apr-20,07-May-20,01-Apr-20 A,07-May-20 A,49,0,25,100%,,Completed
 ER6360LT,W085,A6840,Update Storage & Deployment Strategy,13-Jul-20,04-Sep-20,13-Jul-20 A,04-Sep-20 A,14,0,39,100%,,Completed
 ER6360LT,W085,W085.A6850,Renegotiate maintenance contracts with NDA,03-May-22,07-Jul-23,03-May-22 A,07-Jul-23 A,120,0,298,100%,,Completed
 ER6360LT,W085,A6950,Flask dismantling and inspection - cost summary,02-Nov-20,29-Apr-22,02-Nov-20 A,29-Apr-22 A,129,0,376,100%,,Completed
 ER6360LT,W085,A6960,Issue instruction,,08-Jan-20,,08-Jan-20 A,0,0,0,100%,,Completed
 ER6360LT,W085,A6980,Special tools - cost summary,27-Jul-20,26-Oct-20,27-Jul-20 A,26-Oct-20 A,73,0,64,100%,,Completed
 ER6360LT,W085,A6990,Spares purchase - cost summary,02-Mar-20,06-Aug-21,02-Mar-20 A,06-Aug-21 A,232,0,363,100%,,Completed
 ER6360LT,W085,A7030,Gate B+-C Project Management - Cost Summary,12-Dec-19,10-May-22,12-Dec-19 A,10-May-22 A,380,0,606,100%,,Completed
 ER6360LT,W085,A7040,Preparation of spares procurement paperwork,01-Nov-19,20-Dec-19,01-Nov-19 A,20-Dec-19 A,36,0,36,100%,,Completed
 ER6360LT,W085,A7050,Procurement - cost summary,21-Oct-19,03-Jan-20,21-Oct-19 A,03-Jan-20 A,52,0,52,100%,,Completed
 ER6360LT,W085,A7080,Valve assembly at B39,15-Dec-20,18-Jun-21,15-Dec-20 A,18-Jun-21 A,86,0,126,100%,,Completed
 ER7743LT,W527,W527.2170,Plan Peer Review & SMART Check / Address Comments,26-Oct-21,26-Oct-21,26-Oct-21 A,26-Oct-21 A,1,0,1,100%,,Completed
 ER7743LT,W527,W527.2160,Finance Shuffle Budgets,30-Dec-21,31-Dec-21,30-Dec-21 A,31-Dec-21 A,2,0,2,100%,,Completed
 ER7743LT,W527,W527.2150,Request Direction Sanction Approval,24-Dec-21,29-Dec-21,24-Dec-21 A,29-Dec-21 A,2,0,2,100%,,Completed
 ER7743LT,W527,W527.2140,Obtain 'Pre-NSSB Signatures',01-Dec-21,06-Dec-21,01-Dec-21 A,06-Dec-21 A,4,0,4,100%,,Completed
 ER7743LT,W527,W527.2130,Confirm NSSB Board Availability,,25-Oct-21,,25-Oct-21 A,0,0,0,100%,,Completed
 ER7743LT,W527,W527.2120,Revise Project Definition Document (PDD) (If Required),26-Oct-21,26-Oct-21,26-Oct-21 A,26-Oct-21 A,1,0,1,100%,,Completed
 ER7743LT,W527,W527.2110,Obtain 'Post-NSSB Meeting Signatures',22-Dec-21,23-Dec-21,22-Dec-21 A,23-Dec-21 A,2,0,2,100%,,Completed
 ER7743LT,W527,W527.2100,Address NSSB Comments,15-Dec-21,21-Dec-21,15-Dec-21 A,21-Dec-21 A,5,0,5,100%,,Completed
 ER7743LT,W527,W527.2090,Present Paper to NSSB,14-Dec-21,14-Dec-21,14-Dec-21 A,14-Dec-21 A,1,0,1,100%,,Completed
 ER7743LT,W527,W527.2080,NSSB Members Review Documentation,07-Dec-21,13-Dec-21,07-Dec-21 A,13-Dec-21 A,5,0,5,100%,,Completed
 ER7743LT,W527,W527.2070,PCL Validate & Approve Baseline Package for NSSB Submission,29-Oct-21,30-Nov-21,29-Oct-21 A,30-Nov-21 A,2,0,23,100%,,Completed
 ER7743LT,W527,W527.2060,Update NSSB Paper,28-Oct-21,28-Oct-21,28-Oct-21 A,28-Oct-21 A,1,0,1,100%,,Completed
 ER7743LT,W527,W527.2050,Update Schedule/Estimate from Risk Log & Add Provisions (If Required),27-Oct-21,27-Oct-21,27-Oct-21 A,27-Oct-21 A,1,0,1,100%,,Completed
 ER7743LT,W527,W527.2040,Complete Risk Log with Estimates (If Required),26-Oct-21,26-Oct-21,26-Oct-21 A,26-Oct-21 A,1,0,1,100%,,Completed
 ER7743LT,W527,W527.2000,Plan Scope in Primavera (If Required),25-Oct-21,25-Oct-21,25-Oct-21 A,25-Oct-21 A,1,0,1,100%,,Completed
 ER7743LT,W527,W527.1990,NSSB Sanction Approval for 2022,,14-Dec-21,,14-Dec-21 A,0,0,0,100%,,Completed
 ER7743LT,W527,W527.1980,Issue Paper to NSSB Secretary,,06-Dec-21,,06-Dec-21 A,0,0,0,100%,,Completed
 ER7743LT,W527,W527.1230,Eviden (formerly Atos) DPCS Long Term Support Contract 2023,04-Jan-23,29-Dec-23,04-Jan-23 A,29-Dec-23 A,251,0,250,100%,,Completed
 ER7743LT,W527,W527.1220,Thales POLARIS & AIC Support Contract 2023,04-Jan-23,29-Dec-23,04-Jan-23 A,29-Dec-23 A,251,0,250,100%,,Completed
 ER7743LT,W527,W527.1060,Thales POLARIS & AIC Support Contract 2022,04-Jan-22,30-Dec-22,04-Jan-22 A,30-Dec-22 A,250,0,251,100%,,Completed
 ER7743LT,W527,W527.1050,Atos DPCS Long Term Support Contract 2022,04-Jan-22,30-Dec-22,04-Jan-22 A,30-Dec-22 A,250,0,251,100%,,Completed
 ER7743LT,W527,W527.1210,CTO C&I Systems Group - 2023,04-Jan-23,29-Dec-23,04-Jan-23 A,29-Dec-23 A,40,0,250,100%,,Completed
 ER7743LT,W527,W527.1040,CTO C&I Systems Group - 2022,04-Jan-22,30-Dec-22,04-Jan-22 A,30-Dec-22 A,0,0,251,100%,,Completed
 ER7743LT,W527,W527.1200,DNB PES Group Support - 2023,04-Jan-23,29-Dec-23,04-Jan-23 A,29-Dec-23 A,251,0,250,100%,,Completed
 ER7743LT,W527,W527.1030,DNB PES Group Support - 2022,04-Jan-22,30-Dec-22,04-Jan-22 A,30-Dec-22 A,0,0,251,100%,,Completed
 ER7743LT,W527,W527.1080,DNB 2022 Lifetime Sustainability Review (LSR) issued,,06-Dec-22,,06-Dec-22 A,0,0,0,100%,,Completed
 ER7743LT,W527,W527.1070,DNB 2022 Software Build Completion,,30-Dec-22,,30-Dec-22 A,0,0,0,100%,,Completed
 ER7743LT,W527,W527.1190,2023 DNB Lifetime Sustainability Review (LSR) Issued,,01-Nov-23,,01-Nov-23 A,0,0,0,100%,,Completed
 ER7743LT,W527,W527.1180,DNB 2023 U21 Software Build Complete,,14-Mar-24,,14-Mar-24 A,0,0,0,100%,,Completed
 ER7743LT,W527,W527.1380,CTO C&I Systems Group - 2024,02-Dec-24,31-Dec-24,02-Dec-24 A,31-Dec-24 A,19,0,20,100%,,Completed
 ER7743LT,W527,W527.1370,DNB PES Group Support - 2024,02-Jan-24,31-Dec-24,02-Jan-24 A,31-Dec-24 A,22,0,254,100%,,Completed
 ER7743LT,W527,W527.1550,Plant Control Systems & Simulators (PCS&S) Group - 2025,02-Jan-25,31-Dec-25,02-Jan-25 A,31-Dec-25,253,190,253,24%,1521,In Progress
 ER7743LT,W527,W527.1540,DNB PES Group Support - 2025,02-Jan-25,31-Dec-25,02-Jan-25 A,31-Dec-25,253,190,253,24%,1521,In Progress
 ER7743LT,W527,W527.1340,DNB 2024 Lifetime Sustainability Review (LSR) issued (TBC),,02-Oct-23,,02-Oct-23 A,0,0,0,100%,,Completed
 ER7743LT,W527,W527.1330,DNB 2024  Software Build Complete,,29-Dec-23,,29-Dec-23 A,0,0,0,100%,,Completed
 ER7743LT,W527,W527.1510,DNB 2025 Lifetime Sustainability Review (LSR) issued (TBC),,02-Oct-23,,02-Oct-23 A,0,0,0,100%,,Completed
 ER7743LT,W527,W527.1500,DNB 2025 AIC Software Build Complete,,02-Oct-23,,02-Oct-23 A,0,0,0,100%,,Completed
 ER7743LT,W527,W527.1090,Atos System Engineering Support (SQEP) Q2 2022,01-Apr-22,01-Apr-22,01-Apr-22 A,01-Apr-22 A,60,0,1,100%,,Completed
 ER7743LT,W527,W527.1110,Atos System Engineering Support (SQEP) Q3 2022,01-Jul-22,01-Jul-22,01-Jul-22 A,01-Jul-22 A,1,0,1,100%,,Completed
 ER7743LT,W527,W527.1130,Atos System Engineering Support (SQEP) Q4 2022,03-Oct-22,03-Oct-22,03-Oct-22 A,03-Oct-22 A,1,0,1,100%,,Completed
 ER7743LT,W527,W527.1170,Atos System Engineering Support (SQEP) Q1 2023,04-Jan-23,04-Jan-23,04-Jan-23 A,04-Jan-23 A,1,0,0,100%,,Completed
 ER7743LT,W527,W527.1240,Atos System Engineering Support (SQEP) Q2 2023,03-Apr-23,04-Apr-23,03-Apr-23 A,04-Apr-23 A,1,0,2,100%,,Completed
 ER7743LT,W527,W527.1260,Eviden (formerly Atos) System Engineering Support (SQEP) Q3 2023,03-Jul-23,03-Jul-23,03-Jul-23 A,03-Jul-23 A,1,0,1,100%,,Completed
 ER7743LT,W527,W527.1280,Eviden (formerly Atos) System Engineering Support (SQEP)  Q4 2023,02-Oct-23,02-Oct-23,02-Oct-23 A,02-Oct-23 A,1,0,1,100%,,Completed
 ER7743LT,W527,W527.1320,Eviden System Engineering Support (SQEP) Q1 2024,02-Jan-24,28-Mar-24,02-Jan-24 A,28-Mar-24 A,63,0,63,100%,,Completed
 ER7743LT,W527,W527.1400,Eviden System Engineering Support (SQEP) Q2 2024,02-Apr-24,28-Jun-24,02-Apr-24 A,28-Jun-24 A,62,0,62,100%,,Completed
 ER7743LT,W527,W527.1420,Eviden System Engineering Support (SQEP) Q3 2024,01-Jul-24,30-Sep-24,01-Jul-24 A,30-Sep-24 A,65,0,65,100%,,Completed
 ER7743LT,W527,W527.1450,Eviden System Engineering Support (SQEP) Q4 2024,01-Oct-24,31-Dec-24,01-Oct-24 A,31-Dec-24 A,64,0,64,100%,,Completed
 ER7743LT,W527,W527.1490,Worldgrid System Engineering Support (SQEP) Q1 2025,02-Jan-25,31-Mar-25,02-Jan-25 A,31-Mar-25 A,63,0,63,100%,,Completed
 ER7743LT,W527,W527.1570,Worldgrid System Engineering Support (SQEP) Q2 2025,01-Apr-25,30-Jun-25,01-Apr-25*,30-Jun-25,61,61,61,0%,1650,Not Started
 ER7743LT,W527,W527.1590,Worldgrid System Engineering Support (SQEP) Q3 2025,01-Jul-25,30-Sep-25,01-Jul-25*,30-Sep-25,65,65,65,0%,1585,Not Started
 ER7743LT,W527,W527.1620,Worldgrid System Engineering Support (SQEP) Q4 2025,01-Oct-25,31-Dec-25,01-Oct-25*,31-Dec-25,64,64,64,0%,1521,Not Started
 ER7743LT,W527,W527.1710,Plant Control Systems & Simulators (PCS&S) Group - 2026,05-Jan-26,21-Aug-26,05-Jan-26,31-Dec-26,253,253,253,0%,1267,Not Started
 ER7743LT,W527,W527.1700,DNB PES Group Support - 2026,05-Jan-26,31-Dec-26,05-Jan-26*,31-Dec-26,253,253,253,0%,1267,Not Started
 ER7743LT,W527,W527.1840,Plant Control Systems & Simulators (PCS&S) Group - 2027,04-Jan-27,24-Jun-27,04-Jan-27,31-Dec-27,255,255,255,0%,1012,Not Started
 ER7743LT,W527,W527.1830,DNB PES Group Support - 2027,04-Jan-27,31-Dec-27,04-Jan-27*,31-Dec-27,255,255,255,0%,1012,Not Started
 ER7743LT,W527,W527.1660,DNB 2026 Support Contracts Complete,,29-Dec-23,,29-Dec-23 A,0,0,0,100%,,Completed
 ER7743LT,W527,W527.1657,Worldgrid Software Modification Support (LAMPS) - Q1 2026,05-Jan-26,31-Mar-26,05-Jan-26,31-Mar-26,62,62,62,0%,1267,Not Started
 ER7743LT,W527,W527.1720,Worldgrid Software Modification Support (LAMPS) - Q2 2026,01-Apr-26,30-Jun-26,01-Apr-26,30-Jun-26,61,61,61,0%,1397,Not Started
 ER7743LT,W527,W527.1730,Worldgrid System Engineering Support (SQEP) Q3 2026,01-Jul-26,30-Sep-26,01-Jul-26*,30-Sep-26,65,65,65,0%,1332,Not Started
 ER7743LT,W527,W527.1750,Worldgrid System Engineering Support (SQEP) Q4 2026,01-Oct-26,31-Dec-26,01-Oct-26*,31-Dec-26,65,65,65,0%,1267,Not Started
 ER7743LT,W527,W527.1800,DNB 2027 Lifetime Sustainability Review (LSR) issued (TBC),,01-Dec-23,,01-Dec-23 A,0,0,0,100%,,Completed
 ER7743LT,W527,W527.1787,Worldgrid Software Modification Support (LAMPS) - Q1 2027,04-Jan-27,31-Mar-27,04-Jan-27,31-Mar-27,61,61,61,0%,1012,Not Started
 ER7743LT,W527,W527.1807,Worldgrid Software Modification Support (LAMPS) - Q2 2027,01-Apr-27,30-Jun-27,01-Apr-27,30-Jun-27,63,63,63,0%,1143,Not Started
 ER7743LT,W527,W527.1782,Worldgrid System Engineering Support (SQEP) Q1 2027,04-Jan-27,31-Mar-27,04-Jan-27,31-Mar-27,61,61,61,0%,1012,Not Started
 ER7743LT,W527,W527.1880,Worldgrid System Engineering Support (SQEP) Q4 2027,01-Oct-27,31-Dec-27,01-Oct-27*,31-Dec-27,66,66,66,0%,1012,Not Started
 ER7743LT,W527,W527.1010,Atos System Engineering Support (SQEP) Q1 2022,04-Jan-22,05-Jan-22,04-Jan-22 A,05-Jan-22 A,63,0,1,100%,,Completed
 ER7743LT,W527,W527.1177,Atos Software Modification Support (LAMPS) - Q1 2023,04-Jan-23,04-Jan-23,04-Jan-23 A,04-Jan-23 A,1,0,0,100%,,Completed
 ER7743LT,W527,W527.1265,Eviden (formerly Atos) Software Modification Support (LAMPS) - Q3 2023,03-Jul-23,04-Jul-23,03-Jul-23 A,04-Jul-23 A,1,0,1,100%,,Completed
 ER7743LT,W527,W527.1325,Eviden Software Modification Support (LAMPS) - Q1 2024,02-Jan-24,28-Mar-24,02-Jan-24 A,28-Mar-24 A,63,0,63,100%,,Completed
 ER7743LT,W527,W527.1405,Eviden Software Modification Support (LAMPS) - Q2 2024,02-Apr-24,28-Jun-24,02-Apr-24 A,28-Jun-24 A,62,0,62,100%,,Completed
 ER7743LT,W527,W527.1426,Eviden Software Modification Support (LAMPS) - Q3 2024,01-Jul-24,30-Sep-24,01-Jul-24 A,30-Sep-24 A,65,0,65,100%,,Completed
 ER7743LT,W527,W527.1456,Eviden Software Modification Support (LAMPS) - Q4 2024,01-Oct-24,31-Dec-24,01-Oct-24 A,31-Dec-24 A,64,0,64,100%,,Completed
 ER7743LT,W527,W527.1493,Worldgrid Software Modification Support (LAMPS) - Q1 2025,02-Jan-25,31-Mar-25,02-Jan-25 A,31-Mar-25 A,63,0,63,100%,,Completed
 ER7743LT,W527,W527.1575,Worldgrid Software Modification Support (LAMPS) - Q2 2025,01-Apr-25,30-Jun-25,01-Apr-25,30-Jun-25,61,61,61,0%,1650,Not Started
 ER7743LT,W527,W527.1595,Worldgrid Software Modification Support (LAMPS) - Q3 2025,01-Jul-25,30-Sep-25,01-Jul-25,30-Sep-25,65,65,65,0%,1585,Not Started
 ER7743LT,W527,W527.1625,Worldgrid Software Modification Support (LAMPS) - Q4 2025,01-Oct-25,31-Dec-25,01-Oct-25,31-Dec-25,64,64,64,0%,1521,Not Started
 ER7743LT,W527,W527.1120,DNB 2022 DPCS ALR2 Submission (FEED TO SUMMARY SCHEDULE),,31-Aug-22,,31-Aug-22 A,0,0,0,100%,,Completed
 ER7743LT,W527,W527.1270,2023 Support Contracts Complete,,29-Dec-23,,29-Dec-23 A,0,0,0,100%,,Completed
 ER7743LT,W527,W527.1640,DNB 2025 AIC TGN097 Inspection,,25-Apr-25,,25-Apr-25,0,0,0,0%,1694,Not Started
 ER7743LT,W527,W527.1740,DNB 2026 Lifetime Sustainability Review (LSR) Complete (TBC),,29-Dec-23,,29-Dec-23 A,0,0,0,100%,,Completed
 ER7743LT,W527,W527.1870,DNB 2027 Support Contracts,,01-Dec-23,,01-Dec-23 A,0,0,0,100%,,Completed
 W158LT,W158,W158.2690,INA Review of SPPI File,25-Jul-22,30-Aug-22,25-Jul-22 A,30-Aug-22 A,10,0,25,100%,,Completed
 W158LT,W158,W158.2680,EAN Author Verification of SPPI File,01-Jun-22,08-Jul-22,01-Jun-22 A,08-Jul-22 A,10,0,26,100%,,Completed
 ER7582LT,W196,W196.2780,HYA 2027 DPCS ALR2 Submission (No Longer Required),,29-Dec-23,,29-Dec-23 A,0,0,0,100%,,Completed
 ER7582LT,W196,W196.2750,HYA 2026 DPCS ALR2 Submission (No Longer Required),,03-Jan-23,,03-Jan-23 A,0,0,0,100%,,Completed
 ER7582LT,W196,W196.2740,HYA 2025 TGN097 R2 Inspection Complete,,03-Apr-25,,03-Apr-25,0,0,0,0%,1455,Not Started
 ER7582LT,W196,W196.2720,HYA 2025 DPCS ALR2 Submission (No Longer Required),,29-Dec-23,,29-Dec-23 A,0,0,0,100%,,Completed
 ER7582LT,W196,W196.2690,HYA 2024 DPCS ALR2 Submission (No Longer Required),,29-Dec-23,,29-Dec-23 A,0,0,0,100%,,Completed
 ER7582LT,W196,W196.2680,HYA 2023 U1 TGN097 Inspection Complete,,15-Dec-23,,15-Dec-23 A,0,0,0,100%,,Completed
 ER7582LT,W196,W196.2670,HYA 2023 DPCS ALR2 Submission,,31-Aug-23,,31-Aug-23 A,0,0,0,100%,,Completed
 ER7582LT,W196,W196.2630,HYA 2022 DPCS ALR2 Submission,,31-Aug-22,,31-Aug-22 A,0,0,0,100%,,Completed
 ER7581LT,W195,W195.2830,HRA 2027 DPCS ALR2 Submission (No Longer Required),,01-Dec-23,,01-Dec-23 A,0,0,0,100%,,Completed
 ER7581LT,W195,W195.2800,HRA 2026 DPCS ALR2 Submission (No Longer Required),,01-Dec-23,,01-Dec-23 A,0,0,0,100%,,Completed
 ER7581LT,W195,W195.2780,HRA 2025 TGN097 R2 - Inspection Complete,,05-Jun-25,,05-Jun-25,0,0,0,0%,1414,Not Started
 ER7581LT,W195,W195.2760,HRA 2025 DPCS Non-Scheme Sanction Board (NSSB) Submission (No Longer Required),,02-Jan-25,,02-Jan-25 A,0,0,0,100%,,Completed
 ER7581LT,W195,W195.2770,HRA 2025 DPCS ALR2 Submission (No Longer Required),,01-Dec-23,,01-Dec-23 A,0,0,0,100%,,Completed
 ER7581LT,W195,W195.2750,HRA 2024 TGN097 R1 - Inspection Complete,,26-Jun-24,,26-Jun-24 A,0,0,0,100%,,Completed
 ER7581LT,W195,W195.2740,HRA 2024 DPCS ALR2 Submission (No Longer Required),,01-Dec-23,,01-Dec-23 A,0,0,0,100%,,Completed
 ER7581LT,W195,W195.2710,HRA 2023 DPCS ALR2 Submission,,31-Aug-23,,31-Aug-23 A,0,0,0,100%,,Completed
 ER7581LT,W195,W195.2670,HRA 2022 DPCS ALR2 Submission,,31-Aug-22,,31-Aug-22 A,0,0,0,100%,,Completed
 ER7580LT,W194,W194.2400,HPB 2025 - R3 TGN097 Inspection Complete (No Longer Required),,01-Dec-23,,01-Dec-23 A,0,0,0,100%,,Completed
 ER7580LT,W194,W194.2390,HPB 2025 DPCS ALR2 Submission (No Longer Required),,01-Dec-23,,01-Dec-23 A,0,0,0,100%,,Completed
 ER7580LT,W194,W194.2370,HPB 2024 - TGN097 R4  Inspection Complete (No Longer Required),,01-Dec-23,,01-Dec-23 A,0,0,0,100%,,Completed
 ER7580LT,W194,W194.2360,HPB 2024 DPCS ALR2 Submission (No Longer Required),,01-Dec-23,,01-Dec-23 A,0,0,0,100%,,Completed
 ER7580LT,W194,W194.2330,HPB 2023 DPCS ALR2 Submission,,31-Aug-23,,31-Aug-23 A,0,0,0,100%,,Completed
 ER7580LT,W194,W194.2290,HPB 2022 DPCS ALR2 Submission,,31-Aug-22,,31-Aug-22 A,0,0,0,100%,,Completed
 ER7582LT,W196,W196.2620,Argus Support Contract - 2025 - Q4,01-Oct-25,31-Dec-25,01-Oct-25,31-Dec-25,64,64,64,0%,1268,Not Started
 ER7582LT,W196,W196.2610,Argus Support Contract - 2025 - Q3,01-Jul-25,30-Sep-25,01-Jul-25*,30-Sep-25,65,65,65,0%,1332,Not Started
 ER7582LT,W196,W196.2600,Argus Support Contract - 2025 - Q2,01-Apr-25,30-Jun-25,01-Apr-25,30-Jun-25,61,61,61,0%,1397,Not Started
 ER7582LT,W196,W196.2590,Argus Support Contract - 2025 - Q1,02-Jan-25,31-Mar-25,02-Jan-25 A,31-Mar-25 A,63,0,63,100%,,Completed
 ER7582LT,W196,W196.2580,Argus Support Contract - 2024 - Q4,01-Oct-24,31-Dec-24,01-Oct-24 A,31-Dec-24 A,64,0,64,100%,,Completed
 ER7582LT,W196,W196.2570,Argus Support Contract - 2024 - Q3,01-Jul-24,30-Sep-24,01-Jul-24 A,30-Sep-24 A,65,0,65,100%,,Completed
 ER7582LT,W196,W196.2560,Argus Support Contract - 2024 - Q2,02-Apr-24,28-Jun-24,02-Apr-24 A,28-Jun-24 A,62,0,62,100%,,Completed
 ER7582LT,W196,W196.2550,Argus Support Contract - 2024 - Q1,02-Jan-24,28-Mar-24,02-Jan-24 A,28-Mar-24 A,1,0,63,100%,,Completed
 ER7582LT,W196,W196.2540,Argus Support Contract - 2023 - Jul,03-Jul-23,03-Jul-23,03-Jul-23 A,03-Jul-23 A,1,0,1,100%,,Completed
 ER7582LT,W196,W196.2530,Argus Support Contract - 2023 - Jan,03-Jan-23,04-Jan-23,03-Jan-23 A,04-Jan-23 A,1,0,1,100%,,Completed
 ER7582LT,W196,W196.2520,Argus Support Contract - Jul 6 Month 2022,01-Jul-22,04-Jul-22,01-Jul-22 A,04-Jul-22 A,0,0,2,100%,,Completed
 ER7582LT,W196,W196.2510,Thales Long Term Support Contract Q1 2022,04-Jan-22,05-Jan-22,04-Jan-22 A,05-Jan-22 A,0,0,1,100%,,Completed
 ER7582LT,W196,W196.2500,Thales Long Term Support Contract Q4 2027,01-Oct-27,31-Dec-27,01-Oct-27*,31-Dec-27,66,66,66,0%,759,Not Started
 ER7582LT,W196,W196.2490,Thales Long Term Support Contract Q3 2027,01-Jul-27,30-Sep-27,01-Jul-27*,30-Sep-27,65,65,65,0%,825,Not Started
 ER7582LT,W196,W196.2480,Thales Long Term Support Contract Q2 2027,01-Apr-27,30-Jun-27,01-Apr-27*,30-Jun-27,63,63,63,0%,890,Not Started
 ER7582LT,W196,W196.2470,Thales Long Term Support Contract Q1 2027,04-Jan-27,31-Mar-27,04-Jan-27,31-Mar-27,61,61,61,0%,759,Not Started
 ER7582LT,W196,W196.2460,HYA 2027 Software Build Complete,,29-Dec-23,,29-Dec-23 A,0,0,0,100%,,Completed
 ER7582LT,W196,W196.2450,HYA 2027 Lifetime Sustainability Review (LSR) issued (TBC) (No Longer Required),,29-Dec-23,,29-Dec-23 A,0,0,0,100%,,Completed
 ER7582LT,W196,W196.2420,Thales Long Term Support Contract Q4 2026,01-Oct-26,31-Dec-26,01-Oct-26*,31-Dec-26,65,65,65,0%,1014,Not Started
 ER7582LT,W196,W196.2410,Thales Long Term Support Contract Q3 2026,01-Jul-26,30-Sep-26,01-Jul-26*,30-Sep-26,65,65,65,0%,1079,Not Started
 ER7582LT,W196,W196.2400,Thales Long Term Support Contract Q2 2026,01-Apr-26,30-Jun-26,01-Apr-26*,30-Jun-26,61,61,61,0%,1144,Not Started
 ER7582LT,W196,W196.2390,Thales Long Term Support Contract Q1 2026,02-Jan-26,31-Mar-26,02-Jan-26,31-Mar-26,63,63,63,0%,1014,Not Started
 ER7582LT,W196,W196.2380,HYA 2026 Software Build complete,,29-Dec-23,,29-Dec-23 A,0,0,0,100%,,Completed
 ER7582LT,W196,W196.2370,HYA 2026 Lifetime Sustainability Review (LSR) issued (TBC) (No Longer Required),,29-Dec-23,,29-Dec-23 A,0,0,0,100%,,Completed
 ER7582LT,W196,W196.2340,HYA PES Group Support - 2027,04-Jan-27,31-Dec-27,04-Jan-27,31-Dec-27,255,255,255,0%,759,Not Started
 ER7582LT,W196,W196.2330,Plant Control Systems & Simulators (PCS&S) Group - 2027,04-Jan-27,31-Dec-27,04-Jan-27*,31-Dec-27,255,255,255,0%,759,Not Started
 ER7582LT,W196,W196.2320,HYA PES Group Support - 2026,02-Jan-26,31-Dec-26,02-Jan-26,31-Dec-26,254,254,254,0%,1014,Not Started
 ER7582LT,W196,W196.2310,Plant Control Systems & Simulators (PCS&S) Group - 2026,02-Jan-26,31-Dec-26,02-Jan-26*,31-Dec-26,254,254,254,0%,1014,Not Started
 ER7582LT,W196,W196.2300,Thales Long Term Support Contract Q4 2025,01-Oct-25,31-Dec-25,01-Oct-25*,31-Dec-25,64,64,64,0%,1268,Not Started
 ER7582LT,W196,W196.2290,Thales Long Term Support Contract Q3 2025,01-Jul-25,30-Sep-25,01-Jul-25,30-Sep-25,65,65,65,0%,1332,Not Started
 ER7582LT,W196,W196.2280,Thales Long Term Support Contract Q2 2025,01-Apr-25,30-Jun-25,01-Apr-25*,30-Jun-25,61,61,61,0%,1397,Not Started
 ER7582LT,W196,W196.2270,Thales Long Term Support Contract Q1 2025,02-Jan-25,31-Mar-25,02-Jan-25 A,31-Mar-25 A,63,0,63,100%,,Completed
 ER7582LT,W196,W196.2260,Thales Long Term Support Contract Q4 2024,01-Oct-24,31-Dec-24,01-Oct-24 A,31-Dec-24 A,64,0,64,100%,,Completed
 ER7582LT,W196,W196.2250,Thales Long Term Support Contract Q3 2024,01-Jul-24,30-Sep-24,01-Jul-24 A,30-Sep-24 A,65,0,65,100%,,Completed
 ER7582LT,W196,W196.2240,Thales Long Term Support Contract Q2 2024,02-Apr-24,28-Jun-24,02-Apr-24 A,28-Jun-24 A,62,0,62,100%,,Completed
 ER7582LT,W196,W196.2230,Thales Long Term Support Contract Q1 2024,02-Jan-24,28-Mar-24,02-Jan-24 A,28-Mar-24 A,1,0,63,100%,,Completed
 ER7582LT,W196,W196.2220,Thales Long Term Support Contract Q4 2023,02-Oct-23,02-Oct-23,02-Oct-23 A,02-Oct-23 A,1,0,1,100%,,Completed
 ER7582LT,W196,W196.2210,Thales Long Term Support Contract Q3 2023,03-Jul-23,03-Jul-23,03-Jul-23 A,03-Jul-23 A,1,0,1,100%,,Completed
 ER7582LT,W196,W196.2200,Thales Long Term Support Contract Q2 2023,03-Apr-23,04-Apr-23,03-Apr-23 A,04-Apr-23 A,1,0,1,100%,,Completed
 ER7582LT,W196,W196.2190,Thales Long Term Support Contract Q1 2023,03-Jan-23,04-Jan-23,03-Jan-23 A,04-Jan-23 A,1,0,1,100%,,Completed
 ER7582LT,W196,W196.2180,Thales Long Term Support Contract Q4 2022,03-Oct-22,04-Oct-22,03-Oct-22 A,04-Oct-22 A,0,0,2,100%,,Completed
 ER7582LT,W196,W196.2170,Thales Long Term Support Contract Q3 2022,01-Jul-22,04-Jul-22,01-Jul-22 A,04-Jul-22 A,0,0,2,100%,,Completed
 ER7582LT,W196,W196.2160,Thales Long Term Support Contract Q2 2022,01-Apr-22,04-Apr-22,01-Apr-22 A,04-Apr-22 A,0,0,2,100%,,Completed
 ER7582LT,W196,W196.2150,Argus Support Contract - Jan 6 Month 2022,04-Jan-22,05-Jan-22,04-Jan-22 A,05-Jan-22 A,0,0,1,100%,,Completed
 ER7582LT,W196,W196.2130,HYA 2025 Lifetime Sustainability Review (LSR) issued (TBC) (No Longer Required),,02-Oct-23,,02-Oct-23 A,0,0,0,100%,,Completed
 ER7582LT,W196,W196.2080,HYA 2024 Lifetime Sustainability Review (LSR) issued (TBC) (No Longer Required),,02-Oct-23,,02-Oct-23 A,0,0,0,100%,,Completed
 ER7582LT,W196,W196.2040,HYA PES Group Support - 2025,02-Jan-25,31-Dec-25,02-Jan-25 A,31-Dec-25,253,190,253,24%,1268,In Progress
 ER7582LT,W196,W196.2030,Plant Control Systems & Simulators (PCS&S) Group - 2025,02-Jan-25,31-Dec-25,02-Jan-25 A,31-Dec-25,253,190,253,24%,1268,In Progress
 ER7582LT,W196,W196.2020,HYA PES Group Support - 2024,02-Jan-24,31-Dec-24,02-Jan-24 A,31-Dec-24 A,0,0,254,100%,,Completed
 ER7582LT,W196,W196.2010,CTO C&I Systems Group - 2024,02-Jan-24,31-Dec-24,02-Jan-24 A,31-Dec-24 A,0,0,254,100%,,Completed
 ER7581LT,W195,W195.2660,Argus Support Contract 2025 - Oct Q4,01-Oct-25,31-Dec-25,01-Oct-25,31-Dec-25,64,64,64,0%,1268,Not Started
 ER7581LT,W195,W195.2650,Argus Support Contract 2025 - Jul Q3,01-Jul-25,30-Sep-25,01-Jul-25*,30-Sep-25,65,65,65,0%,1268,Not Started
 ER7581LT,W195,W195.2640,Argus Support Contract 2025 - Apr Q2,01-Apr-25,30-Jun-25,01-Apr-25,30-Jun-25,61,61,61,0%,1268,Not Started
 ER7581LT,W195,W195.2630,Argus Support Contract 2025 - Jan Q1,02-Jan-25,31-Mar-25,02-Jan-25 A,31-Mar-25 A,63,0,63,100%,,Completed
 ER7581LT,W195,W195.2620,Argus Support Contract 2024 - Oct Q4,01-Oct-24,31-Dec-24,01-Oct-24 A,31-Dec-24 A,64,0,64,100%,,Completed
 ER7581LT,W195,W195.2610,Argus Support Contract 2024 - Jul Q3,01-Jul-24,30-Sep-24,01-Jul-24 A,30-Sep-24 A,65,0,65,100%,,Completed
 ER7581LT,W195,W195.2600,Argus Support Contract 2024 - Apr Q2,02-Apr-24,28-Jun-24,02-Apr-24 A,28-Jun-24 A,62,0,62,100%,,Completed
 ER7581LT,W195,W195.2590,Argus Support Contract 2024 - Jan Q1,02-Jan-24,28-Mar-24,02-Jan-24 A,28-Mar-24 A,63,0,63,100%,,Completed
 ER7581LT,W195,W195.2580,Argus Support Contract 2023 - Jul,03-Jul-23,03-Jul-23,03-Jul-23 A,03-Jul-23 A,1,0,1,100%,,Completed
 ER7581LT,W195,W195.2570,Argus Support Contract 2023 - Jan,04-Jan-23,04-Jan-23,04-Jan-23 A,04-Jan-23 A,1,0,0,100%,,Completed
 ER7581LT,W195,W195.2560,Argus Support Contract - 6 Month Jul 2022,01-Jul-22,01-Jul-22,01-Jul-22 A,01-Jul-22 A,0,0,1,100%,,Completed
 ER7581LT,W195,W195.2500,Argus Support Contract - 6 Month Jan 2022,04-Jan-22,05-Jan-22,04-Jan-22 A,05-Jan-22 A,0,0,1,100%,,Completed
 ER7581LT,W195,W195.2490,Thales Long Term Support Contract Q4 2027,01-Oct-27,31-Dec-27,01-Oct-27,31-Dec-27,66,66,66,0%,759,Not Started
 ER7581LT,W195,W195.2480,Thales Long Term Support Contract Q3 2027,01-Jul-27,30-Sep-27,01-Jul-27,30-Sep-27,65,65,65,0%,759,Not Started
 ER7581LT,W195,W195.2470,Thales Long Term Support Contract Q2 2027,01-Apr-27,30-Jun-27,01-Apr-27,30-Jun-27,63,63,63,0%,759,Not Started
 ER7581LT,W195,W195.2460,Thales Long Term Support Contract Q1 2027,04-Jan-27,31-Mar-27,04-Jan-27,31-Mar-27,61,61,61,0%,759,Not Started
 ER7581LT,W195,W195.2450,HRA 2027 Software Build complete,,01-Dec-23,,01-Dec-23 A,0,0,0,100%,,Completed
 ER7581LT,W195,W195.2440,HRA 2027 Lifetime Sustainability Review (LSR) issued (TBC) (No Longer Required),,01-Dec-23,,01-Dec-23 A,0,0,0,100%,,Completed
 ER7581LT,W195,W195.2410,Thales Long Term Support Contract Q4 2026,01-Oct-26,31-Dec-26,01-Oct-26,31-Dec-26,65,65,65,0%,1014,Not Started
 ER7581LT,W195,W195.2400,Thales Long Term Support Contract Q3 2026,01-Jul-26,30-Sep-26,01-Jul-26,30-Sep-26,65,65,65,0%,1014,Not Started
 ER7581LT,W195,W195.2390,Thales Long Term Support Contract Q2 2026,01-Apr-26,30-Jun-26,01-Apr-26,30-Jun-26,61,61,61,0%,1014,Not Started
 ER7581LT,W195,W195.2380,Thales Long Term Support Contract Q1 2026,02-Jan-26,31-Mar-26,02-Jan-26*,31-Mar-26,63,63,63,0%,1014,Not Started
 ER7581LT,W195,W195.2370,HRA 2026 Software Build Complete,,01-Dec-23,,01-Dec-23 A,0,0,0,100%,,Completed
 ER7581LT,W195,W195.2360,HRA 2026 Lifetime Sustainability Review (LSR) Issued (TBC) (No Longer Required),,01-Dec-23,,01-Dec-23 A,0,0,0,100%,,Completed
 ER7581LT,W195,W195.2330,Plant Control Systems & Simulators (PCS&S) Group - 2027,04-Jan-27,31-Dec-27,04-Jan-27,31-Dec-27,255,255,255,0%,759,Not Started
 ER7581LT,W195,W195.2320,HRA PES Group Support - 2027,04-Jan-27,31-Dec-27,04-Jan-27*,31-Dec-27,255,255,255,0%,759,Not Started
 ER7581LT,W195,W195.2310,Plant Control Systems & Simulators (PCS&S) Group - 2026,02-Jan-26,31-Dec-26,02-Jan-26,31-Dec-26,254,254,254,0%,1014,Not Started
 ER7581LT,W195,W195.2300,HRA PES Group Support - 2026,02-Jan-26,31-Dec-26,02-Jan-26*,31-Dec-26,254,254,254,0%,1014,Not Started
 ER7581LT,W195,W195.2290,Thales Long Term Support Contract Q4 2025,01-Oct-25,31-Dec-25,01-Oct-25,31-Dec-25,64,64,64,0%,1268,Not Started
 ER7581LT,W195,W195.2280,Thales Long Term Support Contract Q3 2025,01-Jul-25,30-Sep-25,01-Jul-25,30-Sep-25,65,65,65,0%,1268,Not Started
 ER7581LT,W195,W195.2270,Thales Long Term Support Contract Q2 2025,01-Apr-25,30-Jun-25,01-Apr-25,30-Jun-25,61,61,61,0%,1268,Not Started
 ER7581LT,W195,W195.2260,Thales Long Term Support Contract Q1 2025,02-Jan-25,31-Mar-25,02-Jan-25 A,31-Mar-25 A,63,0,63,100%,,Completed
 ER7581LT,W195,W195.2250,HRA 2025 R1 Software Build Complete,,02-Oct-23,,02-Oct-23 A,0,0,0,100%,,Completed
 ER7581LT,W195,W195.2240,HRA 2025 Lifetime Sustainability Review (LSR) Issued (TBC) (No Longer Required),,02-Oct-23,,02-Oct-23 A,0,0,0,100%,,Completed
 ER7581LT,W195,W195.2210,Thales Long Term Support Contract Q4 2024,01-Oct-24,31-Dec-24,01-Oct-24 A,31-Dec-24 A,64,0,64,100%,,Completed
 ER7581LT,W195,W195.2200,Thales Long Term Support Contract Q3 2024,01-Jul-24,30-Sep-24,01-Jul-24 A,30-Sep-24 A,65,0,65,100%,,Completed
 ER7581LT,W195,W195.2190,Thales Long Term Support Contract Q2 2024,02-Apr-24,28-Jun-24,02-Apr-24 A,28-Jun-24 A,62,0,62,100%,,Completed
 ER7581LT,W195,W195.2180,Thales Long Term Support Contract Q1 2024,02-Jan-24,28-Mar-24,02-Jan-24 A,28-Mar-24 A,63,0,63,100%,,Completed
 ER7581LT,W195,W195.2170,Thales Long Term Support Contract Q4 2023,02-Oct-23,02-Oct-23,02-Oct-23 A,02-Oct-23 A,1,0,1,100%,,Completed
 ER7581LT,W195,W195.2160,Thales Long Term Support Contract Q3 2023,03-Jul-23,03-Jul-23,03-Jul-23 A,03-Jul-23 A,1,0,1,100%,,Completed
 ER7581LT,W195,W195.2150,Thales Long Term Support Contract Q2 2023,03-Apr-23,03-Apr-23,03-Apr-23 A,03-Apr-23 A,0,0,0,100%,,Completed
 ER7581LT,W195,W195.2140,Thales Long Term Support Contract Q1 2023,04-Jan-23,04-Jan-23,04-Jan-23 A,04-Jan-23 A,1,0,0,100%,,Completed
 ER7581LT,W195,W195.2130,Thales Long Term Support Contract Q4 2022,03-Oct-22,03-Oct-22,03-Oct-22 A,03-Oct-22 A,0,0,1,100%,,Completed
 ER7581LT,W195,W195.2120,Thales Long Term Support Contract Q3 2022,01-Jul-22,01-Jul-22,01-Jul-22 A,01-Jul-22 A,0,0,1,100%,,Completed
 ER7581LT,W195,W195.2110,Thales Long Term Support Contract Q2 2022,04-Apr-22,04-Apr-22,04-Apr-22 A,04-Apr-22 A,0,0,0,100%,,Completed
 ER7581LT,W195,W195.2100,Thales Long Term Support Contract Q1 2022,04-Jan-22,05-Jan-22,04-Jan-22 A,05-Jan-22 A,63,0,1,100%,,Completed
 ER7581LT,W195,W195.2090,HRA 2024 Installation R1,,30-Jun-25,,30-Jun-25,0,0,0,0%,1397,Not Started
 ER7581LT,W195,W195.2080,HRA 2024 Lifetime Sustainability Review (LSR) Issued (TBC) (No Longer Required),,02-Oct-23,,02-Oct-23 A,0,0,0,100%,,Completed
 ER7581LT,W195,W195.2040,Plant Control Systems & Simulators (PCS&S) Group - 2025,02-Jan-25,31-Dec-25,02-Jan-25 A,31-Dec-25,253,190,253,24%,1268,In Progress
 ER7581LT,W195,W195.2030,HRA PES Group Support - 2025,02-Jan-25,31-Dec-25,02-Jan-25 A,31-Dec-25,253,190,253,24%,1268,In Progress
 ER7581LT,W195,W195.2020,CTO C&I Systems Group - 2024,02-Jan-24,02-Jan-25,02-Jan-24 A,02-Jan-25 A,0,0,254,100%,,Completed
 ER7581LT,W195,W195.2010,HRA PES Group Support - 2024,02-Jan-24,31-Dec-24,02-Jan-24 A,31-Dec-24 A,0,0,254,100%,,Completed
 ER7580LT,W194,W194.2280,Thales Long Term Support Contract Q2 2025,01-Apr-25,30-Jun-25,01-Apr-25,30-Jun-25,61,61,61,0%,509,Not Started
 ER7580LT,W194,W194.2270,Thales Long Term Support Contract Q3 2025,01-Jul-25,30-Sep-25,01-Jul-25,30-Sep-25,65,65,65,0%,509,Not Started
 ER7580LT,W194,W194.2260,Thales Long Term Support Contract Q4 2025,01-Oct-25,31-Dec-25,01-Oct-25,31-Dec-25,64,64,64,0%,509,Not Started
 ER7580LT,W194,W194.2250,Thales Long Term Support Contract Q1 2025,02-Jan-25,31-Mar-25,02-Jan-25 A,31-Mar-25 A,63,0,63,100%,,Completed
 ER7580LT,W194,W194.2240,HPB 2025 Lifetime Sustainability Review (LSR) issued (TBC) (No Longer Required),,02-Oct-23,,02-Oct-23 A,0,0,0,100%,,Completed
 ER7580LT,W194,W194.2230,HPB 2025 - R3 Software Build Complete (No Longer Required),,01-Dec-23,,01-Dec-23 A,0,0,0,100%,,Completed
 ER7580LT,W194,W194.2200,Thales Long Term Support Contract Q2 2024,02-Apr-24,28-Jun-24,02-Apr-24 A,28-Jun-24 A,62,0,62,100%,,Completed
 ER7580LT,W194,W194.2190,Thales Long Term Support Contract Q3 2024,01-Jul-24,29-Oct-24,01-Jul-24 A,29-Oct-24 A,65,0,86,100%,,Completed
 ER7580LT,W194,W194.2180,Thales Long Term Support Contract Q4 2024,01-Oct-24,31-Dec-24,01-Oct-24 A,31-Dec-24 A,64,0,64,100%,,Completed
 ER7580LT,W194,W194.2170,Thales Long Term Support Contract Q1 2024,02-Jan-24,28-Mar-24,02-Jan-24 A,28-Mar-24 A,1,0,63,100%,,Completed
 ER7580LT,W194,W194.2160,HPB 2024 Lifetime Sustainability Review (LSR) issued (TBC) (No Longer Required),,02-Oct-23,,02-Oct-23 A,0,0,0,100%,,Completed
 ER7580LT,W194,W194.2150,HPB 2024 - R3 Software Build Complete  (No Longer Required),,01-Dec-23,,01-Dec-23 A,0,0,0,100%,,Completed
 ER7580LT,W194,W194.2120,HPB PES Group Support - 2024,02-Jan-24,31-Dec-24,02-Jan-24 A,31-Dec-24 A,254,0,254,100%,,Completed
 ER7580LT,W194,W194.2110,Plant Control Systems & Simulators (PCS&S) Group - 2025,02-Jan-25,31-Dec-25,02-Jan-25 A,31-Dec-25,253,190,253,24%,509,In Progress
 ER7580LT,W194,W194.2100,HPB PES Group Support - 2025,02-Jan-25,31-Dec-25,02-Jan-25 A,31-Dec-25,253,190,253,24%,509,In Progress
 ER7580LT,W194,W194.2090,CTO C&I Systems Group - 2024,02-Jan-24,31-Dec-24,02-Jan-24 A,31-Dec-24 A,0,0,254,100%,,Completed
 ER7580LT,W194,W194.2060,Thales Long Term Support Contract Q2 2023,03-Apr-23,03-Apr-23,03-Apr-23 A,03-Apr-23 A,1,0,1,100%,,Completed
 ER7580LT,W194,W194.2070,Thales Long Term Support Contract Q3 2023,03-Jul-23,03-Jul-23,03-Jul-23 A,03-Jul-23 A,1,0,1,100%,,Completed
 ER7580LT,W194,W194.2080,Thales Long Term Support Contract Q4 2023,02-Oct-23,02-Oct-23,02-Oct-23 A,02-Oct-23 A,1,0,1,100%,,Completed
 ER7580LT,W194,W194.2050,Thales Long Term Support Contract Q1 2023,04-Jan-23,04-Jan-23,04-Jan-23 A,04-Jan-23 A,1,0,0,100%,,Completed
 ER7580LT,W194,W194.2020,Thales Long Term Support Contract Q2 2022,01-Apr-22,01-Apr-22,01-Apr-22 A,01-Apr-22 A,0,0,1,100%,,Completed
 ER7580LT,W194,W194.2030,Thales Long Term Support Contract Q3 2022,01-Jul-22,01-Jul-22,01-Jul-22 A,01-Jul-22 A,1,0,1,100%,,Completed
 ER7580LT,W194,W194.2040,Thales Long Term Support Contract Q4 2022,03-Oct-22,03-Oct-22,03-Oct-22 A,03-Oct-22 A,1,0,1,100%,,Completed
 ER7580LT,W194,W194.2010,Thales Long Term Support Contract Q1 2022,01-Jan-22,03-Jan-22,01-Jan-22 A,03-Jan-22 A,63,0,0,100%,,Completed
 W156LT,W156,W156.150,Year 3 2023,03-Jan-23,29-Dec-23,03-Jan-23 A,29-Dec-23 A,210,0,250,100%,,Completed
 W156LT,W156,W156.30,Year 2 2022,04-Jan-22,30-Dec-22,04-Jan-22 A,30-Dec-22 A,231,0,250,100%,,Completed
 W156LT,W156,W156.20,Year 1 2021,01-Apr-21,31-Dec-21,01-Apr-21 A,31-Dec-21 A,107,0,189,100%,,Completed
 ER7581LT,W195,W195.1050,7000802035 - Argus Support Contract 2021,01-Apr-21,30-Apr-21,01-Apr-21 A,30-Apr-21 A,0,0,20,100%,,Completed
 ER7582LT,W196,W196.1050,7000802036 - Argus Support Contract 2021,01-Apr-21,30-Apr-21,01-Apr-21 A,30-Apr-21 A,0,0,20,100%,,Completed
 ER7582LT,W196,W196.1180,HYA 2023 Lifetime Sustainability Review (LSR) issued,,30-Jun-23,,30-Jun-23 A,0,0,0,100%,,Completed
 ER7582LT,W196,W196.1170,HYA 2022 Software Build complete,,30-Dec-22,,30-Dec-22 A,0,0,0,100%,,Completed
 ER7582LT,W196,W196.1160,HYA 2022 Lifetime Sustainability Review (LSR) issued,,13-May-22,,13-May-22 A,0,0,0,100%,,Completed
 ER7582LT,W196,W196.1150,HYA 2021 Defuelling Software Build,01-Apr-21,30-Nov-21,01-Apr-21 A,30-Nov-21 A,169,0,169,100%,,Completed
 ER7581LT,W195,W195.1190,HRA 2023 U1 Software Build Complete,,01-Dec-23,,01-Dec-23 A,0,0,0,100%,,Completed
 ER7581LT,W195,W195.1180,HRA 2023 Lifetime Sustainability Review (LSR) Issued,,15-Dec-23,,15-Dec-23 A,0,0,0,100%,,Completed
 ER7581LT,W195,W195.1170,HRA 2022 Software Build complete,,30-Dec-22,,30-Dec-22 A,0,0,0,100%,,Completed
 ER7581LT,W195,W195.1160,HRA 2022 Lifetime Sustainability Review (LSR) issued,,31-Oct-22,,31-Oct-22 A,0,0,0,100%,,Completed
 ER7581LT,W195,W195.1150,HRA 2021 Defuelling Software Build,01-Apr-21,30-Nov-21,01-Apr-21 A,30-Nov-21 A,169,0,169,100%,,Completed
 ER7581LT,W195,W195.1140,HRA 2021 Lifetime Sustainability Review (LSR) issued,01-Apr-21,31-Dec-21,01-Apr-21 A,31-Dec-21 A,126,0,189,100%,,Completed
 ER7580LT,W194,W194.1180,HPB 2023 Lifetime Sustainability Review (LSR) issued,,09-May-23,,09-May-23 A,0,0,0,100%,,Completed
 ER7580LT,W194,W194.1190,HPB 2023 - R3 Software Build Complete,,07-Feb-24,,07-Feb-24 A,0,0,0,100%,,Completed
 ER7580LT,W194,W194.1160,HPB 2022 Lifetime Sustainability Review (LSR) issued,,31-Mar-22,,31-Mar-22 A,0,0,0,100%,,Completed
 ER7580LT,W194,W194.1170,HPB 2022 Software Build complete,,30-Dec-22,,30-Dec-22 A,0,0,0,100%,,Completed
 ER7580LT,W194,W194.1140,HPB 2021 Lifetime Sustainability Review (LSR) issued,01-Apr-21,22-Jul-21,01-Apr-21 A,22-Jul-21 A,126,0,77,100%,,Completed
 ER7580LT,W194,W194.1150,HPB 2021 Software Build complete,01-Apr-21,30-Nov-21,01-Apr-21 A,30-Nov-21 A,169,0,169,100%,,Completed
 W156LT,W156,W156.34961,>>> MIRROR INCOMING ENABLER (W226) Review SPPI File Against Approved Essential Safety Cases,,31-Jan-25,,03-Feb-25 A,0,0,0,100%,,Completed
 W156LT,W156,W156.34951,>>> INCOMING ENABLER (W226) Fuel Handling SC ONR Approved,,13-Jan-25,,03-Feb-25 A,0,0,0,100%,,Completed
 W156LT,W156,W156.34941,>>> MIRROR INCOMING ENABLER (W206) Reactor S/D SC INA Approved,,02-Jan-25,,03-Feb-25 A,0,0,0,100%,,Completed
 W156LT,W156,W156.34931,>>> INCOMING ENABLER (W206) Reactor S/D SC ONR Approved,,13-Jan-25,,03-Feb-25 A,0,0,0,100%,,Completed
 W155LT,W155,W155.37741,>>> MIRROR INCOMING ENABLER (W222) Fuel Handling SC ONR Approved,,13-Jan-25,,03-Feb-25 A,0,0,0,100%,,Completed
 W155LT,W155,W155.37731,>>> INCOMING ENABLER (W222) Fuel Handling SC ONR Approved,,13-Jan-25,,03-Feb-25 A,0,0,0,100%,,Completed
 W155LT,W155,W155.37721,>>> MIRROR INCOMING ENABLER (W202) Reactor S/D SC ONR Approved,,27-Jan-25,,03-Feb-25 A,0,0,0,100%,,Completed
 W155LT,W155,W155.37711,>>> INCOMING ENABLER (W202) Reactor S/D SC ONR Approved,,27-Jan-25,,03-Feb-25 A,0,0,0,100%,,Completed
 ER7582LT,W196,W196.1140,HYA 2021 Lifetime Sustainability Review (LSR) issued,01-Apr-21,30-Apr-21,01-Apr-21 A,30-Apr-21 A,0,0,20,100%,,Completed
 ER7582LT,W196,W196.1200,HYA PES Group Support - 2021,01-Apr-21,31-Dec-21,01-Apr-21 A,31-Dec-21 A,0,0,189,100%,,Completed
 ER7582LT,W196,W196.1210,HYA PES Group Support - 2022,04-Jan-22,30-Dec-22,04-Jan-22 A,30-Dec-22 A,231,0,251,100%,,Completed
 ER7582LT,W196,W196.1220,HYA PES Group Support - 2023,03-Jan-23,29-Dec-23,03-Jan-23 A,29-Dec-23 A,0,0,251,100%,,Completed
 ER7582LT,W196,W196.1230,CTO C&I Systems Group - 2021,01-Apr-21,31-Dec-21,01-Apr-21 A,31-Dec-21 A,0,0,189,100%,,Completed
 ER7582LT,W196,W196.1240,CTO C&I Systems Group - 2022,04-Jan-22,30-Dec-22,04-Jan-22 A,30-Dec-22 A,231,0,251,100%,,Completed
 ER7582LT,W196,W196.1250,CTO C&I Systems Group - 2023,03-Jan-23,02-Jan-24,03-Jan-23 A,02-Jan-24 A,0,0,251,100%,,Completed
 ER7582LT,W196,W196.1060,7000796837 - Thales Long Term Support Contract Q2 2021,01-Apr-21,30-Jun-21,01-Apr-21 A,30-Jun-21 A,0,0,61,100%,,Completed
 ER7582LT,W196,W196.1260,7000796837 - Thales Long Term Support Contract Q3 2021,01-Jul-21,01-Jul-21,01-Jul-21 A,01-Jul-21 A,0,0,1,100%,,Completed
 ER7582LT,W196,W196.1270,7000796837 - Thales Long Term Support Contract Q4 2021,01-Nov-21,29-Nov-21,01-Nov-21 A,29-Nov-21 A,0,0,21,100%,,Completed
 ER7582LT,W196,W196.1300,DPCS Long Term Support Contract 2021,01-Jan-21,31-Dec-21,01-Jan-21 A,31-Dec-21 A,1,0,253,100%,,Completed
 ER7582LT,W196,W196.1310,Argus Support Contract 2021,01-Apr-21,31-Dec-21,01-Apr-21 A,31-Dec-21 A,1,0,190,100%,,Completed
 ER7582LT,W196,W196.1320,DPCS Long Term Support Contract 2022,04-Jan-22,30-Dec-22,04-Jan-22 A,30-Dec-22 A,250,0,251,100%,,Completed
 ER7582LT,W196,W196.1330,Argus Support Contract 2022,04-Jan-22,30-Dec-22,04-Jan-22 A,30-Dec-22 A,252,0,251,100%,,Completed
 ER7582LT,W196,W196.3400,Argus Support Contract 2023,04-Jan-23,29-Dec-23,04-Jan-23 A,29-Dec-23 A,231,0,250,100%,,Completed
 ER7582LT,W196,W196.1350,DPCS Long Term Support Contract 2023,04-Jan-23,29-Dec-23,04-Jan-23 A,29-Dec-23 A,231,0,250,100%,,Completed
 ER7581LT,W195,W195.1350,DPCS Long Term Support Contract 2023,04-Jan-23,29-Dec-23,04-Jan-23 A,29-Dec-23 A,252,0,250,100%,,Completed
 ER7581LT,W195,W195.3400,Argus Support Contract 2023,04-Jan-23,29-Dec-23,04-Jan-23 A,29-Dec-23 A,252,0,250,100%,,Completed
 ER7581LT,W195,W195.1330,Argus Support Contract 2022,04-Jan-22,30-Dec-22,04-Jan-22 A,30-Dec-22 A,250,0,251,100%,,Completed
 ER7581LT,W195,W195.1320,DPCS Long Term Support Contract 2022,04-Jan-22,30-Dec-22,04-Jan-22 A,30-Dec-22 A,250,0,251,100%,,Completed
 ER7581LT,W195,W195.1310,Argus Support Contract 2021,01-Apr-21,31-Dec-21,01-Apr-21 A,31-Dec-21 A,1,0,190,100%,,Completed
 ER7581LT,W195,W195.1300,DPCS Long Term Support Contract 2021,01-Jan-21,31-Dec-21,01-Jan-21 A,31-Dec-21 A,1,0,253,100%,,Completed
 ER7581LT,W195,W195.1270,7000796835 - Thales Long Term Support Contract Q4 2021,01-Nov-21,30-Nov-21,01-Nov-21 A,30-Nov-21 A,0,0,21,100%,,Completed
 ER7581LT,W195,W195.1260,7000796835 - Thales Long Term Support Contract Q3 2021,01-Jul-21,01-Jul-21,01-Jul-21 A,01-Jul-21 A,0,0,1,100%,,Completed
 ER7581LT,W195,W195.1060,7000796835 - Thales Long Term Support Contract Q2 2021,01-Apr-21,30-Jun-21,01-Apr-21 A,30-Jun-21 A,0,0,60,100%,,Completed
 ER7581LT,W195,W195.1250,CTO C&I Systems Group - 2023,04-Jan-23,29-Dec-23,04-Jan-23 A,29-Dec-23 A,1,0,250,100%,,Completed
 ER7581LT,W195,W195.1240,CTO C&I Systems Group - 2022,04-Jan-22,30-Dec-22,04-Jan-22 A,30-Dec-22 A,231,0,251,100%,,Completed
 ER7581LT,W195,W195.1230,CTO C&I Systems Group - 2021,01-Apr-21,31-Dec-21,01-Apr-21 A,31-Dec-21 A,0,0,190,100%,,Completed
 ER7581LT,W195,W195.1220,HRA PES Group Support - 2023,04-Jan-23,29-Dec-23,04-Jan-23 A,29-Dec-23 A,0,0,250,100%,,Completed
 ER7581LT,W195,W195.1210,HRA PES Group Support - 2022,04-Jan-22,30-Dec-22,04-Jan-22 A,30-Dec-22 A,231,0,251,100%,,Completed
 ER7581LT,W195,W195.1200,HRA PES Group Support - 2021,01-Apr-21,31-Dec-21,01-Apr-21 A,31-Dec-21 A,0,0,190,100%,,Completed
 ER7580LT,W194,W194.1200,HPB PES Group Support - 2021,01-Apr-21,31-Dec-21,01-Apr-21 A,31-Dec-21 A,0,0,190,100%,,Completed
 ER7580LT,W194,W194.1210,HPB PES Group Support - 2022,01-Jan-22,29-Jul-22,01-Jan-22 A,29-Jul-22 A,0,0,144,100%,,Completed
 ER7580LT,W194,W194.1220,HPB PES Group Support - 2023,04-Jan-23,29-Dec-23,04-Jan-23 A,29-Dec-23 A,251,0,250,100%,,Completed
 ER7580LT,W194,W194.1230,CTO C&I Systems Group - 2021,01-Apr-21,31-Dec-21,01-Apr-21 A,31-Dec-21 A,0,0,190,100%,,Completed
 ER7580LT,W194,W194.1240,CTO C&I Systems Group - 2022,01-Jan-22,30-Dec-22,01-Jan-22 A,30-Dec-22 A,231,0,251,100%,,Completed
 ER7580LT,W194,W194.1250,CTO C&I Systems Group - 2023,04-Jan-23,29-Dec-23,04-Jan-23 A,29-Dec-23 A,0,0,250,100%,,Completed
 ER7580LT,W194,W194.1060,7000796834 - Thales Long Term Support Contract Q2 2021,01-Apr-21,30-Jun-21,01-Apr-21 A,30-Jun-21 A,0,0,61,100%,,Completed
 ER7580LT,W194,W194.1260,7000796834 - Thales Long Term Support Contract Q3 2021,01-Jul-21,01-Jul-21,01-Jul-21 A,01-Jul-21 A,0,0,1,100%,,Completed
 ER7580LT,W194,W194.1270,7000796834 - Thales Long Term Support Contract Q4 2021,01-Nov-21,30-Nov-21,01-Nov-21 A,30-Nov-21 A,0,0,21,100%,,Completed
 ER7580LT,W194,W194.1070,7000794814 - Thales Long Term Support Contract Q1 2021,01-Jan-21,31-Mar-21,01-Jan-21 A,31-Mar-21 A,0,0,63,100%,,Completed
 ER7580LT,W194,W194.1300,DPCS Long Term Support Contract 2021,01-Jan-21,31-Dec-21,01-Jan-21 A,31-Dec-21 A,1,0,253,100%,,Completed
 W155LT,W155,W155.3120,Update ONR with Changes to SPPI File (V4 ONR Approval of Safety Cases),31-Jan-25,31-Jan-25,06-Feb-25 A,06-Feb-25 A,1,0,1,100%,,Completed
 W155LT,W155,W155.3110,Verification of V4 D/SPPI by INA,30-Jan-25,30-Jan-25,05-Feb-25 A,05-Feb-25 A,1,0,1,100%,,Completed
 W155LT,W155,W155.3100,Draft SPORS for All Changes etc (V4 - Final ONR Approved Safety Cases),31-Jan-25,31-Jan-25,06-Feb-25 A,06-Feb-25 A,1,0,1,100%,,Completed
 W155LT,W155,W155.3090,Verification of V4 D/SPPI Changes by NSG,29-Jan-25,29-Jan-25,04-Feb-25 A,04-Feb-25 A,1,0,1,100%,,Completed
 W155LT,W155,W155.3080,Undertake SVAs for Changes to Existing and New SPPI ( Final ONR Approved Safety Cases),29-Jan-25,30-Jan-25,04-Feb-25 A,05-Feb-25 A,2,0,2,100%,,Completed
 W155LT,W155,W155.3060,Review SPPI file against current draft of essential safety case ( ONR Approval of Safety Cases),28-Jan-25,28-Jan-25,03-Feb-25 A,03-Feb-25 A,1,0,1,100%,,Completed
 W155LT,W155,W155.3050,Review Prep for Lessons Learned,01-Sep-21,01-Sep-21,01-Sep-21 A,01-Sep-21 A,1,0,1,100%,,Completed
 W155LT,W155,W155.2460,ONR Acknowledgement of D/SPPIF V1,01-Jun-22,01-Mar-23,01-Jun-22 A,01-Mar-23 A,40,0,189,100%,,Completed
 W155LT,W155,W155.2390,Final Post Verification Amendments of D/SPPI File V1,25-May-22,26-May-22,25-May-22 A,26-May-22 A,5,0,1,100%,,Completed
 W155LT,W155,W155.2700,INA review of D/SPPIF V1,23-May-22,25-May-22,23-May-22 A,25-May-22 A,3,0,3,100%,,Completed
 W155LT,W155,W155.2280,NSG Review of D/SPPIF V1,20-May-22,20-May-22,20-May-22 A,20-May-22 A,5,0,0,100%,,Completed
 W155LT,W155,W155.2060,EAN Authors review of D/SPPIF V1,11-May-22,19-May-22,11-May-22 A,19-May-22 A,7,0,7,100%,,Completed
 W155LT,W155,W155.1970,On-Site D/SPPI PJB,18-Oct-21,22-Oct-21,18-Oct-21 A,22-Oct-21 A,5,0,5,100%,,Completed
 W156LT,W156,W156.3110,Final Post Verification Amendments to D/SPPIF,18-Jan-22,24-Jan-22,18-Jan-22 A,24-Jan-22 A,5,0,5,100%,,Completed
 W156LT,W156,W156.3090,ONR Acknowledgement of SPPI File,23-Mar-22,27-Jun-22,23-Mar-22 A,27-Jun-22 A,39,0,63,100%,,Completed
 W156LT,W156,W156.34921,Verification of V4 SPPI Changes by INA,05-Feb-25,05-Feb-25,05-Feb-25 A,05-Feb-25 A,1,0,1,100%,,Completed
 W156LT,W156,W156.34911,Verification of V4 SPPI Changes by NSG,04-Feb-25,04-Feb-25,04-Feb-25 A,04-Feb-25 A,1,0,1,100%,,Completed
 W156LT,W156,W156.34901,Verification of V3 SPPI Changes by INA,08-Mar-22,08-Mar-22,08-Mar-22 A,08-Mar-22 A,1,0,1,100%,,Completed
 W156LT,W156,W156.34891,Verification of V3 SPPI Changes by NSG,01-Mar-22,07-Mar-22,01-Mar-22 A,07-Mar-22 A,5,0,5,100%,,Completed
 W156LT,W156,W156.3080,Verification of V2 SPPI Changes by INA,04-Jan-22,04-Jan-22,04-Jan-22 A,04-Jan-22 A,1,0,1,100%,,Completed
 W156LT,W156,W156.3060,Verification of V2 SPPI Changes by NSG,01-Dec-21,04-Jan-22,01-Dec-21 A,04-Jan-22 A,5,0,21,100%,,Completed
 W156LT,W156,W156.34881,Update ONR with Changes to SPPI File (V4 ONR Approval of Safety Cases),06-Feb-25,06-Feb-25,06-Feb-25 A,06-Feb-25 A,1,0,1,100%,,Completed
 W156LT,W156,W156.34871,Draft SPORS for All Changes etc (V4 - Final ONR Approved Safety Cases),06-Feb-25,06-Feb-25,06-Feb-25 A,06-Feb-25 A,1,0,1,100%,,Completed
 W156LT,W156,W156.34861,Undertake SVAs for Changes to Existing and New SPPI (V4 ONR Approval of Safety Cases),04-Feb-25,05-Feb-25,04-Feb-25 A,05-Feb-25 A,2,0,2,100%,,Completed
 W156LT,W156,W156.34851,Review SPPI file against current draft of essential safety case (V4 ONR Approval of Safety Cases),03-Feb-25,03-Feb-25,03-Feb-25 A,03-Feb-25 A,1,0,1,100%,,Completed
 W156LT,W156,W156.34841,Update ONR with Changes to SPPI File (V3 NSC),09-Mar-22,15-Mar-22,09-Mar-22 A,15-Mar-22 A,5,0,5,100%,,Completed
 W156LT,W156,W156.34831,Draft SPORs for All Changes to Existing and New SPP Requiring Revised or New Mitigation Measures (V3 NSC),08-Mar-22,14-Mar-22,08-Mar-22 A,14-Mar-22 A,5,0,5,100%,,Completed
 W156LT,W156,W156.34821,Undertake SVAs for Changes to Existing and New SPPI (V3 NSC),01-Mar-22,07-Mar-22,01-Mar-22 A,07-Mar-22 A,5,0,5,100%,,Completed
 W156LT,W156,W156.34811,Review SPPI file against current draft of essential safety case (V3 NSC),01-Feb-22,07-Feb-22,01-Feb-22 A,07-Feb-22 A,5,0,5,100%,,Completed
 W156LT,W156,W156.3050,Update ONR with Changes to SPPI File (V2),05-Jan-22,11-Jan-22,05-Jan-22 A,11-Jan-22 A,5,0,5,100%,,Completed
 W156LT,W156,W156.2500,Draft SPORs for All Changes to Existing and New SPP Requiring Revised or New Mitigation Measures (V2),01-Mar-22,07-Mar-22,01-Mar-22 A,07-Mar-22 A,5,0,5,100%,,Completed
 W156LT,W156,W156.2490,Undertake SVAs for Changes to Existing and New SPPI (V2),01-Dec-21,16-Feb-22,01-Dec-21 A,16-Feb-22 A,5,0,53,100%,,Completed
 W156LT,W156,W156.2690,Review SPPI file against current draft of essential safety case (V2),29-Nov-21,03-Dec-21,29-Nov-21 A,03-Dec-21 A,5,0,4,100%,,Completed
 W156LT,W156,W156.2480,NSG Review of D/SPPIF,04-Jan-22,10-Jan-22,04-Jan-22 A,10-Jan-22 A,5,0,5,100%,,Completed
 W156LT,W156,W156.2470,EAN Authors Review of D/SPPIF,01-Dec-21,04-Jan-22,01-Dec-21 A,04-Jan-22 A,10,0,21,100%,,Completed
 W156LT,W156,W156.1970,INA Review of D/SPPIF,11-Jan-22,17-Jan-22,11-Jan-22 A,17-Jan-22 A,5,0,5,100%,,Completed
 W156LT,W156,W156.140,Estimate Peer Review / Address Comments,14-May-21,20-May-21,14-May-21 A,20-May-21 A,5,0,5,100%,,Completed
 W156LT,W156,W156.0130,Plan Peer Review & SMART Check / Address Comments,14-May-21,20-May-21,14-May-21 A,20-May-21 A,5,0,5,100%,,Completed
 W156LT,W156,W156.10070,Finance Shuffle Budgets,01-Sep-21,02-Sep-21,01-Sep-21 A,02-Sep-21 A,2,0,2,100%,,Completed
 W156LT,W156,W156.10060,Request Direction Sanction Approval,13-Jul-21,14-Jul-21,13-Jul-21 A,14-Jul-21 A,2,0,2,100%,,Completed
 W156LT,W156,W156.0120,Obtain 'Pre-NSSB Signatures',28-May-21,28-May-21,28-May-21 A,28-May-21 A,1,0,1,100%,,Completed
 W156LT,W156,W156.0110,Confirm NSSB Board Availability,,04-May-21,,04-May-21 A,0,0,0,100%,,Completed
 W156LT,W156,W156.0030,Revise Project Definition Document (PDD) (If Required),04-May-21,10-May-21,04-May-21 A,10-May-21 A,5,0,5,100%,,Completed
 W156LT,W156,W156.10040,Obtain 'Post-NSSB Meeting Signatures',09-Jul-21,12-Jul-21,09-Jul-21 A,12-Jul-21 A,2,0,2,100%,,Completed
 W156LT,W156,W156.10030,Address NSSB Comments,02-Jul-21,08-Jul-21,02-Jul-21 A,08-Jul-21 A,5,0,5,100%,,Completed
 W156LT,W156,W156.10020,Present Paper to NSSB,01-Jul-21,01-Jul-21,01-Jul-21 A,01-Jul-21 A,1,0,1,100%,,Completed
 W156LT,W156,W156.10010,NSSB Members Review Documentation,01-Jun-21,07-Jun-21,01-Jun-21 A,07-Jun-21 A,5,0,5,100%,,Completed
 W156LT,W156,W156.0090,PCL Validate & Approve Baseline Package for NSSB Submission,25-May-21,27-May-21,25-May-21 A,27-May-21 A,3,0,3,100%,,Completed
 W156LT,W156,W156.0080,Update NSSB Paper,21-May-21,24-May-21,21-May-21 A,24-May-21 A,2,0,2,100%,,Completed
 W156LT,W156,W156.0070,Update Schedule/Estimate from Risk Log & Add Provisions (If Required),19-May-21,20-May-21,19-May-21 A,20-May-21 A,2,0,2,100%,,Completed
 W156LT,W156,W156.0060,Complete Risk Log with Estimates (If Required),17-May-21,18-May-21,17-May-21 A,18-May-21 A,2,0,2,100%,,Completed
 W156LT,W156,W156.0050,Hold Risk Workshop (If Required),14-May-21,14-May-21,14-May-21 A,14-May-21 A,1,0,1,100%,,Completed
 W156LT,W156,W156.0040,Ensure Alignment of Schedule & Estimate (If Required),11-May-21,13-May-21,11-May-21 A,13-May-21 A,3,0,3,100%,,Completed
 W156LT,W156,W156.0020,Estimate Scope (If Required),04-May-21,10-May-21,04-May-21 A,10-May-21 A,5,0,5,100%,,Completed
 W156LT,W156,W156.0010,Plan Scope in Primavera (If Required),04-May-21,10-May-21,04-May-21 A,10-May-21 A,5,0,5,100%,,Completed
 W156LT,W156,W156.10050,NSSB Sanction Approval,,02-Aug-21,,02-Aug-21 A,0,0,0,100%,,Completed
 W156LT,W156,W156.0100,Issue Paper to NSSB Secretary,,28-May-21,,28-May-21 A,0,0,0,100%,,Completed
 W155LT,W155,W155.140,Estimate Peer Review / Address Comments,14-May-21,20-May-21,14-May-21 A,20-May-21 A,5,0,5,100%,,Completed
 W155LT,W155,W155.0130,Plan Peer Review & SMART Check / Address Comments,14-May-21,20-May-21,14-May-21 A,20-May-21 A,5,0,5,100%,,Completed
 W155LT,W155,W155.10070,Finance Shuffle Budgets,15-Jul-21,16-Jul-21,15-Jul-21 A,16-Jul-21 A,2,0,2,100%,,Completed
 W155LT,W155,W155.10060,Request Direction Sanction Approval,13-Jul-21,14-Jul-21,13-Jul-21 A,14-Jul-21 A,2,0,2,100%,,Completed
 W155LT,W155,W155.0120,Obtain 'Pre-NSSB Signatures',28-May-21,04-Jun-21,28-May-21 A,04-Jun-21 A,5,0,5,100%,,Completed
 W155LT,W155,W155.0110,Confirm NSSB Board Availability,,04-May-21,,04-May-21 A,0,0,0,100%,,Completed
 W155LT,W155,W155.0030,Revise Project Definition Document (PDD) (If Required),04-May-21,10-May-21,04-May-21 A,10-May-21 A,5,0,5,100%,,Completed
 W155LT,W155,W155.10040,Obtain 'Post-NSSB Meeting Signatures',09-Jul-21,12-Jul-21,09-Jul-21 A,12-Jul-21 A,2,0,2,100%,,Completed
 W155LT,W155,W155.10030,Address NSSB Comments,02-Jul-21,08-Jul-21,02-Jul-21 A,08-Jul-21 A,5,0,5,100%,,Completed
 W155LT,W155,W155.10020,Present Paper to NSSB,01-Jul-21,01-Jul-21,01-Jul-21 A,01-Jul-21 A,1,0,1,100%,,Completed
 W155LT,W155,W155.10010,NSSB Members Review Documentation,01-Jun-21,07-Jun-21,01-Jun-21 A,07-Jun-21 A,5,0,5,100%,,Completed
 W155LT,W155,W155.0090,PCL Validate & Approve Baseline Package for NSSB Submission,25-May-21,27-May-21,25-May-21 A,27-May-21 A,3,0,3,100%,,Completed
 W155LT,W155,W155.0080,Update NSSB Paper,21-May-21,24-May-21,21-May-21 A,24-May-21 A,2,0,2,100%,,Completed
 W155LT,W155,W155.0070,Update Schedule/Estimate from Risk Log & Add Provisions (If Required),19-May-21,20-May-21,19-May-21 A,20-May-21 A,2,0,2,100%,,Completed
 W155LT,W155,W155.0060,Complete Risk Log with Estimates (If Required),17-May-21,18-May-21,17-May-21 A,18-May-21 A,2,0,2,100%,,Completed
 W155LT,W155,W155.0050,Hold Risk Workshop (If Required),14-May-21,14-May-21,14-May-21 A,14-May-21 A,1,0,1,100%,,Completed
 W155LT,W155,W155.0040,Ensure Alignment of Schedule & Estimate (If Required),11-May-21,13-May-21,11-May-21 A,13-May-21 A,3,0,3,100%,,Completed
 W155LT,W155,W155.0020,Estimate Scope (If Required),04-May-21,10-May-21,04-May-21 A,10-May-21 A,5,0,5,100%,,Completed
 W155LT,W155,W155.0010,Plan Scope in Primavera (If Required),04-May-21,10-May-21,04-May-21 A,10-May-21 A,5,0,5,100%,,Completed
 W155LT,W155,W155.10050,NSSB Sanction Approval,,02-Aug-21,,02-Aug-21 A,0,0,0,100%,,Completed
 W155LT,W155,W155.0100,Issue Paper to NSSB Secretary,,04-Jun-21,,04-Jun-21 A,0,0,0,100%,,Completed
 W730LT_UN,W730,W730.1270,Summary for HYB Fuel Handling Enhanced Safety Cases W230,03-Feb-25,27-Mar-28,03-Feb-25 A,27-Mar-28,801,760,801,0%,0,In Progress
 W730LT_UN,W730,W730.1850,## Technical Development / Project Management - Pre Gate B - (Cost Summary) ##,07-Mar-25,03-Apr-25,07-Mar-25 A,03-Apr-25,20,3,20,80%,11,In Progress
 W730LT_UN,W730,W730.1000,ETC (DD-PF),03-Mar-25,26-Nov-27,01-Apr-25,26-Nov-27,674,674,674,0%,86,Not Started
 W730LT_UN,W730,W730.1190,>>>MIRROR OF INCOMING ENABLER (W209) Supporting References Complete,,31-Jan-24,,31-Jan-24 A,0,0,0,100%,,Completed
 W730LT_UN,W730,W730.1180,>>>INCOMING ENABLER (W209) Supporting References Complete,,31-Jan-24,,31-Jan-24 A,0,0,0,100%,,Completed
 W730LT_UN,W730,W730.1110,Gate D Approved,,27-Mar-28,,27-Mar-28,0,0,0,0%,0,Not Started
 W730LT_UN,W730,W730.1150,>>>OUTGOING ENABLER (HYB Security - Preparing for Defuelling) Review SPPI File Against Issued Essential Safety Cases,,03-Mar-25,,01-Apr-25,0,0,0,0%,760,Not Started
 W158LT,W158,W158.30,2024,01-May-24,31-Dec-24,01-May-24 A,31-Dec-24 A,254,0,170,100%,,Completed
 W158LT,W158,W158.20,2023,03-Jan-23,29-Dec-23,03-Jan-23 A,29-Dec-23 A,210,0,250,100%,,Completed
 W158LT,W158,W158.10,2022,04-Jan-22,30-Dec-22,04-Jan-22 A,30-Dec-22 A,230,0,251,100%,,Completed
 W158LT,W158,W158.1000,Summary for DNB Security W158,02-Aug-21,09-Jul-25,02-Aug-21 A,09-Jul-25,278,68,994,65%,122,In Progress
 W158LT,W158,W158.A10501600,Project Closed,,09-Jul-25,,09-Jul-25,0,0,0,0%,122,Not Started
 W158LT,W158,W158.A1022,All Scope Delivered,,09-Jul-25,,09-Jul-25,0,0,0,0%,122,Not Started
 W158LT,W158,W158.34801,Update Site SRCL & Submit to ONR (Enhanced Safety Cases),21-May-25,28-May-25,21-May-25,28-May-25,5,5,5,0%,152,Not Started
 W158LT,W158,W158.2650,Update Site SRCL,11-Jan-23,17-Jan-23,11-Jan-23 A,17-Jan-23 A,5,0,5,100%,,Completed
 W158LT,W158,W158.3770,>>> OUTGOING ENABLER (H5.8???) Issue of SPOR - SPPI File for Prep for Deconstruction (NOT LINKED),,01-Jun-23,,01-Jun-23 A,0,0,0,100%,,Completed
 W158LT,W158,W158.3760,>>> OUTGOING ENABLER (H5.1???) Issue of SPOR - SPPI File for Prep for Deconstruction (NOT LINKED),,01-Jun-23,,01-Jun-23 A,0,0,0,100%,,Completed
 W158LT,W158,W158.3750,Prep for Defueling All Security Issues Considered & Addressed for Permanent Mitigations,,01-Mar-23,,01-Mar-23 A,0,0,0,100%,,Completed
 W158LT,W158,W158.3720,>>> INCOMING ENABLER (W232) DNB Enchanced Safety Case Station Approved,,02-Jan-25,,01-Apr-25,0,0,0,0%,174,Not Started
 W158LT,W158,W158.3710,>>> MIRROR INCOMING ENABLER (W232) DNB Enchanced Safety Case Station Approved,,02-May-25,,02-May-25*,0,0,0,0%,122,Not Started
 W158LT,W158,W158.3680,>>> INCOMING ENABLER (W521) Review SPPI File Against Issued Initial Safety Cases,,08-Dec-22,,08-Dec-22 A,0,0,0,100%,,Completed
 W158LT,W158,W158.3670,ONR Acknowledgement of SPPI File,,12-Dec-22,,12-Dec-22 A,0,0,0,100%,,Completed
 W158LT,W158,W158.01,Project Start [FEEDS TO SUMMARY SCHEDULE],02-Aug-21,,02-Aug-21 A,,0,0,0,100%,,Completed
 W158LT,W158,W158.000010,EAC (DD-PF),02-Dec-24,31-Dec-24,02-Dec-24 A,31-Dec-24 A,170,0,20,100%,,Completed
 W158LT,W158,W158.1900,Draft Site specific Defuelling Impact initial assessment,01-Feb-22,01-Feb-22,01-Feb-22 A,01-Feb-22 A,1,0,1,100%,,Completed
 W158LT,W158,W158.1910,Undertake assessment of potential impacts on existing SPP,01-Feb-22,02-Feb-22,01-Feb-22 A,02-Feb-22 A,2,0,2,100%,,Completed
 W158LT,W158,W158.1920,Draft Site specific Defuelling SPPI template (Inc. Input from Site SQEPs),01-Feb-22,14-Feb-22,01-Feb-22 A,14-Feb-22 A,10,0,10,100%,,Completed
 W158LT,W158,W158.1930,Undertake Site assessment of defuelling impacts on existing and new SPP and resources,07-Mar-22,31-Mar-22,07-Mar-22 A,31-Mar-22 A,4,0,18,100%,,Completed
 W158LT,W158,W158.1940,Write up Defuelling SPPI File,01-Apr-22,28-Jun-22,01-Apr-22 A,28-Jun-22 A,15,0,57,100%,,Completed
 W158LT,W158,W158.1950,Undertake Security Vulnerability Assessments on changes to existing and new SPPI,28-Jun-22,14-Jul-22,28-Jun-22 A,14-Jul-22 A,10,0,13,100%,,Completed
 W158LT,W158,W158.1960,Draft SPORs for all changes to existing and new SPP requiring revised or new mitigation measures,15-Jul-22,26-Aug-22,15-Jul-22 A,26-Aug-22 A,20,0,31,100%,,Completed
 W158LT,W158,W158.1990,Undertake assessment of potential impacts on existing TSS/TSP in respect of increased Flask movements,01-Mar-22,03-Mar-22,01-Mar-22 A,03-Mar-22 A,0,0,2,100%,,Completed
 W158LT,W158,W158.2020,Undertake Site assessment of revised Flask Transfer/Storage arrangements,01-Mar-22,03-Mar-22,01-Mar-22 A,03-Mar-22 A,20,0,2,100%,,Completed
 W158LT,W158,W158.2040,Undertake Security Vulnerability Assessments of Off-site and On-site rail heads and potential storage areas,04-Mar-22,11-Mar-22,04-Mar-22 A,11-Mar-22 A,0,0,6,100%,,Completed
 W158LT,W158,W158.2050,Undertake Security Vulnerability Assessments of potential on-site storage areas for ‘full’ flasks,04-Mar-22,11-Mar-22,04-Mar-22 A,11-Mar-22 A,0,0,6,100%,,Completed
 W158LT,W158,W158.2060,Draft SPORs for all changes to extant TSS and new storage facilities/revised operating procedures,14-Mar-22,16-Mar-22,14-Mar-22 A,16-Mar-22 A,0,0,3,100%,,Completed
 W158LT,W158,W158.2070,Identify Mitigations,18-Mar-22,13-Sep-22,18-Mar-22 A,13-Sep-22 A,90,0,122,100%,,Completed
 W158LT,W158,W158.2310,Optioneer guard-force delivery structures,01-Jun-22,28-Dec-22,01-Jun-22 A,28-Dec-22 A,40,0,146,100%,,Completed
 W158LT,W158,W158.2320,Test proposed delivery models,01-Dec-22,29-Dec-22,01-Dec-22 A,29-Dec-22 A,20,0,18,100%,,Completed
 W158LT,W158,W158.2470,Draft DNB Defuelling Security Mitigation Delivery Quality Plan,01-Feb-22,07-Feb-22,01-Feb-22 A,07-Feb-22 A,5,0,5,100%,,Completed
 W158LT,W158,W158.2480,Review DNB Defuelling Security Mitigation Delivery Quality Plan,08-Feb-22,08-Feb-22,08-Feb-22 A,08-Feb-22 A,1,0,1,100%,,Completed
 W158LT,W158,W158.2490,Revise DNB Defuelling Security Mitigation Delivery Quality Plan,09-Feb-22,09-Feb-22,09-Feb-22 A,09-Feb-22 A,1,0,1,100%,,Completed
 W158LT,W158,W158.2500,Approve DNB Defuelling Security Mitigation Delivery Quality Plan,09-Feb-22,09-Feb-22,09-Feb-22 A,09-Feb-22 A,1,0,1,100%,,Completed
 W158LT,W158,W158.2520,Site NSGH Verification of SPPI File,11-Jul-22,22-Jul-22,11-Jul-22 A,22-Jul-22 A,10,0,10,100%,,Completed
 W158LT,W158,W158.2530,Revision of SPPI File,25-Jul-22,29-Jul-22,25-Jul-22 A,29-Jul-22 A,5,0,5,100%,,Completed
 W158LT,W158,W158.2540,Issue of SPPI File to ONR,01-Sep-22,07-Sep-22,01-Sep-22 A,07-Sep-22 A,5,0,5,100%,,Completed
 W158LT,W158,W158.2550,ONR acknowledgement of SPPI File,08-Sep-22,12-Dec-22,08-Sep-22 A,12-Dec-22 A,30,0,68,100%,,Completed
 W158LT,W158,W158.2560,Optioneer potential revised or new mitigations,01-Sep-22,09-Sep-22,01-Sep-22 A,09-Sep-22 A,15,0,6,100%,,Completed
 W158LT,W158,W158.2570,Complete MSI process,12-Sep-22,12-Dec-22,12-Sep-22 A,12-Dec-22 A,30,0,66,100%,,Completed
 W158LT,W158,W158.2580,Implement administratively based mitigations,09-Dec-22,04-Sep-23,09-Dec-22 A,04-Sep-23 A,20,0,182,100%,,Completed
 W158LT,W158,W158.2590,Implement temporary infrastructure and organisational mitigations required to enable commencement of defuelling,09-Dec-22,18-Jul-23,09-Dec-22 A,18-Jul-23 A,10,0,149,100%,,Completed
 W158LT,W158,W158.2600,Implement permanent infrastructure and organisational mitigations (FEED TO SUMMARY SCHEDULE),01-Feb-23,18-Jul-23,01-Feb-23 A,18-Jul-23 A,240,0,115,100%,,Completed
 W158LT,W158,W158.2660,Prep for Defueling All Security Issues Considered & Addressed for Temporary Mitigations (DNB QP Sign Off),,17-Apr-23,,17-Apr-23 A,0,0,0,100%,,Completed
 W158LT,W158,W158.2700,Draft List of Security changes and proposed MSI Categories,01-Jun-22,16-Jun-22,01-Jun-22 A,16-Jun-22 A,10,0,10,100%,,Completed
 W158LT,W158,W158.2710,"Review and Agree Security Changes and MSI Category (INA, SPB, NSC)",12-Sep-22,12-Dec-22,12-Sep-22 A,12-Dec-22 A,30,0,66,100%,,Completed
 W158LT,W158,W158.2760,ONR acknowledgement of Amendments to TSS,01-Mar-22,28-Mar-22,01-Mar-22 A,28-Mar-22 A,20,0,20,100%,,Completed
 W158LT,W158,W158.2770,Optioneer revised or new mitigations,01-Mar-22,21-Mar-22,01-Mar-22 A,21-Mar-22 A,15,0,15,100%,,Completed
 W158LT,W158,W158.2780,Complete MSI process,22-Mar-22,14-Jul-22,22-Mar-22 A,14-Jul-22 A,30,0,78,100%,,Completed
 W158LT,W158,W158.2790,"Review and agree Security Changes and MSI categories (INA, SPB, NSC)",22-Mar-22,31-Mar-22,22-Mar-22 A,31-Mar-22 A,30,0,7,100%,,Completed
 W158LT,W158,W158.3140,Security Plan - Lessons Learned Review Complete,,29-Oct-21,,29-Oct-21 A,0,0,0,100%,,Completed
 W158LT,W158,W158.2350,Issue SPORS,30-Aug-22,30-Aug-22,30-Aug-22 A,30-Aug-22 A,1,0,1,100%,,Completed
 W158LT,W158,W158.2360,>>> MIRROR INCOMING ENABLER (W521) Review SPPI File Against Issued Initial Safety Cases,,08-Dec-22,,08-Dec-22 A,0,0,0,100%,,Completed
 W158LT,W158,W158.2370,Review SPPI File Against Approved Initial Safety Cases,03-Jan-23,09-Jan-23,03-Jan-23 A,09-Jan-23 A,5,0,5,100%,,Completed
 W158LT,W158,W158.2380,Revise SPPI File Against Issued Enhanced Safety Cases,06-May-25,12-May-25,06-May-25,12-May-25,5,5,5,0%,152,Not Started
 W158LT,W158,W158.2390,Review and Update SPORS (Enhanced Safety Cases),13-May-25,19-May-25,13-May-25,19-May-25,5,5,5,0%,152,Not Started
 W158LT,W158,W158.2400,Issue Revised SPORS (Enhanced Safety Cases),20-May-25,20-May-25,20-May-25,20-May-25,1,1,1,0%,152,Not Started
 W158LT,W158,W158.3150,"Review Prep for Defueling (QH Self Assessment, PJDB, CR) - Lessons Learned Review Complete",,07-Sep-22,,07-Sep-22 A,0,0,0,100%,,Completed
 W158LT,W158,W158.3160,"Review Prep for Off Site Transport (QH Self Assessment, PJDB, CR) - Lessons Learned Review Complete",,01-Mar-22,,01-Mar-22 A,0,0,0,100%,,Completed
 W158LT,W158,W158.3170,"Review Prep for Defueling Lessons Learned (QH Self Assessment, PJDB, CR)",31-Aug-22,02-Sep-22,31-Aug-22 A,02-Sep-22 A,2,0,3,100%,,Completed
 W158LT,W158,W158.3180,"Review Prep for Defueling Lessons Learned Captured  (QH Self Assessment, PJDB, CR)",05-Sep-22,07-Sep-22,05-Sep-22 A,07-Sep-22 A,3,0,3,100%,,Completed
 W158LT,W158,W158.3220,Review Flask Security Arrangments Against Issued Enhanced Safety Cases,06-May-25,12-May-25,06-May-25,12-May-25,5,5,5,0%,122,Not Started
 W158LT,W158,W158.3230,Review and Update SPORS,13-May-25,19-May-25,13-May-25,19-May-25,5,5,5,0%,122,Not Started
 W158LT,W158,W158.3240,Issue Revised SPORS (FEED TO SUMMARY SCHEDULE),20-May-25,20-May-25,20-May-25,20-May-25,1,1,1,0%,122,Not Started
 W158LT,W158,W158.3250,Incorporate New Mitigations,21-May-25,09-Jul-25,21-May-25,09-Jul-25,35,35,35,0%,122,Not Started
 W158LT,W158,W158.3190,"Review Prep for Off Site Transport Lessons Learned (QH Self Assessment, PJDB, CR)",18-Mar-22,25-Mar-22,18-Mar-22 A,25-Mar-22 A,0,0,5,100%,,Completed
 W158LT,W158,W158.3200,"Prep for Off Site Transport Lessons Learned Captured  (QH Self Assessment, PJDB, CR)",18-Mar-22,25-Mar-22,18-Mar-22 A,25-Mar-22 A,0,0,5,100%,,Completed
 W158LT,W158,W158.3260,Issue SPORS,17-Mar-22,17-Mar-22,17-Mar-22 A,17-Mar-22 A,0,0,0,100%,,Completed
 W158LT,W158,W158.11,Issue of SPORs - Initial Defueling,,10-Jan-23,,10-Jan-23 A,0,0,0,100%,,Completed
 W158LT,W158,W158.3440,Issue of SPOR - SPPI File for Prep for Off Site Transport,,20-May-25,,20-May-25,0,0,0,0%,157,Not Started
 W158LT,W158,W158.3490,Review Prep for Defueling Revised SPOR for Temporary or Permanent Mitigations,,20-May-25,,20-May-25,0,0,0,0%,157,Not Started
 W158LT,W158,W158.3500,Review Prep for Off Site Transport Revised SPOR for Temporary or Permanent Mitigations,,20-May-25,,20-May-25,0,0,0,0%,157,Not Started
 W158LT,W158,W158.3530,Review Prep for Defueling SPOR for Temporary or Permanent Mitigations,,30-Aug-22,,30-Aug-22 A,0,0,0,100%,,Completed
 W158LT,W158,W158.3540,Review Prep for Off Site Transport SPOR for Temporary or Permanent Mitigations,,01-Apr-22,,01-Apr-22 A,0,0,0,100%,,Completed
 W158LT,W158,W158.3480,DNB Prep for Defueling Security Protected Plant Identification (SPPI) Submit to ONR,,07-Sep-22,,07-Sep-22 A,0,0,0,100%,,Completed
 W158LT,W158,W158.3510,Prep for Off Site Transport of Fuel Flasks ONR SPPI Feedback,,01-Apr-22,,01-Apr-22 A,0,0,0,100%,,Completed
 W158LT,W158,W158.3300,Prep for Off Site Transport All Security Issues Considered & Addressed,,26-Jan-23,,26-Jan-23 A,0,0,0,100%,,Completed
 W158LT,W158,W158.3620,Issue Defueling Quality Plan,,01-Mar-22,,01-Mar-22 A,0,0,0,100%,,Completed
 W156LT,W156,W156.A1830,Summary HYA Security W156,01-Oct-20,02-Jan-25,01-Oct-20 A,01-Apr-25,1317,0,1136,0%,665,In Progress
 W155LT,W155,W155.A1830,Summary for HRA Security W155,01-Sep-20,05-Nov-26,01-Sep-20 A,11-Nov-26,1339,409,1567,52%,35,In Progress
 W156LT,W156,W156.A102042,Preparation for NSSB,22-Jul-20,28-Jul-20,22-Jul-20 A,28-Jul-20 A,5,0,5,100%,,Completed
 W155LT,W155,W155.A102042,Preparation for NSSB,01-Jul-20,24-Jul-20,01-Jul-20 A,24-Jul-20 A,18,0,18,100%,,Completed
 W156LT,W156,W156.3300,Prep for Off Site Transport All Security Issues Considered & Addressed,,01-Jul-25,,29-Jul-25,0,0,0,0%,583,Not Started
 W156LT,W156,W156.3510,Prep for Off Site Transport of Fuel Flasks ONR SPPI Feedback,,01-Nov-21,,01-Nov-21 A,0,0,0,100%,,Completed
 W156LT,W156,W156.3480,HYA Prep for Defueling Security Protected Plant Identification (SPPI) Submit to ONR,,22-Mar-22,,22-Mar-22 A,0,0,0,100%,,Completed
 W156LT,W156,W156.3540,Review Prep for Off Site Transport SPOR for Temporary or Permanent Mitigations,,04-Jan-22,,04-Jan-22 A,0,0,0,100%,,Completed
 W156LT,W156,W156.3530,Review Prep for Defueling SPOR for Temporary or Permanent Mitigations,,01-Jun-22,,01-Jun-22 A,0,0,0,100%,,Completed
 W156LT,W156,W156.3500,Review Prep for Off Site Transport Revised SPOR  for Temporary or Permanent Mitigations,,15-Aug-23,,15-Aug-23 A,0,0,0,100%,,Completed
 W156LT,W156,W156.3490,Review Prep for Defueling Revised SPOR for Temporary or Permanent Mitigations,,24-Feb-25,,24-Feb-25 A,0,0,0,100%,,Completed
 W156LT,W156,W156.3440,Issue of SPORs - SPPI File for Prep for Off Site Transport,,01-Dec-21,,01-Dec-21 A,0,0,0,100%,,Completed
 W156LT,W156,W156.11,Issue of SPORs - SPPI File for Prep of Defueling,,07-Feb-25,,03-Feb-25 A,0,0,0,100%,,Completed
 W156LT,W156,W156.3260,Issue SPORS,29-Nov-21,29-Nov-21,29-Nov-21 A,29-Nov-21 A,1,0,1,100%,,Completed
 W156LT,W156,W156.3200,"Prep for Off Site Transport Lessons Learned Captured  (QH Self Assessment, PJDB, CR)",15-Nov-21,17-Nov-21,15-Nov-21 A,17-Nov-21 A,3,0,3,100%,,Completed
 W156LT,W156,W156.3190,"Review Prep for Off Site Transport Lessons Learned (QH Self Assessment, PJDB, CR)",08-Nov-21,12-Nov-21,08-Nov-21 A,12-Nov-21 A,2,0,4,100%,,Completed
 W156LT,W156,W156.3210,Review Flasks SPPI File Against Issued Essential Safety Cases,27-Jan-25,31-Jan-25,24-Feb-25 A,28-Feb-25 A,5,0,5,100%,,Completed
 W156LT,W156,W156.3180,"Review Prep for Defueling Lessons Learned Captured  (QH Self Assessment, PJDB, CR)",06-May-22,10-May-22,06-May-22 A,10-May-22 A,3,0,3,100%,,Completed
 W156LT,W156,W156.3170,"Review Prep for Defueling Lessons Learned (QH Self Assessment, PJDB, CR)",04-May-22,05-May-22,04-May-22 A,05-May-22 A,2,0,2,100%,,Completed
 W156LT,W156,W156.3160,"Review Prep for Off Site Transport (QH Self Assessment, PJDB, CR) - Lessons Learned Review Complete",,01-Dec-21,,01-Dec-21 A,0,0,0,100%,,Completed
 W156LT,W156,W156.3150,"Review Prep for Defueling (QH Self Assessment, PJDB, CR) - Lessons Learned Review Complete",,12-May-22,,12-May-22 A,0,0,0,100%,,Completed
 W156LT,W156,W156.2400,Issue Revised SPORS,24-Feb-25,24-Feb-25,24-Feb-25 A,24-Feb-25 A,1,0,1,100%,,Completed
 W156LT,W156,W156.2390,Review and Update SPORS,17-Feb-25,21-Feb-25,17-Feb-25 A,21-Feb-25 A,5,0,5,100%,,Completed
 W156LT,W156,W156.2380,Revise SPPI File Against Issued Enhanced Safety Cases (W208 & W228),10-Feb-25,14-Feb-25,10-Feb-25 A,14-Feb-25 A,5,0,5,100%,,Completed
 W156LT,W156,W156.2370,Review SPPI File Against Issued Essential Safety Cases (W206 & W226),03-Feb-25,07-Feb-25,03-Feb-25 A,07-Feb-25 A,5,0,5,100%,,Completed
 W156LT,W156,W156.2360,>>> MIRROR INCOMING ENABLER (W206) Reactor S/D SC ONR Approved,,31-Jan-25,,03-Feb-25 A,0,0,0,100%,,Completed
 W156LT,W156,W156.2350,Issue SPORS,01-Jun-22,01-Jun-22,01-Jun-22 A,01-Jun-22 A,1,0,1,100%,,Completed
 W156LT,W156,W156.3140,Security Plan - Lessons Learned Review Complete,,02-Jun-20,,02-Jun-20 A,0,0,0,100%,,Completed
 W156LT,W156,W156.2680,"Security Plan Lessons Learned Captured  (QH Self Assessment, PJDB, CR)",29-May-20,02-Jun-20,29-May-20 A,02-Jun-20 A,3,0,3,100%,,Completed
 W156LT,W156,W156.2510,"Review Security Plan for Lessons Learned (QH Self Assessment, PJDB, CR)",27-May-20,28-May-20,27-May-20 A,28-May-20 A,2,0,2,100%,,Completed
 W156LT,W156,W156.3100,Contact Decom Project PPM to confirm site Planned dates,01-Mar-21,01-Mar-21,01-Mar-21 A,01-Mar-21 A,1,0,1,100%,,Completed
 W156LT,W156,W156.3070,Contact Decom Project PPM to confirm site Planned dates,01-Mar-21,01-Mar-21,01-Mar-21 A,01-Mar-21 A,1,0,1,100%,,Completed
 W156LT,W156,W156.2340,Contact Decom Project/Site PPM to confirm site Planned dates,01-Mar-21,01-Mar-21,01-Mar-21 A,01-Mar-21 A,1,0,1,100%,,Completed
 W156LT,W156,W156.2790,"Review and agree Security Changes and MSI categories (INA, SPB, NSC)",01-Dec-21,03-Dec-21,01-Dec-21 A,03-Dec-21 A,30,0,2,100%,,Completed
 W156LT,W156,W156.2780,Complete MSI process,01-Dec-21,03-Dec-21,01-Dec-21 A,03-Dec-21 A,30,0,2,100%,,Completed
 W156LT,W156,W156.2770,Optioneer revised or new mitigations,01-Dec-21,03-Dec-21,01-Dec-21 A,03-Dec-21 A,15,0,2,100%,,Completed
 W156LT,W156,W156.2760,ONR acknowledgement of SPPI File,27-Oct-21,29-Oct-21,27-Oct-21 A,29-Oct-21 A,3,0,3,100%,,Completed
 W156LT,W156,W156.2750,Issue of SPPI File,25-Oct-21,27-Oct-21,25-Oct-21 A,27-Oct-21 A,3,0,3,100%,,Completed
 W156LT,W156,W156.2740,Revision of SPPI File,20-Oct-21,22-Oct-21,20-Oct-21 A,22-Oct-21 A,3,0,3,100%,,Completed
 W156LT,W156,W156.2730,Site SQEP verification and INA review of SPPI File,18-Oct-21,20-Oct-21,18-Oct-21 A,20-Oct-21 A,10,0,2,100%,,Completed
 W156LT,W156,W156.2720,Draft list of security changes and proposed MSI categories,11-Oct-21,15-Oct-21,11-Oct-21 A,15-Oct-21 A,10,0,4,100%,,Completed
 W156LT,W156,W156.2710,"Review and Agree Security Changes and MSI Category (INA, SPB, NSC)",28-Feb-25,10-Apr-25,24-Feb-25 A,04-Apr-25,30,4,30,80%,616,In Progress
 W156LT,W156,W156.2700,Draft List of Security changes and proposed MSI Categories,10-Feb-25,21-Feb-25,10-Feb-25 A,21-Feb-25 A,10,0,10,100%,,Completed
 W156LT,W156,W156.2670,ONR acknowledgement of proposed delivery model (NSSP),,18-Jun-25,,14-Jan-26,0,0,0,0%,466,Not Started
 W156LT,W156,W156.2660,HYA QP Sign Off - Security Mitigations to Support Defueling Identified and Ready to Implement,,02-May-23,,02-May-23 A,0,0,0,100%,,Completed
 W156LT,W156,W156.2600,Implement permanent infrastructure and organisational mitigations,03-Feb-25,17-Nov-26,02-Feb-26*,15-Nov-27,454,454,454,0%,0,Not Started
 W156LT,W156,W156.2590,Implement temp. infrastructure and org. mitigations required to enable commencement of defuelling (FEEDS TO SUMMARY SCHE,03-Feb-25,17-Nov-26,02-Feb-26*,15-Nov-27,454,454,454,0%,0,Not Started
 W156LT,W156,W156.2580,Implement administratively based mitigations,03-Feb-25,17-Nov-26,02-Feb-26*,15-Nov-27,454,454,454,0%,0,Not Started
 W156LT,W156,W156.2570,Complete MSI process,11-Apr-25,28-May-25,07-Apr-25,21-May-25,30,30,30,0%,616,Not Started
 W156LT,W156,W156.2560,Optioneer potential revised or new mitigations,07-Feb-25,27-Feb-25,03-Feb-25 A,21-Feb-25 A,15,0,15,100%,,Completed
 W156LT,W156,W156.2550,ONR acknowledgement of SPPI File V1,23-Mar-22,28-Feb-23,23-Mar-22 A,28-Feb-23 A,236,0,235,100%,,Completed
 W156LT,W156,W156.2540,Issue of SPPI File V1,11-Jan-22,17-Jan-22,11-Jan-22 A,17-Jan-22 A,5,0,5,100%,,Completed
 W156LT,W156,W156.2530,Revision of SPPI File,04-Jan-22,10-Jan-22,04-Jan-22 A,10-Jan-22 A,5,0,5,100%,,Completed
 W156LT,W156,W156.2520,Site SQEP verification and INA review of SPPI File,01-Dec-21,04-Jan-22,01-Dec-21 A,04-Jan-22 A,22,0,21,100%,,Completed
 W156LT,W156,W156.2460,Publish Defuelling and Decommissioning Security Requirements Plan,26-May-20,26-May-20,26-May-20 A,26-May-20 A,1,0,1,100%,,Completed
 W156LT,W156,W156.2450,Revise Defuelling and Decommissioning Security Requirements Plan following ONR-CNSS comments,18-May-20,22-May-20,18-May-20 A,22-May-20 A,5,0,5,100%,,Completed
 W156LT,W156,W156.2440,Present Defuelling and Decommissioning Security Requirements Plan to ONR-CNSS (Level 4 meeting),16-Jul-20,29-Jul-20,16-Jul-20 A,29-Jul-20 A,10,0,10,100%,,Completed
 W156LT,W156,W156.2430,Revise Defuelling and Decommissioning Security Requirements Plan,15-Jul-20,15-Jul-20,15-Jul-20 A,15-Jul-20 A,20,0,0,100%,,Completed
 W156LT,W156,W156.2420,Review Defuelling and Decommissioning Security Requirements Plan,01-Jul-20,14-Jul-20,01-Jul-20 A,14-Jul-20 A,20,0,9,100%,,Completed
 W156LT,W156,W156.2410,Build Defuelling Security Requirements Plan,01-Jun-20,30-Jun-20,01-Jun-20 A,30-Jun-20 A,11,0,22,100%,,Completed
 W156LT,W156,W156.2170,Review of Opex from MAGNOX and identification of existing package options,01-May-20,11-Nov-22,01-May-20 A,11-Nov-22 A,190,0,640,100%,,Completed
 W156LT,W156,W156.2080,Undertake review of Opex from MAGNOX RE RADWISE Security REQ's,02-Mar-21,11-Nov-22,02-Mar-21 A,11-Nov-22 A,91,0,429,100%,,Completed
 W156LT,W156,W156.2070,Implement Mitigations,15-Nov-21,30-Sep-22,15-Nov-21 A,30-Sep-22 A,90,0,220,100%,,Completed
 W156LT,W156,W156.2060,Draft SPORs for all changes to extant TSS and new storage facilities/revised operating procedures,01-Nov-21,12-Nov-21,01-Nov-21 A,12-Nov-21 A,20,0,10,100%,,Completed
 W156LT,W156,W156.2050,Undertake Security Vulnerability Assessments of potential on-site storage areas for ‘full’ flasks,11-Oct-21,22-Oct-21,11-Oct-21 A,22-Oct-21 A,10,0,10,100%,,Completed
 W156LT,W156,W156.2040,Undertake Security Vulnerability Assessments of Off-site and On-site rail heads and potential storage areas,11-Oct-21,22-Oct-21,11-Oct-21 A,22-Oct-21 A,10,0,10,100%,,Completed
 W156LT,W156,W156.2030,Write up Flask Transfer/Storage SPPI File,11-Oct-21,25-Oct-21,11-Oct-21 A,25-Oct-21 A,27,0,10,100%,,Completed
 W156LT,W156,W156.2020,Undertake Site assessment of revised Flask Transfer/Storage arrangements,15-Oct-21,25-Oct-21,15-Oct-21 A,25-Oct-21 A,20,0,6,100%,,Completed
 W156LT,W156,W156.2010,Draft Site specific Flask Transfer/Storage SPP File template,01-Oct-21,14-Oct-21,01-Oct-21 A,14-Oct-21 A,10,0,10,100%,,Completed
 W156LT,W156,W156.2000,Identify potential storage of ‘full’ flasks On and Off site,02-Mar-21,30-Sep-21,02-Mar-21 A,30-Sep-21 A,1,0,148,100%,,Completed
 W156LT,W156,W156.1990,Undertake assessment of potential impacts on existing TSS/TSP in respect of increased Flask movements,02-Mar-21,14-May-21,02-Mar-21 A,14-May-21 A,40,0,51,100%,,Completed
 W156LT,W156,W156.1980,Draft Site specific Flask Transport Impact initial assessment template,01-Mar-21,01-Mar-21,01-Mar-21 A,01-Mar-21 A,1,0,1,100%,,Completed
 W156LT,W156,W156.1960,Draft SPORs for all changes to existing and new SPP requiring revised or new mitigation measures (v1),03-May-22,09-May-22,03-May-22 A,09-May-22 A,20,0,4,100%,,Completed
 W156LT,W156,W156.1950,Undertake Security Vulnerability Assessments on changes to existing and new SPPI (v1),02-Dec-21,29-Apr-22,02-Dec-21 A,29-Apr-22 A,40,0,101,100%,,Completed
 W156LT,W156,W156.1940,Write up Defuelling SPPI file,01-Nov-21,03-Dec-21,01-Nov-21 A,03-Dec-21 A,15,0,25,100%,,Completed
 W156LT,W156,W156.1930,Undertake Site assessment of defuelling impacts on existing and new SPP and resources,08-Jul-21,31-Aug-21,08-Jul-21 A,31-Aug-21 A,5,0,37,100%,,Completed
 W156LT,W156,W156.1920,Draft Site specific Defuelling SPPI template (Inc. Input from Site SQEPs),28-Jun-21,07-Jul-21,28-Jun-21 A,07-Jul-21 A,5,0,8,100%,,Completed
 W156LT,W156,W156.1910,Undertake on-site PJB and assessment of potential impacts on existing SPP,21-Jun-21,25-Jun-21,21-Jun-21 A,25-Jun-21 A,5,0,5,100%,,Completed
 W156LT,W156,W156.1900,Draft Site specific Defuelling Impact initial assessment [FEEDS TO SUMMARY SCHEDULE],01-Jun-21,01-Jun-21,01-Jun-21 A,01-Jun-21 A,0,0,0,100%,,Completed
 W156LT,W156,W156.000010,EAC (DD-PF),02-Jan-25,31-Dec-26,01-Apr-25,31-Dec-26,444,444,444,0%,221,Not Started
 W156LT,W156,W156.01,Project Start [FEEDS TO SUMMARY SCHEDULE],01-Oct-20,,01-Oct-20 A,,0,0,0,100%,,Completed
 W156LT,W156,W156.3670,HYA Security Regulatory Commitment Log (SRCL) Submit to ONR,,07-Feb-25,,03-Feb-25 A,0,0,0,100%,,Completed
 W156LT,W156,W156.3680,>>> INCOMING ENABLER (W206) Reactor S/D SC INA Approved,,02-Jan-25,,03-Feb-25 A,0,0,0,100%,,Completed
 W156LT,W156,W156.3690,>>> MIRROR INCOMING ENABLER (W226) Fuel Handling SC INA  Approved,,02-Jan-25,,03-Feb-25 A,0,0,0,100%,,Completed
 W156LT,W156,W156.3700,>>> INCOMING ENABLER (W226) Fuel Handling SC INA  Approved,,02-Jan-25,,03-Feb-25 A,0,0,0,100%,,Completed
 W156LT,W156,W156.3750,Prep for Defueling All Security Issues Considered & Addressed for Permanent Mitigations,,17-Nov-26,,15-Nov-27,0,0,0,0%,0,Not Started
 W156LT,W156,W156.2650,Update Site SRCL,07-Feb-25,07-Feb-25,07-Feb-25 A,07-Feb-25 A,1,0,1,100%,,Completed
 W156LT,W156,W156.34801,Update Site SRCL & Submit to ONR,07-Feb-25,07-Feb-25,07-Feb-25 A,07-Feb-25 A,1,0,1,100%,,Completed
 W156LT,W156,W156.A1022,All Scope Delivered [FEEDS TO SUMMARY SCHEDULE],,17-Nov-26,,15-Nov-27,0,0,0,0%,0,Not Started
 W156LT,W156,W156.A10501600,Project Closed,,17-Nov-26,,15-Nov-27,0,0,0,0%,0,Not Started
 W156LT,W156,W156.A100020,Scope Outline,01-Jun-20,19-Jun-20,01-Jun-20 A,19-Jun-20 A,1,0,15,100%,,Completed
 W156LT,W156,W156.A101021,Cost Estimate,22-Jun-20,26-Jun-20,22-Jun-20 A,26-Jun-20 A,5,0,5,100%,,Completed
 W156LT,W156,W156.A102022,Schedule,29-Jun-20,21-Jul-20,29-Jun-20 A,21-Jul-20 A,5,0,16,100%,,Completed
 W156LT,W156,W156.A102032,NSSB (Non-Scheme Sanction Board) Paper Sign Off,29-Jul-20,14-Aug-20,29-Jul-20 A,14-Aug-20 A,5,0,12,100%,,Completed
 W155LT,W155,W155.3300,Prep for Off Site Transport All Security Issues Considered & Addressed,,24-Aug-26,,24-Aug-26,0,0,0,0%,91,Not Started
 W155LT,W155,W155.3510,Prep for Off Site Transport of Fuel Flasks ONR SPPI Feedback,,01-Dec-21,,01-Dec-21 A,0,0,0,100%,,Completed
 W155LT,W155,W155.3480,HRA Prep for Defueling Security Protected Plant Identification (SPPI) Submit to ONR,,30-Jan-23,,30-Jan-23 A,0,0,0,100%,,Completed
 W155LT,W155,W155.3540,Review Prep for Off Site Transport SPOR for Temporary or Permanent Mitigations,,04-Jan-22,,04-Jan-22 A,0,0,0,100%,,Completed
 W155LT,W155,W155.3530,Review Prep for Defueling SPOR for Temporary or Permanent Mitigations,,12-Jul-22,,12-Jul-22 A,0,0,0,100%,,Completed
 W155LT,W155,W155.3500,Review Prep for Off Site Transport Revised SPOR  for Temporary of Permanent Mitigations,,06-Jul-26,,06-Jul-26,0,0,0,0%,126,Not Started
 W155LT,W155,W155.3490,Review Prep for Defueling Revised SPOR for Temporary or Permanent Mitigations,,06-Jul-26,,06-Jul-26,0,0,0,0%,126,Not Started
 W155LT,W155,W155.3440,Issue of SPORs - SPPI File for Prep for Off Site Transport,,01-Dec-21,,01-Dec-21 A,0,0,0,100%,,Completed
 W155LT,W155,W155.11,Issue of SPORs - SPPI File for Prep of Defueling,,31-Jan-25,,03-Feb-25 A,0,0,0,100%,,Completed
 W155LT,W155,W155.3260,Issue SPORS,03-Dec-21,03-Dec-21,03-Dec-21 A,03-Dec-21 A,1,0,0,100%,,Completed
 W155LT,W155,W155.3200,"Prep for Off Site Transport Lessons Learned Captured  (QH Self Assessment, PJDB, CR)",03-Dec-21,07-Dec-21,03-Dec-21 A,07-Dec-21 A,3,0,3,100%,,Completed
 W155LT,W155,W155.3190,"Review Prep for Off Site Transport Lessons Learned (QH Self Assessment, PJDB, CR)",01-Dec-21,02-Dec-21,01-Dec-21 A,02-Dec-21 A,2,0,2,100%,,Completed
 W155LT,W155,W155.3250,Incorporate New Mitigations,07-Jul-26,24-Aug-26,07-Jul-26,24-Aug-26,35,35,35,0%,91,Not Started
 W155LT,W155,W155.3240,Issue Revised SPORS,06-Jul-26,06-Jul-26,06-Jul-26,06-Jul-26,1,1,1,0%,91,Not Started
 W155LT,W155,W155.3230,Review and Update SPORS,29-Jun-26,03-Jul-26,29-Jun-26,03-Jul-26,5,5,5,0%,91,Not Started
 W155LT,W155,W155..3220,Revise Flasks SPPI File Against Issued Enhanced Safety Cases,22-Jun-26,26-Jun-26,22-Jun-26,26-Jun-26,5,5,5,0%,91,Not Started
 W155LT,W155,W155.3210,Review Flasks SPPI File Against Issued Essential Safety Cases,04-Oct-21,08-Oct-21,04-Oct-21 A,08-Oct-21 A,5,0,5,100%,,Completed
 W155LT,W155,W155.3180,"Review Prep for Defueling Lessons Learned Captured  (QH Self Assessment, PJDB, CR)",20-Jul-22,22-Jul-22,20-Jul-22 A,22-Jul-22 A,3,0,3,100%,,Completed
 W155LT,W155,W155.3170,"Review Prep for Defueling Lessons Learned (QH Self Assessment, PJDB, CR)",18-Jul-22,19-Jul-22,18-Jul-22 A,19-Jul-22 A,2,0,2,100%,,Completed
 W155LT,W155,W155.3160,"Review Prep for Off Site Transport (QH Self Assessment, PJDB, CR) - Lessons Learned Review Complete",,01-Dec-21,,01-Dec-21 A,0,0,0,100%,,Completed
 W155LT,W155,W155.3150,"Review Prep for Defueling (QH Self Assessment, PJDB, CR)  - Lessons Learned Review Complete",,21-Jul-22,,21-Jul-22 A,0,0,0,100%,,Completed
 W155LT,W155,W155.2400,Issue Revised SPORS,06-Jul-26,06-Jul-26,06-Jul-26,06-Jul-26,1,1,1,0%,126,Not Started
 W155LT,W155,W155..2390,Review and Update SPORS,29-Jun-26,03-Jul-26,29-Jun-26,03-Jul-26,5,5,5,0%,126,Not Started
 W155LT,W155,W155.2380,Revise SPPI File Against Issued Enhanced Safety Cases (W224),22-Jun-26,26-Jun-26,22-Jun-26,26-Jun-26,5,5,5,0%,126,Not Started
 W155LT,W155,W155.2370,Review SPPI File Against Issued Essential Safety Cases (W202 & W222),28-Jan-25,03-Feb-25,03-Feb-25 A,07-Feb-25 A,5,0,5,100%,,Completed
 W155LT,W155,W155.2360,>>> MIRROR INCOMING ENABLER (W202) Reactor S/D SC INA Substantially Approved,,02-Jan-25,,03-Feb-25 A,0,0,0,100%,,Completed
 W155LT,W155,W155.2350,Issue SPORS,12-Jul-22,15-Jul-22,12-Jul-22 A,15-Jul-22 A,1,0,3,100%,,Completed
 W155LT,W155,W155.3140,Security Plan - Lessons Learned Review Complete,,01-Jul-20,,01-Jul-20 A,0,0,0,100%,,Completed
 W155LT,W155,W155.2680,"Security Plan Lessons Learned Captured  (QH Self Assessment, PJDB, CR)",29-May-20,02-Jun-20,29-May-20 A,02-Jun-20 A,3,0,3,100%,,Completed
 W155LT,W155,W155.2510,"Review Security Plan for Lessons Learned (QH Self Assessment, PJDB, CR)",27-May-20,28-May-20,27-May-20 A,28-May-20 A,2,0,2,100%,,Completed
 W155LT,W155,W155.3130,Undertake Site assessment of revised Flask Transfer/Storage arrangements,01-Nov-21,12-Nov-21,01-Nov-21 A,12-Nov-21 A,10,0,10,100%,,Completed
 W155LT,W155,W155.3070,Contact Decom Project/Site PPM to confirm site Planned dates,30-Mar-21,31-Mar-21,30-Mar-21 A,31-Mar-21 A,0,0,1,100%,,Completed
 W155LT,W155,W155.2340,Contact Decom Project/Site PPM to confirm site Planned dates,04-Jan-22,04-Jan-22,04-Jan-22 A,04-Jan-22 A,1,0,1,100%,,Completed
 W155LT,W155,W155.2790,"Review and agree Security Changes and MSI categories (INA, SPB, NSC)",01-Dec-21,03-Dec-21,01-Dec-21 A,03-Dec-21 A,30,0,2,100%,,Completed
 W155LT,W155,W155.2780,Complete MSI process,01-Dec-21,03-Dec-21,01-Dec-21 A,03-Dec-21 A,30,0,2,100%,,Completed
 W155LT,W155,W155.2770,Optioneer revised or new mitigations,01-Dec-21,02-Dec-21,01-Dec-21 A,02-Dec-21 A,2,0,2,100%,,Completed
 W155LT,W155,W155.2760,ONR acknowledgement of SPPI File,03-Dec-21,06-Dec-21,03-Dec-21 A,06-Dec-21 A,60,0,2,100%,,Completed
 W155LT,W155,W155.2750,Issue of SPPI File,03-Dec-21,06-Dec-21,03-Dec-21 A,06-Dec-21 A,2,0,2,100%,,Completed
 W155LT,W155,W155.2740,Revision of SPPI File,01-Dec-21,02-Dec-21,01-Dec-21 A,02-Dec-21 A,5,0,2,100%,,Completed
 W155LT,W155,W155.2730,Site SQEP verification and INA review of SPPI File,01-Dec-21,02-Dec-21,01-Dec-21 A,02-Dec-21 A,10,0,1,100%,,Completed
 W155LT,W155,W155.2720,Draft list of security changes and proposed MSI categories,08-Nov-21,03-Dec-21,08-Nov-21 A,03-Dec-21 A,10,0,19,100%,,Completed
 W155LT,W155,W155.2710,"Review and Agree Security Changes and MSI Category (INA, SPB, NSC)",22-Jul-22,03-Jan-23,22-Jul-22 A,03-Jan-23 A,30,0,113,100%,,Completed
 W155LT,W155,W155..2700,Draft List of Security changes and proposed MSI Categories,04-Feb-25,17-Feb-25,10-Feb-25 A,21-Feb-25 A,10,0,10,100%,,Completed
 W155LT,W155,W155.2670,ONR acknowledgement of proposed delivery model (NSSP),,11-Mar-25,,21-Jan-26,0,0,0,0%,240,Not Started
 W155LT,W155,W155.2660,HRA QP Sign Off - Security Mitigations to Support Defueling Identified and Ready to Implement,,17-Apr-23,,17-Apr-23 A,0,0,0,100%,,Completed
 W155LT,W155,W155.2600,Implement permanent infrastructure and organisational mitigations,28-Jan-25,05-Nov-26,03-Feb-25 A,11-Nov-26,450,409,450,10%,35,In Progress
 W155LT,W155,W155.2590,Implement temporary infrastructure and organisational mitigations required to enable commencement of defuelling,28-Jan-25,05-Nov-26,03-Feb-25 A,11-Nov-26,450,409,450,10%,35,In Progress
 W155LT,W155,W155..2580,Implement administratively based mitigations,01-Apr-26,23-Apr-26,01-Apr-26*,23-Apr-26,15,15,15,0%,176,Not Started
 W155LT,W155,W155.2570,Complete MSI process,03-Jan-23,30-Jan-23,03-Jan-23 A,30-Jan-23 A,20,0,20,100%,,Completed
 W155LT,W155,W155.2560,Optioneer potential revised or new mitigations,01-Jul-22,21-Jul-22,01-Jul-22 A,21-Jul-22 A,15,0,15,100%,,Completed
 W155LT,W155,W155.2550,ONR acknowledgement of DSPPIF,01-Jun-22,28-Feb-23,01-Jun-22 A,28-Feb-23 A,55,0,188,100%,,Completed
 W155LT,W155,W155.2540,Issue of DSPPIF,25-May-22,25-May-22,25-May-22 A,25-May-22 A,5,0,0,100%,,Completed
 W155LT,W155,W155.2530,Revision of SPPI File,25-May-22,25-May-22,25-May-22 A,25-May-22 A,5,0,0,100%,,Completed
 W155LT,W155,W155.2520,Site SQEP verification and INA review of SPPI File,03-May-22,25-May-22,03-May-22 A,25-May-22 A,10,0,16,100%,,Completed
 W155LT,W155,W155.2500,Approve HRA Defuelling Security Mitigation Deliver Quality Plan,08-Jul-20,14-Jul-20,08-Jul-20 A,14-Jul-20 A,5,0,5,100%,,Completed
 W155LT,W155,W155.2490,Revise HRA Defuelling Security Mitigation Deliver Quality Plan,01-Jul-20,07-Jul-20,01-Jul-20 A,07-Jul-20 A,5,0,5,100%,,Completed
 W155LT,W155,W155..2480,Review HRA Defuelling Security Mitigation Deliver Quality Plan,17-Jun-20,30-Jun-20,17-Jun-20 A,30-Jun-20 A,10,0,10,100%,,Completed
 W155LT,W155,W155.2470,Draft HRA Defuelling Security Mitigation Deliver Quality Plan,27-May-20,16-Jun-20,27-May-20 A,16-Jun-20 A,15,0,15,100%,,Completed
 W155LT,W155,W155..2460,Publish Defuelling and Decommissioning Security Requirements Plan,26-May-20,26-May-20,26-May-20 A,26-May-20 A,1,0,1,100%,,Completed
 W155LT,W155,W155.2450,Revise Defuelling and Decommissioning Security Requirements Plan following ONR-CNSS comments,18-May-20,22-May-20,18-May-20 A,22-May-20 A,5,0,5,100%,,Completed
 W155LT,W155,W155.2440,Present Defuelling and Decommissioning Security Requirements Plan to ONR-CNSS (Level 4 meeting),01-May-20,15-May-20,01-May-20 A,15-May-20 A,10,0,10,100%,,Completed
 W155LT,W155,W155.2430,Revise Defuelling and Decommissioning Security Requirements Plan,02-Jul-20,15-Jul-20,02-Jul-20 A,15-Jul-20 A,34,0,9,100%,,Completed
 W155LT,W155,W155.2420,Review Defuelling and Decommissioning Security Requirements Plan,01-Jul-20,01-Jul-20,01-Jul-20 A,01-Jul-20 A,5,0,1,100%,,Completed
 W155LT,W155,W155.2410,Build Defuelling Security Requirements Plan,26-Jun-20,01-Jul-20,26-Jun-20 A,01-Jul-20 A,0,0,4,100%,,Completed
 W155LT,W155,W155.2170,Review of Opex from MAGNOX and identification of existing package options,01-May-20,11-Nov-22,01-May-20 A,11-Nov-22 A,214,0,640,100%,,Completed
 W155LT,W155,W155.2080,Undertake review of Opex from MAGNOX RE RADWISE Security REQ's,01-Feb-22,11-Nov-22,01-Feb-22 A,11-Nov-22 A,91,0,197,100%,,Completed
 W155LT,W155,W155.2070,Implement Mitigations,01-Dec-21,11-Nov-22,01-Dec-21 A,11-Nov-22 A,90,0,238,100%,,Completed
 W155LT,W155,W155.20600,Draft SPORs for all changes to extant TSS and new storage facilities/revised operating procedures,01-Dec-21,03-Dec-21,01-Dec-21 A,03-Dec-21 A,20,0,2,100%,,Completed
 W155LT,W155,W155.2050,Undertake Security Vulnerability Assessments of potential on-site storage areas for ‘full’ flasks,08-Nov-21,03-Dec-21,08-Nov-21 A,03-Dec-21 A,20,0,20,100%,,Completed
 W155LT,W155,W155.2040,Undertake Security Vulnerability Assessments of Off-site and On-site rail heads and potential storage areas,08-Nov-21,03-Dec-21,08-Nov-21 A,03-Dec-21 A,20,0,20,100%,,Completed
 W155LT,W155,W155.2030,Write up Flask Transfer/Storage SPPI File,08-Nov-21,12-Nov-21,08-Nov-21 A,12-Nov-21 A,5,0,5,100%,,Completed
 W155LT,W155,W155.2020,Undertake Site assessment of revised Flask Transfer/Storage arrangements,01-Nov-21,12-Nov-21,01-Nov-21 A,12-Nov-21 A,10,0,10,100%,,Completed
 W155LT,W155,W155.2010,Draft Site specific Flask Transfer/Storage SPP File template,01-Nov-21,12-Nov-21,01-Nov-21 A,12-Nov-21 A,10,0,10,100%,,Completed
 W155LT,W155,W155.2000,Identify potential storage of ‘full’ flasks On and Off site,04-Oct-21,29-Oct-21,04-Oct-21 A,29-Oct-21 A,40,0,19,100%,,Completed
 W155LT,W155,W155.1990,Undertake assessment of potential impacts on existing TSS/TSP in respect of increased Flask movements,11-Oct-21,12-Nov-21,11-Oct-21 A,12-Nov-21 A,40,0,25,100%,,Completed
 W155LT,W155,W155.1980,Draft Site specific Flask Transport Impact initial assessment template,01-Oct-21,01-Oct-21,01-Oct-21 A,01-Oct-21 A,1,0,1,100%,,Completed
 W155LT,W155,W155.1960,Draft SPORs for all changes to existing and new SPP requiring revised or new mitigation measures,01-Jul-22,11-Jul-22,01-Jul-22 A,11-Jul-22 A,7,0,7,100%,,Completed
 W155LT,W155,W155.1950,Undertake Security Vulnerability Assessments on changes to existing and new D/SPPIF V1,11-May-22,20-Jul-22,11-May-22 A,20-Jul-22 A,0,0,48,100%,,Completed
 W155LT,W155,W155.1940,Write up Defuelling D/SPPIF V1,01-Dec-21,10-May-22,01-Dec-21 A,10-May-22 A,10,0,108,100%,,Completed
 W155LT,W155,W155.1930,Undertake Site assessment of defuelling impacts on existing and new SPP and resources,01-Nov-21,05-Nov-21,01-Nov-21 A,05-Nov-21 A,5,0,4,100%,,Completed
 W155LT,W155,W155.1920,Draft Site specific Defuelling SPPI template (Inc. Input from Site SQEPs),25-Oct-21,26-Oct-21,25-Oct-21 A,26-Oct-21 A,10,0,1,100%,,Completed
 W155LT,W155,W155.1910,Undertake on-site PJB and assessment of potential impacts on existing SPP,22-Oct-21,22-Oct-21,22-Oct-21 A,22-Oct-21 A,1,0,1,100%,,Completed
 W155LT,W155,W155.1900,Draft Site specific Defuelling Impact initial assessment (FEEDS TO SUMMARY SCHEDULE),04-May-21,05-May-21,04-May-21 A,05-May-21 A,0,0,1,100%,,Completed
 W155LT,W155,W155.000010,EAC (DD-PF),02-Jan-25,31-Dec-26,01-Apr-25,31-Dec-26,444,444,444,0%,0,Not Started
 W155LT,W155,W155.01,Project Start [FEEDS TO SUMMARY SCHEDULE],01-Sep-20,,01-Sep-20 A,,0,0,0,100%,,Completed
 W155LT,W155,W155.3670,HRA Security Regulatory Commitment Log (SRCL) Submit to ONR,,03-Feb-25,,03-Feb-25 A,0,0,0,100%,,Completed
 W155LT,W155,W155.3680,>>> INCOMING ENABLER (W202) Reactor S/D SC INA Substantially Approved,,02-Jan-25,,03-Feb-25 A,0,0,0,100%,,Completed
 W155LT,W155,W155.3690,>>> MIRROR INCOMING ENABLER (W222)  Fuel Handling SC INA Substantially Approved,,02-Jan-25,,03-Feb-25 A,0,0,0,100%,,Completed
 W155LT,W155,W155.3770,>>> INCOMING ENABLER (W222)  Fuel Handling SC INA Substantially Approved,,02-Jan-25,,03-Feb-25 A,0,0,0,100%,,Completed
 W155LT,W155,W155.3730,>>> MIRROR INCOMING ENABLER (W224) Fuel Handling Enhanced SCs INSA Finally Approved,,19-Jun-26,,19-Jun-26*,0,0,0,0%,91,Not Started
 W155LT,W155,W155.3740,>>> INCOMING ENABLER (W224) Fuel Handling Enhanced SCs INSA Finally Approved,,02-Jan-25,,01-Apr-25,0,0,0,0%,444,Not Started
 W155LT,W155,W155.3750,Prep for Defueling All Security Issues Considered & Addressed for Permanent Mitigations,,05-Nov-26,,11-Nov-26,0,0,0,0%,35,Not Started
 W155LT,W155,W155.34801,Update Site SRCL & Submit to ONR,03-Feb-25,03-Feb-25,07-Feb-25 A,07-Feb-25 A,1,0,1,100%,,Completed
 W155LT,W155,W155.10,Year 1 2021,01-Apr-21,31-Dec-21,01-Apr-21 A,31-Dec-21 A,107,0,189,100%,,Completed
 W155LT,W155,W155.20,Year 2 2022,04-Jan-22,30-Dec-22,04-Jan-22 A,30-Dec-22 A,252,0,250,100%,,Completed
 W155LT,W155,W155.30,Year 3 2023,03-Jan-23,29-Dec-23,03-Jan-23 A,29-Dec-23 A,210,0,250,100%,,Completed
 W155LT,W155,W155.A1022,All Scope Delivered [FEEDS TO SUMMARY SCHEDULE],,05-Nov-26,,11-Nov-26,0,0,0,0%,35,Not Started
 W155LT,W155,W155.A10501600,Project Closed,,05-Nov-26,,11-Nov-26,0,0,0,0%,35,Not Started
 W155LT,W155,W155.A100020,Scope Outline,01-Jun-20,19-Jun-20,01-Jun-20 A,19-Jun-20 A,1,0,15,100%,,Completed
 W155LT,W155,W155.A101021,Cost Estimate,22-Jun-20,26-Jun-20,22-Jun-20 A,26-Jun-20 A,5,0,5,100%,,Completed
 W155LT,W155,W155.A102022,Schedule,29-Jun-20,30-Jun-20,29-Jun-20 A,30-Jun-20 A,5,0,2,100%,,Completed
 W155LT,W155,W155.A102032,NSSB (Non-Scheme Sanction Board) Paper Sign Off,24-Jul-20,14-Aug-20,24-Jul-20 A,14-Aug-20 A,5,0,16,100%,,Completed
