Activities
Start
Project ID,CTO.PG.Workpack Number,Project Name,Activity ID,Activity Name,BL Project Start,BL Project Finish,Original Duration,Start,Finish,Remaining Duration,At Completion Duration,Physical % Complete,Total Float,CTO.PG.PPC Planner
 01-Jan-18
    ER6360LT,W085,REGION 1 Further Flasks in Readiness,W085.A1210,Summary for REGION 1 Further Flasks in Readiness W085,02-Jan-18,18-Dec-24,1,02-Jan-18 A,11-Aug-25,112,1923,83%,6,OGAH Alima
 Subtotal,W085,,,,02-Jan-18,18-Dec-24,1,02-Jan-18 A,11-Aug-25,112,1923,,6,OGAH Alima
 01-Sep-20
    W155LT,W155,HRA Security,W155.A1830,Summary for HRA Security W155,01-Sep-20,05-Nov-26,1339,01-Sep-20 A,11-Nov-26,430,1567,52%,35,OGAH Alima
 Subtotal,W155,,,,01-Sep-20,05-Nov-26,1339,01-Sep-20 A,11-Nov-26,430,1567,,35,OGAH Alima
 01-Aug-21
    W158LT,W158,DNB Security,W158.1000,Summary for DNB Security W158,02-Aug-21,09-Jul-25,278,02-Aug-21 A,09-Jul-25,89,994,65%,142,OGAH Alima
 Subtotal,W158,,,,02-Aug-21,09-Jul-25,278,02-Aug-21 A,09-Jul-25,89,994,,142,OGAH Alima
 01-May-22
    ER6360LT,W085,REGION 1 Further Flasks in Readiness,W085.A2600,Gate C-D Flask 1 Cost Summary,24-May-22,07-Nov-24,97,24-May-22 A,21-Mar-25,15,716,85%,88,OGAH Alima
 Subtotal,W085,,,,24-May-22,07-Nov-24,97,24-May-22 A,21-Mar-25,15,716,,88,OGAH Alima
 01-Jul-22
    ER6360LT,W085,REGION 1 Further Flasks in Readiness,W085.DS14560,Gate C-D Flask 4 Cost Summary,01-Jul-22,12-Aug-24,135,01-Jul-22 A,07-May-25,45,720,70%,10,OGAH Alima
    ER6360LT,W085,REGION 1 Further Flasks in Readiness,W085.DS15580,Gate C-D Flask 5 Cost Summary,11-Jul-22,16-Aug-24,117,11-Jul-22 A,13-May-25,49,718,70%,6,OGAH Alima
 Subtotal,W085,,,,01-Jul-22,16-Aug-24,135,01-Jul-22 A,13-May-25,49,724,,6,OGAH Alima
 01-Oct-22
    ER6360LT,W085,REGION 1 Further Flasks in Readiness,W085.DS16600,Gate C-D Flask 6 Cost Summary,02-Oct-22,26-Nov-24,246,02-Oct-22 A,21-May-25,55,665,50%,11,OGAH Alima
 Subtotal,W085,,,,02-Oct-22,26-Nov-24,245,02-Oct-22 A,21-May-25,55,665,,11,OGAH Alima
 01-Jan-23
    ER6360LT,W085,REGION 1 Further Flasks in Readiness,W085.DS17620,Gate C-D Flask 7 Cost Summary,23-Jan-23,12-Nov-24,241,23-Jan-23 A,25-Apr-25,38,571,20%,96,OGAH Alima
    ER6360LT,W085,REGION 1 Further Flasks in Readiness,W085.DS1020,Cost Summary Final 5 Flasks,23-Jan-23,04-Dec-24,321,23-Jan-23 A,11-Jul-25,91,624,80%,7,OGAH Alima
 Subtotal,W085,,,,23-Jan-23,04-Dec-24,320,23-Jan-23 A,11-Jul-25,91,624,,43,OGAH Alima
 01-Feb-23
    W157LT,W157,HYB Security,W157.1000,Summary for HYB Security W157,01-Feb-23,02-Dec-26,855,01-Feb-23 A,02-Dec-26,445,971,53%,20,OGAH Alima
    W155LT,W155,HRA Security,W155.24600,Reactor Equivalence Confirmed by NSG Group Head,01-Feb-23,31-Dec-26,484,01-Feb-23 A,31-Dec-26,465,991,50%,0,OGAH Alima
    W156LT,W156,HYA Security,W156.24600,Reactor Equivalence Confirmed by NSG Group Head,01-Feb-23,31-Dec-26,484,01-Feb-23 A,31-Dec-26,465,991,51%,221,OGAH Alima
    ER6360LT,W085,REGION 1 Further Flasks in Readiness,W085.DS18640,Gate C-D Flask 8 Cost Summary,27-Feb-23,10-Dec-24,260,27-Feb-23 A,19-May-25,53,561,12%,81,OGAH Alima
 Subtotal,,,,,01-Feb-23,31-Dec-26,1001,01-Feb-23 A,31-Dec-26,465,991,,221,OGAH Alima
 01-Apr-23
    ER7514LT,W161,HPB PSR4,W161.8110,Summary of HPB PSR4 - W160,03-Apr-23,12-Feb-27,1,03-Apr-23 A,25-Aug-26,375,857,0%,90,OGAH Alima
    ER7003LT,W160,HNB PSR4,W160.8110,Summary of HNB PSR4 - W160,03-Apr-23,25-Aug-26,1,03-Apr-23 A,16-Dec-25,202,684,0%,9,OGAH Alima
 Subtotal,,,,,03-Apr-23,12-Feb-27,1,03-Apr-23 A,25-Aug-26,375,857,,90,OGAH Alima
 01-May-23
    W159LT,W159,TOR Security,W159.1000,Summary for TOR Security W159,02-May-23,29-Jan-27,800,02-May-23 A,29-Jan-27,485,950,21%,0,OGAH Alima
 Subtotal,W159,,,,02-May-23,29-Jan-27,800,02-May-23 A,29-Jan-27,485,950,,0,OGAH Alima
 01-Jun-23
    ER6360LT,W085,REGION 1 Further Flasks in Readiness,W085.DS19660,Gate C-D Flask 9 Cost Summary,05-Jun-23,21-Feb-25,270,05-Jun-23 A,11-Sep-25,134,577,5%,0,OGAH Alima
 Subtotal,W085,,,,05-Jun-23,21-Feb-25,270,05-Jun-23 A,11-Sep-25,134,577,,0,OGAH Alima
 01-Jan-24
    ER7743LT,W527,DNB DPCS Defueling Support,W527.25660,Summary for DNB DPCS Defueling Support,02-Jan-24,02-Jan-29,1016,02-Jan-24 A,01-Mar-29,1016,1312,13%,716,OGAH Alima
    ER7579LT,W193,HNB DPCS Defueling Support,W193.25300,Summary HNB DPCS Defueling Support,02-Jan-24,31-Dec-25,507,02-Jan-24 A,31-Dec-25,211,507,55%,0,OGAH Alima
    ER7582LT,W196,HYA DPCS Defueling Support,W196.25460,Summary of HYA DPCS Defueling Support Plan,02-Jan-24,31-Dec-27,1016,02-Jan-24 A,31-Dec-27,720,1016,10%,759,OGAH Alima
    ER7581LT,W195,HRA DPCS Defueling Support,W195.25720,Summary of HRA DPCS Defueling Support Plan,02-Jan-24,31-Dec-27,1,02-Jan-24 A,31-Dec-27,720,1016,20%,759,OGAH Alima
    ER7003LT,W160,HNB PSR4,W160.9360,## HNB PSR4 Head Doc: Safety Case Development - (B - D) - Cost Summary ##,27-Mar-24,24-Jul-26,435,08-Jan-24 A,18-Nov-25,182,474,40%,1,OGAH Alima
    ER7003LT,W160,HNB PSR4,W160.9350,## HNB PSR4 Head Doc: Project Management - (B - D) - Cost Summary ##,27-Mar-24,24-Jul-26,435,08-Jan-24 A,18-Nov-25,182,474,40%,1,OGAH Alima
 Subtotal,,,,,02-Jan-24,02-Jan-29,1016,02-Jan-24 A,01-Mar-29,1016,1312,,716,OGAH Alima
 01-Feb-24
    ER7514LT,W161,HPB PSR4,W161.9350,## HPB PSR4 Head Doc: Project Management - (B - D) - Cost Summary ##,27-Mar-24,27-Jan-27,587,26-Feb-24 A,29-Jun-26,334,591,32%,131,OGAH Alima
    ER7514LT,W161,HPB PSR4,W161.9360,## HPB PSR4 Head Doc: Safety Case Development - (B - D) - Cost Summary ##,27-Mar-24,27-Jan-27,587,26-Feb-24 A,29-Jun-26,334,591,32%,131,OGAH Alima
 Subtotal,W161,,,,27-Mar-24,27-Jan-27,587,26-Feb-24 A,29-Jun-26,334,591,,131,OGAH Alima
 01-Apr-24
    ER7514LT,W161,HPB PSR4,W161.5820,HPB PSR4 Head Doc: Authoring of the Submission Proposal,04-Oct-24,26-Feb-25,100,05-Apr-24 A,29-Aug-25,98,354,30%,-66,OGAH Alima
    ER7514LT,W161,HPB PSR4,W161.9390,## HPB PSR4 Head Doc: Authoring of Paper - ## Cost Summary ##,04-Oct-24,11-Mar-25,237,05-Apr-24 A,11-Sep-25,108,364,50%,-66,OGAH Alima
 Subtotal,W161,,,,04-Oct-24,11-Mar-25,237,05-Apr-24 A,11-Sep-25,108,364,,-66,OGAH Alima
 01-May-24
    W230LT,W230,HYB Enhanced Defueling Safety Case Strategy,W230.1270,Summary for HYB Fuel Handling Enhanced Safety Cases W230,15-May-24,19-Aug-25,321,15-May-24 A,19-May-26,306,509,0%,0,OGAH Alima
    W234LT,W234,TOR Enhanced Defueling Safety Case Strategy,W234.1270,Summary for TOR Fuel Handling Enhanced Safety Cases W230,15-May-24,19-Aug-25,321,15-May-24 A,19-May-26,306,509,0%,0,OGAH Alima
 Subtotal,,,,,15-May-24,19-Aug-25,321,15-May-24 A,19-May-26,306,509,,0,OGAH Alima
 01-Jun-24
    ER6360LT,W085,REGION 1 Further Flasks in Readiness,W085.A2660,Gate C - D Project Management and Engineering Support - Cost Summary,03-Jun-24,30-Apr-25,334,03-Jun-24 A,02-Sep-25,127,318,75%,6,OGAH Alima
 Subtotal,W085,,,,03-Jun-24,30-Apr-25,334,03-Jun-24 A,02-Sep-25,127,318,,6,OGAH Alima
 01-Jul-24
    ER6360LT,W085,REGION 1 Further Flasks in Readiness,W085.A7200,ETC (DD-PF),03-Jun-24,30-Apr-25,204,01-Jul-24 A,29-Aug-25,125,296,68%,9,OGAH Alima
    ER7514LT,W161,HPB PSR4,W161.9460,## HPB PSR3 Extension EC: Verification - Cost Summary ##,03-Jul-24,07-Aug-24,303,15-Jul-24 A,09-Sep-25,15,293,75%,-232,OGAH Alima
    ER7003LT,W160,HNB PSR4,W160.9460,## HNB PSR3 Extension EC: Verification - Cost Summary ##,03-Jul-24,07-Aug-24,285,15-Jul-24 A,28-Aug-25,7,285,99%,-224,OGAH Alima
 Subtotal,,,,,03-Jun-24,30-Apr-25,303,01-Jul-24 A,09-Sep-25,132,303,,2,OGAH Alima
 01-Aug-24
    ER7514LT,W161,HPB PSR4,W161.9470,## HPB PSR3 Extension EC: Key Stakeholders Engagement - Cost Summary ##,08-Aug-24,20-Sep-24,291,01-Aug-24 A,24-Sep-25,26,291,0%,-243,OGAH Alima
    ER6360LT,W085,REGION 1 Further Flasks in Readiness,W085.DS20290,Paint Flask Body,02-Aug-24,10-Sep-24,12,23-Aug-24 A,08-May-25,46,178,80%,0,OGAH Alima
    ER6360LT,W085,REGION 1 Further Flasks in Readiness,W085.DS20140,Cavity Testing,05-Jul-24,15-Jul-24,5,27-Aug-24 A,24-Mar-25,16,147,90%,26,OGAH Alima
 Subtotal,,,,,05-Jul-24,20-Sep-24,291,01-Aug-24 A,24-Sep-25,143,291,,-97,OGAH Alima
 01-Sep-24
    ER6360LT,W085,REGION 1 Further Flasks in Readiness,W085.DS21440,Paint Lid Topside,12-Sep-24,02-Oct-24,1,23-Sep-24 A,08-May-25,46,158,50%,7,OGAH Alima
 Subtotal,W085,,,,12-Sep-24,02-Oct-24,1,23-Sep-24 A,08-May-25,46,158,,7,OGAH Alima
 01-Oct-24
    ER7582LT,W196,HYA DPCS Defueling Support,W196.6210,"HYA 2024 - Design, Consolidation and Testing",09-Oct-24,28-Mar-25,120,09-Oct-24 A,28-Mar-25,20,120,80%,1459,OGAH Alima
    ER6360LT,W085,REGION 1 Further Flasks in Readiness,W085.DS24800,Flask 4 - Flask Licensing Prepare Cat C Mod,02-Jul-24,08-Jul-24,5,28-Oct-24 A,28-Mar-25,20,107,15%,10,OGAH Alima
 Subtotal,,,,,02-Jul-24,28-Mar-25,120,09-Oct-24 A,28-Mar-25,20,120,,1459,OGAH Alima
 01-Nov-24
    ER7580LT,W194,HPB DPCS Defueling Support,W194.25660,Raise RFS for Decommissioning Rig,27-Nov-24,31-Oct-25,30,27-Nov-24 A,31-Oct-25,170,235,75%,299,OGAH Alima
    ER6360LT,W085,REGION 1 Further Flasks in Readiness,W085.DS18610,Approve Flask LTQRs,13-Sep-24,26-Sep-24,10,29-Nov-24 A,07-Mar-25,5,68,75%,96,OGAH Alima
    ER7003LT,W160,HNB PSR4,W160.9420,## HNB PSR4 Head Doc: Clearances and Closeout - Cost Summary ##,23-Dec-24,24-Jul-26,245,29-Nov-24 A,18-Nov-25,182,245,1.25%,1,OGAH Alima
    ER7003LT,W160,HNB PSR4,W160.6010,HNB PSR4 Head Doc: Prepare Station Director's Brief,23-Dec-24,31-Dec-24,5,29-Nov-24 A,04-Apr-25,25,88,90%,8,OGAH Alima
 Subtotal,,,,,13-Sep-24,24-Jul-26,247,27-Nov-24 A,18-Nov-25,182,247,,287,OGAH Alima
 01-Dec-24
    ER7003LT,W160,HNB PSR4,W160.9410,## HNB PSR4 Head Doc: INSA & NSC Meeting Readiness - Cost Summary ##,07-Feb-25,09-Apr-25,92,04-Dec-24 A,16-Apr-25,32,92,37%,1,OGAH Alima
    ER7003LT,W160,HNB PSR4,W160.5970,HNB PSR4 Head Doc: HNB PSR4 Head Doc: INSA review & iteration of comments (using BARRIER MODEL),07-Feb-25,06-Mar-25,40,04-Dec-24 A,18-Mar-25,12,72,40%,-8,OGAH Alima
 Subtotal,W160,,,,07-Feb-25,09-Apr-25,92,04-Dec-24 A,16-Apr-25,32,92,,1,OGAH Alima
 01-Jan-25
    ER7580LT,W194,HPB DPCS Defueling Support,W194.2100,HPB PES Group Support - 2025,02-Jan-25,31-Dec-25,253,02-Jan-25 A,31-Dec-25,211,253,16%,509,OGAH Alima
    ER7580LT,W194,HPB DPCS Defueling Support,W194.2110,Plant Control Systems & Simulators (PCS&S) Group - 2025,02-Jan-25,31-Dec-25,253,02-Jan-25 A,31-Dec-25,211,253,16%,509,OGAH Alima
    ER7580LT,W194,HPB DPCS Defueling Support,W194.2250,Thales Long Term Support Contract Q1 2025,02-Jan-25,31-Mar-25,63,02-Jan-25 A,31-Mar-25,21,63,66%,509,OGAH Alima
    ER7581LT,W195,HRA DPCS Defueling Support,W195.2030,HRA PES Group Support - 2025,02-Jan-25,31-Dec-25,253,02-Jan-25 A,31-Dec-25,211,253,16%,1268,OGAH Alima
    ER7581LT,W195,HRA DPCS Defueling Support,W195.2040,Plant Control Systems & Simulators (PCS&S) Group - 2025,02-Jan-25,31-Dec-25,253,02-Jan-25 A,31-Dec-25,211,253,16%,1268,OGAH Alima
    ER7581LT,W195,HRA DPCS Defueling Support,W195.2260,Thales Long Term Support Contract Q1 2025,02-Jan-25,31-Mar-25,63,02-Jan-25 A,31-Mar-25,21,63,66%,1268,OGAH Alima
    ER7581LT,W195,HRA DPCS Defueling Support,W195.2630,Argus Support Contract 2025 - Jan Q1,02-Jan-25,31-Mar-25,63,02-Jan-25 A,31-Mar-25,21,63,66%,1268,OGAH Alima
    ER7582LT,W196,HYA DPCS Defueling Support,W196.2030,Plant Control Systems & Simulators (PCS&S) Group - 2025,02-Jan-25,31-Dec-25,253,02-Jan-25 A,31-Dec-25,211,253,16%,1268,OGAH Alima
    ER7582LT,W196,HYA DPCS Defueling Support,W196.2040,HYA PES Group Support - 2025,02-Jan-25,31-Dec-25,253,02-Jan-25 A,31-Dec-25,211,253,16%,1268,OGAH Alima
    ER7582LT,W196,HYA DPCS Defueling Support,W196.2270,Thales Long Term Support Contract Q1 2025,02-Jan-25,31-Mar-25,63,02-Jan-25 A,31-Mar-25,21,63,66%,1458,OGAH Alima
    ER7582LT,W196,HYA DPCS Defueling Support,W196.2590,Argus Support Contract - 2025 - Q1,02-Jan-25,31-Mar-25,63,02-Jan-25 A,31-Mar-25,21,63,66%,1458,OGAH Alima
    ER7743LT,W527,DNB DPCS Defueling Support,W527.1493,Worldgrid Software Modification Support (LAMPS) - Q1 2025,02-Jan-25,31-Mar-25,63,02-Jan-25 A,31-Mar-25,21,63,66%,1711,OGAH Alima
    ER7743LT,W527,DNB DPCS Defueling Support,W527.1490,Worldgrid System Engineering Support (SQEP) Q1 2025,02-Jan-25,31-Mar-25,63,02-Jan-25 A,31-Mar-25,21,63,66%,1711,OGAH Alima
    ER7743LT,W527,DNB DPCS Defueling Support,W527.1540,DNB PES Group Support - 2025,02-Jan-25,31-Dec-25,253,02-Jan-25 A,31-Dec-25,211,253,16%,1521,OGAH Alima
    ER7743LT,W527,DNB DPCS Defueling Support,W527.1550,Plant Control Systems & Simulators (PCS&S) Group - 2025,02-Jan-25,31-Dec-25,253,02-Jan-25 A,31-Dec-25,211,253,16%,1521,OGAH Alima
    ER7743LT,W527,DNB DPCS Defueling Support,W527.1491,Worldgrid Long Term Support Contract Q1 2025,02-Jan-25,31-Mar-25,63,02-Jan-25 A,31-Mar-25,21,63,66%,1711,OGAH Alima
    ER7743LT,W527,DNB DPCS Defueling Support,W527.1492,Thales POLARIS & AIC Support Contract Q1 2025,02-Jan-25,31-Mar-25,63,02-Jan-25 A,31-Mar-25,21,63,66%,1711,OGAH Alima
    ER7579LT,W193,HNB DPCS Defueling Support,W193.2040,Plant Control Systems & Simulators (PCS&S) Group,02-Jan-25,31-Dec-25,253,02-Jan-25 A,31-Dec-25,211,253,16%,0,OGAH Alima
    ER7579LT,W193,HNB DPCS Defueling Support,W193.2030,HNB PES Group Support - 2025,02-Jan-25,31-Dec-25,253,02-Jan-25 A,31-Dec-25,211,253,16%,0,OGAH Alima
    ER7743LT,W527,DNB DPCS Defueling Support,W527.1503,Cost Engineer support 2025,02-Jan-25,31-Dec-25,253,02-Jan-25 A,31-Dec-25,211,253,66%,1521,OGAH Alima
    W529LT,W529,TOR DPCS Defueling Support,W529.1040,TOR PES Group Support - 2025,02-Jan-25,30-Dec-25,252,02-Jan-25 A,30-Dec-25,210,252,16%,1778,OGAH Alima
    W529LT,W529,TOR DPCS Defueling Support,W529.1050,TOR Plant Control Systems & Simulators (PCS&S) Group - 2025,02-Jan-25,31-Dec-25,253,02-Jan-25 A,31-Dec-25,211,253,16%,1777,OGAH Alima
    W529LT,W529,TOR DPCS Defueling Support,W529.1200,TOR Argus Support Contract Q1 2025,02-Jan-25,31-Mar-25,63,02-Jan-25 A,31-Mar-25,21,63,66%,1777,OGAH Alima
    W529LT,W529,TOR DPCS Defueling Support,W529.1220,TOR Thales Long Term Support Contract Q1 2025,02-Jan-25,31-Mar-25,1,02-Jan-25 A,31-Mar-25,21,63,66%,1777,OGAH Alima
    W526LT,W526,HYB DPCS Defueling Support,W526.1225,HYB Thales Long Term Support Contract Q1 2025,02-Jan-25,31-Mar-25,63,02-Jan-25 A,31-Mar-25,21,63,66%,1778,OGAH Alima
    W526LT,W526,HYB DPCS Defueling Support,W526.1050,HYB Plant Control Systems & Simulators (PCS&S) Group - 2025,02-Jan-25,31-Dec-25,253,02-Jan-25 A,31-Dec-25,211,253,16%,1777,OGAH Alima
    W526LT,W526,HYB DPCS Defueling Support,W526.1040,HYB PES Group Support - 2025,02-Jan-25,30-Dec-25,252,02-Jan-25 A,30-Dec-25,210,252,16%,1778,OGAH Alima
    W529LT,W529,TOR DPCS Defueling Support,W529.6310,TOR 2025 S13R2 - Software Build Requirement,02-Jan-25,30-Jun-25,124,02-Jan-25 A,30-Jun-25,82,124,30%,1736,OGAH Alima
    ER7743LT,W527,DNB DPCS Defueling Support,W527.25180,2025 Costs,02-Jan-25,31-Dec-25,253,02-Jan-25 A,03-Mar-25,0,42,16%,1732,OGAH Alima
    W526LT,W526,HYB DPCS Defueling Support,W526.10000,HYB 2025 External Costs,02-Jan-25,31-Dec-25,253,02-Jan-25 A,31-Dec-25,211,253,16%,1777,OGAH Alima
    W529LT,W529,TOR DPCS Defueling Support,W529.10000,TOR 2025 External Costs,02-Jan-25,31-Dec-25,253,02-Jan-25 A,31-Dec-25,211,253,8%,1777,OGAH Alima
    ER7580LT,W194,HPB DPCS Defueling Support,W194.25200,2025 External,02-Jan-25,31-Dec-25,253,02-Jan-25 A,31-Dec-25,211,253,16%,509,OGAH Alima
    ER7579LT,W193,HNB DPCS Defueling Support,W193.25200,2025 Externals,02-Jan-25,31-Dec-25,253,02-Jan-25 A,31-Dec-25,211,253,16%,0,OGAH Alima
    ER7581LT,W195,HRA DPCS Defueling Support,W195.1020,2025 Externals,02-Jan-25,31-Dec-25,253,02-Jan-25 A,31-Dec-25,211,253,16%,1268,OGAH Alima
    ER7582LT,W196,HYA DPCS Defueling Support,W196.1020,2025 External,02-Jan-25,31-Dec-25,253,02-Jan-25 A,31-Dec-25,211,253,16%,1268,OGAH Alima
    ER7580LT,W194,HPB DPCS Defueling Support,W194.25360,TPM and JCRB Meetings Held 2025,02-Jan-25,31-Dec-25,253,02-Jan-25 A,31-Dec-25,211,253,16%,509,OGAH Alima
    W526LT,W526,HYB DPCS Defueling Support,W526.10160,TPM and JCRB Meeting Held 2025,02-Jan-25,31-Dec-25,253,02-Jan-25 A,31-Dec-25,211,253,16%,0,OGAH Alima
    ER7581LT,W195,HRA DPCS Defueling Support,W195.25680,TPM and JCRB Meetings Held - 2025,02-Jan-25,31-Dec-25,253,02-Jan-25 A,31-Dec-25,211,253,16%,759,OGAH Alima
    ER7582LT,W196,HYA DPCS Defueling Support,W196.1225,TPM and JCRB Meetings Held 2025,02-Jan-25,31-Dec-25,253,02-Jan-25 A,31-Dec-25,211,253,16%,759,OGAH Alima
    ER7743LT,W527,DNB DPCS Defueling Support,W527.4820,TPM and JCRB Meetings Held 2025,02-Jan-25,31-Dec-25,253,02-Jan-25 A,31-Dec-25,211,253,16%,1012,OGAH Alima
    W529LT,W529,TOR DPCS Defueling Support,W195.1000,TPM and JCRB Meetings Held - 2025,02-Jan-25,31-Dec-25,253,02-Jan-25 A,31-Dec-25,211,253,16%,0,OGAH Alima
    W529LT,W529,TOR DPCS Defueling Support,W529.3010,TOR DPCS Long Term Support Contract 2025,03-Jan-25,31-Dec-25,252,03-Jan-25 A,31-Dec-25,211,252,8%,1777,OGAH Alima
    ER7582LT,W196,HYA DPCS Defueling Support,W196.6350,HYA 2025 - Data Modifications and Amendments,03-Jan-25,31-Dec-25,252,03-Jan-25 A,31-Dec-25,211,252,16%,1268,OGAH Alima
    ER7581LT,W195,HRA DPCS Defueling Support,W195.25610,HRA 2025  - Data Modifications and Amendments,03-Jan-25,31-Dec-25,252,03-Jan-25 A,31-Dec-25,211,252,16%,1268,OGAH Alima
    ER7743LT,W527,DNB DPCS Defueling Support,W527.25610,DNB 2025 2.9 - Site Acceptance Testing,06-Jan-25,30-Jun-25,122,06-Jan-25 A,30-Jun-25,82,122,30%,1594,OGAH Alima
    ER6360LT,W085,REGION 1 Further Flasks in Readiness,W085.2950,Manufacture Dummy LSM'S,,,1,14-Jan-25 A,28-Mar-25,20,54,75%,114,OGAH Alima
    ER6360LT,W085,REGION 1 Further Flasks in Readiness,W085.DS2260,Approve Flask LTQRs,25-Oct-24,07-Nov-24,10,20-Jan-25 A,21-Mar-25,15,45,50%,88,OGAH Alima
    ER7743LT,W527,DNB DPCS Defueling Support,W527.25690,DNB 2026 2.10 - Specification,20-Jan-25,03-Oct-25,180,20-Jan-25 A,03-Oct-25,150,180,20%,1404,OGAH Alima
    ER7579LT,W193,HNB DPCS Defueling Support,W193.25320,HNB SQEP declaration,20-Jan-25,11-Apr-25,60,20-Jan-25 A,11-Apr-25,30,60,30%,31,OGAH Alima
 Subtotal,,,,,25-Oct-24,31-Dec-25,253,02-Jan-25 A,31-Dec-25,211,253,,1777,OGAH Alima
 01-Feb-25
    W155LT,W155,HRA Security,W155.2590,Implement temporary infrastructure and organisational mitigations required to enable commencement of defuelling,28-Jan-25,05-Nov-26,450,03-Feb-25 A,11-Nov-26,430,450,5%,35,OGAH Alima
    W155LT,W155,HRA Security,W155.2600,Implement permanent infrastructure and organisational mitigations,28-Jan-25,05-Nov-26,450,03-Feb-25 A,11-Nov-26,430,450,5%,35,OGAH Alima
    W730LT_UN,W730,HYB Enhanced Defueling Safety Cases,W730.1270,Summary for HYB Fuel Handling Enhanced Safety Cases W230,03-Feb-25,27-Mar-28,801,03-Feb-25 A,27-Mar-28,781,801,0%,0,OGAH Alima
    ER7581LT,W195,HRA DPCS Defueling Support,W195.1065,"HRA 2024  - Design, Consolidation and Testing",03-Feb-25,28-Mar-25,40,03-Feb-25 A,28-Mar-25,20,40,50%,1404,OGAH Alima
    W230LT,W230,HYB Enhanced Defueling Safety Case Strategy,W230.2050,## HYB Enhanced Defueling Rate: A - D Phase Funding - (Cost Summary) ##,13-Aug-24,16-Jan-25,96,03-Feb-25 A,20-Jun-25,76,96,0%,230,OGAH Alima
    W234LT,W234,TOR Enhanced Defueling Safety Case Strategy,W234.2050,## TOR Enhanced Defueling Rate: A - D Phase Funding - (Cost Summary) ##,13-Aug-24,16-Jan-25,96,03-Feb-25 A,20-Jun-25,76,96,0%,230,OGAH Alima
    W731LT_UN,W731,TOR Enhanced Defueling Safety Cases,W731.1040,Summary for TOR Fuel Handling Enhanced Safety Cases W230,03-Feb-25,27-Mar-28,801,03-Feb-25 A,27-Mar-28,781,801,0%,0,OGAH Alima
    ER7743LT,W527,DNB DPCS Defueling Support,W527.25020,DNB TGN097 POLARIS - Plan Produced,07-Feb-25,03-Apr-25,40,07-Feb-25 A,03-Apr-25,24,40,40%,1708,OGAH Alima
    ER7743LT,W527,DNB DPCS Defueling Support,W527.25100,DNB TGN097 AIC - Plan Produced,07-Feb-25,03-Apr-25,40,07-Feb-25 A,03-Apr-25,24,40,40%,1708,OGAH Alima
    ER7582LT,W196,HYA DPCS Defueling Support,W196.25310,"LSR Data Export, Analysis, Draft Report",23-Jan-25,12-Feb-25,15,17-Feb-25 A,07-Mar-25,5,15,80%,1446,OGAH Alima
    W730LT_UN,W730,HYB Enhanced Defueling Safety Cases,W730.1420,Prepare Draft Project Definition Document (PDD),21-Feb-25,06-Mar-25,10,21-Feb-25 A,06-Mar-25,4,10,80%,3,OGAH Alima
    W730LT_UN,W730,HYB Enhanced Defueling Safety Cases,W730.1430,PCL Validate & Approve Baseline Package for PRC Submission,21-Feb-25,06-Mar-25,10,21-Feb-25 A,06-Mar-25,4,10,80%,3,OGAH Alima
    W730LT_UN,W730,HYB Enhanced Defueling Safety Cases,W730.1440,Add Data to PRC / IMS2 Paper,21-Feb-25,06-Mar-25,10,21-Feb-25 A,06-Mar-25,4,10,80%,3,OGAH Alima
    W730LT_UN,W730,HYB Enhanced Defueling Safety Cases,W730.1450,Update Schedule/Estimate from Risk Log & Add Provisions,21-Feb-25,06-Mar-25,10,21-Feb-25 A,06-Mar-25,4,10,80%,3,OGAH Alima
    W730LT_UN,W730,HYB Enhanced Defueling Safety Cases,W730.1510,Define Project Control Structures (WBS/CBS/OBS/PBS),21-Feb-25,06-Mar-25,10,21-Feb-25 A,06-Mar-25,4,10,80%,3,OGAH Alima
    W731LT_UN,W731,TOR Enhanced Defueling Safety Cases,W731.1080,Define Project Control Structures (WBS/CBS/OBS/PBS),21-Feb-25,06-Mar-25,10,21-Feb-25 A,06-Mar-25,4,10,80%,3,OGAH Alima
    W731LT_UN,W731,TOR Enhanced Defueling Safety Cases,W731.1090,Update Schedule/Estimate from Risk Log & Add Provisions,21-Feb-25,06-Mar-25,10,21-Feb-25 A,06-Mar-25,4,10,80%,3,OGAH Alima
    W731LT_UN,W731,TOR Enhanced Defueling Safety Cases,W731.1100,Add Data to PRC / IMS2 Paper,21-Feb-25,06-Mar-25,10,21-Feb-25 A,06-Mar-25,4,10,80%,3,OGAH Alima
    W731LT_UN,W731,TOR Enhanced Defueling Safety Cases,W731.1110,PCL Validate & Approve Baseline Package for PRC Submission,21-Feb-25,06-Mar-25,10,21-Feb-25 A,06-Mar-25,4,10,80%,3,OGAH Alima
    W731LT_UN,W731,TOR Enhanced Defueling Safety Cases,W731.1120,Prepare Draft Project Definition Document (PDD),21-Feb-25,06-Mar-25,10,21-Feb-25 A,06-Mar-25,4,10,80%,3,OGAH Alima
    W156LT,W156,HYA Security,W156.2710,"Review and Agree Security Changes and MSI Category (INA, SPB, NSC)",28-Feb-25,10-Apr-25,30,24-Feb-25 A,04-Apr-25,25,30,80%,616,OGAH Alima
    W526LT,W526,HYB DPCS Defueling Support,W526.2080,HYB 2025 LSR - Data Export Produced and Issued,25-Feb-25,24-Mar-25,20,25-Feb-25 A,24-Mar-25,16,20,30%,1921,OGAH Alima
 Subtotal,,,,,13-Aug-24,27-Mar-28,801,03-Feb-25 A,27-Mar-28,781,801,,1156,OGAH Alima
 01-Mar-25
    W155LT,W155,HRA Security,W155.3740,>>> INCOMING ENABLER (W224) Fuel Handling Enhanced SCs INSA Finally Approved,,02-Jan-25,0,,03-Mar-25,0,0,0%,465,OGAH Alima
    W155LT,W155,HRA Security,W155.000010,EAC (DD-PF),02-Jan-25,31-Dec-26,465,03-Mar-25,31-Dec-26,465,465,0%,0,OGAH Alima
    W156LT,W156,HYA Security,W156.000010,EAC (DD-PF),02-Jan-25,31-Dec-26,465,03-Mar-25,31-Dec-26,465,465,0%,221,OGAH Alima
    W158LT,W158,DNB Security,W158.3720,>>> INCOMING ENABLER (W232) DNB Enchanced Safety Case Station Approved,,02-Jan-25,0,,03-Mar-25,0,0,0%,215,OGAH Alima
    W730LT_UN,W730,HYB Enhanced Defueling Safety Cases,W730.1150,>>>OUTGOING ENABLER (HYB Security - Preparing for Defuelling) Review SPPI File Against Issued Essential Safety Cases,,03-Mar-25,0,,03-Mar-25,0,0,0%,781,OGAH Alima
    W730LT_UN,W730,HYB Enhanced Defueling Safety Cases,W730.1000,ETC (DD-PF),03-Mar-25,26-Nov-27,695,03-Mar-25,26-Nov-27,695,695,0%,86,OGAH Alima
    ER7579LT,W193,HNB DPCS Defueling Support,W193.2000,ETC (DD-PF),02-Jan-25,30-Apr-27,211,03-Mar-25,31-Dec-25,211,211,0%,0,OGAH Alima
    ER6360LT,W085,REGION 1 Further Flasks in Readiness,W085.DS17570,Verify Testing and Approve Report (EDF),19-Sep-24,25-Sep-24,5,03-Mar-25,07-Mar-25,5,5,0%,11,OGAH Alima
    ER6360LT,W085,REGION 1 Further Flasks in Readiness,W085.DS19620,Produce Flask LTQRs,27-Sep-24,10-Oct-24,10,03-Mar-25*,14-Mar-25,10,10,0%,81,OGAH Alima
    ER6360LT,W085,REGION 1 Further Flasks in Readiness,W085.DS20340,Paint Flask Base,02-Aug-24,22-Aug-24,12,03-Mar-25*,21-Mar-25,15,15,0%,0,OGAH Alima
    W529LT,W529,TOR DPCS Defueling Support,0,ETC (DD-PF),02-Jan-25,30-Dec-32,1987,03-Mar-25,30-Dec-32,1987,1987,0%,1,OGAH Alima
    W529LT,W529,TOR DPCS Defueling Support,W529.2070,TOR 2025 LSR - Pre-export Data Validation Produced and Completed,03-Mar-25,31-Mar-25,21,03-Mar-25*,31-Mar-25,21,21,0%,1929,OGAH Alima
    W529LT,W529,TOR DPCS Defueling Support,W529.3020,TOR 2026 Defueling Software Build,02-Mar-26,28-Jan-27,232,03-Mar-25,30-Jan-26,232,232,0%,1756,OGAH Alima
    W529LT,W529,TOR DPCS Defueling Support,W529.3030,TOR DPCS Long Term Support Contract 2026,02-Mar-26,01-Mar-27,254,03-Mar-25,03-Mar-26,254,254,0%,1734,OGAH Alima
    W526LT,W526,HYB DPCS Defueling Support,W526.1020,ETC (DD-PF),02-Jan-25,30-Dec-32,1987,03-Mar-25,30-Dec-32,1987,1987,0%,1,OGAH Alima
    W155LT,W155,HRA Security,W155.37761,2025,02-Jan-25,31-Dec-25,231,03-Mar-25,29-Jan-26,231,231,0%,234,OGAH Alima
    W156LT,W156,HYA Security,W156.34991,2025,02-Jan-25,27-Nov-25,231,03-Mar-25,29-Jan-26,231,231,0%,455,OGAH Alima
    W158LT,W158,DNB Security,W158.34851,2025,02-Jan-25,31-Dec-25,231,03-Mar-25*,29-Jan-26,231,231,0%,0,OGAH Alima
    ER7743LT,W527,DNB DPCS Defueling Support,W527.25190,2026 Costs,02-Jan-26,31-Dec-26,0,03-Mar-25,03-Mar-25,0,0,0%,1732,OGAH Alima
    ER7743LT,W527,DNB DPCS Defueling Support,W527.25200,2027 Costs,04-Jan-27,31-Dec-27,0,03-Mar-25,03-Mar-25,0,0,0%,1732,OGAH Alima
    ER7743LT,W527,DNB DPCS Defueling Support,W527.25230,ETC 2025,02-Jan-25,31-Dec-25,211,03-Mar-25,31-Dec-25,211,211,0%,0,OGAH Alima
    ER7581LT,W195,HRA DPCS Defueling Support,W195.25250,HRA DPCS Defuleing Support Project End,03-Jan-28,03-Jan-28,1,03-Mar-25,03-Mar-25,1,1,0%,1478,OGAH Alima
    ER7582LT,W196,HYA DPCS Defueling Support,W196.25180,HYA DPCS Defueling Support Project End,31-Dec-27,31-Dec-27,1,03-Mar-25,03-Mar-25,1,1,0%,1478,OGAH Alima
    W157LT,W157,HYB Security,W157.000010,EAC (DD-PF),02-Jan-25,31-Dec-26,465,03-Mar-25*,31-Dec-26,465,465,0%,0,OGAH Alima
    W157LT,W157,HYB Security,W157.34821,2025,02-Jan-25,02-Jan-25,231,03-Mar-25,29-Jan-26,231,231,0%,234,OGAH Alima
    W159LT,W159,TOR Security,W159.000010,EAC (DD-PF),02-Jan-25,31-Dec-26,465,03-Mar-25,31-Dec-26,465,465,0%,20,OGAH Alima
    W159LT,W159,TOR Security,W159.34991,2025,02-Jan-25,31-Dec-25,231,03-Mar-25,29-Jan-26,231,231,0%,254,OGAH Alima
    ER7580LT,W194,HPB DPCS Defueling Support,W194.25640,Update LSR,07-Feb-25,13-Feb-25,5,03-Mar-25,07-Mar-25,5,5,0%,714,OGAH Alima
    W526LT,W526,HYB DPCS Defueling Support,W526.4040,HYB 2025 Issue Complete LSR,,02-Jan-25,0,,03-Mar-25,0,0,0%,1988,OGAH Alima
    W156LT,W156,HYA Security,W156.3220,Review Flasks SPPI File Against Issued Enhanced Safety Cases,03-Feb-25,26-Jun-25,100,03-Mar-25,24-Jul-25,100,100,0%,583,OGAH Alima
    ER7514LT,W161,HPB PSR4,W161.8020,ETC (DD-PF),01-Mar-24,11-Feb-27,465,03-Mar-25,31-Dec-26,465,465,0%,0,OGAH Alima
    ER7514LT,W161,HPB PSR4,W161.9530,T&T Programme - HPB IMS System (Point of Transfer) Developed,,24-Feb-25,0,,03-Mar-25,0,0,0%,58,OGAH Alima
    ER7514LT,W161,HPB PSR4,W161.9560,>>>INCOMING ENABLER (W689) - T&T Programme - HPB IMS System (Point of Transfer) Developed (To be Linked),,24-Feb-25,0,,03-Mar-25*,0,0,0%,465,OGAH Alima
    ER7514LT,W161,HPB PSR4,W161.9570,>>>MIRROR OF INCOMING ENABLER (W689) - T&T Programme - HPB IMS System (Point of Transfer) Developed,,24-Feb-25,0,,03-Mar-25*,0,0,0%,58,OGAH Alima
    W230LT,W230,HYB Enhanced Defueling Safety Case Strategy,W230.1000,ETC (DD-PF),01-Jul-24,18-Aug-25,305,03-Mar-25,18-May-26,305,305,0%,1,OGAH Alima
    W230LT,W230,HYB Enhanced Defueling Safety Case Strategy,W230.2070,HYB Enhanced Defueling Rate: Mod Requested and EC Request Raised and Screened,30-Aug-24,16-Sep-24,6,03-Mar-25,10-Mar-25,6,6,0%,12,OGAH Alima
    ER7579LT,W193,HNB DPCS Defueling Support,W193.25350,Fuel Free Verification (FFV) declared,11-Jul-25,15-Jul-25,3,03-Mar-25,05-Mar-25,3,3,0%,208,OGAH Alima
    ER7580LT,W194,HPB DPCS Defueling Support,W194.25750,ETC 2025,02-Jan-25,31-Dec-25,211,03-Mar-25,31-Dec-25,211,211,0%,255,OGAH Alima
    ER7581LT,W195,HRA DPCS Defueling Support,W195.26060,ETC 2025,02-Jan-25,31-Dec-25,211,03-Mar-25,31-Dec-25,211,211,0%,0,OGAH Alima
    ER7582LT,W196,HYA DPCS Defueling Support,W196.2060,ETC 2025,02-Jan-25,31-Dec-25,211,03-Mar-25,31-Dec-25,211,211,0%,0,OGAH Alima
    ER7003LT,W160,HNB PSR4,W160.8002,ETC (DD-PF),,,211,03-Mar-25,31-Dec-25,211,211,0%,0,OGAH Alima
    W529LT,W529,TOR DPCS Defueling Support,10,ETC 2025,02-Jan-25,31-Dec-25,211,03-Mar-25,31-Dec-25,211,211,0%,1777,OGAH Alima
    W234LT,W234,TOR Enhanced Defueling Safety Case Strategy,W234.1000,ETC (DD-PF),01-Jul-24,18-Aug-25,305,03-Mar-25,18-May-26,305,305,0%,1,OGAH Alima
    W234LT,W234,TOR Enhanced Defueling Safety Case Strategy,W234.2070,TOR Enhanced Defueling Rate: Mod Requested and EC Request Raised and Screened,30-Aug-24,16-Sep-24,6,03-Mar-25,10-Mar-25,6,6,0%,12,OGAH Alima
    W526LT,W526,HYB DPCS Defueling Support,W526.1030,ETC 2025,,,211,03-Mar-25,31-Dec-25,211,211,0%,0,OGAH Alima
    W731LT_UN,W731,TOR Enhanced Defueling Safety Cases,W731.1050,ETC (DD-PF),03-Mar-25,26-Nov-27,695,03-Mar-25,26-Nov-27,695,695,0%,86,OGAH Alima
    W731LT_UN,W731,TOR Enhanced Defueling Safety Cases,W731.1060,>>>OUTGOING ENABLER (TOR Security - Preparing for Defuelling) Review SPPI File Against Issued Essential Safety Cases,,03-Mar-25,0,,03-Mar-25,0,0,0%,781,OGAH Alima
    W730LT_UN,W730,HYB Enhanced Defueling Safety Cases,W730.1460,Complete Risk Log with Estimates,05-Mar-25,06-Mar-25,2,05-Mar-25,06-Mar-25,2,2,0%,3,OGAH Alima
    W730LT_UN,W730,HYB Enhanced Defueling Safety Cases,W730.1470,Hold Risk Workshop,05-Mar-25,06-Mar-25,2,05-Mar-25,06-Mar-25,2,2,0%,3,OGAH Alima
    W730LT_UN,W730,HYB Enhanced Defueling Safety Cases,W730.1480,Ensure Alignment of Schedule & Estimate,05-Mar-25,06-Mar-25,2,05-Mar-25,06-Mar-25,2,2,0%,3,OGAH Alima
    W730LT_UN,W730,HYB Enhanced Defueling Safety Cases,W730.1490,Estimate Scope +/- 10% B-C & +/- 30% Lifecycle,05-Mar-25,06-Mar-25,2,05-Mar-25,06-Mar-25,2,2,0%,3,OGAH Alima
    W730LT_UN,W730,HYB Enhanced Defueling Safety Cases,W730.1500,Plan Scope in Primavera (Level 2 B-B+ &  Level 1 Lifecycle),05-Mar-25,06-Mar-25,2,05-Mar-25,06-Mar-25,2,2,0%,3,OGAH Alima
    W730LT_UN,W730,HYB Enhanced Defueling Safety Cases,W730.1530,Case Production Plan Peer Review & Update,05-Mar-25,06-Mar-25,2,05-Mar-25,06-Mar-25,2,2,0%,3,OGAH Alima
    W731LT_UN,W731,TOR Enhanced Defueling Safety Cases,W731.1130,Case Production Plan Peer Review & Update,05-Mar-25,06-Mar-25,2,05-Mar-25,06-Mar-25,2,2,0%,3,OGAH Alima
    W731LT_UN,W731,TOR Enhanced Defueling Safety Cases,W731.1140,Plan Scope in Primavera (Level 2 B-B+ &  Level 1 Lifecycle),05-Mar-25,06-Mar-25,2,05-Mar-25,06-Mar-25,2,2,0%,3,OGAH Alima
    W731LT_UN,W731,TOR Enhanced Defueling Safety Cases,W731.1150,Estimate Scope +/- 10% B-C & +/- 30% Lifecycle,05-Mar-25,06-Mar-25,2,05-Mar-25,06-Mar-25,2,2,0%,3,OGAH Alima
    W731LT_UN,W731,TOR Enhanced Defueling Safety Cases,W731.1160,Ensure Alignment of Schedule & Estimate,05-Mar-25,06-Mar-25,2,05-Mar-25,06-Mar-25,2,2,0%,3,OGAH Alima
    W731LT_UN,W731,TOR Enhanced Defueling Safety Cases,W731.1170,Hold Risk Workshop,05-Mar-25,06-Mar-25,2,05-Mar-25,06-Mar-25,2,2,0%,3,OGAH Alima
    W731LT_UN,W731,TOR Enhanced Defueling Safety Cases,W731.1180,Complete Risk Log with Estimates,05-Mar-25,06-Mar-25,2,05-Mar-25,06-Mar-25,2,2,0%,3,OGAH Alima
    ER7743LT,W527,DNB DPCS Defueling Support,W527.25030,DNB TGN097 POLARIS - Inspection,06-Mar-25,12-Mar-25,5,06-Mar-25,12-Mar-25,5,5,0%,1694,OGAH Alima
    ER7743LT,W527,DNB DPCS Defueling Support,W527.25110,DNB TGN097 AIC - Inspection,06-Mar-25,12-Mar-25,5,06-Mar-25*,12-Mar-25,5,5,0%,1694,OGAH Alima
    W730LT_UN,W730,HYB Enhanced Defueling Safety Cases,W730.1850,## Technical Development / Project Management - Pre Gate B - (Cost Summary) ##,07-Mar-25,03-Apr-25,20,07-Mar-25,03-Apr-25,20,20,0%,11,OGAH Alima
    W730LT_UN,W730,HYB Enhanced Defueling Safety Cases,W730.3700,Pre-Gate B - Delivery Strategy,07-Mar-25,03-Apr-25,20,07-Mar-25,03-Apr-25,20,20,0%,11,OGAH Alima
    W731LT_UN,W731,TOR Enhanced Defueling Safety Cases,W731.1190,Pre-Gate B - Delivery Strategy,07-Mar-25,03-Apr-25,20,07-Mar-25,03-Apr-25,20,20,0%,11,OGAH Alima
    W731LT_UN,W731,TOR Enhanced Defueling Safety Cases,W731.1200,## Technical Development / Project Management - Pre Gate B - (Cost Summary) ##,07-Mar-25,03-Apr-25,20,07-Mar-25,03-Apr-25,20,20,0%,11,OGAH Alima
    ER6360LT,W085,REGION 1 Further Flasks in Readiness,W085.DS17580,Produce Flask LTQRs,18-Sep-24,01-Oct-24,10,10-Mar-25,21-Mar-25,10,10,0%,11,OGAH Alima
    ER6360LT,W085,REGION 1 Further Flasks in Readiness,W085.DS24920,Flask 7 - Flask Licensing Prepare Cat C Mod,27-Sep-24,03-Oct-24,5,10-Mar-25,14-Mar-25,5,5,0%,96,OGAH Alima
    ER7580LT,W194,HPB DPCS Defueling Support,W194.25650,Issue Complete LSR,14-Feb-25,14-Feb-25,1,10-Mar-25,10-Mar-25,1,1,0%,714,OGAH Alima
    ER7582LT,W196,HYA DPCS Defueling Support,W196.25320,Issue Recommendations,13-Feb-25,13-Feb-25,1,10-Mar-25,10-Mar-25,1,1,0%,1446,OGAH Alima
    W230LT,W230,HYB Enhanced Defueling Safety Case Strategy,W230.2170,HYB Enhanced Defueling Rate: Hold Case Conference / Optioneering Strategy Workshop as Appropriate,01-Oct-24,07-Oct-24,5,11-Mar-25,17-Mar-25,5,5,0%,12,OGAH Alima
    W234LT,W234,TOR Enhanced Defueling Safety Case Strategy,W234.2170,TOR Enhanced Defueling Rate: Hold Case Conference / Optioneering Strategy Workshop as Appropriate,01-Oct-24,07-Oct-24,5,11-Mar-25,17-Mar-25,5,5,0%,12,OGAH Alima
    W730LT_UN,W730,HYB Enhanced Defueling Safety Cases,W730.1520,Gate B PRC Paper Submission,12-Mar-25,12-Mar-25,1,12-Mar-25,12-Mar-25,1,1,0%,0,OGAH Alima
    W731LT_UN,W731,TOR Enhanced Defueling Safety Cases,W731.1210,Gate B PRC Paper Submission,12-Mar-25,12-Mar-25,1,12-Mar-25,12-Mar-25,1,1,0%,0,OGAH Alima
    ER7743LT,W527,DNB DPCS Defueling Support,W527.25070,"DNB TGN097 POLARIS - Draft Report Produced, Internal Review and Issue to EDF",13-Mar-25,26-Mar-25,10,13-Mar-25,26-Mar-25,10,10,0%,1694,OGAH Alima
    ER7743LT,W527,DNB DPCS Defueling Support,W527.25140,"DNB TGN097 AIC - Draft Report Produced, Internal Review and Issue to EDF",13-Mar-25,26-Mar-25,10,13-Mar-25,26-Mar-25,10,10,0%,1694,OGAH Alima
    W730LT_UN,W730,HYB Enhanced Defueling Safety Cases,W730.1540,PRC Members Review PRC / IMS2 Documentation,13-Mar-25,14-Mar-25,2,13-Mar-25,14-Mar-25,2,2,0%,6,OGAH Alima
    W731LT_UN,W731,TOR Enhanced Defueling Safety Cases,W731.1220,PRC Members Review PRC / IMS2 Documentation,13-Mar-25,14-Mar-25,2,13-Mar-25,14-Mar-25,2,2,0%,6,OGAH Alima
    ER7582LT,W196,HYA DPCS Defueling Support,W196.25330,Recommendations Workshop,19-Feb-25,19-Feb-25,1,14-Mar-25,14-Mar-25,1,1,0%,1446,OGAH Alima
    ER6360LT,W085,REGION 1 Further Flasks in Readiness,W085.DS19630,Approve Flask LTQRs,11-Oct-24,24-Oct-24,10,17-Mar-25,28-Mar-25,10,10,0%,81,OGAH Alima
    ER6360LT,W085,REGION 1 Further Flasks in Readiness,W085.DS25220,Flask 7 - Flask Licensing Verification Cat C Mod,04-Oct-24,14-Oct-24,5,17-Mar-25,25-Mar-25,7,7,0%,96,OGAH Alima
    ER7582LT,W196,HYA DPCS Defueling Support,W196.25340,"LSR Update, Internal Review & Issue to EDF",20-Feb-25,05-Mar-25,10,17-Mar-25,28-Mar-25,10,10,0%,1446,OGAH Alima
    W230LT,W230,HYB Enhanced Defueling Safety Case Strategy,W230.2120,HYB Enhanced Defueling Rate: Station comments on NSRS,08-Oct-24,21-Oct-24,10,18-Mar-25,31-Mar-25,10,10,0%,12,OGAH Alima
    W230LT,W230,HYB Enhanced Defueling Safety Case Strategy,W230.2190,HYB Enhanced Defueling Rate: DA (Peer) Comments on NSRS,08-Oct-24,21-Oct-24,10,18-Mar-25,31-Mar-25,10,10,0%,12,OGAH Alima
    W234LT,W234,TOR Enhanced Defueling Safety Case Strategy,W234.2120,TOR Enhanced Defueling Rate: Station comments on NSRS,08-Oct-24,21-Oct-24,10,18-Mar-25,31-Mar-25,10,10,0%,12,OGAH Alima
    W234LT,W234,TOR Enhanced Defueling Safety Case Strategy,W234.2190,TOR Enhanced Defueling Rate: DA (Peer) Comments on NSRS,08-Oct-24,21-Oct-24,10,18-Mar-25,31-Mar-25,10,10,0%,12,OGAH Alima
    ER7003LT,W160,HNB PSR4,W160.5980,HNB PSR4 Head Doc: Incorporate INSA comments,07-Mar-25,13-Mar-25,5,19-Mar-25,25-Mar-25,5,5,0%,-8,OGAH Alima
    ER6360LT,W085,REGION 1 Further Flasks in Readiness,W085.2880,Blast Tent Removal,,,1,20-Mar-25,24-Mar-25,3,3,0%,90,OGAH Alima
    ER6360LT,W085,REGION 1 Further Flasks in Readiness,W085.DS17590,Approve Flask LTQRs,02-Oct-24,15-Oct-24,10,24-Mar-25,04-Apr-25,10,10,0%,11,OGAH Alima
    ER6360LT,W085,REGION 1 Further Flasks in Readiness,W085.DS20410,Verify Painting Complete (EDF),23-Aug-24,30-Aug-24,1,24-Mar-25,28-Mar-25,5,5,0%,31,OGAH Alima
    ER6360LT,W085,REGION 1 Further Flasks in Readiness,W085.DS24710,Flask 2 - Flask Licensing Prepare Cat C Mod,08-Nov-24,14-Nov-24,5,24-Mar-25,24-Mar-25,0,0,0%,88,OGAH Alima
    ER6360LT,W085,REGION 1 Further Flasks in Readiness,W085.DS25120,Flask 2 - Flask Licensing Verification Cat C Mod,15-Nov-24,25-Nov-24,5,24-Mar-25,01-Apr-25,7,7,0%,88,OGAH Alima
    ER6360LT,W085,REGION 1 Further Flasks in Readiness,W085.DS20160,Verify Repairs and NDT Complete (EDF),16-Jul-24,16-Jul-24,5,25-Mar-25,31-Mar-25,5,5,0%,26,OGAH Alima
    W526LT,W526,HYB DPCS Defueling Support,W526.2090,HYB 2025 LSR - Recommendations Produced and Issued,25-Mar-25,07-Apr-25,10,25-Mar-25,07-Apr-25,10,10,0%,1921,OGAH Alima
    W730LT_UN,W730,HYB Enhanced Defueling Safety Cases,W730.1570,Hold PRC Meeting,25-Mar-25,25-Mar-25,1,25-Mar-25,25-Mar-25,1,1,0%,0,OGAH Alima
    W731LT_UN,W731,TOR Enhanced Defueling Safety Cases,W731.1230,Hold PRC Meeting,25-Mar-25,25-Mar-25,1,25-Mar-25,25-Mar-25,1,1,0%,0,OGAH Alima
    ER6360LT,W085,REGION 1 Further Flasks in Readiness,W085.DS25230,Flask 7 - Flask Licensing CO Review Cat C Mod,15-Oct-24,24-Oct-24,5,26-Mar-25,04-Apr-25,8,8,0%,96,OGAH Alima
    W730LT_UN,W730,HYB Enhanced Defueling Safety Cases,W730.1550,Modify PRC Paper as Required,26-Mar-25,27-Mar-25,2,26-Mar-25,27-Mar-25,2,2,0%,16,OGAH Alima
    W730LT_UN,W730,HYB Enhanced Defueling Safety Cases,W730.1560,"Modify Estimate, Schedule & Risk Log as Required",26-Mar-25,27-Mar-25,2,26-Mar-25,27-Mar-25,2,2,0%,16,OGAH Alima
    ER7003LT,W160,HNB PSR4,W160.9540,HNB PSR4 Head Doc: Verification Schedule Risk - (Risk Ref 38853),15-Nov-24,06-Dec-24,0,26-Mar-25,26-Mar-25,0,0,0%,-8,OGAH Alima
    ER7003LT,W160,HNB PSR4,W160.8270,HNB PSR4 Head Doc: INSA  Assessment Substantially Comp (T - 3 weeks before NSC date),,13-Mar-25,0,,26-Mar-25,0,0,0%,-8,OGAH Alima
    ER7003LT,W160,HNB PSR4,W160.5990,HNB PSR4 Head Doc: INSA Assessment Substantially Comp (T - 3 weeks before NSC date),,13-Mar-25,0,,26-Mar-25*,0,0,0%,-8,OGAH Alima
    W731LT_UN,W731,TOR Enhanced Defueling Safety Cases,W731.1240,"Modify Estimate, Schedule & Risk Log as Required",26-Mar-25,27-Mar-25,2,26-Mar-25,27-Mar-25,2,2,0%,16,OGAH Alima
    W731LT_UN,W731,TOR Enhanced Defueling Safety Cases,W731.1250,Modify PRC Paper as Required,26-Mar-25,27-Mar-25,2,26-Mar-25,27-Mar-25,2,2,0%,16,OGAH Alima
    ER7743LT,W527,DNB DPCS Defueling Support,W527.25080,DNB TGN097 POLARIS - EDF Review,27-Mar-25,09-Apr-25,10,27-Mar-25,09-Apr-25,10,10,0%,1694,OGAH Alima
    ER7743LT,W527,DNB DPCS Defueling Support,W527.25130,DNB TGN097 AIC - EDF Review,27-Mar-25,09-Apr-25,10,27-Mar-25,09-Apr-25,10,10,0%,1694,OGAH Alima
    ER6360LT,W085,REGION 1 Further Flasks in Readiness,W085.2890,Paint Tent Removal,,,1,27-Mar-25,28-Mar-25,2,2,0%,90,OGAH Alima
    W730LT_UN,W730,HYB Enhanced Defueling Safety Cases,W730.1580,Gate B PRC Paper Approval,,27-Mar-25,0,,27-Mar-25,0,0,0%,16,OGAH Alima
    W730LT_UN,W730,HYB Enhanced Defueling Safety Cases,W730.1130,Gate B Approved,,27-Mar-25,0,,27-Mar-25,0,0,0%,16,OGAH Alima
    W731LT_UN,W731,TOR Enhanced Defueling Safety Cases,W731.1260,Gate B Approved,,27-Mar-25,0,,27-Mar-25,0,0,0%,16,OGAH Alima
    W731LT_UN,W731,TOR Enhanced Defueling Safety Cases,W731.1270,Gate B PRC Paper Approval,,27-Mar-25,0,,27-Mar-25,0,0,0%,16,OGAH Alima
    ER7582LT,W196,HYA DPCS Defueling Support,W196.25030,TGN097 R2 - Inspection,28-Mar-25,03-Apr-25,5,28-Mar-25,03-Apr-25,5,5,0%,1437,OGAH Alima
    ER6360LT,W085,REGION 1 Further Flasks in Readiness,W085.DS24840,Flask 5 - Flask Licensing Prepare Cat C Mod,08-Jul-24,12-Jul-24,5,28-Mar-25*,03-Apr-25,5,5,0%,6,OGAH Alima
    ER6360LT,W085,REGION 1 Further Flasks in Readiness,W085.DS24960,Flask 8 - Flask Licensing Prepare Cat C Mod,25-Oct-24,31-Oct-24,5,31-Mar-25,04-Apr-25,5,5,0%,81,OGAH Alima
    ER6360LT,W085,REGION 1 Further Flasks in Readiness,W085.DS25160,Flask 4 - Flask Licensing Verification Cat C Mod,09-Jul-24,17-Jul-24,5,31-Mar-25,08-Apr-25,7,7,0%,10,OGAH Alima
    ER7582LT,W196,HYA DPCS Defueling Support,W196.25350,EDF Review,06-Mar-25,14-Mar-25,7,31-Mar-25,08-Apr-25,7,7,0%,1446,OGAH Alima
    ER6360LT,W085,REGION 1 Further Flasks in Readiness,W085.2900,Extractor Removal,,,1,31-Mar-25,01-Apr-25,2,2,0%,90,OGAH Alima
    ER6360LT,W085,REGION 1 Further Flasks in Readiness,W085.2980,E117,,,1,31-Mar-25,01-Apr-25,2,2,0%,97,OGAH Alima
 Subtotal,,,,,01-Mar-24,30-Dec-32,1987,03-Mar-25,30-Dec-32,1987,1987,,1,OGAH Alima
 01-Apr-25
    ER7580LT,W194,HPB DPCS Defueling Support,W194.2280,Thales Long Term Support Contract Q2 2025,01-Apr-25,30-Jun-25,61,01-Apr-25,30-Jun-25,61,61,0%,509,OGAH Alima
    ER7581LT,W195,HRA DPCS Defueling Support,W195.2270,Thales Long Term Support Contract Q2 2025,01-Apr-25,30-Jun-25,61,01-Apr-25,30-Jun-25,61,61,0%,1268,OGAH Alima
    ER7581LT,W195,HRA DPCS Defueling Support,W195.2640,Argus Support Contract 2025 - Apr Q2,01-Apr-25,30-Jun-25,61,01-Apr-25,30-Jun-25,61,61,0%,1268,OGAH Alima
    ER7582LT,W196,HYA DPCS Defueling Support,W196.2280,Thales Long Term Support Contract Q2 2025,01-Apr-25,30-Jun-25,61,01-Apr-25*,30-Jun-25,61,61,0%,1397,OGAH Alima
    ER7582LT,W196,HYA DPCS Defueling Support,W196.2600,Argus Support Contract - 2025 - Q2,01-Apr-25,30-Jun-25,61,01-Apr-25,30-Jun-25,61,61,0%,1397,OGAH Alima
    ER7743LT,W527,DNB DPCS Defueling Support,W527.1575,Worldgrid Software Modification Support (LAMPS) - Q2 2025,01-Apr-25,30-Jun-25,61,01-Apr-25,30-Jun-25,61,61,0%,1650,OGAH Alima
    ER7743LT,W527,DNB DPCS Defueling Support,W527.1570,Worldgrid System Engineering Support (SQEP) Q2 2025,01-Apr-25,30-Jun-25,61,01-Apr-25*,30-Jun-25,61,61,0%,1650,OGAH Alima
    ER7743LT,W527,DNB DPCS Defueling Support,W527.1572,Worldgrid Long Term Support Contract Q2 2025,01-Apr-25,30-Jun-25,61,01-Apr-25,30-Jun-25,61,61,0%,1650,OGAH Alima
    ER7743LT,W527,DNB DPCS Defueling Support,W527.1574,Thales POLARIS & AIC Support Contract Q2 2025,01-Apr-25,30-Jun-25,61,01-Apr-25,30-Jun-25,61,61,0%,1650,OGAH Alima
    ER6360LT,W085,REGION 1 Further Flasks in Readiness,W085.DS20270,Produce Refurbishment Report,17-Jul-24,06-Aug-24,14,01-Apr-25,23-Apr-25,15,15,0%,26,OGAH Alima
    W529LT,W529,TOR DPCS Defueling Support,W529.1230,TOR Thales Long Term Support Contract Q2 2025,01-Apr-25,30-Jun-25,61,01-Apr-25,30-Jun-25,61,61,0%,1777,OGAH Alima
    W529LT,W529,TOR DPCS Defueling Support,W529.1205,TOR Argus Support Contract Q2 2025,01-Apr-25,30-Jun-25,61,01-Apr-25,30-Jun-25,61,61,0%,1777,OGAH Alima
    W529LT,W529,TOR DPCS Defueling Support,W529.2080,TOR 2025 LSR - Data Export Produced and Issued,01-Apr-25,17-Apr-25,13,01-Apr-25,17-Apr-25,13,13,0%,1929,OGAH Alima
    W526LT,W526,HYB DPCS Defueling Support,W526.1235,HYB Thales Long Term Support Contract Q2 2025,02-Jan-25,27-Mar-25,61,01-Apr-25,30-Jun-25,61,61,0%,1778,OGAH Alima
    W230LT,W230,HYB Enhanced Defueling Safety Case Strategy,W230.2080,HYB Enhanced Defueling Rate: INA comments on NSRS,22-Oct-24,04-Nov-24,10,01-Apr-25,14-Apr-25,10,10,0%,12,OGAH Alima
    W234LT,W234,TOR Enhanced Defueling Safety Case Strategy,W234.2080,TOR Enhanced Defueling Rate: INA comments on NSRS,22-Oct-24,04-Nov-24,10,01-Apr-25,14-Apr-25,10,10,0%,12,OGAH Alima
    ER6360LT,W085,REGION 1 Further Flasks in Readiness,W085.DS25130,Flask 2 - Flask Licensing CO Review Cat C Mod,26-Nov-24,05-Dec-24,5,02-Apr-25,11-Apr-25,8,8,0%,88,OGAH Alima
    ER7003LT,W160,HNB PSR4,W160.8490,>>>MIRROR OF INCOMING ENABLER (W198) - EC PDSC INSA Final Approval,,16-Oct-24,0,,02-Apr-25*,0,0,0%,62,OGAH Alima
    ER7003LT,W160,HNB PSR4,W160.9600,>>>MIRROR OF INCOMING ENABLER (W198) - EC PDSC Safety Case Submitted to ONR,,,0,,02-Apr-25*,0,0,0%,62,OGAH Alima
    ER7003LT,W160,HNB PSR4,W160.9220,INTERFACE MILESTONE - (W198) EC PDSC Safety Case Submitted to ONR,,,0,,02-Apr-25,0,0,0%,62,OGAH Alima
    ER6360LT,W085,REGION 1 Further Flasks in Readiness,W085.2990,E112,,,1,02-Apr-25,03-Apr-25,2,2,0%,97,OGAH Alima
    ER7003LT,W160,HNB PSR4,W160.8480,>>>INCOMING ENABLER (W198) - EC PDSC INSA Final Approval,,16-Oct-24,0,,02-Apr-25,0,0,0%,188,OGAH Alima
    ER7582LT,W196,HYA DPCS Defueling Support,W196.2740,HYA 2025 TGN097 R2 Inspection Complete,,03-Apr-25,0,,03-Apr-25,0,0,0%,1455,OGAH Alima
    W730LT_UN,W730,HYB Enhanced Defueling Safety Cases,W730.2230,## HYB Enhanced Defueling Rate: B - B+ Phase Funding - (Cost Summary)  ##,03-Apr-25,10-Sep-26,362,03-Apr-25,10-Sep-26,362,362,0%,395,OGAH Alima
    ER7743LT,W527,DNB DPCS Defueling Support,W527.25640,DNB TGN097 AIC - Plan Produced,,03-Apr-25,0,,03-Apr-25,0,0,0%,1708,OGAH Alima
    ER7743LT,W527,DNB DPCS Defueling Support,W527.25650,DNB TGN097 POLARIS - Plan Produced,,03-Apr-25,0,,03-Apr-25,0,0,0%,1708,OGAH Alima
    W730LT_UN,W730,HYB Enhanced Defueling Safety Cases,W730.2240,HYB Enhanced Defueling Rate: Commence Supporting References or Supporting EC's,,03-Apr-25,0,,03-Apr-25,0,0,0%,11,OGAH Alima
    ER7003LT,W160,HNB PSR4,W160.9610,>>>INCOMING ENABLER (W198) - EC PDSC Safety Case Submitted to ONR,,,0,,03-Apr-25,0,0,0%,187,OGAH Alima
    W731LT_UN,W731,TOR Enhanced Defueling Safety Cases,W731.1280,TOR Enhanced Defueling Rate: Commence Supporting References or Supporting EC's,,03-Apr-25,0,,03-Apr-25,0,0,0%,11,OGAH Alima
    W731LT_UN,W731,TOR Enhanced Defueling Safety Cases,W731.1300,## TOR Enhanced Defueling Rate: B - B+ Phase Funding - (Cost Summary)  ##,03-Apr-25,10-Sep-26,362,03-Apr-25,10-Sep-26,362,362,0%,395,OGAH Alima
    ER7582LT,W196,HYA DPCS Defueling Support,W196.25070,"TGN097 R2 - Draft Report Produced, Internal Review and Issue to EDF",04-Apr-25,10-Apr-25,5,04-Apr-25,10-Apr-25,5,5,0%,1437,OGAH Alima
    ER6360LT,W085,REGION 1 Further Flasks in Readiness,W085.DS25180,Flask 5 - Flask Licensing Verification Cat C Mod,15-Jul-24,23-Jul-24,5,04-Apr-25,14-Apr-25,7,7,0%,6,OGAH Alima
    ER6360LT,W085,REGION 1 Further Flasks in Readiness,W085.3000,E120,,,1,04-Apr-25,07-Apr-25,2,2,0%,97,OGAH Alima
    W730LT_UN,W730,HYB Enhanced Defueling Safety Cases,W730.3710,HYB Enhanced Defueling Rate: PSA Modeling & Updates,04-Apr-25,30-Jul-25,80,04-Apr-25,30-Jul-25,80,80,0%,11,OGAH Alima
    W731LT_UN,W731,TOR Enhanced Defueling Safety Cases,W731.1290,TOR Enhanced Defueling Rate: PSA Modeling & Updates,04-Apr-25,30-Jul-25,80,04-Apr-25,30-Jul-25,80,80,0%,11,OGAH Alima
    W156LT,W156,HYA Security,W156.2570,Complete MSI process,11-Apr-25,28-May-25,30,07-Apr-25,21-May-25,30,30,0%,616,OGAH Alima
    ER6360LT,W085,REGION 1 Further Flasks in Readiness,W085.DS24880,Flask 6 - Flask Licensing Prepare Cat C Mod,16-Oct-24,22-Oct-24,5,07-Apr-25,11-Apr-25,5,5,0%,11,OGAH Alima
    ER6360LT,W085,REGION 1 Further Flasks in Readiness,W085.DS24930,Flask 7 - Flask Licensing INA Approval of Cat C,25-Oct-24,07-Nov-24,10,07-Apr-25,22-Apr-25,10,10,0%,96,OGAH Alima
    ER6360LT,W085,REGION 1 Further Flasks in Readiness,W085.DS25240,Flask 8 - Flask Licensing Verification Cat C Mod,01-Nov-24,11-Nov-24,5,07-Apr-25,15-Apr-25,7,7,0%,81,OGAH Alima
    W526LT,W526,HYB DPCS Defueling Support,W526.2100,HYB 2025 LSR - Recommendation Sentencing Workshop Preparation and Event,08-Apr-25,23-Apr-25,10,08-Apr-25,23-Apr-25,10,10,0%,1921,OGAH Alima
    ER6360LT,W085,REGION 1 Further Flasks in Readiness,W085.3010,E113,,,1,08-Apr-25,09-Apr-25,2,2,0%,97,OGAH Alima
    ER6360LT,W085,REGION 1 Further Flasks in Readiness,W085.DS25170,Flask 4 - Flask Licensing CO Review Cat C Mod,18-Jul-24,29-Jul-24,5,09-Apr-25,22-Apr-25,8,8,0%,10,OGAH Alima
    ER7582LT,W196,HYA DPCS Defueling Support,W196.25360,Update LSR,17-Mar-25,21-Mar-25,5,09-Apr-25,15-Apr-25,5,5,0%,1446,OGAH Alima
    ER7743LT,W527,DNB DPCS Defueling Support,W527.25090,DNB TGN097 POLARIS - Report Issued,10-Apr-25,25-Apr-25,10,10-Apr-25,25-Apr-25,10,10,0%,1694,OGAH Alima
    ER7743LT,W527,DNB DPCS Defueling Support,W527.25120,DNB TGN097 AIC - Report Issued,10-Apr-25,25-Apr-25,10,10-Apr-25,25-Apr-25,10,10,0%,1694,OGAH Alima
    ER6360LT,W085,REGION 1 Further Flasks in Readiness,W085.3020,E122,,,1,10-Apr-25,10-Apr-25,1,1,0%,97,OGAH Alima
    ER7582LT,W196,HYA DPCS Defueling Support,W196.25080,TGN097 R2 - EDF Review,11-Apr-25,24-Apr-25,8,11-Apr-25,24-Apr-25,8,8,0%,1437,OGAH Alima
    ER6360LT,W085,REGION 1 Further Flasks in Readiness,W085.3030,E114,,,1,11-Apr-25,14-Apr-25,2,2,0%,97,OGAH Alima
    ER6360LT,W085,REGION 1 Further Flasks in Readiness,W085.DS12550,Flask 2 - Flask Licensing INA Approval of Cat C,06-Dec-24,19-Dec-24,10,14-Apr-25,29-Apr-25,10,10,0%,88,OGAH Alima
    ER6360LT,W085,REGION 1 Further Flasks in Readiness,W085.DS25200,Flask 6 - Flask Licensing Verification Cat C Mod,23-Oct-24,31-Oct-24,5,14-Apr-25,24-Apr-25,7,7,0%,11,OGAH Alima
    W526LT,W526,HYB DPCS Defueling Support,W526.3160,HYB 2025 LSR Pre Data Extract,14-Apr-25,12-May-25,18,14-Apr-25*,12-May-25,18,18,0%,1901,OGAH Alima
    ER7579LT,W193,HNB DPCS Defueling Support,W193.25330,Asset Assessment,14-Apr-25,29-May-25,30,14-Apr-25,29-May-25,30,30,0%,31,OGAH Alima
    W230LT,W230,HYB Enhanced Defueling Safety Case Strategy,W230.3750,HYB Enhanced Defueling Rate: INA comments on NSRS,,,0,,14-Apr-25,0,0,0%,275,OGAH Alima
    W234LT,W234,TOR Enhanced Defueling Safety Case Strategy,W234.3750,TOR Enhanced Defueling Rate: INA comments on NSRS,,,0,,14-Apr-25,0,0,0%,275,OGAH Alima
    ER6360LT,W085,REGION 1 Further Flasks in Readiness,W085.DS25190,Flask 5 - Flask Licensing CO Review Cat C Mod,24-Jul-24,02-Aug-24,5,15-Apr-25,28-Apr-25,8,8,0%,6,OGAH Alima
    W230LT,W230,HYB Enhanced Defueling Safety Case Strategy,W230.2140,HYB Enhanced Defueling Rate: Register EC and identify Milestones in AMS  EC NNNNNN,05-Nov-24,05-Nov-24,1,15-Apr-25,15-Apr-25,1,1,0%,12,OGAH Alima
    ER6360LT,W085,REGION 1 Further Flasks in Readiness,W085.3040,E137,,,1,15-Apr-25,16-Apr-25,2,2,0%,97,OGAH Alima
    W234LT,W234,TOR Enhanced Defueling Safety Case Strategy,W234.2140,TOR Enhanced Defueling Rate: Register EC and identify Milestones in AMS  EC NNNNNN,05-Nov-24,05-Nov-24,1,15-Apr-25,15-Apr-25,1,1,0%,12,OGAH Alima
    ER6360LT,W085,REGION 1 Further Flasks in Readiness,W085.DS24940,Flask 7 - Prepare Transport Paperwork,05-Nov-24,11-Nov-24,5,16-Apr-25,24-Apr-25,5,5,0%,96,OGAH Alima
    ER6360LT,W085,REGION 1 Further Flasks in Readiness,W085.DS25250,Flask 8 - Flask Licensing CO Review Cat C Mod,12-Nov-24,21-Nov-24,5,16-Apr-25,29-Apr-25,8,8,0%,81,OGAH Alima
    ER7582LT,W196,HYA DPCS Defueling Support,W196.25370,Issue LSR,24-Mar-25,24-Mar-25,1,16-Apr-25,16-Apr-25,1,1,0%,1446,OGAH Alima
    W230LT,W230,HYB Enhanced Defueling Safety Case Strategy,W230.2150,HYB Enhanced Defueling Rate: Update NSRS to address comments,06-Nov-24,06-Nov-24,1,16-Apr-25,16-Apr-25,1,1,0%,12,OGAH Alima
    ER7003LT,W160,HNB PSR4,W160.8280,HNB PSR4 Head Doc: NSC Presentation Date (T) EC 374897,,09-Apr-25,0,,16-Apr-25,0,0,0%,1,OGAH Alima
    ER7003LT,W160,HNB PSR4,W160.6000,HNB PSR4 Head Doc: NSC Presentation Date (T) EC 374897 <Enter Paper Title Here>,,09-Apr-25,0,,16-Apr-25,0,0,0%,1,OGAH Alima
    ER7003LT,W160,HNB PSR4,W160.6020,HNB PSR4 Head Doc: NSC Consideration & advice to Station Director ==> KDM,09-Apr-25,24-Apr-25,10,16-Apr-25,01-May-25,10,10,0%,1,OGAH Alima
    W234LT,W234,TOR Enhanced Defueling Safety Case Strategy,W234.2150,TOR Enhanced Defueling Rate: Update NSRS to address comments,06-Nov-24,06-Nov-24,1,16-Apr-25,16-Apr-25,1,1,0%,12,OGAH Alima
    ER7582LT,W196,HYA DPCS Defueling Support,W196.6240,HYA 2025 LSR Issued,,24-Mar-25,0,,16-Apr-25,0,0,0%,1446,OGAH Alima
    W230LT,W230,HYB Enhanced Defueling Safety Case Strategy,W230.2110,HYB Enhanced Defueling Rate: Issue final NSRS,14-Nov-24,14-Nov-24,1,17-Apr-25,17-Apr-25,1,1,0%,12,OGAH Alima
    W230LT,W230,HYB Enhanced Defueling Safety Case Strategy,W230.2210,HYB Enhanced Defueling Rate: Risk Ref 38976 TBC - NSRS Production,07-Nov-24,13-Nov-24,0,17-Apr-25,17-Apr-25,0,0,0%,12,OGAH Alima
    W230LT,W230,HYB Enhanced Defueling Safety Case Strategy,W230.1210,HYB Enhanced Defueling Rate: Risk Milestone - NSRS Production Complete (Risk Ref  38976),,13-Nov-24,0,,17-Apr-25,0,0,0%,12,OGAH Alima
    ER6360LT,W085,REGION 1 Further Flasks in Readiness,W085.3050,E116,,,1,17-Apr-25,22-Apr-25,2,2,0%,97,OGAH Alima
    W234LT,W234,TOR Enhanced Defueling Safety Case Strategy,W234.2110,TOR Enhanced Defueling Rate: Issue final NSRS,14-Nov-24,14-Nov-24,1,17-Apr-25,17-Apr-25,1,1,0%,12,OGAH Alima
    W234LT,W234,TOR Enhanced Defueling Safety Case Strategy,W234.2210,TOR Enhanced Defueling Rate: Risk Ref 38976 TBC - NSRS Production,07-Nov-24,13-Nov-24,0,17-Apr-25,17-Apr-25,0,0,0%,12,OGAH Alima
    W234LT,W234,TOR Enhanced Defueling Safety Case Strategy,W234.1210,TOR Enhanced Defueling Rate: Risk Milestone - NSRS Production Complete (Risk Ref  38976),,13-Nov-24,0,,17-Apr-25,0,0,0%,12,OGAH Alima
    W529LT,W529,TOR DPCS Defueling Support,W529.2090,TOR 2025 LSR - Recommendations Produced and Issued,22-Apr-25,22-Apr-25,1,22-Apr-25,22-Apr-25,1,1,0%,1929,OGAH Alima
    ER6360LT,W085,REGION 1 Further Flasks in Readiness,W085.2920,Dismantle Lid Turning Table and Store,,,1,22-Apr-25,28-Apr-25,5,5,0%,91,OGAH Alima
    ER6360LT,W085,REGION 1 Further Flasks in Readiness,W085.M1000,Flask 7 - INA Approval,,07-Nov-24,0,,22-Apr-25,0,0,0%,99,OGAH Alima
    ER6360LT,W085,REGION 1 Further Flasks in Readiness,W085.DS14590,Flask 4 - Flask Licensing INA Approval of Cat C,30-Jul-24,12-Aug-24,10,23-Apr-25,07-May-25,10,10,0%,10,OGAH Alima
    W529LT,W529,TOR DPCS Defueling Support,W529.2100,TOR 2025 LSR - Recommendation Sentencing Workshop Preparation and Event,23-Apr-25,23-Apr-25,1,23-Apr-25,23-Apr-25,1,1,0%,1929,OGAH Alima
    W230LT,W230,HYB Enhanced Defueling Safety Case Strategy,W230.2090,HYB Enhanced Defueling Rate: DA & INA agree NSRS (for authorised designers-NSRS must be reviewed by DA),18-Nov-24,06-Dec-24,15,23-Apr-25,14-May-25,15,15,0%,12,OGAH Alima
    ER6360LT,W085,REGION 1 Further Flasks in Readiness,W085.3060,E99,,,1,23-Apr-25,24-Apr-25,2,2,0%,97,OGAH Alima
    W234LT,W234,TOR Enhanced Defueling Safety Case Strategy,W234.2090,TOR Enhanced Defueling Rate: DA & INA agree NSRS (for authorised designers-NSRS must be reviewed by DA),18-Nov-24,06-Dec-24,15,23-Apr-25,14-May-25,15,15,0%,12,OGAH Alima
    ER6360LT,W085,REGION 1 Further Flasks in Readiness,W085.DS20280,Approve Refurbishment Report,07-Aug-24,20-Aug-24,9,24-Apr-25,08-May-25,10,10,0%,26,OGAH Alima
    W529LT,W529,TOR DPCS Defueling Support,W529.2110,TOR 2025 LSR - Draft Report Produced and Issued for EDF Review,24-Apr-25,08-May-25,10,24-Apr-25,08-May-25,10,10,0%,1929,OGAH Alima
    W526LT,W526,HYB DPCS Defueling Support,W526.2110,HYB 2025 LSR - Draft Report Produced and Issued for EDF Review,24-Apr-25,09-May-25,11,24-Apr-25,09-May-25,11,11,0%,1921,OGAH Alima
    ER7582LT,W196,HYA DPCS Defueling Support,W196.25090,TGN097 R2 - Report Issue,25-Apr-25,01-May-25,5,25-Apr-25,01-May-25,5,5,0%,1437,OGAH Alima
    ER6360LT,W085,REGION 1 Further Flasks in Readiness,W085.DS24950,Flask 7 - Transport Flask to HNB,12-Nov-24,12-Nov-24,1,25-Apr-25,25-Apr-25,1,1,0%,96,OGAH Alima
    ER6360LT,W085,REGION 1 Further Flasks in Readiness,W085.DS25210,Flask 6 - Flask Licensing CO Review Cat C Mod,01-Nov-24,12-Nov-24,5,25-Apr-25,07-May-25,8,8,0%,11,OGAH Alima
    ER7743LT,W527,DNB DPCS Defueling Support,W527.1640,DNB 2025 AIC TGN097 Inspection,,25-Apr-25,0,,25-Apr-25,0,0,0%,1694,OGAH Alima
    ER7743LT,W527,DNB DPCS Defueling Support,W527.3540,DNB 2025 POLARIS TGN097 Inspection,,25-Apr-25,0,,25-Apr-25,0,0,0%,1694,OGAH Alima
    ER7743LT,W527,DNB DPCS Defueling Support,W527.1560,DNB TGN097 AIC - Report Issued,,25-Apr-25,0,,25-Apr-25,0,0,0%,1694,OGAH Alima
    ER7743LT,W527,DNB DPCS Defueling Support,W527.1580,DNB TGN097 POLARIS - Report Issued,,25-Apr-25,0,,25-Apr-25,0,0,0%,1694,OGAH Alima
    W526LT,W526,HYB DPCS Defueling Support,W526.10520,HYB 2026 S13R8 - Specification,28-Apr-25,29-May-26,275,28-Apr-25*,29-May-26,275,275,0%,1505,OGAH Alima
    ER6360LT,W085,REGION 1 Further Flasks in Readiness,W085.DS15610,Flask 5 - Flask Licensing INA Approve Cat C Mod,05-Aug-24,16-Aug-24,10,29-Apr-25,13-May-25,10,10,0%,6,OGAH Alima
    ER6360LT,W085,REGION 1 Further Flasks in Readiness,W085.2910,Fence Erecting Stage 2,,,1,29-Apr-25,06-May-25,5,5,0%,90,OGAH Alima
    ER6360LT,W085,REGION 1 Further Flasks in Readiness,W085.2930,Dimantle LSM Turning Table and Store,,,1,29-Apr-25,02-May-25,4,4,0%,91,OGAH Alima
    ER6360LT,W085,REGION 1 Further Flasks in Readiness,W085.1520,Flask 2 - INA Approval,,19-Dec-24,0,,29-Apr-25,0,0,0%,94,OGAH Alima
    ER6360LT,W085,REGION 1 Further Flasks in Readiness,W085.DS24740,Flask 2 - Prepare Transport Paperwork,17-Dec-24,23-Dec-24,5,30-Apr-25,07-May-25,5,5,0%,88,OGAH Alima
    ER6360LT,W085,REGION 1 Further Flasks in Readiness,W085.DS24970,Flask 8 - Flask Licensing INA Approval of Cat C,22-Nov-24,05-Dec-24,10,30-Apr-25,14-May-25,10,10,0%,81,OGAH Alima
    W230LT,W230,HYB Enhanced Defueling Safety Case Strategy,W230.2100,HYB Enhanced Defueling Rate: Station agree NSRS,25-Nov-24,06-Dec-24,10,30-Apr-25,14-May-25,10,10,0%,12,OGAH Alima
    W234LT,W234,TOR Enhanced Defueling Safety Case Strategy,W234.2100,TOR Enhanced Defueling Rate: Station agree NSRS,25-Nov-24,06-Dec-24,10,30-Apr-25,14-May-25,10,10,0%,12,OGAH Alima
 Subtotal,,,,,15-Jul-24,10-Sep-26,365,01-Apr-25,10-Sep-26,365,365,,1589,OGAH Alima
 01-May-25
    ER7582LT,W196,HYA DPCS Defueling Support,W196.25390,HYA 2025 TGN097 R2 - Report Issue,,01-May-25,0,,01-May-25,0,0,0%,1437,OGAH Alima
    ER7003LT,W160,HNB PSR4,W160.9200,HNB PSR4 Head Doc: INSA Final Approval EC 374897 <Enter Paper Title Here>,,24-Apr-25,0,,01-May-25,0,0,0%,42,OGAH Alima
    ER7003LT,W160,HNB PSR4,W160.6030,HNB PSR4 Head Doc: INSA Final Approval EC 374897 <Enter Paper Title Here>,,24-Apr-25,0,,01-May-25,0,0,0%,42,OGAH Alima
    ER6360LT,W085,REGION 1 Further Flasks in Readiness,W085.DS24820,Flask 4 - Prepare Transport Paperwork,08-Aug-24,14-Aug-24,5,02-May-25,09-May-25,5,5,0%,86,OGAH Alima
    W157LT,W157,HYB Security,W157.1930,Undertake Site assessment of defuelling impacts on existing and new SPP and resources,02-May-25,09-May-25,5,02-May-25*,09-May-25,5,5,0%,267,OGAH Alima
    ER7003LT,W160,HNB PSR4,W160.7060,HNB PSR4 Head Doc: Prepare Paper for Submission to ONR,25-Apr-25,24-Jun-25,41,02-May-25,01-Jul-25,41,41,0%,1,OGAH Alima
    W158LT,W158,DNB Security,W158.3710,>>> MIRROR INCOMING ENABLER (W232) DNB Enchanced Safety Case Station Approved,,02-May-25,0,,02-May-25*,0,0,0%,142,OGAH Alima
    W158LT,W158,DNB Security,W158.3220,Review Flask Security Arrangments Against Issued Enhanced Safety Cases,06-May-25,12-May-25,5,06-May-25,12-May-25,5,5,0%,142,OGAH Alima
    W158LT,W158,DNB Security,W158.2380,Revise SPPI File Against Issued Enhanced Safety Cases,06-May-25,12-May-25,5,06-May-25,12-May-25,5,5,0%,172,OGAH Alima
    ER7514LT,W161,HPB PSR4,W161.8350,>>>MIRROR OF INCOMING ENABLER (W404) - Fault and Hazard Schedule,,09-Aug-24,0,,06-May-25*,0,0,0%,15,OGAH Alima
    ER7514LT,W161,HPB PSR4,W161.9510,PDSC - Fault and Hazard Schedule,,09-Aug-24,0,,06-May-25,0,0,0%,15,OGAH Alima
    ER7514LT,W161,HPB PSR4,W161.8340,>>>INCOMING ENABLER (W404) - Fault and Hazard Schedule,,09-Aug-24,0,,06-May-25,0,0,0%,421,OGAH Alima
    ER6360LT,W085,REGION 1 Further Flasks in Readiness,W085.1540,Flask 4 - INA Approval,,12-Aug-24,0,,07-May-25,0,0,0%,10,OGAH Alima
    ER6360LT,W085,REGION 1 Further Flasks in Readiness,W085.DS16630,Flask 6 - Flask Licensing INA Approval of Cat C,13-Nov-24,26-Nov-24,10,08-May-25,21-May-25,10,10,0%,11,OGAH Alima
    ER6360LT,W085,REGION 1 Further Flasks in Readiness,W085.DS24750,Flask 2 - Transport Flask to HNB,24-Dec-24,24-Dec-24,1,08-May-25,08-May-25,1,1,0%,88,OGAH Alima
    ER6360LT,W085,REGION 1 Further Flasks in Readiness,W085.DS20330,Verify Painting Complete (EDF),11-Sep-24,17-Sep-24,1,09-May-25,15-May-25,5,5,0%,0,OGAH Alima
    ER6360LT,W085,REGION 1 Further Flasks in Readiness,W085.DS21500,Verify Painting Complete (EDF),03-Oct-24,09-Oct-24,2,09-May-25,15-May-25,5,5,0%,7,OGAH Alima
    W529LT,W529,TOR DPCS Defueling Support,W529.2120,TOR 2025 LSR - EDF Review Comments Produced and Provided,09-May-25,20-May-25,8,09-May-25,20-May-25,8,8,0%,1929,OGAH Alima
    ER6360LT,W085,REGION 1 Further Flasks in Readiness,W085.DS24860,Flask 5 - Prepare Transport Paperwork,14-Aug-24,20-Aug-24,5,09-May-25,15-May-25,5,5,0%,82,OGAH Alima
    W526LT,W526,HYB DPCS Defueling Support,W526.2120,HYB 2025 LSR - EDF Review Comments Produced and Provided,12-May-25,27-May-25,11,12-May-25,27-May-25,11,11,0%,1921,OGAH Alima
    ER6360LT,W085,REGION 1 Further Flasks in Readiness,W085.DS24830,Flask 4 - Transport Flask to HNB,15-Aug-24,15-Aug-24,1,12-May-25,12-May-25,1,1,0%,86,OGAH Alima
    ER6360LT,W085,REGION 1 Further Flasks in Readiness,W085.DS24980,Flask 8 - Prepare Transport Paperwork,03-Dec-24,09-Dec-24,5,12-May-25,16-May-25,5,5,0%,81,OGAH Alima
    W157LT,W157,HYB Security,W157.1940,Write up Defuelling SPPI file V1,12-May-25,02-Jun-25,15,12-May-25,02-Jun-25,15,15,0%,267,OGAH Alima
    W158LT,W158,DNB Security,W158.3230,Review and Update SPORS,13-May-25,19-May-25,5,13-May-25,19-May-25,5,5,0%,142,OGAH Alima
    W158LT,W158,DNB Security,W158.2390,Review and Update SPORS (Enhanced Safety Cases),13-May-25,19-May-25,5,13-May-25,19-May-25,5,5,0%,172,OGAH Alima
    W526LT,W526,HYB DPCS Defueling Support,W526.3170,"HYB 2025 LSR Data Export, Analysis, Draft Report",13-May-25,29-May-25,12,13-May-25,29-May-25,12,12,0%,1901,OGAH Alima
    ER6360LT,W085,REGION 1 Further Flasks in Readiness,W085.1550,Flask 5 - INA Approval,,16-Aug-24,0,,13-May-25,0,0,0%,6,OGAH Alima
    ER6360LT,W085,REGION 1 Further Flasks in Readiness,W085.DS1035,Transport of Final 5 Refurbished Flasks,19-Aug-24,14-Nov-24,63,14-May-25,11-Aug-25,63,63,0%,6,OGAH Alima
    ER6360LT,W085,REGION 1 Further Flasks in Readiness,W085.M1010,Flask 8 - INA Approval,,05-Dec-24,0,,14-May-25,0,0,0%,84,OGAH Alima
    W230LT,W230,HYB Enhanced Defueling Safety Case Strategy,W230.1070,HYB Enhanced Defueling Rate: Station Agree NSRS,,06-Dec-24,0,,14-May-25,0,0,0%,256,OGAH Alima
    W230LT,W230,HYB Enhanced Defueling Safety Case Strategy,W230.1200,HYB Enhanced Defueling Rate: Discovery Milestone - NSRS Completion - Proceed with Safety Case (HYB),,06-Dec-24,0,,14-May-25,0,0,0%,12,OGAH Alima
    W234LT,W234,TOR Enhanced Defueling Safety Case Strategy,W234.1070,TOR Enhanced Defueling Rate: Station Agree NSRS,,06-Dec-24,0,,14-May-25,0,0,0%,256,OGAH Alima
    W234LT,W234,TOR Enhanced Defueling Safety Case Strategy,W234.1200,TOR Enhanced Defueling Rate: Discovery Milestone - NSRS Completion - Proceed with Safety Case (TOR),,06-Dec-24,0,,14-May-25,0,0,0%,12,OGAH Alima
    W230LT,W230,HYB Enhanced Defueling Safety Case Strategy,W230.2160,HYB Enhanced Defueling Rate: Circulate NSRS for Relevant Stakeholders (A-B Part),09-Dec-24,13-Dec-24,5,15-May-25,21-May-25,5,5,0%,12,OGAH Alima
    W234LT,W234,TOR Enhanced Defueling Safety Case Strategy,W234.2160,TOR Enhanced Defueling Rate: Circulate NSRS for Relevant Stakeholders (A-B Part),09-Dec-24,13-Dec-24,5,15-May-25,21-May-25,5,5,0%,12,OGAH Alima
    ER6360LT,W085,REGION 1 Further Flasks in Readiness,W085.DS20560,Verify All Parts Ready for Assembly,18-Sep-24,20-Sep-24,1,16-May-25,20-May-25,3,3,0%,0,OGAH Alima
    ER6360LT,W085,REGION 1 Further Flasks in Readiness,W085.DS21660,Produce Flask LTQRs (Reduced Duration),10-Oct-24,23-Oct-24,10,16-May-25,30-May-25,10,10,0%,7,OGAH Alima
    ER6360LT,W085,REGION 1 Further Flasks in Readiness,W085.DS24870,Flask 5 - Transport Flask to HNB,21-Aug-24,21-Aug-24,1,16-May-25,16-May-25,1,1,0%,82,OGAH Alima
    ER6360LT,W085,REGION 1 Further Flasks in Readiness,W085.DS24900,Flask 6 - Prepare Transport Paperwork,22-Nov-24,28-Nov-24,5,19-May-25,23-May-25,5,5,0%,76,OGAH Alima
    ER6360LT,W085,REGION 1 Further Flasks in Readiness,W085.DS24990,Flask 8 - Transport Flask to HNB,10-Dec-24,10-Dec-24,1,19-May-25,19-May-25,1,1,0%,81,OGAH Alima
    W158LT,W158,DNB Security,W158.3240,Issue Revised SPORS (FEED TO SUMMARY SCHEDULE),20-May-25,20-May-25,1,20-May-25,20-May-25,1,1,0%,142,OGAH Alima
    W158LT,W158,DNB Security,W158.2400,Issue Revised SPORS (Enhanced Safety Cases),20-May-25,20-May-25,1,20-May-25,20-May-25,1,1,0%,172,OGAH Alima
    W158LT,W158,DNB Security,W158.3500,Review Prep for Off Site Transport Revised SPOR for Temporary or Permanent Mitigations,,20-May-25,0,,20-May-25,0,0,0%,177,OGAH Alima
    W158LT,W158,DNB Security,W158.3490,Review Prep for Defueling Revised SPOR for Temporary or Permanent Mitigations,,20-May-25,0,,20-May-25,0,0,0%,177,OGAH Alima
    W158LT,W158,DNB Security,W158.3440,Issue of SPOR - SPPI File for Prep for Off Site Transport,,20-May-25,0,,20-May-25,0,0,0%,177,OGAH Alima
    W158LT,W158,DNB Security,W158.3250,Incorporate New Mitigations,21-May-25,09-Jul-25,35,21-May-25,09-Jul-25,35,35,0%,142,OGAH Alima
    W158LT,W158,DNB Security,W158.34801,Update Site SRCL & Submit to ONR (Enhanced Safety Cases),21-May-25,28-May-25,5,21-May-25,28-May-25,5,5,0%,172,OGAH Alima
    ER6360LT,W085,REGION 1 Further Flasks in Readiness,W085.DS20570,"Assemble Flask, Deflection and Leak Tests",23-Sep-24,14-Nov-24,2,21-May-25,16-Jun-25,18,18,0%,0,OGAH Alima
    W529LT,W529,TOR DPCS Defueling Support,W529.2130,TOR 2025 LSR - Final Report Produced and Issued,21-May-25,28-May-25,5,21-May-25,28-May-25,5,5,0%,1929,OGAH Alima
    ER6360LT,W085,REGION 1 Further Flasks in Readiness,W085.A2850,Remediation & Assembly of 6 Flasks Complete,,19-Dec-24,0,,21-May-25,0,0,0%,79,OGAH Alima
    ER6360LT,W085,REGION 1 Further Flasks in Readiness,W085.1180,>>>OUTGOING ENABLER (W104) 6th Flask Available,,19-Dec-24,0,,21-May-25,0,0,0%,79,OGAH Alima
    ER6360LT,W085,REGION 1 Further Flasks in Readiness,W085.1560,Flask 6 - INA Approval,,26-Nov-24,0,,21-May-25,0,0,0%,79,OGAH Alima
    W230LT,W230,HYB Enhanced Defueling Safety Case Strategy,W230.2180,HYB Enhanced Defueling Rate: Send NSRS to ONR to Determine Level of Review Required (Acknowledgement or Agreement),16-Dec-24,16-Dec-24,1,22-May-25,22-May-25,1,1,0%,12,OGAH Alima
    W234LT,W234,TOR Enhanced Defueling Safety Case Strategy,W234.2180,TOR Enhanced Defueling Rate: Send NSRS to ONR to Determine Level of Review Required (Acknowledgement or Agreement),16-Dec-24,16-Dec-24,1,22-May-25,22-May-25,1,1,0%,12,OGAH Alima
    W230LT,W230,HYB Enhanced Defueling Safety Case Strategy,W230.2200,HYB Enhanced Defueling Rate: Outline Safety Case / ALARP Strategy,17-Dec-24,16-Jan-25,20,23-May-25,20-Jun-25,20,20,0%,12,OGAH Alima
    W230LT,W230,HYB Enhanced Defueling Safety Case Strategy,W230.2220,HYB Enhanced Defueling Rate: Lessons Learned Activity - NSRS Approval,17-Dec-24,19-Dec-24,3,23-May-25,28-May-25,3,3,0%,247,OGAH Alima
    W234LT,W234,TOR Enhanced Defueling Safety Case Strategy,W234.2200,TOR Enhanced Defueling Rate: Outline Safety Case / ALARP Strategy,17-Dec-24,16-Jan-25,20,23-May-25,20-Jun-25,20,20,0%,12,OGAH Alima
    W234LT,W234,TOR Enhanced Defueling Safety Case Strategy,W234.2220,TOR Enhanced Defueling Rate: Lessons Learned Activity - NSRS Approval,17-Dec-24,19-Dec-24,3,23-May-25,28-May-25,3,3,0%,247,OGAH Alima
    ER6360LT,W085,REGION 1 Further Flasks in Readiness,W085.DS24910,Flask 6 - Transport Flask to HNB,29-Nov-24,29-Nov-24,1,27-May-25,27-May-25,1,1,0%,76,OGAH Alima
    ER7581LT,W195,HRA DPCS Defueling Support,W195.25430,LSR Pre Data Extract,27-May-25,16-Jun-25,15,27-May-25*,16-Jun-25,15,15,0%,1360,OGAH Alima
    W526LT,W526,HYB DPCS Defueling Support,W526.2130,HYB 2025 LSR - Final Report Produced and Issued,28-May-25,09-Jun-25,9,28-May-25,09-Jun-25,9,9,0%,1921,OGAH Alima
    ER7743LT,W527,DNB DPCS Defueling Support,W527.25280,Asset Guardian Licences and Support 2025 - 2026,28-May-25,28-May-25,1,28-May-25*,28-May-25,1,1,0%,1673,OGAH Alima
    W230LT,W230,HYB Enhanced Defueling Safety Case Strategy,W230.1220,HYB Enhanced Defueling Rate: Lessons Learned Milestone - NSRS Approval,,19-Dec-24,0,,28-May-25,0,0,0%,247,OGAH Alima
    W529LT,W529,TOR DPCS Defueling Support,W529.4080,TOR 2025 Issue Complete LSR,,28-May-25,0,,28-May-25,0,0,0%,1929,OGAH Alima
    W234LT,W234,TOR Enhanced Defueling Safety Case Strategy,W234.1220,TOR Enhanced Defueling Rate: Lessons Learned Milestone - NSRS Approval,,19-Dec-24,0,,28-May-25,0,0,0%,247,OGAH Alima
    ER7581LT,W195,HRA DPCS Defueling Support,W195.25120,TGN097 R2 - Inspection,30-May-25,05-Jun-25,5,30-May-25*,05-Jun-25,5,5,0%,1349,OGAH Alima
    W526LT,W526,HYB DPCS Defueling Support,W526.3180,HYB 2025 Issue Recommendations,30-May-25,30-May-25,1,30-May-25,30-May-25,1,1,0%,1901,OGAH Alima
    ER7579LT,W193,HNB DPCS Defueling Support,W193.25340,Revised Costs Provided,30-May-25,10-Jul-25,30,30-May-25,10-Jul-25,30,30,0%,31,OGAH Alima
 Subtotal,,,,,08-Aug-24,10-Jul-25,70,01-May-25,11-Aug-25,70,70,,1876,OGAH Alima
 01-Jun-25
    ER6360LT,W085,REGION 1 Further Flasks in Readiness,W085.DS21670,Approve Flask LTQRs (Reduce Duration),24-Oct-24,06-Nov-24,10,02-Jun-25,13-Jun-25,10,10,0%,7,OGAH Alima
    W526LT,W526,HYB DPCS Defueling Support,W526.3190,HYB 2025 Recommendations Workshop,02-Jun-25,02-Jun-25,1,02-Jun-25,02-Jun-25,1,1,0%,1901,OGAH Alima
    W157LT,W157,HYB Security,W157.2700,Draft List of Security changes and proposed MSI Categories,03-Jun-25,16-Jun-25,10,03-Jun-25,16-Jun-25,10,10,0%,393,OGAH Alima
    W157LT,W157,HYB Security,W157.2520,Site SQEP verification and INA review of SPPI File,03-Jun-25,16-Jun-25,10,03-Jun-25,16-Jun-25,10,10,0%,383,OGAH Alima
    W157LT,W157,HYB Security,W157.1950,Undertake Security Vulnerability Assessments on changes to existing and new SPP V1,03-Jun-25,23-Jun-25,15,03-Jun-25,23-Jun-25,15,15,0%,293,OGAH Alima
    W526LT,W526,HYB DPCS Defueling Support,W526.3200,"HYB 2025 LSR Update, Internal Review & Issue to EDF",03-Jun-25,16-Jun-25,10,03-Jun-25,16-Jun-25,10,10,0%,1901,OGAH Alima
    ER6360LT,W085,REGION 1 Further Flasks in Readiness,W085.DS1030,Transport of First 6 Refurbished Flasks,09-Dec-24,05-Mar-25,60,04-Jun-25,27-Aug-25,60,60,0%,11,OGAH Alima
    ER7581LT,W195,HRA DPCS Defueling Support,W195.2780,HRA 2025 TGN097 R2 - Inspection Complete,,05-Jun-25,0,,05-Jun-25,0,0,0%,1414,OGAH Alima
    ER7581LT,W195,HRA DPCS Defueling Support,W195.25150,"TGN097 R2 - Draft Report Produced, Internal Review and Issue to EDF",06-Jun-25,03-Jul-25,20,06-Jun-25,03-Jul-25,20,20,0%,1349,OGAH Alima
    ER7581LT,W195,HRA DPCS Defueling Support,W195.1075,HRA 2024  - Installation R1,10-Jun-25,30-Jun-25,15,10-Jun-25*,30-Jun-25,15,15,0%,1397,OGAH Alima
    ER7582LT,W196,HYA DPCS Defueling Support,W196.6220,HYA 2024  - Installation R1,10-Jun-25,30-Jun-25,15,10-Jun-25*,30-Jun-25,15,15,0%,1397,OGAH Alima
    ER6360LT,W085,REGION 1 Further Flasks in Readiness,W085.1790,Lid Bolting Exercise (PROVISIONAL),14-Nov-24,09-Dec-24,1,10-Jun-25*,26-Jun-25,13,13,0%,28,OGAH Alima
    ER6360LT,W085,REGION 1 Further Flasks in Readiness,W085.M1030,Flask 10 - LTQR Approval,,06-Nov-24,0,,13-Jun-25,0,0,0%,63,OGAH Alima
    ER6360LT,W085,REGION 1 Further Flasks in Readiness,W085.DS22680,Produce Flask LTQRs (Reduced Duration),07-Nov-24,20-Nov-24,10,16-Jun-25,27-Jun-25,10,10,0%,7,OGAH Alima
    ER6360LT,W085,REGION 1 Further Flasks in Readiness,W085.DS20580,Generate Rebuild Report,15-Nov-24,20-Nov-24,5,17-Jun-25,20-Jun-25,4,4,0%,0,OGAH Alima
    W157LT,W157,HYB Security,W157.2530,Revision of SPPI File Folliowing INA Review V1,17-Jun-25,23-Jun-25,5,17-Jun-25,23-Jun-25,5,5,0%,383,OGAH Alima
    ER7581LT,W195,HRA DPCS Defueling Support,W195.25440,"LSR Data Export, Analysis, Draft Report",17-Jun-25,07-Jul-25,15,17-Jun-25,07-Jul-25,15,15,0%,1360,OGAH Alima
    W526LT,W526,HYB DPCS Defueling Support,W526.3210,HYB 2025 EDF Review,17-Jun-25,30-Jun-25,10,17-Jun-25,30-Jun-25,10,10,0%,1901,OGAH Alima
    W230LT,W230,HYB Enhanced Defueling Safety Case Strategy,W230.1100,HYB Enhanced Defueling Rate: Optioneering Complete (Outline Safety Case / ALARP Strategy),,16-Jan-25,0,,20-Jun-25,0,0,0%,71,OGAH Alima
    W234LT,W234,TOR Enhanced Defueling Safety Case Strategy,W234.1100,TOR Enhanced Defueling Rate: Optioneering Complete (Outline Safety Case / ALARP Strategy),,16-Jan-25,0,,20-Jun-25,0,0,0%,71,OGAH Alima
    ER6360LT,W085,REGION 1 Further Flasks in Readiness,W085.DS20630,Verify Testing and Approve Report (EDF),21-Nov-24,27-Nov-24,5,23-Jun-25,27-Jun-25,5,5,0%,0,OGAH Alima
    W230LT,W230,HYB Enhanced Defueling Safety Case Strategy,W230.2500,## HYB Low Decay Heat: A - D Phase Funding - (Cost Summary) ##,15-Nov-24,07-Apr-25,99,23-Jun-25,07-Nov-25,99,99,0%,113,OGAH Alima
    W230LT,W230,HYB Enhanced Defueling Safety Case Strategy,W230.2630,HYB Low Decay Heat: Strategy Development & Produce MF EC NNNNN & Obtain Approval,15-Nov-24,02-Dec-24,12,23-Jun-25,08-Jul-25,12,12,0%,12,OGAH Alima
    W234LT,W234,TOR Enhanced Defueling Safety Case Strategy,W234.2500,## TOR Low Decay Heat: A - D Phase Funding - (Cost Summary) ##,15-Nov-24,07-Apr-25,99,23-Jun-25,07-Nov-25,99,99,0%,113,OGAH Alima
    W234LT,W234,TOR Enhanced Defueling Safety Case Strategy,W234.2630,TOR Low Decay Heat: Strategy Development & Produce MF EC NNNNN & Obtain Approval,15-Nov-24,02-Dec-24,12,23-Jun-25,08-Jul-25,12,12,0%,12,OGAH Alima
    W157LT,W157,HYB Security,W157.2540,Issue of SPPI File and submit to ONR V1,24-Jun-25,30-Jun-25,5,24-Jun-25,30-Jun-25,5,5,0%,383,OGAH Alima
    W157LT,W157,HYB Security,W157.1960,Draft SPORs for all changes to existing and new SPP requiring revised or new mitigation measures V1,24-Jun-25,21-Jul-25,20,24-Jun-25,21-Jul-25,20,20,0%,293,OGAH Alima
    W159LT,W159,TOR Security,W159.2020,Undertake Site assessment of revised Flask Transfer/Storage arrangements,25-Jun-25,22-Jul-25,20,25-Jun-25*,22-Jul-25,20,20,0%,346,OGAH Alima
    ER6360LT,W085,REGION 1 Further Flasks in Readiness,W085.DS20640,Produce Flask LTQRs,28-Nov-24,11-Dec-24,10,30-Jun-25,11-Jul-25,10,10,0%,0,OGAH Alima
    ER6360LT,W085,REGION 1 Further Flasks in Readiness,W085.DS22690,Approve Flask LTQRs (Reduced Duration),21-Nov-24,04-Dec-24,10,30-Jun-25,11-Jul-25,10,10,0%,7,OGAH Alima
    ER7581LT,W195,HRA DPCS Defueling Support,W195.2090,HRA 2024 Installation R1,,30-Jun-25,0,,30-Jun-25,0,0,0%,1397,OGAH Alima
    W529LT,W529,TOR DPCS Defueling Support,W529.6320,TOR 2025 S13R2 - Go / No Go Decision,,30-Jun-25,0,,30-Jun-25,0,0,0%,1736,OGAH Alima
    ER7582LT,W196,HYA DPCS Defueling Support,W196.25420,HYA 2024  - Installation R1,,30-Jun-25,0,,30-Jun-25,0,0,0%,1397,OGAH Alima
 Subtotal,,,,,24-Oct-24,22-Jul-25,114,02-Jun-25,07-Nov-25,114,114,,1808,OGAH Alima
 01-Jul-25
    ER7580LT,W194,HPB DPCS Defueling Support,W194.2270,Thales Long Term Support Contract Q3 2025,01-Jul-25,30-Sep-25,65,01-Jul-25,30-Sep-25,65,65,0%,509,OGAH Alima
    ER7581LT,W195,HRA DPCS Defueling Support,W195.2280,Thales Long Term Support Contract Q3 2025,01-Jul-25,30-Sep-25,65,01-Jul-25,30-Sep-25,65,65,0%,1268,OGAH Alima
    ER7581LT,W195,HRA DPCS Defueling Support,W195.2650,Argus Support Contract 2025 - Jul Q3,01-Jul-25,30-Sep-25,65,01-Jul-25*,30-Sep-25,65,65,0%,1268,OGAH Alima
    ER7582LT,W196,HYA DPCS Defueling Support,W196.2290,Thales Long Term Support Contract Q3 2025,01-Jul-25,30-Sep-25,65,01-Jul-25,30-Sep-25,65,65,0%,1332,OGAH Alima
    ER7582LT,W196,HYA DPCS Defueling Support,W196.2610,Argus Support Contract - 2025 - Q3,01-Jul-25,30-Sep-25,65,01-Jul-25*,30-Sep-25,65,65,0%,1332,OGAH Alima
    ER7743LT,W527,DNB DPCS Defueling Support,W527.1595,Worldgrid Software Modification Support (LAMPS) - Q3 2025,01-Jul-25,30-Sep-25,65,01-Jul-25,30-Sep-25,65,65,0%,1585,OGAH Alima
    ER7743LT,W527,DNB DPCS Defueling Support,W527.1590,Worldgrid System Engineering Support (SQEP) Q3 2025,01-Jul-25,30-Sep-25,65,01-Jul-25*,30-Sep-25,65,65,0%,1585,OGAH Alima
    ER7743LT,W527,DNB DPCS Defueling Support,W527.1592,Worldgrid Long Term Support Contract Q3 2025,01-Jul-25,30-Sep-25,65,01-Jul-25,30-Sep-25,65,65,0%,1585,OGAH Alima
    ER7743LT,W527,DNB DPCS Defueling Support,W527.1594,Thales POLARIS & AIC Support Contract Q3 2025,01-Jul-25,30-Sep-25,65,01-Jul-25,30-Sep-25,65,65,0%,1585,OGAH Alima
    W529LT,W529,TOR DPCS Defueling Support,W529.1210,TOR Argus Support Contract Q3,01-Jul-25,30-Sep-25,65,01-Jul-25,30-Sep-25,65,65,0%,1777,OGAH Alima
    W529LT,W529,TOR DPCS Defueling Support,W529.1245,TOR Thales Long Term Support Contract Q3 2025 Delivery,01-Jul-25,30-Sep-25,65,01-Jul-25,30-Sep-25,65,65,0%,1777,OGAH Alima
    W526LT,W526,HYB DPCS Defueling Support,W526.1245,HYB Thales Long Term Support Contract Q3 2025,02-Jan-25,02-Apr-25,65,01-Jul-25,30-Sep-25,65,65,0%,1778,OGAH Alima
    W529LT,W529,TOR DPCS Defueling Support,W529.6330,TOR 2025 S13R2 - Specification,01-Jul-25,19-Sep-25,58,01-Jul-25,19-Sep-25,58,58,0%,1736,OGAH Alima
    W526LT,W526,HYB DPCS Defueling Support,W526.3220,HYB 2025 Update LSR,01-Jul-25,07-Jul-25,5,01-Jul-25,07-Jul-25,5,5,0%,1901,OGAH Alima
    ER7003LT,W160,HNB PSR4,W160.8010,HNB PSR4 Head Doc: PSR4 Safety Case - Submitted to ONR,,24-Jun-25,0,,01-Jul-25,0,0,0%,1,OGAH Alima
    ER7003LT,W160,HNB PSR4,W160.6040,HNB PSR4 Head Doc: ONR Approval of Safety Case (Letter sent to initiate) EC 374897 <Enter Paper Title Here> ==> KDM,25-Jun-25,25-Jun-26,80,02-Jul-25,22-Oct-25,80,80,0%,1,OGAH Alima
    ER7581LT,W195,HRA DPCS Defueling Support,W195.25140,TGN097 R2 - EDF Review,04-Jul-25,17-Jul-25,10,04-Jul-25,17-Jul-25,10,10,0%,1349,OGAH Alima
    ER7003LT,W160,HNB PSR4,W160.8310,>>>MIRROR OF INCOMING ENABLER (W198) - EC PDSC Approved (Station Approval),,22-Jan-25,0,,04-Jul-25*,0,0,0%,126,OGAH Alima
    ER7003LT,W160,HNB PSR4,W160.8300,>>>INCOMING ENABLER (W198) - EC PDSC Approved,,22-Jan-25,0,,04-Jul-25,0,0,0%,125,OGAH Alima
    ER7581LT,W195,HRA DPCS Defueling Support,W195.25450,Issue Recommendations,08-Jul-25,08-Jul-25,1,08-Jul-25,08-Jul-25,1,1,0%,1360,OGAH Alima
    W230LT,W230,HYB Enhanced Defueling Safety Case Strategy,W230.2640,HYB Low Decay Heat: Mod Requested and EC Request Raised and Screened,03-Dec-24,18-Dec-24,12,09-Jul-25,24-Jul-25,12,12,0%,12,OGAH Alima
    W234LT,W234,TOR Enhanced Defueling Safety Case Strategy,W234.2640,TOR Low Decay Heat: Mod Requested and EC Request Raised and Screened,03-Dec-24,18-Dec-24,12,09-Jul-25,24-Jul-25,12,12,0%,12,OGAH Alima
    W158LT,W158,DNB Security,W158.A1022,All Scope Delivered,,09-Jul-25,0,,09-Jul-25,0,0,0%,142,OGAH Alima
    W158LT,W158,DNB Security,W158.A10501600,Project Closed,,09-Jul-25,0,,09-Jul-25,0,0,0%,142,OGAH Alima
    ER7579LT,W193,HNB DPCS Defueling Support,W193.25360,Decommission Reference Rig,16-Jul-25,27-Aug-25,30,11-Jul-25,21-Aug-25,30,30,0%,31,OGAH Alima
    ER6360LT,W085,REGION 1 Further Flasks in Readiness,W085.A4630,All identified Spares Recovered & Remediation Works Complete,,04-Dec-24,0,,11-Jul-25,0,0,0%,7,OGAH Alima
    ER6360LT,W085,REGION 1 Further Flasks in Readiness,W085.M1040,Flask 11 - LTQR Approval,,04-Dec-24,0,,11-Jul-25,0,0,0%,7,OGAH Alima
    ER6360LT,W085,REGION 1 Further Flasks in Readiness,W085.A2410,Handover of Life Time Records for all Flasks & Spares,05-Dec-24,18-Dec-24,10,14-Jul-25,25-Jul-25,10,10,0%,7,OGAH Alima
    ER6360LT,W085,REGION 1 Further Flasks in Readiness,W085.DS20650,Approve Flask LTQRs,12-Dec-24,07-Jan-25,10,14-Jul-25,25-Jul-25,10,10,0%,0,OGAH Alima
    ER6360LT,W085,REGION 1 Further Flasks in Readiness,W085.A7280,Operational Handover with NDA and SL,03-Dec-24,02-Jan-25,20,15-Jul-25,11-Aug-25,20,20,0%,22,OGAH Alima
    ER7581LT,W195,HRA DPCS Defueling Support,W195.25460,Recommendations Workshop,15-Jul-25,15-Jul-25,1,15-Jul-25,15-Jul-25,1,1,0%,1360,OGAH Alima
    ER7581LT,W195,HRA DPCS Defueling Support,W195.25470,"LSR Update, Internal Review & Issue to EDF",16-Jul-25,29-Jul-25,10,16-Jul-25,29-Jul-25,10,10,0%,1360,OGAH Alima
    W157LT,W157,HYB Security,W157.10013,"Substantive D/SPPIF, SVAs and SPORs completion (awaiting final Safety Case Approval)",,21-Jul-25,0,,21-Jul-25,0,0,0%,368,OGAH Alima
    W157LT,W157,HYB Security,W157.2350,Issue SPORS V1,22-Jul-25,22-Jul-25,1,22-Jul-25,22-Jul-25,1,1,0%,362,OGAH Alima
    W157LT,W157,HYB Security,W157.2560,Optioneer potential revised or new mitigations,22-Jul-25,11-Aug-25,15,22-Jul-25,11-Aug-25,15,15,0%,293,OGAH Alima
    W157LT,W157,HYB Security,W157.3530,Review Prep for Defueling SPOR for Temporary And Permanent Mitigations,,22-Jul-25,0,,22-Jul-25,0,0,0%,367,OGAH Alima
    W157LT,W157,HYB Security,W157.3490,Review Prep for Defueling Revised SPOR for Temporary And Permanent Mitigations,,22-Jul-25,0,,22-Jul-25,0,0,0%,367,OGAH Alima
    W157LT,W157,HYB Security,W157.2360,>>> MIRROR INCOMING ENABLER W209 Review SPPI File Against ONR Approved Essential Defueling Safety Cases,,17-Feb-25,0,,22-Jul-25*,0,0,0%,231,OGAH Alima
    W157LT,W157,HYB Security,W157.3680,>>> INCOMING ENABLER W209 Review SPPI File Against ONR Approved Essential Defueling Safety Cases,,22-Jul-25,0,,22-Jul-25,0,0,0%,367,OGAH Alima
    W159LT,W159,TOR Security,W159.3680,>>> INCOMING ENABLER W213 Review SPPI File Against Approved Defuelling Essential Safety Cases,,22-Jul-25,0,,22-Jul-25,0,0,0%,387,OGAH Alima
    W157LT,W157,HYB Security,W157.2550,Review SPPI File V1 Aganist Approved Defuelling Safety case And submit To ONR,18-Feb-25,24-Feb-25,5,23-Jul-25,29-Jul-25,5,5,0%,232,OGAH Alima
    W157LT,W157,HYB Security,W157.2370,Review SPPI File Against Approved Essential Safety Cases,03-Jun-25,09-Jun-25,5,23-Jul-25,29-Jul-25,5,5,0%,231,OGAH Alima
    W157LT,W157,HYB Security,W157.2650,Update Site SRCL V1,23-Jul-25,29-Jul-25,5,23-Jul-25,29-Jul-25,5,5,0%,362,OGAH Alima
    W159LT,W159,TOR Security,W159.2040,Undertake Security Vulnerability Assessments of Off-site and On-site rail heads and potential storage areas,23-Jul-25,05-Aug-25,10,23-Jul-25,05-Aug-25,10,10,0%,346,OGAH Alima
    ER7743LT,W527,DNB DPCS Defueling Support,W527.25620,DNB 2025 2.9 - Installation R1,24-Jul-25,06-Aug-25,10,24-Jul-25,06-Aug-25,10,10,0%,1594,OGAH Alima
    W156LT,W156,HYA Security,W156.3230,Review and Update SPORS,27-Jun-25,27-Jun-25,1,25-Jul-25,25-Jul-25,1,1,0%,583,OGAH Alima
    W230LT,W230,HYB Enhanced Defueling Safety Case Strategy,W230.2590,HYB Low Decay Heat: Produce draft NSRS (using BARRIER MODEL),19-Dec-24,06-Jan-25,10,25-Jul-25,07-Aug-25,10,10,0%,12,OGAH Alima
    W234LT,W234,TOR Enhanced Defueling Safety Case Strategy,W234.2590,TOR Low Decay Heat: Produce draft NSRS (using BARRIER MODEL),19-Dec-24,06-Jan-25,10,25-Jul-25,07-Aug-25,10,10,0%,12,OGAH Alima
    ER6360LT,W085,REGION 1 Further Flasks in Readiness,W085.A4700,Handover of Life Time Records for all Flasks & Spares Complete,,18-Dec-24,0,,25-Jul-25,0,0,0%,7,OGAH Alima
    ER6360LT,W085,REGION 1 Further Flasks in Readiness,W085.A6440,Final Acceptance of flasks by EDF (HOLD POINT - ONR MOD),19-Dec-24,27-Dec-24,5,28-Jul-25,01-Aug-25,5,5,0%,9,OGAH Alima
    ER6360LT,W085,REGION 1 Further Flasks in Readiness,W085.DS25000,Flask 9 - Flask Licensing Prepare Cat C Mod,08-Jan-25,14-Jan-25,5,28-Jul-25,01-Aug-25,5,5,0%,0,OGAH Alima
    W156LT,W156,HYA Security,W156.3240,Issue revised SPORS,30-Jun-25,30-Jun-25,1,28-Jul-25,28-Jul-25,1,1,0%,583,OGAH Alima
    ER6360LT,W085,REGION 1 Further Flasks in Readiness,W085.A1440,Gate D PRC Paper Preparation [FEEDS TO SUMMARY SCHEDULE],19-Dec-24,03-Feb-25,10,29-Jul-25,11-Aug-25,10,10,0%,6,OGAH Alima
    W156LT,W156,HYA Security,W156.3250,Incoporate New Mitigations,01-Jul-25,01-Jul-25,1,29-Jul-25,29-Jul-25,1,1,0%,583,OGAH Alima
    W156LT,W156,HYA Security,W156.3300,Prep for Off Site Transport All Security Issues Considered & Addressed,,01-Jul-25,0,,29-Jul-25,0,0,0%,583,OGAH Alima
    W157LT,W157,HYB Security,W157.2410,Review SVAs (Final),10-Jun-25,16-Jun-25,5,30-Jul-25,05-Aug-25,5,5,0%,351,OGAH Alima
    W157LT,W157,HYB Security,W157.2440,Submit Final Defuelling SPPI File to ONR,10-Jun-25,10-Jun-25,1,30-Jul-25,30-Jul-25,1,1,0%,231,OGAH Alima
    W157LT,W157,HYB Security,W157.2490,Draft DNSSP And Sumit To ONR,10-Jun-25,16-Jun-25,5,30-Jul-25,05-Aug-25,5,5,0%,347,OGAH Alima
    ER7581LT,W195,HRA DPCS Defueling Support,W195.25480,EDF Review,30-Jul-25,12-Aug-25,10,30-Jul-25,12-Aug-25,10,10,0%,1360,OGAH Alima
    W157LT,W157,HYB Security,W157.3480,HYB Prep for Defueling Security Protected Plant Identification (SPPI) Submit to ONR,,10-Jun-25,0,,30-Jul-25,0,0,0%,361,OGAH Alima
    W157LT,W157,HYB Security,W157.3630,ONR acknowledgement of SPPI File Final,11-Jun-25,08-Jul-25,20,31-Jul-25,28-Aug-25,20,20,0%,231,OGAH Alima
    W730LT_UN,W730,HYB Enhanced Defueling Safety Cases,W730.3720,HYB Enhanced Defueling Rate:  PSA Modeling Verification,31-Jul-25,06-Aug-25,5,31-Jul-25,06-Aug-25,5,5,0%,11,OGAH Alima
    W731LT_UN,W731,TOR Enhanced Defueling Safety Cases,W731.1310,TOR Enhanced Defueling Rate:  PSA Modeling Verification,31-Jul-25,06-Aug-25,5,31-Jul-25,06-Aug-25,5,5,0%,11,OGAH Alima
 Subtotal,,,,,03-Dec-24,25-Jun-26,81,01-Jul-25,22-Oct-25,81,81,,1825,OGAH Alima
 01-Aug-25
    W529LT,W529,TOR DPCS Defueling Support,W529.7570,TGN097 R2 - Inspection,01-Aug-25,07-Aug-25,5,01-Aug-25,07-Aug-25,5,5,0%,1857,OGAH Alima
    ER6360LT,W085,REGION 1 Further Flasks in Readiness,W085.A7250,Flasks Available for Collection,,27-Dec-24,0,,01-Aug-25,0,0,0%,9,OGAH Alima
    ER6360LT,W085,REGION 1 Further Flasks in Readiness,W085.DS25260,Flask 9 - Flask Licensing Verification Cat C Mod,15-Jan-25,23-Jan-25,5,04-Aug-25,12-Aug-25,7,7,0%,0,OGAH Alima
    ER7003LT,W160,HNB PSR4,W160.9620,Assessment of PSR3 Extension EC Requirement,,,0,04-Aug-25*,,0,0,0%,-248,OGAH Alima
    ER7003LT,W160,HNB PSR4,W160.9630,HNB PSR3 Extension EC: Review NSRS for Completeness,,,1,04-Aug-25,04-Aug-25,1,1,0%,-248,OGAH Alima
    ER7514LT,W161,HPB PSR4,W161.9610,Assessment of PSR3 Extension EC Requirement,,,0,04-Aug-25*,,0,0,0%,-252,OGAH Alima
    ER7514LT,W161,HPB PSR4,W161.9620,HPB PSR3 Extension EC: Review NSRS for Completeness,,,1,04-Aug-25,04-Aug-25,1,1,0%,-252,OGAH Alima
    ER7003LT,W160,HNB PSR4,W160.9640,HNB PSR3 Extension EC: Author Up-Rev of PSR3 Extension EC,,,10,05-Aug-25,18-Aug-25,10,10,0%,-248,OGAH Alima
    ER7514LT,W161,HPB PSR4,W161.9630,HPB PSR3 Extension EC: Author Up-Rev of PSR3 Extension EC,,,10,05-Aug-25,18-Aug-25,10,10,0%,-252,OGAH Alima
    W157LT,W157,HYB Security,W157.2420,Review SPORs (Final),17-Jun-25,23-Jun-25,5,06-Aug-25,12-Aug-25,5,5,0%,351,OGAH Alima
    W159LT,W159,TOR Security,W159.1990,Undertake assessment of potential impacts on existing TSS/TSP in respect of increased Flask movements,06-Aug-25,19-Aug-25,10,06-Aug-25*,19-Aug-25,10,10,0%,346,OGAH Alima
    ER7743LT,W527,DNB DPCS Defueling Support,W527.25830,DNB 2025 2.9 - Installation R21,,06-Aug-25,0,,06-Aug-25,0,0,0%,1623,OGAH Alima
    ER6360LT,W085,REGION 1 Further Flasks in Readiness,W085.A6210,Flask Collection from contractor / Delivery to Storage Location / Final Handover to EDF,30-Dec-24,02-Jan-25,3,07-Aug-25,11-Aug-25,3,3,0%,6,OGAH Alima
    ER6360LT,W085,REGION 1 Further Flasks in Readiness,W085.A4430,Gate C-D Flask Storage - Cost Summary,30-Dec-24,02-May-25,24,07-Aug-25,04-Sep-25,20,20,0%,6,OGAH Alima
    W730LT_UN,W730,HYB Enhanced Defueling Safety Cases,W730.3730,HYB Enhanced Defueling Rate: PSA Modeling Technical Review,07-Aug-25,13-Aug-25,5,07-Aug-25,13-Aug-25,5,5,0%,11,OGAH Alima
    W731LT_UN,W731,TOR Enhanced Defueling Safety Cases,W731.1320,TOR Enhanced Defueling Rate: PSA Modeling Technical Review,07-Aug-25,13-Aug-25,5,07-Aug-25,13-Aug-25,5,5,0%,11,OGAH Alima
    W529LT,W529,TOR DPCS Defueling Support,W529.7580,"TGN097 R2 - Draft Report Produced, Internal Review and Issue to EDF",08-Aug-25,21-Aug-25,10,08-Aug-25,21-Aug-25,10,10,0%,1857,OGAH Alima
    W230LT,W230,HYB Enhanced Defueling Safety Case Strategy,W230.2650,HYB Low Decay Heat: Hold Case Conference / Optioneering Strategy Workshop as Appropriate,07-Jan-25,13-Jan-25,5,08-Aug-25,14-Aug-25,5,5,0%,12,OGAH Alima
    W234LT,W234,TOR Enhanced Defueling Safety Case Strategy,W234.2650,TOR Low Decay Heat: Hold Case Conference / Optioneering Strategy Workshop as Appropriate,07-Jan-25,13-Jan-25,5,08-Aug-25,14-Aug-25,5,5,0%,12,OGAH Alima
    ER6360LT,W085,REGION 1 Further Flasks in Readiness,W085.A2370,WOLF Assumptions Reviewed,,03-Feb-25,0,,11-Aug-25,0,0,0%,21,OGAH Alima
    ER6360LT,W085,REGION 1 Further Flasks in Readiness,W085.1210,Flasks Delivered to Storage Location,,02-Jan-25,0,,11-Aug-25,0,0,0%,6,OGAH Alima
    ER6360LT,W085,REGION 1 Further Flasks in Readiness,W085.A1450,Internal L&T Review,04-Feb-25,30-Apr-25,1,12-Aug-25,02-Sep-25,15,15,0%,6,OGAH Alima
    W157LT,W157,HYB Security,W157.2710,"Review and Agree Security Changes and MSI Category (INA, SPB, NSC)",12-Aug-25,23-Sep-25,30,12-Aug-25,23-Sep-25,30,30,0%,323,OGAH Alima
    W157LT,W157,HYB Security,W157.2570,Complete MSI process,12-Aug-25,23-Sep-25,30,12-Aug-25,23-Sep-25,30,30,0%,293,OGAH Alima
    ER7514LT,W161,HPB PSR4,W161.8410,>>>MIRROR OF INCOMING ENABLER (W404) - Radwaste Technical Report,,07-Nov-24,0,,12-Aug-25*,0,0,0%,-54,OGAH Alima
    ER7514LT,W161,HPB PSR4,W161.8430,>>>MIRROR OF INCOMING ENABLER (W404) - P&S Technical Report,,11-Sep-24,0,,12-Aug-25*,0,0,0%,-54,OGAH Alima
    ER7514LT,W161,HPB PSR4,W161.9260,PDSC - Radwaste Technical Report,,07-Nov-24,0,,12-Aug-25,0,0,0%,-54,OGAH Alima
    ER7514LT,W161,HPB PSR4,W161.9270,PDSC - P&S Technical Report,,11-Sep-24,0,,12-Aug-25,0,0,0%,-54,OGAH Alima
    W157LT,W157,HYB Security,W157.11,Issue of SPOR - SPPI File for Prep of Defueling,,22-Jul-25,0,,12-Aug-25,0,0,0%,352,OGAH Alima
    ER7514LT,W161,HPB PSR4,W161.8400,>>>INCOMING ENABLER (W404) - Radwaste Technical Report,,07-Nov-24,0,,12-Aug-25,0,0,0%,352,OGAH Alima
    ER7514LT,W161,HPB PSR4,W161.8420,>>>INCOMING ENABLER (W404) - P&S Technical Report,,11-Sep-24,0,,12-Aug-25,0,0,0%,352,OGAH Alima
    ER6360LT,W085,REGION 1 Further Flasks in Readiness,W085.DS25270,Flask 9 - Flask Licensing CO Review Cat C Mod,24-Jan-25,04-Feb-25,5,13-Aug-25,22-Aug-25,8,8,0%,0,OGAH Alima
    W157LT,W157,HYB Security,W157.2430,Update SRCL (Final),24-Jun-25,24-Jun-25,1,13-Aug-25,13-Aug-25,1,1,0%,351,OGAH Alima
    ER7581LT,W195,HRA DPCS Defueling Support,W195.25490,Update LSR,13-Aug-25,19-Aug-25,5,13-Aug-25,19-Aug-25,5,5,0%,1360,OGAH Alima
    W157LT,W157,HYB Security,W157.3670,HYB Security Regulatory Commitment Log (SRCL) Submit to ONR,,24-Jun-25,0,,13-Aug-25,0,0,0%,351,OGAH Alima
    W730LT_UN,W730,HYB Enhanced Defueling Safety Cases,W730.3740,HYB Enhanced Defueling Rate: PSA Modeling Issued/ Approval,,13-Aug-25,0,,13-Aug-25,0,0,0%,11,OGAH Alima
    W731LT_UN,W731,TOR Enhanced Defueling Safety Cases,W731.1330,TOR Enhanced Defueling Rate: PSA Modeling Issued/ Approval,,13-Aug-25,0,,13-Aug-25,0,0,0%,11,OGAH Alima
    W730LT_UN,W730,HYB Enhanced Defueling Safety Cases,W730.3750,HYB Enhanced Defueling Rate: PSA Modeling Production Risk (Risk ID 42008),14-Aug-25,11-Sep-25,20,14-Aug-25,11-Sep-25,20,20,0%,11,OGAH Alima
    W731LT_UN,W731,TOR Enhanced Defueling Safety Cases,W731.1340,TOR Enhanced Defueling Rate: PSA Modeling Production Risk (Risk ID 42008),14-Aug-25,11-Sep-25,20,14-Aug-25,11-Sep-25,20,20,0%,11,OGAH Alima
    W230LT,W230,HYB Enhanced Defueling Safety Case Strategy,W230.2580,HYB Low Decay Heat: Station comments on NSRS,14-Jan-25,27-Jan-25,10,15-Aug-25,29-Aug-25,10,10,0%,12,OGAH Alima
    W230LT,W230,HYB Enhanced Defueling Safety Case Strategy,W230.2670,HYB Low Decay Heat: DA (Peer) Comments on NSRS,14-Jan-25,27-Jan-25,10,15-Aug-25,29-Aug-25,10,10,0%,12,OGAH Alima
    W234LT,W234,TOR Enhanced Defueling Safety Case Strategy,W234.2580,TOR Low Decay Heat: Station comments on NSRS,14-Jan-25,27-Jan-25,10,15-Aug-25,29-Aug-25,10,10,0%,12,OGAH Alima
    W234LT,W234,TOR Enhanced Defueling Safety Case Strategy,W234.2670,TOR Low Decay Heat: DA (Peer) Comments on NSRS,14-Jan-25,27-Jan-25,10,15-Aug-25,29-Aug-25,10,10,0%,12,OGAH Alima
    ER7514LT,W161,HPB PSR4,W161.8700,HPB PSR3 Extension EC: Verification of the Submission (using BARRIER MODEL),04-Jul-24,31-Jul-24,10,19-Aug-25,02-Sep-25,10,10,0%,-252,OGAH Alima
    ER7514LT,W161,HPB PSR4,W161.8970,HPB PSR3 Extension EC: Issue Document to NRS for comment,08-Aug-24,14-Aug-24,5,19-Aug-25,26-Aug-25,5,5,0%,-243,OGAH Alima
    ER7003LT,W160,HNB PSR4,W160.9470,## HNB PSR3 Extension EC: Key Stakeholders Engagement - Cost Summary ##,08-Aug-24,20-Sep-24,31,19-Aug-25,01-Oct-25,31,31,0%,-248,OGAH Alima
    ER7003LT,W160,HNB PSR4,W160.8970,HNB PSR3 Extension EC: Issue Document to NRS for comment,08-Aug-24,14-Aug-24,5,19-Aug-25,26-Aug-25,5,5,0%,-248,OGAH Alima
    ER7003LT,W160,HNB PSR4,W160.8700,HNB PSR3 Extension EC: Verification of the Submission (using BARRIER MODEL),04-Jul-24,31-Jul-24,5,19-Aug-25,26-Aug-25,5,5,0%,-248,OGAH Alima
    W159LT,W159,TOR Security,W159.3300,Prep for Off Site Transport All Security Issues Considered & Addressed,,19-Aug-25,0,,19-Aug-25,0,0,0%,367,OGAH Alima
    W159LT,W159,TOR Security,W159.3500,Review TSS/TSP For New Temporary or Permanent Mitigations,,19-Aug-25,0,,19-Aug-25,0,0,0%,367,OGAH Alima
    W159LT,W159,TOR Security,W159.2000,Submit Revised TSS/TSP To ONR,20-Aug-25,20-Aug-25,1,20-Aug-25,20-Aug-25,1,1,0%,346,OGAH Alima
    ER7581LT,W195,HRA DPCS Defueling Support,W195.25500,Issue Complete LSR,20-Aug-25,20-Aug-25,1,20-Aug-25,20-Aug-25,1,1,0%,1360,OGAH Alima
    ER7581LT,W195,HRA DPCS Defueling Support,W195.25560,HRA 2025 Issue Complete LSR,,20-Aug-25,0,,20-Aug-25,0,0,0%,1360,OGAH Alima
    W159LT,W159,TOR Security,W159.2010,ONR Approval Of Revised TSS/TSP,21-Aug-25,18-Sep-25,20,21-Aug-25,18-Sep-25,20,20,0%,346,OGAH Alima
    ER7581LT,W195,HRA DPCS Defueling Support,W195.25130,TGN097 R2 - Report Issue,22-Aug-25,05-Sep-25,10,22-Aug-25,05-Sep-25,10,10,0%,1349,OGAH Alima
    W529LT,W529,TOR DPCS Defueling Support,W529.7590,TGN097 R2 - EDF Review,22-Aug-25,05-Sep-25,10,22-Aug-25,05-Sep-25,10,10,0%,1857,OGAH Alima
    ER7579LT,W193,HNB DPCS Defueling Support,W193.25370,Redistribute Assets,28-Aug-25,08-Oct-25,30,22-Aug-25,03-Oct-25,30,30,0%,31,OGAH Alima
    ER6360LT,W085,REGION 1 Further Flasks in Readiness,W085.DS25010,Flask 9 - Flask Licensing INA Approval of Cat C,05-Feb-25,18-Feb-25,10,26-Aug-25,08-Sep-25,10,10,0%,0,OGAH Alima
    ER7003LT,W160,HNB PSR4,W160.8640,"HNB PSR3 Extension EC: Issue to CO, INSA & Station for comments",,31-Jul-24,0,,26-Aug-25,0,0,0%,-244,OGAH Alima
    ER7514LT,W161,HPB PSR4,W161.8980,HPB PSR3 Extension EC: NRS Comments,15-Aug-24,21-Aug-24,5,27-Aug-25,02-Sep-25,5,5,0%,-243,OGAH Alima
    ER7003LT,W160,HNB PSR4,W160.8980,HNB PSR3 Extension EC: NRS Comments,15-Aug-24,21-Aug-24,5,27-Aug-25,02-Sep-25,5,5,0%,-248,OGAH Alima
    ER7003LT,W160,HNB PSR4,W160.8720,HNB PSR3 Extension EC: Address Verifier Comments,01-Aug-24,07-Aug-24,2,27-Aug-25,28-Aug-25,2,2,0%,-244,OGAH Alima
    ER7003LT,W160,HNB PSR4,W160.9120,HNB PSR3 Extension EC: Verification Complete/ Verified Draft A Issued for INSA (T-7)  EC 375144,,07-Aug-24,0,,28-Aug-25,0,0,0%,-224,OGAH Alima
    ER7003LT,W160,HNB PSR4,W160.9060,HNB PSR3 Extension EC: Verification Complete/ Verified Draft A Issued for INSA (T-7)  EC 375144,,07-Aug-24,0,,28-Aug-25,0,0,0%,-224,OGAH Alima
    ER7003LT,W160,HNB PSR4,W160.8660,HNB PSR3 Extension EC: Submit for approval - Categoriser ratifies; RE/CO endorsement ==> KDM,,07-Aug-24,0,,28-Aug-25,0,0,0%,-224,OGAH Alima
    ER7003LT,W160,HNB PSR4,W160.8580,HNB PSR3 Extension EC: Verification Complete,,07-Aug-24,0,,28-Aug-25,0,0,0%,-244,OGAH Alima
    W157LT,W157,HYB Security,W157.24500,Sign Station Defuelling QP- Ready to Implement Defuelling Security Regime,09-Jul-25,05-Aug-25,20,29-Aug-25,25-Sep-25,20,20,0%,231,OGAH Alima
    W157LT,W157,HYB Security,W157.2500,ONR Approval of Draft DNSSP,09-Jul-25,22-Jul-25,10,29-Aug-25,11-Sep-25,10,10,0%,331,OGAH Alima
    ER7514LT,W161,HPB PSR4,W161.5840,HPB PSR4 Head Doc: Safety Case Paper Authoring Complete EC 374795,,26-Feb-25,0,,29-Aug-25,0,0,0%,-53,OGAH Alima
    ER7514LT,W161,HPB PSR4,W161.5740,HPB PSR4 Head Doc: All Supporting References Approved and Issued,,26-Feb-25,0,,29-Aug-25,0,0,0%,-66,OGAH Alima
    ER7514LT,W161,HPB PSR4,W161.8120,HPB PSR4 Head Doc: All Key Supporting References Appoved and Issued,,26-Feb-25,0,,29-Aug-25,0,0,0%,-66,OGAH Alima
    ER7514LT,W161,HPB PSR4,W161.8180,HPB PSR Head Doc: Upload Submission Proposal to AMS,26-Feb-25,04-Mar-25,5,29-Aug-25,04-Sep-25,5,5,0%,-66,OGAH Alima
    ER7514LT,W161,HPB PSR4,W161.8470,>>>MIRROR OF INCOMING ENABLER (W404) - EC PDSC Proposal Ready for Review,,26-Feb-25,0,,29-Aug-25*,0,0,0%,-66,OGAH Alima
    ER7514LT,W161,HPB PSR4,W161.9290,PDSC - EC PDSC Proposal Ready for Review,,26-Feb-25,0,,29-Aug-25,0,0,0%,-66,OGAH Alima
    ER7003LT,W160,HNB PSR4,W160.9490,## HNB PSR3 Extension EC: Clearances and Closeout - Cost Summary ##,08-Aug-24,22-May-25,83,29-Aug-25,23-Dec-25,83,83,0%,4,OGAH Alima
    ER7003LT,W160,HNB PSR4,W160.8620,HNB PSR3 Extension EC: Prepare Station Director's Brief,08-Aug-24,14-Aug-24,5,29-Aug-25,04-Sep-25,5,5,0%,67,OGAH Alima
    ER7514LT,W161,HPB PSR4,W161.8460,>>>INCOMING ENABLER (W404) - EC PDSC Proposal Ready for Review,,27-Feb-25,0,,29-Aug-25,0,0,0%,340,OGAH Alima
 Subtotal,,,,,04-Jul-24,08-Oct-25,102,01-Aug-25,23-Dec-25,102,102,,1780,OGAH Alima
 01-Sep-25
    W155LT,W155,HRA Security,W155.3220,Final ONR review of D/SPPI,03-Feb-25,07-Feb-25,60,01-Sep-25*,21-Nov-25,60,60,0%,280,OGAH Alima
    W155LT,W155,HRA Security,W155.3330,Draft DNSSP And Sumbit To ONR,29-Jan-25,11-Feb-25,80,01-Sep-25*,19-Dec-25,80,80,0%,225,OGAH Alima
    W156LT,W156,HYA Security,W156.3120,Draft DNSSP,10-Feb-25,07-Mar-25,80,01-Sep-25*,19-Dec-25,80,80,0%,466,OGAH Alima
    W230LT,W230,HYB Enhanced Defueling Safety Case Strategy,W230.2540,HYB Low Decay Heat: INA comments on NSRS,28-Jan-25,10-Feb-25,10,01-Sep-25,12-Sep-25,10,10,0%,12,OGAH Alima
    W234LT,W234,TOR Enhanced Defueling Safety Case Strategy,W234.2540,TOR Low Decay Heat: INA comments on NSRS,28-Jan-25,10-Feb-25,10,01-Sep-25,12-Sep-25,10,10,0%,12,OGAH Alima
    W157LT,W157,HYB Security,W157.1980,Draft Site specific Flask Transport Impact initial assessment template,02-Sep-25,02-Sep-25,1,02-Sep-25*,02-Sep-25,1,1,0%,297,OGAH Alima
    ER7514LT,W161,HPB PSR4,W161.8640,"HPB PSR3 Extension EC: Issue to CO, INSA & Station for comments",,31-Jul-24,0,,02-Sep-25,0,0,0%,-252,OGAH Alima
    ER6360LT,W085,REGION 1 Further Flasks in Readiness,W085.A1460,Gate D PRC Paper Submission,01-May-25,01-May-25,1,03-Sep-25,03-Sep-25,1,1,0%,6,OGAH Alima
    W157LT,W157,HYB Security,W157.2020,Undertake Site assessment of revised Flask Transfer/Storage arrangements,03-Sep-25,30-Sep-25,20,03-Sep-25,30-Sep-25,20,20,0%,297,OGAH Alima
    W157LT,W157,HYB Security,W157.1990,Undertake assessment of potential impacts on existing TSS/TSP in respect of increased Flask movements,03-Sep-25,28-Oct-25,40,03-Sep-25*,28-Oct-25,40,40,0%,298,OGAH Alima
    ER7514LT,W161,HPB PSR4,W161.8720,HPB PSR3 Extension EC: Address Verifier Comments,01-Aug-24,07-Aug-24,5,03-Sep-25,09-Sep-25,5,5,0%,-252,OGAH Alima
    ER7514LT,W161,HPB PSR4,W161.8990,HPB PSR3 Extension EC: NRS Comments Addressed,22-Aug-24,29-Aug-24,5,03-Sep-25,09-Sep-25,5,5,0%,-243,OGAH Alima
    ER7003LT,W160,HNB PSR4,W160.8990,HNB PSR3 Extension EC: NRS Comments Addressed,22-Aug-24,29-Aug-24,5,03-Sep-25,09-Sep-25,5,5,0%,-248,OGAH Alima
    ER6360LT,W085,REGION 1 Further Flasks in Readiness,W085.A1470,Gate D PRC Review,01-May-25,02-May-25,1,03-Sep-25,04-Sep-25,1,1,0%,6,OGAH Alima
    ER6360LT,W085,REGION 1 Further Flasks in Readiness,W085.DS25020,Flask 9 - Prepare Transport Paperwork,14-Feb-25,20-Feb-25,5,04-Sep-25,10-Sep-25,5,5,0%,0,OGAH Alima
    ER7743LT,W527,DNB DPCS Defueling Support,W527.25630,DNB 2025 2.9 - Installation R2,04-Sep-25,17-Sep-25,10,04-Sep-25,17-Sep-25,10,10,0%,1594,OGAH Alima
    ER6360LT,W085,REGION 1 Further Flasks in Readiness,W085.A1500,Approve Refurbishment Report,,02-May-25,0,,04-Sep-25,0,0,0%,6,OGAH Alima
    ER6360LT,W085,REGION 1 Further Flasks in Readiness,W085.1810,Gate D PRC Approval,,02-May-25,0,,04-Sep-25,0,0,0%,6,OGAH Alima
    ER7514LT,W161,HPB PSR4,W161.5810,HPB PSR4 Head Doc: Produce and Approve Verification Plan,05-Mar-25,11-Mar-25,5,05-Sep-25,11-Sep-25,5,5,0%,-66,OGAH Alima
    ER7581LT,W195,HRA DPCS Defueling Support,W195.25580,HRA 2025 TGN097 R2 - Report Issue,,05-Sep-25,0,,05-Sep-25,0,0,0%,1349,OGAH Alima
    W529LT,W529,TOR DPCS Defueling Support,W529.7600,TGN097 R2 - Update and Issue Report,08-Sep-25,08-Sep-25,1,08-Sep-25,08-Sep-25,1,1,0%,1857,OGAH Alima
    W529LT,W529,TOR DPCS Defueling Support,W529.5100,TOR 2025 R2 TGN097 Inspection Complete,,08-Sep-25,0,,08-Sep-25,0,0,0%,1857,OGAH Alima
    ER6360LT,W085,REGION 1 Further Flasks in Readiness,W085.M1020,Flask 9 - INA Approval,,18-Feb-25,0,,08-Sep-25,0,0,0%,3,OGAH Alima
    ER6360LT,W085,REGION 1 Further Flasks in Readiness,W085.1310,7 FFiR Flasks Refurbished and Available for Service,,,0,,08-Sep-25,0,0,0%,3,OGAH Alima
    ER7514LT,W161,HPB PSR4,W161.8580,HPB PSR3 Extension EC: Verification Complete,,07-Aug-24,0,,09-Sep-25,0,0,0%,-252,OGAH Alima
    ER7514LT,W161,HPB PSR4,W161.8660,HPB PSR3 Extension EC: Submit for approval - Categoriser ratifies; RE/CO endorsement ==> KDM,,07-Aug-24,0,,09-Sep-25,0,0,0%,-252,OGAH Alima
    ER7514LT,W161,HPB PSR4,W161.9060,HPB PSR3 Extension EC: Verification Complete/ Verified Draft A Issued for INSA (T-7)  EC 374794,,07-Aug-24,0,,09-Sep-25,0,0,0%,-232,OGAH Alima
    ER7514LT,W161,HPB PSR4,W161.9120,HPB PSR3 Extension EC: Verification Complete/ Verified Draft A Issued for INSA (T-7)  EC 374794,,07-Aug-24,0,,09-Sep-25,0,0,0%,-252,OGAH Alima
    ER7581LT,W195,HRA DPCS Defueling Support,W195.25590,HRA 2024  - Installation R2,10-Sep-25,30-Sep-25,15,10-Sep-25*,30-Sep-25,15,15,0%,1332,OGAH Alima
    ER7582LT,W196,HYA DPCS Defueling Support,W196.25410,HYA 2024  - Installation R2,10-Sep-25,30-Sep-25,15,10-Sep-25*,30-Sep-25,15,15,0%,1332,OGAH Alima
    ER7514LT,W161,HPB PSR4,W161.8620,HPB PSR3 Extension EC: Prepare Station Director's Brief,08-Aug-24,14-Aug-24,5,10-Sep-25,16-Sep-25,5,5,0%,212,OGAH Alima
    ER7514LT,W161,HPB PSR4,W161.9010,HPB PSR3 Extension EC: Issue for PRWG (Allow 5d),06-Sep-24,12-Sep-24,5,10-Sep-25,16-Sep-25,5,5,0%,-243,OGAH Alima
    ER7514LT,W161,HPB PSR4,W161.9490,## HPB PSR3 Extension EC: Clearances and Closeout - Cost Summary ##,08-Aug-24,22-May-25,176,10-Sep-25,21-May-26,176,176,0%,157,OGAH Alima
    ER7003LT,W160,HNB PSR4,W160.9000,HNB PSR3 Extension EC: TR Complete,30-Aug-24,05-Sep-24,5,10-Sep-25,16-Sep-25,5,5,0%,-248,OGAH Alima
    ER6360LT,W085,REGION 1 Further Flasks in Readiness,W085.DS25030,Flask 9 - Transport Flask to HNB,21-Feb-25,21-Feb-25,1,11-Sep-25,11-Sep-25,1,1,0%,0,OGAH Alima
    W157LT,W157,HYB Security,W157.2670,ONR acknowledgement of proposed delivery model (ONR Approval of DNSSP),,22-Jul-25,0,,11-Sep-25,0,0,0%,331,OGAH Alima
    W730LT_UN,W730,HYB Enhanced Defueling Safety Cases,W730.4200,HYB Enhanced Defueling Rate: Discovery Milestone - HF Scope Review of New Significant HBSC,,11-Sep-25,0,,11-Sep-25,0,0,0%,647,OGAH Alima
    W731LT_UN,W731,TOR Enhanced Defueling Safety Cases,W730.1000,TOR Enhanced Defueling Rate: Discovery Milestone - HF Scope Review of New Significant HBSC,,11-Sep-25,0,,11-Sep-25,0,0,0%,647,OGAH Alima
    ER7514LT,W161,HPB PSR4,W161.8190,HPB PSR4 Head Doc: PJB Verifier,12-Mar-25,18-Mar-25,3,12-Sep-25,16-Sep-25,3,3,0%,-66,OGAH Alima
    ER7514LT,W161,HPB PSR4,W161.9370,## HPB PSR4 Head Doc: Verification - Cost Summary ##,12-Mar-25,17-Jun-25,41,12-Sep-25,07-Nov-25,41,41,0%,-58,OGAH Alima
    W730LT_UN,W730,HYB Enhanced Defueling Safety Cases,W730.3760,HYB Enhanced Defueling Rate: PSA Main Summary Report Authroing,12-Sep-25,02-Oct-25,15,12-Sep-25,02-Oct-25,15,15,0%,11,OGAH Alima
    W731LT_UN,W731,TOR Enhanced Defueling Safety Cases,W731.1350,TOR Enhanced Defueling Rate: PSA Main Summary Report Authroing,12-Sep-25,02-Oct-25,15,12-Sep-25,02-Oct-25,15,15,0%,11,OGAH Alima
    W230LT,W230,HYB Enhanced Defueling Safety Case Strategy,W230.2600,HYB Low Decay Heat: Register EC and identify Milestones in AMS  EC NNNNNN,11-Feb-25,11-Feb-25,1,15-Sep-25,15-Sep-25,1,1,0%,12,OGAH Alima
    W234LT,W234,TOR Enhanced Defueling Safety Case Strategy,W234.2600,TOR Low Decay Heat: Register EC and identify Milestones in AMS  EC NNNNNN,11-Feb-25,11-Feb-25,1,15-Sep-25,15-Sep-25,1,1,0%,12,OGAH Alima
    W230LT,W230,HYB Enhanced Defueling Safety Case Strategy,W230.2610,HYB Low Decay Heat: Update NSRS to address comments,12-Feb-25,12-Feb-25,1,16-Sep-25,16-Sep-25,1,1,0%,12,OGAH Alima
    W234LT,W234,TOR Enhanced Defueling Safety Case Strategy,W234.2610,TOR Low Decay Heat: Update NSRS to address comments,12-Feb-25,12-Feb-25,1,16-Sep-25,16-Sep-25,1,1,0%,12,OGAH Alima
    ER7514LT,W161,HPB PSR4,W161.5860,HPB PSR4 Head Doc:Verification Commenced (T-11),,18-Mar-25,0,,16-Sep-25,0,0,0%,-66,OGAH Alima
    ER7514LT,W161,HPB PSR4,W161.5870,HPB PSR4 Head Doc:Verification of the Submission (using BARRIER MODEL),19-Mar-25,24-Apr-25,20,17-Sep-25,14-Oct-25,20,20,0%,-66,OGAH Alima
    ER7514LT,W161,HPB PSR4,W161.9020,HPB PSR3 Extension EC: PRWG Meeting for Head Doc,13-Sep-24,13-Sep-24,1,17-Sep-25,17-Sep-25,1,1,0%,-243,OGAH Alima
    W230LT,W230,HYB Enhanced Defueling Safety Case Strategy,W230.2880,HYB Low Decay Heat: Risk Ref 38976 TBC - NSRS Production,13-Feb-25,19-Feb-25,5,17-Sep-25,23-Sep-25,5,5,0%,12,OGAH Alima
    ER7003LT,W160,HNB PSR4,W160.9010,HNB PSR3 Extension EC: Issue for PRWG (Allow 5d),06-Sep-24,12-Sep-24,5,17-Sep-25,23-Sep-25,5,5,0%,-248,OGAH Alima
    W234LT,W234,TOR Enhanced Defueling Safety Case Strategy,W234.2880,TOR Low Decay Heat: Risk Ref 38976 TBC - NSRS Production,13-Feb-25,19-Feb-25,5,17-Sep-25,23-Sep-25,5,5,0%,12,OGAH Alima
    ER7743LT,W527,DNB DPCS Defueling Support,W527.25840,DNB 2025 2.9 - Installation R22,,17-Sep-25,0,,17-Sep-25,0,0,0%,1594,OGAH Alima
    ER7514LT,W161,HPB PSR4,W161.9030,HPB PSR3 Extension EC: PRWG Comments Addressed,16-Sep-24,20-Sep-24,5,18-Sep-25,24-Sep-25,5,5,0%,-243,OGAH Alima
    W529LT,W529,TOR DPCS Defueling Support,W529.6340,TOR 2025 S13R2 - Testing,22-Sep-25,12-Dec-25,60,22-Sep-25,12-Dec-25,60,60,0%,1736,OGAH Alima
    W230LT,W230,HYB Enhanced Defueling Safety Case Strategy,W230.3580,HYB Low Decay Heat: Risk Milestone - NSRS Production Complete (Risk Ref 38976),,29-May-25,0,,23-Sep-25,0,0,0%,12,OGAH Alima
    W234LT,W234,TOR Enhanced Defueling Safety Case Strategy,W234.3580,TOR Low Decay Heat: Risk Milestone - NSRS Production Complete (Risk Ref 38976),,29-May-25,0,,23-Sep-25,0,0,0%,12,OGAH Alima
    W157LT,W157,HYB Security,W157.2590,Implement temp. infrastructure and org mitigations required to enable commencement of defuelling (FEEDS TO SUMMARY SCHE),24-Sep-25,04-Nov-25,30,24-Sep-25,04-Nov-25,30,30,0%,293,OGAH Alima
    W230LT,W230,HYB Enhanced Defueling Safety Case Strategy,W230.2570,HYB Low Decay Heat: Issue final NSRS,20-Feb-25,20-Feb-25,1,24-Sep-25,24-Sep-25,1,1,0%,12,OGAH Alima
    ER7003LT,W160,HNB PSR4,W160.9020,HNB PSR3 Extension EC: PRWG Meeting for Head Doc,13-Sep-24,13-Sep-24,1,24-Sep-25,24-Sep-25,1,1,0%,-248,OGAH Alima
    W234LT,W234,TOR Enhanced Defueling Safety Case Strategy,W234.2570,TOR Low Decay Heat: Issue final NSRS,20-Feb-25,20-Feb-25,1,24-Sep-25,24-Sep-25,1,1,0%,12,OGAH Alima
    ER7003LT,W160,HNB PSR4,W160.9030,HNB PSR3 Extension EC: PRWG Comments Addressed,16-Sep-24,20-Sep-24,5,25-Sep-25,01-Oct-25,5,5,0%,-248,OGAH Alima
    ER7003LT,W160,HNB PSR4,W160.9590,DISCOVERY MILESTONE - HNB PSR3 Extension EC: Decision by TD ND Deliverables Programme Board,,05-Sep-24,0,,25-Sep-25,0,0,0%,-244,OGAH Alima
    W230LT,W230,HYB Enhanced Defueling Safety Case Strategy,W230.2550,HYB Low Decay Heat: DA & INA agree NSRS (for authorised designers-NSRS must be reviewed by DA),24-Feb-25,14-Mar-25,15,26-Sep-25,16-Oct-25,15,15,0%,12,OGAH Alima
    W234LT,W234,TOR Enhanced Defueling Safety Case Strategy,W234.2550,TOR Low Decay Heat: DA & INA agree NSRS (for authorised designers-NSRS must be reviewed by DA),24-Feb-25,14-Mar-25,15,26-Sep-25,16-Oct-25,15,15,0%,12,OGAH Alima
    W159LT,W159,TOR Security,W159.2360,>>> MIRROR INCOMING ENABLER W213 Review SPPI File Against Approved Defuelling Essential Safety Cases,,17-Feb-25,0,,30-Sep-25*,0,0,0%,127,OGAH Alima
    ER7582LT,W196,HYA DPCS Defueling Support,W196.25430,HYA 2024  - Installation R2,,30-Sep-25,0,,30-Sep-25,0,0,0%,1332,OGAH Alima
 Subtotal,,,,,31-Jul-24,12-Dec-25,183,01-Sep-25,21-May-26,183,183,,1680,OGAH Alima
 01-Oct-25
    ER7580LT,W194,HPB DPCS Defueling Support,W194.2260,Thales Long Term Support Contract Q4 2025,01-Oct-25,31-Dec-25,64,01-Oct-25,31-Dec-25,64,64,0%,509,OGAH Alima
    ER7581LT,W195,HRA DPCS Defueling Support,W195.2290,Thales Long Term Support Contract Q4 2025,01-Oct-25,31-Dec-25,64,01-Oct-25,31-Dec-25,64,64,0%,1268,OGAH Alima
    ER7581LT,W195,HRA DPCS Defueling Support,W195.2660,Argus Support Contract 2025 - Oct Q4,01-Oct-25,31-Dec-25,64,01-Oct-25,31-Dec-25,64,64,0%,1268,OGAH Alima
    ER7582LT,W196,HYA DPCS Defueling Support,W196.2300,Thales Long Term Support Contract Q4 2025,01-Oct-25,31-Dec-25,64,01-Oct-25*,31-Dec-25,64,64,0%,1268,OGAH Alima
    ER7582LT,W196,HYA DPCS Defueling Support,W196.2620,Argus Support Contract - 2025 - Q4,01-Oct-25,31-Dec-25,64,01-Oct-25,31-Dec-25,64,64,0%,1268,OGAH Alima
    ER7743LT,W527,DNB DPCS Defueling Support,W527.1625,Worldgrid Software Modification Support (LAMPS) - Q4 2025,01-Oct-25,31-Dec-25,64,01-Oct-25,31-Dec-25,64,64,0%,1521,OGAH Alima
    ER7743LT,W527,DNB DPCS Defueling Support,W527.1620,Worldgrid System Engineering Support (SQEP) Q4 2025,01-Oct-25,31-Dec-25,64,01-Oct-25*,31-Dec-25,64,64,0%,1521,OGAH Alima
    ER7743LT,W527,DNB DPCS Defueling Support,W527.1623,Worldgrid Long Term Support Contract Q4 2025,01-Oct-25,31-Dec-25,64,01-Oct-25,31-Dec-25,64,64,0%,1521,OGAH Alima
    ER7743LT,W527,DNB DPCS Defueling Support,W527.1624,Thales POLARIS & AIC Support Contract Q4 2025,01-Oct-25,31-Dec-25,64,01-Oct-25,31-Dec-25,64,64,0%,1521,OGAH Alima
    W529LT,W529,TOR DPCS Defueling Support,W529.1215,TOR Argus Support Contract Q4,01-Oct-25,31-Dec-25,64,01-Oct-25,31-Dec-25,64,64,0%,1777,OGAH Alima
    W529LT,W529,TOR DPCS Defueling Support,W529.1255,TOR Thales Long Term Support Contract Q4 2025 Delivery,01-Oct-25,31-Dec-25,64,01-Oct-25,31-Dec-25,64,64,0%,1777,OGAH Alima
    W526LT,W526,HYB DPCS Defueling Support,W526.1255,HYB Thales Long Term Support Contract Q4 2025,02-Jan-25,31-Mar-25,63,01-Oct-25,30-Dec-25,63,63,0%,1778,OGAH Alima
    W157LT,W157,HYB Security,W157.2040,Submit Proprosed Changes To TSS/TSP To ONR,01-Oct-25,01-Oct-25,1,01-Oct-25,01-Oct-25,1,1,0%,297,OGAH Alima
    W159LT,W159,TOR Security,W159.2550,Review SPPI File V1 Aganist Approved Defuelling Safety case And submit To ONR (Not Required if SC is Delivered on Time),18-Feb-25,24-Feb-25,5,01-Oct-25,07-Oct-25,5,5,0%,333,OGAH Alima
    W159LT,W159,TOR Security,W159.1930,Undertake Site assessment of defuelling impacts on existing and new SPP and resources,30-Sep-25,06-Oct-25,5,01-Oct-25,07-Oct-25,5,5,0%,127,OGAH Alima
    W157LT,W157,HYB Security,W157.3510,Submit Proposed changes To TSS/TSP To ONR,,01-Oct-25,0,,01-Oct-25,0,0,0%,317,OGAH Alima
    W157LT,W157,HYB Security,W157.2050,ONR Approval Of Any changes To TSS/TSP,02-Oct-25,29-Oct-25,20,02-Oct-25,29-Oct-25,20,20,0%,297,OGAH Alima
    ER7003LT,W160,HNB PSR4,W160.9480,## HNB PSR3 Extension EC: INSA & NSC Meeting Readiness - Cost Summary ##,23-Sep-24,03-Dec-24,44,02-Oct-25,03-Dec-25,44,44,0%,1,OGAH Alima
    ER7003LT,W160,HNB PSR4,W160.8690,HNB PSR3 Extension EC: INSA review & iteration of comments (using BARRIER MODEL),23-Sep-24,18-Oct-24,20,02-Oct-25,29-Oct-25,20,20,0%,-248,OGAH Alima
    ER7580LT,W194,HPB DPCS Defueling Support,W194.25120,TGN097 R3 - Inspection,03-Oct-25,09-Oct-25,5,03-Oct-25*,09-Oct-25,5,5,0%,546,OGAH Alima
    W230LT,W230,HYB Enhanced Defueling Safety Case Strategy,W230.2560,HYB Low Decay Heat: Station agree NSRS,03-Mar-25,14-Mar-25,10,03-Oct-25,16-Oct-25,10,10,0%,12,OGAH Alima
    W234LT,W234,TOR Enhanced Defueling Safety Case Strategy,W234.2560,TOR Low Decay Heat: Station agree NSRS,03-Mar-25,14-Mar-25,10,03-Oct-25,16-Oct-25,10,10,0%,12,OGAH Alima
    W730LT_UN,W730,HYB Enhanced Defueling Safety Cases,W730.3770,HYB Enhanced Defueling Rate: PSA Main Sumary Report Verification,03-Oct-25,06-Oct-25,2,03-Oct-25,06-Oct-25,2,2,0%,11,OGAH Alima
    W731LT_UN,W731,TOR Enhanced Defueling Safety Cases,W731.1360,TOR Enhanced Defueling Rate: PSA Main Sumary Report Verification,03-Oct-25,06-Oct-25,2,03-Oct-25,06-Oct-25,2,2,0%,11,OGAH Alima
    ER7743LT,W527,DNB DPCS Defueling Support,W527.25700,DNB 2026 2.10 - Testing,06-Oct-25,14-Nov-25,30,06-Oct-25,14-Nov-25,30,30,0%,1404,OGAH Alima
    ER7579LT,W193,HNB DPCS Defueling Support,W193.25380,Disposal of Assets,09-Oct-25,19-Nov-25,30,06-Oct-25,14-Nov-25,30,30,0%,31,OGAH Alima
    W730LT_UN,W730,HYB Enhanced Defueling Safety Cases,W730.3780,HYB Enhanced Defueling Rate: PSA Main Summary Report Technical Review,07-Oct-25,08-Oct-25,2,07-Oct-25,08-Oct-25,2,2,0%,11,OGAH Alima
    W731LT_UN,W731,TOR Enhanced Defueling Safety Cases,W731.1370,TOR Enhanced Defueling Rate: PSA Main Summary Report Technical Review,07-Oct-25,08-Oct-25,2,07-Oct-25,08-Oct-25,2,2,0%,11,OGAH Alima
    ER7514LT,W161,HPB PSR4,W161.9590,DISCOVERY MILESTONE - HPB PSR3 Extension EC: Decision by TD ND Deliverables Programme Board,,05-Sep-24,0,,07-Oct-25,0,0,0%,-252,OGAH Alima
    W159LT,W159,TOR Security,W159.1940,Write up Defuelling SPPI file V1,07-Oct-25,27-Oct-25,15,08-Oct-25,28-Oct-25,15,15,0%,127,OGAH Alima
    ER7514LT,W161,HPB PSR4,W161.8690,HPB PSR3 Extension EC: INSA review & iteration of comments (using BARRIER MODEL),23-Sep-24,18-Oct-24,20,08-Oct-25,04-Nov-25,20,20,0%,-252,OGAH Alima
    ER7514LT,W161,HPB PSR4,W161.9480,## HPB PSR3 Extension EC: INSA & NSC Meeting Readiness - Cost Summary ##,23-Sep-24,04-Dec-24,40,08-Oct-25,03-Dec-25,40,40,0%,157,OGAH Alima
    W730LT_UN,W730,HYB Enhanced Defueling Safety Cases,W730.3790,HYB Enhanced Defueling Rate: PSA Main Summary Report Issued/ Approval,,08-Oct-25,0,,08-Oct-25,0,0,0%,11,OGAH Alima
    W731LT_UN,W731,TOR Enhanced Defueling Safety Cases,W731.1380,TOR Enhanced Defueling Rate: PSA Main Summary Report Issued/ Approval,,08-Oct-25,0,,08-Oct-25,0,0,0%,11,OGAH Alima
    ER7582LT,W196,HYA DPCS Defueling Support,W196.6330,HYA 2025 - Consolidation and Testing,09-Oct-25,30-Mar-26,120,09-Oct-25*,30-Mar-26,120,120,0%,1206,OGAH Alima
    W730LT_UN,W730,HYB Enhanced Defueling Safety Cases,W730.3800,HYB Enhanced Defueling Rate: PSA Main Summary Report Production Risk (Risk ID 42008),09-Oct-25,15-Oct-25,5,09-Oct-25,15-Oct-25,5,5,0%,11,OGAH Alima
    W731LT_UN,W731,TOR Enhanced Defueling Safety Cases,W731.1390,TOR Enhanced Defueling Rate: PSA Main Summary Report Production Risk (Risk ID 42008),09-Oct-25,15-Oct-25,5,09-Oct-25,15-Oct-25,5,5,0%,11,OGAH Alima
    ER7580LT,W194,HPB DPCS Defueling Support,W194.25330,HPB 2025 - TGN097 R3 Inspection Complete,,09-Oct-25,0,,09-Oct-25,0,0,0%,566,OGAH Alima
    ER7580LT,W194,HPB DPCS Defueling Support,W194.25150,"TGN097 R3 - Draft Report Produced, Internal Review and Issue to EDF",10-Oct-25,16-Oct-25,5,10-Oct-25,16-Oct-25,5,5,0%,546,OGAH Alima
    ER7514LT,W161,HPB PSR4,W161.5890,"HPB PSR4 Head Doc: Issue to CO, INSA & Station for comments",,24-Apr-25,0,,14-Oct-25,0,0,0%,-58,OGAH Alima
    ER7514LT,W161,HPB PSR4,W161.5900,HPB PSR4 Head Doc: Address Verifier Comments,25-Apr-25,09-May-25,8,15-Oct-25,24-Oct-25,8,8,0%,-58,OGAH Alima
    ER7514LT,W161,HPB PSR4,W161.8200,HPB PSR4 Head Doc: Issue Document to NRS for comment,18-Jun-25,24-Jun-25,5,15-Oct-25,21-Oct-25,5,5,0%,-66,OGAH Alima
    ER7514LT,W161,HPB PSR4,W161.9400,## HPB PSR4 Head Doc: Key Stakeholders Engagement - Cost Summary ##,18-Jun-25,30-Jul-25,26,15-Oct-25,19-Nov-25,26,26,0%,-66,OGAH Alima
    W730LT_UN,W730,HYB Enhanced Defueling Safety Cases,W730.2280,HYB Enhanced Defueling Rate: Produce verification plan,16-Oct-25,22-Oct-25,5,16-Oct-25,22-Oct-25,5,5,0%,540,OGAH Alima
    W730LT_UN,W730,HYB Enhanced Defueling Safety Cases,W730.2290,HYB Enhanced Defueling Rate: Prepare / Author the Safety Case Proposal,16-Oct-25,09-Feb-26,80,16-Oct-25,09-Feb-26,80,80,0%,11,OGAH Alima
    W730LT_UN,W730,HYB Enhanced Defueling Safety Cases,W730.3810,HYB Enhanced Defueling Rate: PSA Appendices Authoring,16-Oct-25,05-Nov-25,15,16-Oct-25,05-Nov-25,15,15,0%,524,OGAH Alima
    W731LT_UN,W731,TOR Enhanced Defueling Safety Cases,W731.1400,TOR Enhanced Defueling Rate: PSA Appendices Authoring,16-Oct-25,05-Nov-25,15,16-Oct-25,05-Nov-25,15,15,0%,524,OGAH Alima
    W731LT_UN,W731,TOR Enhanced Defueling Safety Cases,W731.1410,TOR Enhanced Defueling Rate: Prepare / Author the Safety Case Proposal,16-Oct-25,09-Feb-26,80,16-Oct-25,09-Feb-26,80,80,0%,11,OGAH Alima
    W731LT_UN,W731,TOR Enhanced Defueling Safety Cases,W731.1420,TOR Enhanced Defueling Rate: Produce verification plan,16-Oct-25,22-Oct-25,5,16-Oct-25,22-Oct-25,5,5,0%,540,OGAH Alima
    W230LT,W230,HYB Enhanced Defueling Safety Case Strategy,W230.3510,HYB Low Decay Heat: Station Agree NSRS,,23-Jun-25,0,,16-Oct-25,0,0,0%,147,OGAH Alima
    W230LT,W230,HYB Enhanced Defueling Safety Case Strategy,W230.3560,HYB Low Decay Heat: Discovery Milestone - NSRS Completion - Proceed with Safety Case (HYB),,23-Jun-25,0,,16-Oct-25,0,0,0%,147,OGAH Alima
    W234LT,W234,TOR Enhanced Defueling Safety Case Strategy,W234.3510,TOR Low Decay Heat: Station Agree NSRS,,23-Jun-25,0,,16-Oct-25,0,0,0%,147,OGAH Alima
    W234LT,W234,TOR Enhanced Defueling Safety Case Strategy,W234.3560,TOR Low Decay Heat: Discovery Milestone - NSRS Completion - Proceed with Safety Case (TOR),,23-Jun-25,0,,16-Oct-25,0,0,0%,147,OGAH Alima
    ER7580LT,W194,HPB DPCS Defueling Support,W194.25140,TGN097 R3 - EDF Review,17-Oct-25,30-Oct-25,10,17-Oct-25,30-Oct-25,10,10,0%,546,OGAH Alima
    W230LT,W230,HYB Enhanced Defueling Safety Case Strategy,W230.2620,HYB Low Decay Heat: Circulate NSRS for Relevant Stakeholders (A-B Part),17-Mar-25,21-Mar-25,5,17-Oct-25,23-Oct-25,5,5,0%,12,OGAH Alima
    W234LT,W234,TOR Enhanced Defueling Safety Case Strategy,W234.2620,TOR Low Decay Heat: Circulate NSRS for Relevant Stakeholders (A-B Part),17-Mar-25,21-Mar-25,5,17-Oct-25,23-Oct-25,5,5,0%,12,OGAH Alima
    ER7514LT,W161,HPB PSR4,W161.8210,HPB PSR4 Head Doc: NRS Comments,25-Jun-25,01-Jul-25,5,22-Oct-25,28-Oct-25,5,5,0%,-66,OGAH Alima
    ER7003LT,W160,HNB PSR4,W160.6060,HNB PSR4 Head Doc: Station Approve EC 374897 - HNB PSR4,,25-Jun-26,0,,22-Oct-25,0,0,0%,1,OGAH Alima
    ER7003LT,W160,HNB PSR4,W160.6050,HNB PSR4 Head Doc: ONR Agree/Acknowledge Safety Case EC 374897,,25-Jun-26,0,,22-Oct-25,0,0,0%,1,OGAH Alima
    ER7003LT,W160,HNB PSR4,W160.6070,HNB PSR4 Head Doc: Revise all Affected Drawings and Documents for EC Approval,26-Jun-26,09-Jul-26,10,23-Oct-25,05-Nov-25,10,10,0%,1,OGAH Alima
    W230LT,W230,HYB Enhanced Defueling Safety Case Strategy,W230.2660,HYB Low Decay Heat: Send NSRS to ONR to Determine Level of Review Required (Acknowledgement or Agreemen,24-Mar-25,24-Mar-25,1,24-Oct-25,24-Oct-25,1,1,0%,12,OGAH Alima
    W234LT,W234,TOR Enhanced Defueling Safety Case Strategy,W234.2660,TOR Low Decay Heat: Send NSRS to ONR to Determine Level of Review Required (Acknowledgement or Agreemen,24-Mar-25,24-Mar-25,1,24-Oct-25,24-Oct-25,1,1,0%,12,OGAH Alima
    ER7514LT,W161,HPB PSR4,W161.9540,HPB PSR4 Head Doc: Verification Schedule Risk - (Risk Ref 38853),12-May-25,03-Jun-25,5,27-Oct-25,31-Oct-25,5,5,0%,-58,OGAH Alima
    W230LT,W230,HYB Enhanced Defueling Safety Case Strategy,W230.2680,HYB Low Decay Heat: Outline Safety Case / ALARP Strategy,25-Mar-25,07-Apr-25,10,27-Oct-25,07-Nov-25,10,10,0%,12,OGAH Alima
    W230LT,W230,HYB Enhanced Defueling Safety Case Strategy,W230.2930,HYB Low Decay Heat: Lessons Learned Activity - NSRS Approval,25-Mar-25,27-Mar-25,3,27-Oct-25,29-Oct-25,3,3,0%,120,OGAH Alima
    W234LT,W234,TOR Enhanced Defueling Safety Case Strategy,W234.2680,TOR Low Decay Heat: Outline Safety Case / ALARP Strategy,25-Mar-25,07-Apr-25,10,27-Oct-25,07-Nov-25,10,10,0%,12,OGAH Alima
    W234LT,W234,TOR Enhanced Defueling Safety Case Strategy,W234.2930,TOR Low Decay Heat: Lessons Learned Activity - NSRS Approval,25-Mar-25,27-Mar-25,3,27-Oct-25,29-Oct-25,3,3,0%,120,OGAH Alima
    W157LT,W157,HYB Security,W157.3300,Prep for Off Site Transport All Security Issues Considered & Addressed,,28-Oct-25,0,,28-Oct-25,0,0,0%,298,OGAH Alima
    W159LT,W159,TOR Security,W159.1950,Undertake Security Vulnerability Assessments on changes to existing and new SPP V1,28-Oct-25,17-Nov-25,15,29-Oct-25,18-Nov-25,15,15,0%,127,OGAH Alima
    W159LT,W159,TOR Security,W159.2440,Submit  Defuelling SPPI File to ONR,25-Nov-25,25-Nov-25,1,29-Oct-25,29-Oct-25,1,1,0%,302,OGAH Alima
    ER7514LT,W161,HPB PSR4,W161.8220,HPB PSR4 Head Doc: NRS Comments Addressed,02-Jul-25,08-Jul-25,5,29-Oct-25,04-Nov-25,5,5,0%,-66,OGAH Alima
    W159LT,W159,TOR Security,W159.3480,TOR Prep for Defueling Security Protected Plant Identification (SPPI) Submit to ONR,,25-Nov-25,0,,29-Oct-25,0,0,0%,317,OGAH Alima
    W230LT,W230,HYB Enhanced Defueling Safety Case Strategy,W230.3640,HYB Low Decay Heat: Lessons Learned Milestone - NSRS Approval,,04-Jul-25,0,,29-Oct-25,0,0,0%,120,OGAH Alima
    W234LT,W234,TOR Enhanced Defueling Safety Case Strategy,W234.3640,TOR Low Decay Heat: Lessons Learned Milestone - NSRS Approval,,04-Jul-25,0,,29-Oct-25,0,0,0%,120,OGAH Alima
    W159LT,W159,TOR Security,W159.2490,Draft DNSSP And Sumit To ONR,26-Nov-25,02-Dec-25,5,30-Oct-25,05-Nov-25,5,5,0%,302,OGAH Alima
    ER7003LT,W160,HNB PSR4,W160.8630,HNB PSR3 Extension EC: Incorporate INSA comments,21-Oct-24,25-Oct-24,5,30-Oct-25,05-Nov-25,5,5,0%,-248,OGAH Alima
    ER7580LT,W194,HPB DPCS Defueling Support,W194.25130,TGN097 R3 - Update and Issue Report,31-Oct-25,06-Nov-25,5,31-Oct-25,06-Nov-25,5,5,0%,546,OGAH Alima
    ER7514LT,W161,HPB PSR4,W161.9550,Risk Milestone - (Risk Ref 38853) - HPB PSR4 Head Doc: Verification Substantially Complete,,03-Jun-25,0,,31-Oct-25,0,0,0%,-58,OGAH Alima
 Subtotal,,,,,05-Sep-24,09-Jul-26,126,01-Oct-25,30-Mar-26,126,126,,1715,OGAH Alima
 01-Nov-25
    ER7582LT,W196,HYA DPCS Defueling Support,W196.6360,HYA 2025 - Specification,03-Nov-25,12-Dec-25,30,03-Nov-25*,12-Dec-25,30,30,0%,1278,OGAH Alima
    ER7581LT,W195,HRA DPCS Defueling Support,W195.25620,HRA 2025  - Specification,03-Nov-25,12-Dec-25,30,03-Nov-25*,12-Dec-25,30,30,0%,1175,OGAH Alima
    ER7514LT,W161,HPB PSR4,W161.5920,HPB PSR4 Head Doc: Final Verification,04-Jun-25,17-Jun-25,5,03-Nov-25,07-Nov-25,5,5,0%,-58,OGAH Alima
    W157LT,W157,HYB Security,W157.2660,Prep for Defueling All Security Issues Considered & Addressed for Temporary Mitigations (HYB QP Sign Off),,04-Nov-25,0,,04-Nov-25,0,0,0%,293,OGAH Alima
    W157LT,W157,HYB Security,W157.2600,Implement permanent infrastructure and organisational mitigations,05-Nov-25,16-Dec-25,30,05-Nov-25*,16-Dec-25,30,30,0%,243,OGAH Alima
    ER7514LT,W161,HPB PSR4,W161.8230,HPB PSR4 Head Doc: TR Complete (No Longer Required),09-Jul-25,15-Jul-25,0,05-Nov-25,05-Nov-25,0,0,0%,-66,OGAH Alima
    ER7514LT,W161,HPB PSR4,W161.8240,HPB PSR4 Head Doc: Issue for PRWG (Allow 5d),16-Jul-25,22-Jul-25,5,05-Nov-25,11-Nov-25,5,5,0%,-66,OGAH Alima
    ER7514LT,W161,HPB PSR4,W161.8630,HPB PSR3 Extension EC: Incorporate INSA comments,21-Oct-24,25-Oct-24,5,05-Nov-25,11-Nov-25,5,5,0%,-252,OGAH Alima
    ER7003LT,W160,HNB PSR4,W160.9130,HNB PSR3 Extension EC: INSA Assessment Substantially Comp (T - 3 weeks before NSC date),,25-Oct-24,0,,05-Nov-25*,0,0,0%,-248,OGAH Alima
    ER7003LT,W160,HNB PSR4,W160.9040,HNB PSR3 Extension EC: INSA  Assessment Substantially Comp (T - 3 weeks before NSC date),,25-Oct-24,0,,05-Nov-25*,0,0,0%,-248,OGAH Alima
    W159LT,W159,TOR Security,W159.2500,ONR Approval of Draft DNSSP,24-Dec-25,09-Jan-26,10,06-Nov-25,19-Nov-25,10,10,0%,302,OGAH Alima
    ER7003LT,W160,HNB PSR4,W160.6080,HNB PSR4 Head Doc: Develop Implementation & closeout Plan,10-Jul-26,23-Jul-26,8,06-Nov-25,17-Nov-25,8,8,0%,1,OGAH Alima
    W730LT_UN,W730,HYB Enhanced Defueling Safety Cases,W730.3820,HYB Enhanced Defueling Rate: PSA Appendices Verification,06-Nov-25,07-Nov-25,2,06-Nov-25,07-Nov-25,2,2,0%,524,OGAH Alima
    W731LT_UN,W731,TOR Enhanced Defueling Safety Cases,W731.1430,TOR Enhanced Defueling Rate: PSA Appendices Verification,06-Nov-25,07-Nov-25,2,06-Nov-25,07-Nov-25,2,2,0%,524,OGAH Alima
    ER7580LT,W194,HPB DPCS Defueling Support,W194.25340,HPB 2025 - TGN097 R3 Report,,06-Nov-25,0,,06-Nov-25,0,0,0%,546,OGAH Alima
    ER7514LT,W161,HPB PSR4,W161.5930,HPB PSR4 Head Doc: Submit for approval - Categoriser ratifies; RE/CO endorsement ==> KDM,,17-Jun-25,0,,07-Nov-25,0,0,0%,-58,OGAH Alima
    ER7514LT,W161,HPB PSR4,W161.5950,HPB PSR4 Head Doc: Verification Complete/ Verified Draft A Issued for INSA (T-7)  EC 374795,,17-Jun-25,0,,07-Nov-25,0,0,0%,-58,OGAH Alima
    ER7514LT,W161,HPB PSR4,W161.8290,HPB PSR4 Head Doc: Verification Complete/ Verified Draft A Issued for INSA (T-7)  EC 374795,,17-Jun-25,0,,07-Nov-25,0,0,0%,-58,OGAH Alima
    W230LT,W230,HYB Enhanced Defueling Safety Case Strategy,W230.3540,HYB Low Decay Heat: Optioneering Complete (Outline Safety Case / ALARP Strategy),,15-Jul-25,0,,07-Nov-25,0,0,0%,71,OGAH Alima
    W234LT,W234,TOR Enhanced Defueling Safety Case Strategy,W234.3540,TOR Low Decay Heat: Optioneering Complete (Outline Safety Case / ALARP Strategy),,15-Jul-25,0,,07-Nov-25,0,0,0%,71,OGAH Alima
    ER7514LT,W161,HPB PSR4,W161.6010,HPB PSR4 Head Doc: Prepare Station Director's Brief,18-Jun-25,24-Jun-25,5,10-Nov-25,14-Nov-25,5,5,0%,142,OGAH Alima
    ER7514LT,W161,HPB PSR4,W161.9420,## HPB PSR4 Head Doc: Clearances and Closeout - Cost Summary ##,18-Jun-25,27-Jan-27,159,10-Nov-25,29-Jun-26,159,159,0%,131,OGAH Alima
    W230LT,W230,HYB Enhanced Defueling Safety Case Strategy,W230.2950,## HYB Reactor Inspections Relaxations: A - D Phase Funding - (Cost Summary) ##,21-Feb-25,15-Jul-25,99,10-Nov-25,31-Mar-26,99,99,0%,32,OGAH Alima
    W230LT,W230,HYB Enhanced Defueling Safety Case Strategy,W230.3080,HYB Reactor Inspections Relaxations: Strategy Development & Produce MF EC NNNNN & Obtain Approval,21-Feb-25,10-Mar-25,12,10-Nov-25,25-Nov-25,12,12,0%,12,OGAH Alima
    W234LT,W234,TOR Enhanced Defueling Safety Case Strategy,W234.2950,## TOR Reactor Inspections Relaxations: A - D Phase Funding - (Cost Summary) ##,21-Feb-25,15-Jul-25,99,10-Nov-25,31-Mar-26,99,99,0%,32,OGAH Alima
    W234LT,W234,TOR Enhanced Defueling Safety Case Strategy,W234.3080,TOR Reactor Inspections Relaxations: Strategy Development & Produce MF EC NNNNN & Obtain Approval,21-Feb-25,10-Mar-25,12,10-Nov-25,25-Nov-25,12,12,0%,12,OGAH Alima
    W730LT_UN,W730,HYB Enhanced Defueling Safety Cases,W730.3830,HYB Enhanced Defueling Rate: PSA Appendices Technical Review,10-Nov-25,11-Nov-25,2,10-Nov-25,11-Nov-25,2,2,0%,524,OGAH Alima
    W731LT_UN,W731,TOR Enhanced Defueling Safety Cases,W731.1440,TOR Enhanced Defueling Rate: PSA Appendices Technical Review,10-Nov-25,11-Nov-25,2,10-Nov-25,11-Nov-25,2,2,0%,524,OGAH Alima
    ER7514LT,W161,HPB PSR4,W161.9040,HPB PSR3 Extension EC: INSA  Assessment Substantially Comp (T - 3 weeks before NSC date),,25-Oct-24,0,,11-Nov-25*,0,0,0%,-209,OGAH Alima
    ER7514LT,W161,HPB PSR4,W161.9130,HPB PSR3 Extension EC: INSA Assessment Substantially Comp (T - 3 weeks before NSC date),,25-Oct-24,0,,11-Nov-25*,0,0,0%,-252,OGAH Alima
    W730LT_UN,W730,HYB Enhanced Defueling Safety Cases,W730.3840,HYB Enhanced Defueling Rate: PSA Appendices Issued/ Approval,,11-Nov-25,0,,11-Nov-25,0,0,0%,524,OGAH Alima
    W731LT_UN,W731,TOR Enhanced Defueling Safety Cases,W731.1450,TOR Enhanced Defueling Rate: PSA Appendices Issued/ Approval,,11-Nov-25,0,,11-Nov-25,0,0,0%,524,OGAH Alima
    ER7514LT,W161,HPB PSR4,W161.8250,HPB PSR4 Head Doc: PRWG Meeting for Head Doc,23-Jul-25,23-Jul-25,1,12-Nov-25,12-Nov-25,1,1,0%,-66,OGAH Alima
    W730LT_UN,W730,HYB Enhanced Defueling Safety Cases,W730.3850,HYB Enhanced Defueling Rate: PSA Appendices Production Risk (Risk ID 42008),12-Nov-25,18-Nov-25,5,12-Nov-25,18-Nov-25,5,5,0%,524,OGAH Alima
    W731LT_UN,W731,TOR Enhanced Defueling Safety Cases,W731.1460,TOR Enhanced Defueling Rate: PSA Appendices Production Risk (Risk ID 42008),12-Nov-25,18-Nov-25,5,12-Nov-25,18-Nov-25,5,5,0%,524,OGAH Alima
    ER7514LT,W161,HPB PSR4,W161.8260,HPB PSR4 Head Doc: PRWG Comments Addressed,24-Jul-25,30-Jul-25,5,13-Nov-25,19-Nov-25,5,5,0%,-66,OGAH Alima
    ER7579LT,W193,HNB DPCS Defueling Support,W193.25390,HNB 2025 DPCS Decommissioning,,19-Nov-25,0,,14-Nov-25,0,0,0%,31,OGAH Alima
    ER7003LT,W160,HNB PSR4,W160.6090,HNB PSR4 Head Doc: Post Job Debrief (CAT 2),24-Jul-26,24-Jul-26,1,18-Nov-25,18-Nov-25,1,1,0%,1,OGAH Alima
    W159LT,W159,TOR Security,W159.1960,Draft SPORs for all changes to existing and new SPP requiring revised or new mitigation measures V1,18-Nov-25,15-Dec-25,20,19-Nov-25,16-Dec-25,20,20,0%,127,OGAH Alima
    ER7003LT,W160,HNB PSR4,W160.2100,Hold Project Closeout and Lessons Learned Meeting,27-Jul-26,27-Jul-26,1,19-Nov-25,19-Nov-25,1,1,0%,1,OGAH Alima
    W730LT_UN,W730,HYB Enhanced Defueling Safety Cases,W730.3860,HYB Enhanced Defueling Rate: Worker Risk Authoring,19-Nov-25,09-Dec-25,15,19-Nov-25,09-Dec-25,15,15,0%,524,OGAH Alima
    W731LT_UN,W731,TOR Enhanced Defueling Safety Cases,W731.1470,TOR Enhanced Defueling Rate: Worker Risk Authoring,19-Nov-25,09-Dec-25,15,19-Nov-25,09-Dec-25,15,15,0%,524,OGAH Alima
    W159LT,W159,TOR Security,W159.2670,ONR acknowledgement of proposed delivery model (ONR Approval Of DNSSP),,09-Jan-26,0,,19-Nov-25,0,0,0%,302,OGAH Alima
    ER7514LT,W161,HPB PSR4,W161.5970,HPB PSR4 Head Doc: HPB PSR4 Head Doc: INSA review & iteration of comments (using BARRIER MODEL),31-Jul-25,28-Aug-25,20,20-Nov-25,17-Dec-25,20,20,0%,-66,OGAH Alima
    ER7514LT,W161,HPB PSR4,W161.9410,## HPB PSR4 Head Doc: INSA & NSC Meeting Readiness - Cost Summary ##,31-Jul-25,15-Oct-25,40,20-Nov-25,19-Jan-26,40,40,0%,99,OGAH Alima
    ER7003LT,W160,HNB PSR4,W160.2110,Produce Lessons Learned Report,28-Jul-26,28-Jul-26,1,20-Nov-25,20-Nov-25,1,1,0%,1,OGAH Alima
    ER7003LT,W160,HNB PSR4,W160.2120,Produce Project Closeout Report,29-Jul-26,30-Jul-26,2,21-Nov-25,24-Nov-25,2,2,0%,1,OGAH Alima
    W155LT,W155,HRA Security,W155.10003,Finalised Security Protected Plant Identification assessment and security regime commitments to ONR prior to defuelling,,07-Feb-25,0,,21-Nov-25,0,0,0%,280,OGAH Alima
    ER7743LT,W527,DNB DPCS Defueling Support,W527.25710,DNB 2026 2.10 - Delivery,24-Nov-25,19-Dec-25,20,24-Nov-25,19-Dec-25,20,20,0%,1404,OGAH Alima
    ER7003LT,W160,HNB PSR4,W160.2130,Prepare Gate D PRC Paper,31-Jul-26,07-Aug-26,5,25-Nov-25,01-Dec-25,5,5,0%,1,OGAH Alima
    W230LT,W230,HYB Enhanced Defueling Safety Case Strategy,W230.3090,HYB Reactor Inspections Relaxations: Mod Requested and EC Request Raised and Screened,11-Mar-25,26-Mar-25,12,26-Nov-25,11-Dec-25,12,12,0%,12,OGAH Alima
    W234LT,W234,TOR Enhanced Defueling Safety Case Strategy,W234.3090,TOR Reactor Inspections Relaxations: Mod Requested and EC Request Raised and Screened,11-Mar-25,26-Mar-25,12,26-Nov-25,11-Dec-25,12,12,0%,12,OGAH Alima
 Subtotal,,,,,21-Oct-24,27-Jan-27,164,03-Nov-25,29-Jun-26,164,164,,1275,OGAH Alima
 01-Dec-25
    ER7514LT,W161,HPB PSR4,W161.8650,HPB PSR3 Extension EC: NSC Consideration & advice to Station Director ==> KDM,04-Dec-24,17-Dec-24,10,03-Dec-25,16-Dec-25,10,10,0%,157,OGAH Alima
    ER7514LT,W161,HPB PSR4,W161.9050,HPB PSR3 Extension EC: NSC Presentation Date (T) EC 374794,,04-Dec-24,0,,03-Dec-25,0,0,0%,144,OGAH Alima
    ER7514LT,W161,HPB PSR4,W161.9140,HPB PSR3 Extension EC: NSC Presentation Date (T) EC 374794,,04-Dec-24,0,,03-Dec-25,0,0,0%,144,OGAH Alima
    ER7003LT,W160,HNB PSR4,W160.9140,HNB PSR3 Extension EC: NSC Presentation Date (T) EC 375144 <Enter Paper Title Here>,,04-Dec-24,0,,03-Dec-25,0,0,0%,1,OGAH Alima
    ER7003LT,W160,HNB PSR4,W160.9050,HNB PSR3 Extension EC: NSC Presentation Date (T) EC 375144 <Enter Paper Title Here>,,04-Dec-24,0,,03-Dec-25,0,0,0%,1,OGAH Alima
    ER7003LT,W160,HNB PSR4,W160.8650,HNB PSR3 Extension EC: NSC Consideration & advice to Station Director ==> KDM,04-Dec-24,17-Dec-24,10,03-Dec-25,16-Dec-25,10,10,0%,4,OGAH Alima
    ER7003LT,W160,HNB PSR4,W160.2140,Gate D PRC Paper Submission,12-Aug-26,12-Aug-26,1,03-Dec-25,03-Dec-25,1,1,0%,0,OGAH Alima
    W730LT_UN,W730,HYB Enhanced Defueling Safety Cases,W730.3870,HYB Enhanced Defueling Rate: Worker Risk Verification,10-Dec-25,11-Dec-25,2,10-Dec-25,11-Dec-25,2,2,0%,524,OGAH Alima
    W731LT_UN,W731,TOR Enhanced Defueling Safety Cases,W731.1480,TOR Enhanced Defueling Rate: Worker Risk Verification,10-Dec-25,11-Dec-25,2,10-Dec-25,11-Dec-25,2,2,0%,524,OGAH Alima
    W230LT,W230,HYB Enhanced Defueling Safety Case Strategy,W230.3040,HYB Reactor Inspections Relaxations: Produce draft NSRS (using BARRIER MODEL),27-Mar-25,09-Apr-25,10,12-Dec-25,29-Dec-25,10,10,0%,12,OGAH Alima
    W234LT,W234,TOR Enhanced Defueling Safety Case Strategy,W234.3040,TOR Reactor Inspections Relaxations: Produce draft NSRS (using BARRIER MODEL),27-Mar-25,09-Apr-25,10,12-Dec-25,29-Dec-25,10,10,0%,12,OGAH Alima
    W730LT_UN,W730,HYB Enhanced Defueling Safety Cases,W730.3880,HYB Enhanced Defueling Rate: Worker Risk Technical Review,12-Dec-25,15-Dec-25,2,12-Dec-25,15-Dec-25,2,2,0%,524,OGAH Alima
    W731LT_UN,W731,TOR Enhanced Defueling Safety Cases,W731.1490,TOR Enhanced Defueling Rate: Worker Risk Technical Review,12-Dec-25,15-Dec-25,2,12-Dec-25,15-Dec-25,2,2,0%,524,OGAH Alima
    W529LT,W529,TOR DPCS Defueling Support,W529.6350,TOR 2025 S13R2 - Delivery,15-Dec-25,09-Jan-26,17,15-Dec-25,09-Jan-26,17,17,0%,1736,OGAH Alima
    W730LT_UN,W730,HYB Enhanced Defueling Safety Cases,W730.3890,HYB Enhanced Defueling Rate: Worker Risk Issued/ Approval,,15-Dec-25,0,,15-Dec-25,0,0,0%,524,OGAH Alima
    W731LT_UN,W731,TOR Enhanced Defueling Safety Cases,W731.1500,TOR Enhanced Defueling Rate: Worker Risk Issued/ Approval,,15-Dec-25,0,,15-Dec-25,0,0,0%,524,OGAH Alima
    ER7003LT,W160,HNB PSR4,W160.2150,Gate D - Hold PRC Meeting,25-Aug-26,25-Aug-26,1,16-Dec-25,16-Dec-25,1,1,0%,0,OGAH Alima
    W730LT_UN,W730,HYB Enhanced Defueling Safety Cases,W730.3900,HYB Enhanced Defueling Rate: Worker Risk Production Risk (Risk 42008),16-Dec-25,22-Dec-25,5,16-Dec-25,22-Dec-25,5,5,0%,524,OGAH Alima
    W731LT_UN,W731,TOR Enhanced Defueling Safety Cases,W731.1510,TOR Enhanced Defueling Rate: Worker Risk Production Risk (Risk 42008),16-Dec-25,22-Dec-25,5,16-Dec-25,22-Dec-25,5,5,0%,524,OGAH Alima
    W157LT,W157,HYB Security,W157.3750,Prep for Defueling All Security Issues Considered & Addressed for Permanent Mitigations,,16-Dec-25,0,,16-Dec-25,0,0,0%,263,OGAH Alima
    W159LT,W159,TOR Security,W159.10013,"Substantive D/SPPIF, SVAs and SPORs completion (awaiting final Safety Case Approval)",,15-Dec-25,0,,16-Dec-25,0,0,0%,283,OGAH Alima
    ER7514LT,W161,HPB PSR4,W161.9150,HPB PSR3 Extension EC: INSA Final Approval EC 374794,,17-Dec-24,0,,16-Dec-25,0,0,0%,177,OGAH Alima
    ER7514LT,W161,HPB PSR4,W161.9210,HPB PSR3 Extension EC: INSA Final Approval EC 374794,,17-Dec-24,0,,16-Dec-25,0,0,0%,177,OGAH Alima
    ER7003LT,W160,HNB PSR4,W160.9210,HNB PSR3 Extension EC: INSA Final Approval EC 375144 <Enter Paper Title Here>,,17-Dec-24,0,,16-Dec-25,0,0,0%,5,OGAH Alima
    ER7003LT,W160,HNB PSR4,W160.9150,HNB PSR3 Extension EC: INSA Final Approval EC 375144 <Enter Paper Title Here>,,17-Dec-24,0,,16-Dec-25,0,0,0%,5,OGAH Alima
    ER7003LT,W160,HNB PSR4,W160.8000,Gate D -  PRC Paper Approval (HNB),,25-Aug-26,0,,16-Dec-25,0,0,0%,9,OGAH Alima
    W159LT,W159,TOR Security,W159.2350,Issue SPORS V1,16-Dec-25,16-Dec-25,1,17-Dec-25,17-Dec-25,1,1,0%,127,OGAH Alima
    W159LT,W159,TOR Security,W159.2710,"Review and Agree Security Changes and MSI Category (INA, SPB, NSC)",16-Dec-25,29-Jan-26,30,17-Dec-25,30-Jan-26,30,30,0%,193,OGAH Alima
    W159LT,W159,TOR Security,W159.2570,Complete MSI process,16-Dec-25,29-Jan-26,30,17-Dec-25,30-Jan-26,30,30,0%,193,OGAH Alima
    ER7514LT,W161,HPB PSR4,W161.8920,HPB PSR3 Extension EC: Prepare Paper for Submission to ONR,18-Dec-24,17-Jan-25,20,17-Dec-25,16-Jan-26,20,20,0%,157,OGAH Alima
    ER7003LT,W160,HNB PSR4,W160.8920,HNB PSR3 Extension EC: Prepare Paper for Submission to ONR,18-Dec-24,17-Jan-25,1,17-Dec-25,17-Dec-25,1,1,0%,4,OGAH Alima
    W159LT,W159,TOR Security,W159.3490,Review Prep for Defueling Revised SPOR for Temporary of Permanent Mitigations,,16-Dec-25,0,,17-Dec-25,0,0,0%,282,OGAH Alima
    W159LT,W159,TOR Security,W159.11,Issue of SPOR - SPPI File for Prep of Defueling,,16-Dec-25,0,,17-Dec-25,0,0,0%,282,OGAH Alima
    ER7003LT,W160,HNB PSR4,W160.9160,HNB PSR3 Extension EC: PSR4 Safety Case - Submitted to ONR,,17-Jan-25,0,,17-Dec-25,0,0,0%,4,OGAH Alima
    W159LT,W159,TOR Security,W159.2650,Update Site SRCL And Sumbit To ONR V1,17-Dec-25,23-Dec-25,5,18-Dec-25,24-Dec-25,5,5,0%,127,OGAH Alima
    ER7514LT,W161,HPB PSR4,W161.5980,HPB PSR4 Head Doc: Incorporate INSA comments,29-Aug-25,04-Sep-25,5,18-Dec-25,24-Dec-25,5,5,0%,-66,OGAH Alima
    ER7003LT,W160,HNB PSR4,W160.8570,HNB PSR3 Extension EC: ONR Approval of Safety Case (Letter sent to initiate) EC 375144 <Enter Paper Title Here> ==> KDM,20-Jan-25,22-Apr-25,1,18-Dec-25,18-Dec-25,1,1,0%,4,OGAH Alima
    ER7003LT,W160,HNB PSR4,W160.9180,HNB PSR3 Extension EC: Station Approve EC 375144 - HNB PSR4,,22-Apr-25,0,,18-Dec-25,0,0,0%,4,OGAH Alima
    ER7003LT,W160,HNB PSR4,W160.9170,HNB PSR3 Extension EC: ONR Agree/Acknowledge Safety Case EC 375144,,22-Apr-25,0,,18-Dec-25,0,0,0%,4,OGAH Alima
    ER7003LT,W160,HNB PSR4,W160.8540,HNB PSR3 Extension EC: Revise all Affected Drawings and Documents for EC Approval,23-Apr-25,07-May-25,1,19-Dec-25,19-Dec-25,1,1,0%,4,OGAH Alima
    W156LT,W156,HYA Security,W156.3320,DNSSP submitted to ONR,,28-May-25,0,,19-Dec-25,0,0,0%,466,OGAH Alima
    W155LT,W155,HRA Security,W155.3310,ONR Approval of Defuelling NSSP,12-Feb-25,11-Mar-25,20,22-Dec-25,21-Jan-26,20,20,0%,225,OGAH Alima
    W156LT,W156,HYA Security,W156.3310,ONR approval of DNSSP,29-May-25,18-Jun-25,15,22-Dec-25,14-Jan-26,15,15,0%,466,OGAH Alima
    ER7003LT,W160,HNB PSR4,W160.8510,HNB PSR3 Extension EC: Develop Implementation & closeout Plan,08-May-25,21-May-25,1,22-Dec-25,22-Dec-25,1,1,0%,4,OGAH Alima
    ER7003LT,W160,HNB PSR4,W160.8590,HNB PSR3 Extension EC: Post Job Debrief (CAT 2),22-May-25,22-May-25,1,23-Dec-25,23-Dec-25,1,1,0%,4,OGAH Alima
    W730LT_UN,W730,HYB Enhanced Defueling Safety Cases,W730.3910,HYB Enhanced Defueling Rate: Deterministic Assessment Authoring,23-Dec-25,15-Jan-26,15,23-Dec-25,15-Jan-26,15,15,0%,524,OGAH Alima
    W731LT_UN,W731,TOR Enhanced Defueling Safety Cases,W731.1520,TOR Enhanced Defueling Rate: Deterministic Assessment Authoring,23-Dec-25,15-Jan-26,15,23-Dec-25,15-Jan-26,15,15,0%,524,OGAH Alima
    ER7003LT,W160,HNB PSR4,W160.5400,Project Finish,,25-Aug-26,0,,23-Dec-25,0,0,0%,4,OGAH Alima
    W159LT,W159,TOR Security,W159.2660,Prep for Defueling All Security Issues Considered & Addressed for Temporary Mitigations (TOR QP Sign Off),,23-Dec-25,0,,24-Dec-25,0,0,0%,277,OGAH Alima
    W159LT,W159,TOR Security,W159.3670,TOR Security Regulatory Commitment Log (SRCL) Submit to ONR,,23-Dec-25,0,,24-Dec-25,0,0,0%,277,OGAH Alima
    W159LT,W159,TOR Security,W159.3750,Prep for Defueling All Security Issues Considered & Addressed for Permanent Mitigations,,23-Dec-25,0,,24-Dec-25,0,0,0%,277,OGAH Alima
    ER7514LT,W161,HPB PSR4,W161.5990,HPB PSR4 Head Doc: INSA Assessment Substantially Comp (T - 3 weeks before NSC date),,08-Sep-25,0,,24-Dec-25*,0,0,0%,-66,OGAH Alima
    ER7514LT,W161,HPB PSR4,W161.8270,HPB PSR4 Head Doc: INSA  Assessment Substantially Comp (T - 3 weeks before NSC date),,08-Sep-25,0,,24-Dec-25*,0,0,0%,-66,OGAH Alima
    W159LT,W159,TOR Security,W159.24500,Sign Station Defuelling QP- Ready to Implement Defuelling Security Regime,24-Dec-25,23-Jan-26,0,29-Dec-25,29-Dec-25,0,0,0%,127,OGAH Alima
    W230LT,W230,HYB Enhanced Defueling Safety Case Strategy,W230.3100,HYB Reactor Inspections Relaxations: Hold Case Conference / Optioneering Strategy Workshop as Appropriate,10-Apr-25,16-Apr-25,5,30-Dec-25,06-Jan-26,5,5,0%,12,OGAH Alima
    W234LT,W234,TOR Enhanced Defueling Safety Case Strategy,W234.3100,TOR Reactor Inspections Relaxations: Hold Case Conference / Optioneering Strategy Workshop as Appropriate,10-Apr-25,16-Apr-25,5,30-Dec-25,06-Jan-26,5,5,0%,12,OGAH Alima
    ER7579LT,W193,HNB DPCS Defueling Support,W193.0020,Project End,,31-Dec-25,0,,31-Dec-25,0,0,0%,0,OGAH Alima
    ER7581LT,W195,HRA DPCS Defueling Support,W195.1255,HRA 2025 Data Modifications and Amendments - End,,31-Dec-25,0,,31-Dec-25,0,0,0%,1268,OGAH Alima
    ER7582LT,W196,HYA DPCS Defueling Support,W196.6080,HYA 2025 Data Modifications and Amendments- End,,31-Dec-25,0,,31-Dec-25,0,0,0%,1268,OGAH Alima
    ER7579LT,W193,HNB DPCS Defueling Support,W193.25260,HNB 2025 Project End,,31-Dec-25,0,,31-Dec-25,0,0,0%,0,OGAH Alima
 Subtotal,,,,,04-Dec-24,25-Aug-26,40,03-Dec-25,30-Jan-26,40,40,,1721,OGAH Alima
 01-Jan-26
    ER7581LT,W195,HRA DPCS Defueling Support,W195.2300,HRA PES Group Support - 2026,02-Jan-26,31-Dec-26,254,02-Jan-26*,31-Dec-26,254,254,0%,1014,OGAH Alima
    ER7581LT,W195,HRA DPCS Defueling Support,W195.2310,Plant Control Systems & Simulators (PCS&S) Group - 2026,02-Jan-26,31-Dec-26,254,02-Jan-26,31-Dec-26,254,254,0%,1014,OGAH Alima
    ER7581LT,W195,HRA DPCS Defueling Support,W195.2380,Thales Long Term Support Contract Q1 2026,02-Jan-26,31-Mar-26,63,02-Jan-26*,31-Mar-26,63,63,0%,1014,OGAH Alima
    ER7582LT,W196,HYA DPCS Defueling Support,W196.2310,Plant Control Systems & Simulators (PCS&S) Group - 2026,02-Jan-26,31-Dec-26,254,02-Jan-26*,31-Dec-26,254,254,0%,1014,OGAH Alima
    ER7582LT,W196,HYA DPCS Defueling Support,W196.2320,HYA PES Group Support - 2026,02-Jan-26,31-Dec-26,254,02-Jan-26,31-Dec-26,254,254,0%,1014,OGAH Alima
    ER7582LT,W196,HYA DPCS Defueling Support,W196.2390,Thales Long Term Support Contract Q1 2026,02-Jan-26,31-Mar-26,63,02-Jan-26,31-Mar-26,63,63,0%,1014,OGAH Alima
    W529LT,W529,TOR DPCS Defueling Support,W529.1060,TOR PES Group Support - 2026,02-Jan-26,31-Dec-26,254,02-Jan-26*,31-Dec-26,254,254,0%,1523,OGAH Alima
    W529LT,W529,TOR DPCS Defueling Support,W529.1070,TOR Plant Control Systems & Simulators (PCS&S) Group - 2026,02-Jan-26,31-Dec-26,254,02-Jan-26*,31-Dec-26,254,254,0%,1523,OGAH Alima
    W529LT,W529,TOR DPCS Defueling Support,W529.1265,TOR Argus Support Contract - Q1 2026,02-Jan-26,31-Mar-26,63,02-Jan-26*,31-Mar-26,63,63,0%,1523,OGAH Alima
    W529LT,W529,TOR DPCS Defueling Support,W529.1275,TOR Argus Support Contract - Q2 2026,01-Apr-26,30-Jun-26,63,02-Jan-26,31-Mar-26,63,63,0%,1584,OGAH Alima
    W529LT,W529,TOR DPCS Defueling Support,W529.1285,TOR Thales Long Term Support Contract - Q1 2026,02-Jan-26,31-Mar-26,63,02-Jan-26,31-Mar-26,63,63,0%,1523,OGAH Alima
    W529LT,W529,TOR DPCS Defueling Support,W529.4550,TOR 2026 LSR - Pre-export Data Validation Produced and Completed,02-Mar-26,24-Apr-26,38,02-Jan-26,24-Feb-26,38,38,0%,1668,OGAH Alima
    W526LT,W526,HYB DPCS Defueling Support,W526.4550,HYB 2026 LSR - Pre-export Data Validation Produced and Completed,02-Jan-26,24-Feb-26,38,02-Jan-26,24-Feb-26,38,38,0%,1668,OGAH Alima
    W526LT,W526,HYB DPCS Defueling Support,W526.3030,HYB DPCS Long Term Support Contract 2026,02-Jan-26,31-Dec-26,254,02-Jan-26*,31-Dec-26,254,254,0%,1523,OGAH Alima
    W526LT,W526,HYB DPCS Defueling Support,W526.3020,HYB 2026 Defueling Software Build,02-Jan-26,30-Nov-26,232,02-Jan-26,30-Nov-26,232,232,0%,1545,OGAH Alima
    W526LT,W526,HYB DPCS Defueling Support,W526.1285,HYB Thales Long Term Support Contract - Q1 2026,02-Jan-25,31-Mar-25,63,02-Jan-26,31-Mar-26,63,63,0%,1523,OGAH Alima
    W526LT,W526,HYB DPCS Defueling Support,W526.1265,HYB Argus Support Contract - Q1  2026,02-Jan-25,31-Mar-25,63,02-Jan-26,31-Mar-26,63,63,0%,1523,OGAH Alima
    W526LT,W526,HYB DPCS Defueling Support,W526.1070,HYB Plant Control Systems & Simulators (PCS&S) Group - 2026,02-Jan-26,31-Dec-26,254,02-Jan-26*,31-Dec-26,254,254,0%,1523,OGAH Alima
    W526LT,W526,HYB DPCS Defueling Support,W526.1060,HYB PES Group Support - 2026,02-Jan-26,31-Dec-26,254,02-Jan-26,31-Dec-26,254,254,0%,1523,OGAH Alima
    W529LT,W529,TOR DPCS Defueling Support,W529.6370,TOR 2025 S14R1 - Software Build Requirement,02-Jan-26,30-Jun-26,124,02-Jan-26*,30-Jun-26,124,124,0%,1387,OGAH Alima
    ER7743LT,W527,DNB DPCS Defueling Support,W527.25240,ETC 2026,02-Jan-26,31-Dec-26,254,02-Jan-26,31-Dec-26,254,254,0%,0,OGAH Alima
    W526LT,W526,HYB DPCS Defueling Support,W526.10010,HYB 2026 External Costs,02-Jan-26,31-Dec-26,254,02-Jan-26,31-Dec-26,254,254,0%,1523,OGAH Alima
    W529LT,W529,TOR DPCS Defueling Support,W529.10010,TOR 2026 External Costs,02-Mar-26,01-Mar-27,254,02-Jan-26,31-Dec-26,254,254,0%,1523,OGAH Alima
    ER7581LT,W195,HRA DPCS Defueling Support,W195.25210,2026 External,02-Jan-26,31-Dec-26,254,02-Jan-26,31-Dec-26,254,254,0%,1014,OGAH Alima
    ER7582LT,W196,HYA DPCS Defueling Support,W196.1025,2026 External,02-Jan-26,31-Dec-26,254,02-Jan-26,31-Dec-26,254,254,0%,1014,OGAH Alima
    ER7580LT,W194,HPB DPCS Defueling Support,W194.25280,Project Support - 2026,02-Jan-26,31-Dec-26,254,02-Jan-26*,31-Dec-26,254,254,0%,255,OGAH Alima
    W526LT,W526,HYB DPCS Defueling Support,W526.10170,TPM and JCRB Meeting Held 2026,02-Jan-26,31-Dec-26,254,02-Jan-26,31-Dec-26,254,254,0%,0,OGAH Alima
    ER7581LT,W195,HRA DPCS Defueling Support,W195.25690,TPM and JCRB Meetings Held - 2026,02-Jan-26,31-Dec-26,254,02-Jan-26,31-Dec-26,254,254,0%,759,OGAH Alima
    ER7582LT,W196,HYA DPCS Defueling Support,W196.1235,TPM and JCRB Meetings Held 2026,02-Jan-26,31-Dec-26,254,02-Jan-26,31-Dec-26,254,254,0%,759,OGAH Alima
    ER7743LT,W527,DNB DPCS Defueling Support,W527.4830,TPM and JCRB Meetings Held 2026,02-Jan-26,31-Dec-26,254,02-Jan-26,31-Dec-26,254,254,0%,1012,OGAH Alima
    ER7582LT,W196,HYA DPCS Defueling Support,W195.1080,TGN097 R1 - Plan Produced,02-Jan-26,06-Feb-26,26,02-Jan-26*,06-Feb-26,26,26,0%,1242,OGAH Alima
    ER7582LT,W196,HYA DPCS Defueling Support,W196.25470,LSR Pre Data Extract,02-Jan-26,08-Jan-26,5,02-Jan-26*,08-Jan-26,5,5,0%,1202,OGAH Alima
    ER7580LT,W194,HPB DPCS Defueling Support,W194.25760,ETC 2026,02-Jan-26,04-Jan-27,254,02-Jan-26,31-Dec-26,254,254,0%,255,OGAH Alima
    ER7580LT,W194,HPB DPCS Defueling Support,W194.25770,HPB PES Group Support - 2026,02-Jan-26,31-Dec-26,254,02-Jan-26,31-Dec-26,254,254,0%,255,OGAH Alima
    ER7580LT,W194,HPB DPCS Defueling Support,W194.25780,Plant Control Systems & Simulators (PCS&S) Group - 2026,02-Jan-26,31-Dec-26,254,02-Jan-26,31-Dec-26,254,254,0%,255,OGAH Alima
    ER7581LT,W195,HRA DPCS Defueling Support,W195.26070,ETC 2026,02-Jan-26,31-Dec-26,254,02-Jan-26,31-Dec-26,254,254,0%,0,OGAH Alima
    ER7582LT,W196,HYA DPCS Defueling Support,W196.2070,ETC 2026,02-Jan-26,31-Dec-26,254,02-Jan-26,31-Dec-26,254,254,0%,0,OGAH Alima
    W529LT,W529,TOR DPCS Defueling Support,20,ETC 2026,02-Jan-26,31-Dec-26,254,02-Jan-26*,31-Dec-26,254,254,0%,1523,OGAH Alima
    W529LT,W529,TOR DPCS Defueling Support,W195.1010,TPM and JCRB Meetings Held - 2026,02-Jan-26,31-Dec-26,254,02-Jan-26,31-Dec-26,254,254,0%,0,OGAH Alima
    W526LT,W526,HYB DPCS Defueling Support,W526.1200,ETC 2026,,,254,02-Jan-26,31-Dec-26,254,254,0%,0,OGAH Alima
    ER7743LT,W527,DNB DPCS Defueling Support,W527.1657,Worldgrid Software Modification Support (LAMPS) - Q1 2026,05-Jan-26,31-Mar-26,62,05-Jan-26,31-Mar-26,62,62,0%,1267,OGAH Alima
    ER7743LT,W527,DNB DPCS Defueling Support,W527.1700,DNB PES Group Support - 2026,05-Jan-26,31-Dec-26,253,05-Jan-26*,31-Dec-26,253,253,0%,1267,OGAH Alima
    ER7743LT,W527,DNB DPCS Defueling Support,W527.1710,Plant Control Systems & Simulators (PCS&S) Group - 2026,05-Jan-26,21-Aug-26,253,05-Jan-26,31-Dec-26,253,253,0%,1267,OGAH Alima
    ER7743LT,W527,DNB DPCS Defueling Support,W527.1655,Thales POLARIS & AIC Support Contract Q1 2026,05-Jan-26,31-Mar-26,62,05-Jan-26,31-Mar-26,62,62,0%,1267,OGAH Alima
    ER7743LT,W527,DNB DPCS Defueling Support,W527.1651,Worldgrid System Engineering Support (SQEP) Q1 2026,05-Jan-26,31-Mar-26,62,05-Jan-26,31-Mar-26,62,62,0%,1458,OGAH Alima
    ER7743LT,W527,DNB DPCS Defueling Support,W527.1653,Worldgrid Long Term Support Contract Q1 2026,05-Jan-26,31-Mar-26,62,05-Jan-26,31-Mar-26,62,62,0%,1458,OGAH Alima
    ER7743LT,W527,DNB DPCS Defueling Support,W527.1667,Cost Engineer support 2026,05-Jan-26,31-Dec-26,253,05-Jan-26,31-Dec-26,253,253,0%,1267,OGAH Alima
    ER7743LT,W527,DNB DPCS Defueling Support,W527.25670,DNB 2026 2.10 - Site Acceptance Testing,05-Jan-26,27-Mar-26,60,05-Jan-26,27-Mar-26,60,60,0%,1404,OGAH Alima
    ER7581LT,W195,HRA DPCS Defueling Support,W195.25730,HRA 2026  - Data Modifications and Amendments,05-Jan-26,30-Dec-26,252,05-Jan-26*,30-Dec-26,252,252,0%,1015,OGAH Alima
    ER7582LT,W196,HYA DPCS Defueling Support,W195.1000,HYA 2026 - Data Modifications and Amendments,05-Jan-26,30-Dec-26,252,05-Jan-26*,30-Dec-26,252,252,0%,1015,OGAH Alima
    W526LT,W526,HYB DPCS Defueling Support,W526.10570,HYB 2027 S14R7 - Specification,05-Jan-26,02-Feb-27,275,05-Jan-26*,02-Feb-27,275,275,0%,1377,OGAH Alima
    W230LT,W230,HYB Enhanced Defueling Safety Case Strategy,W230.3030,HYB Reactor Inspections Relaxations: Station comments on NSRS,17-Apr-25,02-May-25,10,07-Jan-26,20-Jan-26,10,10,0%,12,OGAH Alima
    W230LT,W230,HYB Enhanced Defueling Safety Case Strategy,W230.3120,HYB Reactor Inspections Relaxations: DA (Peer) Comments on NSRS,17-Apr-25,02-May-25,10,07-Jan-26,20-Jan-26,10,10,0%,12,OGAH Alima
    W234LT,W234,TOR Enhanced Defueling Safety Case Strategy,W234.3030,TOR Reactor Inspections Relaxations: Station comments on NSRS,17-Apr-25,02-May-25,10,07-Jan-26,20-Jan-26,10,10,0%,12,OGAH Alima
    W234LT,W234,TOR Enhanced Defueling Safety Case Strategy,W234.3120,TOR Reactor Inspections Relaxations: DA (Peer) Comments on NSRS,17-Apr-25,02-May-25,10,07-Jan-26,20-Jan-26,10,10,0%,12,OGAH Alima
    W529LT,W529,TOR DPCS Defueling Support,W529.6360,TOR 2025 S13R2 - Installation R2,12-Jan-26,27-Feb-26,35,12-Jan-26,27-Feb-26,35,35,0%,1736,OGAH Alima
    W156LT,W156,HYA Security,W156.2670,ONR acknowledgement of proposed delivery model (NSSP),,18-Jun-25,0,,14-Jan-26,0,0,0%,466,OGAH Alima
    W730LT_UN,W730,HYB Enhanced Defueling Safety Cases,W730.3920,HYB Enhanced Defueling Rate: Deterministic Assessment Verification,16-Jan-26,19-Jan-26,2,16-Jan-26,19-Jan-26,2,2,0%,524,OGAH Alima
    W731LT_UN,W731,TOR Enhanced Defueling Safety Cases,W731.1530,TOR Enhanced Defueling Rate: Deterministic Assessment Verification,16-Jan-26,19-Jan-26,2,16-Jan-26,19-Jan-26,2,2,0%,524,OGAH Alima
    ER7514LT,W161,HPB PSR4,W161.9160,HPB PSR3 Extension EC: PSR4 Safety Case - Submitted to ONR,,17-Jan-25,0,,16-Jan-26,0,0,0%,157,OGAH Alima
    ER7514LT,W161,HPB PSR4,W161.8570,HPB PSR3 Extension EC: ONR Approval of Safety Case (Letter sent to initiate) EC 374794,20-Jan-25,22-Apr-25,65,19-Jan-26,21-Apr-26,65,65,0%,157,OGAH Alima
    ER7743LT,W527,DNB DPCS Defueling Support,W527.25750,DNB 2027 2.11 - Specification,19-Jan-26,02-Oct-26,180,19-Jan-26*,02-Oct-26,180,180,0%,1152,OGAH Alima
    ER7514LT,W161,HPB PSR4,W161.6000,HPB PSR4 Head Doc: NSC Presentation Date (T) EC 374795,,15-Oct-25,0,,19-Jan-26,0,0,0%,103,OGAH Alima
    ER7514LT,W161,HPB PSR4,W161.8280,HPB PSR4 Head Doc: NSC Presentation Date (T) EC 374795 <Enter Paper Title Here>,,15-Oct-25,0,,19-Jan-26*,0,0,0%,103,OGAH Alima
    ER7514LT,W161,HPB PSR4,W161.6020,HPB PSR4 Head Doc: NSC Consideration & advice to Station Director ==> KDM,15-Oct-25,28-Oct-25,10,20-Jan-26,02-Feb-26,10,10,0%,99,OGAH Alima
    W730LT_UN,W730,HYB Enhanced Defueling Safety Cases,W730.3930,HYB Enhanced Defueling Rate: Deterministic Assessment Technical Review,20-Jan-26,21-Jan-26,2,20-Jan-26,21-Jan-26,2,2,0%,524,OGAH Alima
    W731LT_UN,W731,TOR Enhanced Defueling Safety Cases,W731.1540,TOR Enhanced Defueling Rate: Deterministic Assessment Technical Review,20-Jan-26,21-Jan-26,2,20-Jan-26,21-Jan-26,2,2,0%,524,OGAH Alima
    W230LT,W230,HYB Enhanced Defueling Safety Case Strategy,W230.2990,HYB Reactor Inspections Relaxations: INA comments on NSRS,06-May-25,19-May-25,10,21-Jan-26,03-Feb-26,10,10,0%,12,OGAH Alima
    W234LT,W234,TOR Enhanced Defueling Safety Case Strategy,W234.2990,TOR Reactor Inspections Relaxations: INA comments on NSRS,06-May-25,19-May-25,10,21-Jan-26,03-Feb-26,10,10,0%,12,OGAH Alima
    W155LT,W155,HRA Security,W155.2670,ONR acknowledgement of proposed delivery model (NSSP),,11-Mar-25,0,,21-Jan-26,0,0,0%,240,OGAH Alima
    W730LT_UN,W730,HYB Enhanced Defueling Safety Cases,W730.3940,HYB Enhanced Defueling Rate: Deterministic Assessment Issued/ Approval,,21-Jan-26,0,,21-Jan-26,0,0,0%,524,OGAH Alima
    W731LT_UN,W731,TOR Enhanced Defueling Safety Cases,W731.1550,TOR Enhanced Defueling Rate: Deterministic Assessment Issued/ Approval,,21-Jan-26,0,,21-Jan-26,0,0,0%,524,OGAH Alima
    W730LT_UN,W730,HYB Enhanced Defueling Safety Cases,W730.3950,HYB Enhanced Defueling Rate: Deterministic Assessment Production Risk (Risk 42008),22-Jan-26,28-Jan-26,5,22-Jan-26,28-Jan-26,5,5,0%,524,OGAH Alima
    W731LT_UN,W731,TOR Enhanced Defueling Safety Cases,W731.1560,TOR Enhanced Defueling Rate: Deterministic Assessment Production Risk (Risk 42008),22-Jan-26,28-Jan-26,5,22-Jan-26,28-Jan-26,5,5,0%,524,OGAH Alima
    W730LT_UN,W730,HYB Enhanced Defueling Safety Cases,W730.3960,HYB Enhanced Defueling Rate: HF Report on HBSCs Authoring,29-Jan-26,18-Feb-26,15,29-Jan-26,18-Feb-26,15,15,0%,524,OGAH Alima
    W731LT_UN,W731,TOR Enhanced Defueling Safety Cases,W731.1570,TOR Enhanced Defueling Rate: HF Report on HBSCs Authoring,29-Jan-26,18-Feb-26,15,29-Jan-26,18-Feb-26,15,15,0%,524,OGAH Alima
    ER7582LT,W196,HYA DPCS Defueling Support,W196.6320,HYA 2025 - Go / No Go Decision,30-Jan-26,30-Jan-26,1,30-Jan-26*,30-Jan-26,1,1,0%,1247,OGAH Alima
    ER7581LT,W195,HRA DPCS Defueling Support,W195.25630,HRA 2025  - Go / No Go Decision,30-Jan-26,30-Jan-26,1,30-Jan-26*,30-Jan-26,1,1,0%,1144,OGAH Alima
    ER7582LT,W196,HYA DPCS Defueling Support,W196.25480,"LSR Data Export, Analysis, Draft Report",30-Jan-26,19-Feb-26,15,30-Jan-26,19-Feb-26,15,15,0%,1202,OGAH Alima
 Subtotal,,,,,02-Jan-25,01-Mar-27,276,02-Jan-26,02-Feb-27,276,276,,1501,OGAH Alima
 01-Feb-26
    W156LT,W156,HYA Security,W156.2580,Implement administratively based mitigations,03-Feb-25,17-Nov-26,454,02-Feb-26*,15-Nov-27,454,454,0%,0,OGAH Alima
    W156LT,W156,HYA Security,W156.2590,Implement temp. infrastructure and org. mitigations required to enable commencement of defuelling (FEEDS TO SUMMARY SCHE,03-Feb-25,17-Nov-26,454,02-Feb-26*,15-Nov-27,454,454,0%,0,OGAH Alima
    W156LT,W156,HYA Security,W156.2600,Implement permanent infrastructure and organisational mitigations,03-Feb-25,17-Nov-26,454,02-Feb-26*,15-Nov-27,454,454,0%,0,OGAH Alima
    ER7514LT,W161,HPB PSR4,W161.6030,HPB PSR4 Head Doc: INSA Final Approval EC 374795,,28-Oct-25,0,,02-Feb-26,0,0,0%,99,OGAH Alima
    ER7514LT,W161,HPB PSR4,W161.9200,HPB PSR4 Head Doc: INSA Final Approval EC 374795,,28-Oct-25,0,,02-Feb-26,0,0,0%,99,OGAH Alima
    ER7581LT,W195,HRA DPCS Defueling Support,W195.25640,"HRA 2025  - Design, Consolidation and Testing",03-Feb-26,30-Mar-26,40,03-Feb-26,30-Mar-26,40,40,0%,1144,OGAH Alima
    ER7514LT,W161,HPB PSR4,W161.6040,HPB PSR4 Head Doc: ONR Approval of Safety Case (Letter sent to initiate) EC 374795,29-Dec-25,28-Dec-26,80,03-Feb-26,29-May-26,80,80,0%,99,OGAH Alima
    ER7514LT,W161,HPB PSR4,W161.7060,HPB PSR4 Head Doc: Prepare Paper for Submission to ONR,29-Oct-25,24-Dec-25,10,03-Feb-26,16-Feb-26,10,10,0%,99,OGAH Alima
    W230LT,W230,HYB Enhanced Defueling Safety Case Strategy,W230.3050,HYB Reactor Inspections Relaxations: Register EC and identify Milestones in AMS  EC NNNNNN,20-May-25,20-May-25,1,04-Feb-26,04-Feb-26,1,1,0%,12,OGAH Alima
    W234LT,W234,TOR Enhanced Defueling Safety Case Strategy,W234.3050,TOR Reactor Inspections Relaxations: Register EC and identify Milestones in AMS  EC NNNNNN,20-May-25,20-May-25,1,04-Feb-26,04-Feb-26,1,1,0%,12,OGAH Alima
    W230LT,W230,HYB Enhanced Defueling Safety Case Strategy,W230.3060,HYB Reactor Inspections Relaxations: Update NSRS to address comments,21-May-25,21-May-25,1,05-Feb-26,05-Feb-26,1,1,0%,12,OGAH Alima
    W234LT,W234,TOR Enhanced Defueling Safety Case Strategy,W234.3060,TOR Reactor Inspections Relaxations: Update NSRS to address comments,21-May-25,21-May-25,1,05-Feb-26,05-Feb-26,1,1,0%,12,OGAH Alima
    W230LT,W230,HYB Enhanced Defueling Safety Case Strategy,W230.3330,HYB Reactor Inspections Relaxations: Risk Ref 38976 TBC - NSRS Production,22-May-25,29-May-25,5,06-Feb-26,12-Feb-26,5,5,0%,12,OGAH Alima
    W526LT,W526,HYB DPCS Defueling Support,W526.10340,HYB 2026 TGN097 R8 - Plan Produced,06-Feb-26,02-Apr-26,40,06-Feb-26*,02-Apr-26,40,40,0%,1681,OGAH Alima
    W234LT,W234,TOR Enhanced Defueling Safety Case Strategy,W234.3330,TOR Reactor Inspections Relaxations: Risk Ref 38976 TBC - NSRS Production,22-May-25,29-May-25,5,06-Feb-26,12-Feb-26,5,5,0%,12,OGAH Alima
    W730LT_UN,W730,HYB Enhanced Defueling Safety Cases,W730.2040,HYB Enhanced Defueling Rate: Requirements Capture,10-Feb-26,11-Feb-26,2,10-Feb-26,11-Feb-26,2,2,0%,14,OGAH Alima
    W730LT_UN,W730,HYB Enhanced Defueling Safety Cases,W730.2310,HYB Enhanced Defueling Rate: Final Authoring Consolidation Check,10-Feb-26,16-Feb-26,5,10-Feb-26,16-Feb-26,5,5,0%,11,OGAH Alima
    W730LT_UN,W730,HYB Enhanced Defueling Safety Cases,W730.2320,HYB Enhanced Defueling Rate: Lessons Learned Activitiy - Following Authoring of SC,10-Feb-26,12-Feb-26,3,10-Feb-26,12-Feb-26,3,3,0%,540,OGAH Alima
    W731LT_UN,W731,TOR Enhanced Defueling Safety Cases,W731.1580,TOR Enhanced Defueling Rate: Lessons Learned Activitiy - Following Authoring of SC,10-Feb-26,12-Feb-26,3,10-Feb-26,12-Feb-26,3,3,0%,540,OGAH Alima
    W731LT_UN,W731,TOR Enhanced Defueling Safety Cases,W731.1590,TOR Enhanced Defueling Rate: Final Authoring Consolidation Check,10-Feb-26,16-Feb-26,5,10-Feb-26,16-Feb-26,5,5,0%,11,OGAH Alima
    W731LT_UN,W731,TOR Enhanced Defueling Safety Cases,W731.1600,TOR Enhanced Defueling Rate: Requirements Capture,10-Feb-26,11-Feb-26,2,10-Feb-26,11-Feb-26,2,2,0%,14,OGAH Alima
    W730LT_UN,W730,HYB Enhanced Defueling Safety Cases,W730.1240,HYB Enhanced Defueling Rate: Lessons Learned Milestone - Authoring of the Safety Case,,12-Feb-26,0,,12-Feb-26,0,0,0%,540,OGAH Alima
    W230LT,W230,HYB Enhanced Defueling Safety Case Strategy,W230.3570,HYB Reactor Inspections Relaxations: Risk Milestone - NSRS Production Complete (Risk Ref 38976),,19-Feb-25,0,,12-Feb-26,0,0,0%,12,OGAH Alima
    W234LT,W234,TOR Enhanced Defueling Safety Case Strategy,W234.3570,TOR Reactor Inspections Relaxations: Risk Milestone - NSRS Production Complete (Risk Ref 38976),,19-Feb-25,0,,12-Feb-26,0,0,0%,12,OGAH Alima
    W731LT_UN,W731,TOR Enhanced Defueling Safety Cases,W731.1610,TOR Enhanced Defueling Rate: Lessons Learned Milestone - Authoring of the Safety Case,,12-Feb-26,0,,12-Feb-26,0,0,0%,540,OGAH Alima
    W230LT,W230,HYB Enhanced Defueling Safety Case Strategy,W230.3020,HYB Reactor Inspections Relaxations: Issue final NSRS,30-May-25,30-May-25,1,13-Feb-26,13-Feb-26,1,1,0%,12,OGAH Alima
    W234LT,W234,TOR Enhanced Defueling Safety Case Strategy,W234.3020,TOR Reactor Inspections Relaxations: Issue final NSRS,30-May-25,30-May-25,1,13-Feb-26,13-Feb-26,1,1,0%,12,OGAH Alima
    ER7514LT,W161,HPB PSR4,W161.8010,HPB PSR4 Head Doc: PSR4 Safety Case - Submitted to ONR,,24-Dec-25,0,,16-Feb-26,0,0,0%,222,OGAH Alima
    W730LT_UN,W730,HYB Enhanced Defueling Safety Cases,W730.2300,HYB Enhanced Defueling Rate: Obtain CO Review & Detail Checker,17-Feb-26,02-Mar-26,10,17-Feb-26,02-Mar-26,10,10,0%,11,OGAH Alima
    W230LT,W230,HYB Enhanced Defueling Safety Case Strategy,W230.3000,HYB Reactor Inspections Relaxations: DA & INA agree NSRS (for authorised designers-NSRS must be reviewed by DA),03-Jun-25,23-Jun-25,15,17-Feb-26,09-Mar-26,15,15,0%,12,OGAH Alima
    W234LT,W234,TOR Enhanced Defueling Safety Case Strategy,W234.3000,TOR Reactor Inspections Relaxations: DA & INA agree NSRS (for authorised designers-NSRS must be reviewed by DA),03-Jun-25,23-Jun-25,15,17-Feb-26,09-Mar-26,15,15,0%,12,OGAH Alima
    W731LT_UN,W731,TOR Enhanced Defueling Safety Cases,W731.1620,TOR Enhanced Defueling Rate: Obtain CO Review & Detail Checker,17-Feb-26,02-Mar-26,10,17-Feb-26,02-Mar-26,10,10,0%,11,OGAH Alima
    W730LT_UN,W730,HYB Enhanced Defueling Safety Cases,W730.3970,HYB Enhanced Defueling Rate: HF Report on HBSCs Verification,19-Feb-26,20-Feb-26,2,19-Feb-26,20-Feb-26,2,2,0%,524,OGAH Alima
    W731LT_UN,W731,TOR Enhanced Defueling Safety Cases,W731.1630,TOR Enhanced Defueling Rate: HF Report on HBSCs Verification,19-Feb-26,20-Feb-26,2,19-Feb-26,20-Feb-26,2,2,0%,524,OGAH Alima
    ER7582LT,W196,HYA DPCS Defueling Support,W196.25490,Issue Recommendations,20-Feb-26,20-Feb-26,1,20-Feb-26,20-Feb-26,1,1,0%,1202,OGAH Alima
    W730LT_UN,W730,HYB Enhanced Defueling Safety Cases,W730.3980,HYB Enhanced Defueling Rate: HF Report on HBSCs Technical Review,23-Feb-26,24-Feb-26,2,23-Feb-26,24-Feb-26,2,2,0%,524,OGAH Alima
    W731LT_UN,W731,TOR Enhanced Defueling Safety Cases,W731.1640,TOR Enhanced Defueling Rate: HF Report on HBSCs Technical Review,23-Feb-26,24-Feb-26,2,23-Feb-26,24-Feb-26,2,2,0%,524,OGAH Alima
    W230LT,W230,HYB Enhanced Defueling Safety Case Strategy,W230.3010,HYB Reactor Inspections Relaxations: Station agree NSRS,10-Jun-25,23-Jun-25,10,24-Feb-26,09-Mar-26,10,10,0%,12,OGAH Alima
    ER7580LT,W194,HPB DPCS Defueling Support,W194.25700,Fuel Free Verification (FFV) declared,08-Jul-26,10-Jul-26,3,24-Feb-26,26-Feb-26,3,3,0%,299,OGAH Alima
    W234LT,W234,TOR Enhanced Defueling Safety Case Strategy,W234.3010,TOR Reactor Inspections Relaxations: Station agree NSRS,10-Jun-25,23-Jun-25,10,24-Feb-26,09-Mar-26,10,10,0%,12,OGAH Alima
    W730LT_UN,W730,HYB Enhanced Defueling Safety Cases,W730.3990,HYB Enhanced Defueling Rate: HF Report on HBSCs Issued/ Approval,,24-Feb-26,0,,24-Feb-26,0,0,0%,524,OGAH Alima
    W731LT_UN,W731,TOR Enhanced Defueling Safety Cases,W731.1650,TOR Enhanced Defueling Rate: HF Report on HBSCs Issued/ Approval,,24-Feb-26,0,,24-Feb-26,0,0,0%,524,OGAH Alima
    W529LT,W529,TOR DPCS Defueling Support,W529.4540,TOR 2026 LSR - Data Export Produced and Issued,27-Apr-26,26-May-26,20,25-Feb-26,24-Mar-26,20,20,0%,1668,OGAH Alima
    W526LT,W526,HYB DPCS Defueling Support,W526.4540,HYB 2026 LSR - Data Export Produced and Issued,25-Feb-26,24-Mar-26,20,25-Feb-26,24-Mar-26,20,20,0%,1668,OGAH Alima
    W730LT_UN,W730,HYB Enhanced Defueling Safety Cases,W730.4000,HYB Enhanced Defueling Rate: HF Report on HBSCs Production Risk (Risk 42008),25-Feb-26,03-Mar-26,5,25-Feb-26,03-Mar-26,5,5,0%,524,OGAH Alima
    W731LT_UN,W731,TOR Enhanced Defueling Safety Cases,W731.1660,TOR Enhanced Defueling Rate: HF Report on HBSCs Production Risk (Risk 42008),25-Feb-26,03-Mar-26,5,25-Feb-26,03-Mar-26,5,5,0%,524,OGAH Alima
    ER7582LT,W196,HYA DPCS Defueling Support,W196.25500,Recommendations Workshop,26-Feb-26,26-Feb-26,1,26-Feb-26,26-Feb-26,1,1,0%,1202,OGAH Alima
    ER7580LT,W194,HPB DPCS Defueling Support,W194.25670,HPB SQEP declaration,03-Nov-25,11-Mar-26,20,27-Feb-26,26-Mar-26,20,20,0%,299,OGAH Alima
    ER7582LT,W196,HYA DPCS Defueling Support,W196.25510,"LSR Update, Internal Review & Issue to EDF",27-Feb-26,12-Mar-26,10,27-Feb-26,12-Mar-26,10,10,0%,1202,OGAH Alima
    W529LT,W529,TOR DPCS Defueling Support,W529.10140,TOR 2025 S13R2 - Installation R2,,27-Feb-26,0,,27-Feb-26,0,0,0%,1736,OGAH Alima
 Subtotal,,,,,03-Feb-25,28-Dec-26,454,02-Feb-26,15-Nov-27,454,454,,1302,OGAH Alima
 01-Mar-26
    W730LT_UN,W730,HYB Enhanced Defueling Safety Cases,W730.2500,HYB Enhanced Defueling Rate: Paper Authoring Risk (Risk 42008),03-Mar-26,16-Mar-26,10,03-Mar-26,16-Mar-26,10,10,0%,11,OGAH Alima
    W731LT_UN,W731,TOR Enhanced Defueling Safety Cases,W731.1670,TOR Enhanced Defueling Rate: Paper Authoring Risk (Risk 42008),03-Mar-26,16-Mar-26,10,03-Mar-26,16-Mar-26,10,10,0%,11,OGAH Alima
    W730LT_UN,W730,HYB Enhanced Defueling Safety Cases,W730.1030,HYB Enhanced Defueling Rate: All Key Supporting Technical References Completed for Enhanced Defueling Rate,,03-Mar-26,0,,03-Mar-26,0,0,0%,527,OGAH Alima
    W730LT_UN,W730,HYB Enhanced Defueling Safety Cases,W730.2250,HYB Enhanced Defueling Rate: All Supporting References Approved and Issued,,03-Mar-26,0,,03-Mar-26,0,0,0%,524,OGAH Alima
    W731LT_UN,W731,TOR Enhanced Defueling Safety Cases,W731.1680,TOR Enhanced Defueling Rate: All Supporting References Approved and Issued,,03-Mar-26,0,,03-Mar-26,0,0,0%,524,OGAH Alima
    W731LT_UN,W731,TOR Enhanced Defueling Safety Cases,W731.1690,TOR Enhanced Defueling Rate: All Key Supporting Technical References Completed for Enhanced Defueling Rate,,03-Mar-26,0,,03-Mar-26,0,0,0%,527,OGAH Alima
    W730LT_UN,W730,HYB Enhanced Defueling Safety Cases,W730.2270,HYB Enhanced Defueling Rate: Lessons Learned Activitiy - Following Completeion of Technical References,04-Mar-26,06-Mar-26,3,04-Mar-26,06-Mar-26,3,3,0%,524,OGAH Alima
    W731LT_UN,W731,TOR Enhanced Defueling Safety Cases,W731.1700,TOR Enhanced Defueling Rate: Lessons Learned Activitiy - Following Completeion of Technical References,04-Mar-26,06-Mar-26,3,04-Mar-26,06-Mar-26,3,3,0%,524,OGAH Alima
    ER7743LT,W527,DNB DPCS Defueling Support,W527.25500,LSR Pre Data Extract,06-Mar-26,12-Mar-26,5,06-Mar-26*,12-Mar-26,5,5,0%,1412,OGAH Alima
    W730LT_UN,W730,HYB Enhanced Defueling Safety Cases,W730.1230,HYB Enhanced Defueling Rate: Lessons Learned Milestone - Technical References,,06-Mar-26,0,,06-Mar-26,0,0,0%,524,OGAH Alima
    W731LT_UN,W731,TOR Enhanced Defueling Safety Cases,W731.1710,TOR Enhanced Defueling Rate: Lessons Learned Milestone - Technical References,,06-Mar-26,0,,06-Mar-26,0,0,0%,524,OGAH Alima
    W230LT,W230,HYB Enhanced Defueling Safety Case Strategy,W230.3430,HYB Reactor Inspections Relaxations: Station Agree NSRS,,14-Mar-25,0,,09-Mar-26,0,0,0%,48,OGAH Alima
    W230LT,W230,HYB Enhanced Defueling Safety Case Strategy,W230.3550,HYB Reactor Inspections Relaxations - NSRS Completion - Proceed with Safety Case (HYB),,14-Mar-25,0,,09-Mar-26,0,0,0%,48,OGAH Alima
    W234LT,W234,TOR Enhanced Defueling Safety Case Strategy,W234.3430,TOR Reactor Inspections Relaxations: Station Agree NSRS,,14-Mar-25,0,,09-Mar-26,0,0,0%,48,OGAH Alima
    W234LT,W234,TOR Enhanced Defueling Safety Case Strategy,W234.3550,TOR Reactor Inspections Relaxations - NSRS Completion - Proceed with Safety Case (TOR),,14-Mar-25,0,,09-Mar-26,0,0,0%,48,OGAH Alima
    W230LT,W230,HYB Enhanced Defueling Safety Case Strategy,W230.3070,HYB Reactor Inspections Relaxations: Circulate NSRS for Relevant Stakeholders (A-B Part),24-Jun-25,30-Jun-25,5,10-Mar-26,16-Mar-26,5,5,0%,12,OGAH Alima
    W234LT,W234,TOR Enhanced Defueling Safety Case Strategy,W234.3070,TOR Reactor Inspections Relaxations: Circulate NSRS for Relevant Stakeholders (A-B Part),24-Jun-25,30-Jun-25,5,10-Mar-26,16-Mar-26,5,5,0%,12,OGAH Alima
    ER7582LT,W196,HYA DPCS Defueling Support,W196.25520,EDF Review,13-Mar-26,26-Mar-26,10,13-Mar-26,26-Mar-26,10,10,0%,1202,OGAH Alima
    W730LT_UN,W730,HYB Enhanced Defueling Safety Cases,W730.1040,HYB Enhanced Defueling Rate: Safety Case Paper Authoring Complete EC NNNNNN - Enhanced Defueling Rate,,16-Mar-26,0,,16-Mar-26,0,0,0%,518,OGAH Alima
    W730LT_UN,W730,HYB Enhanced Defueling Safety Cases,W730.2350,HYB Enhanced Defueling Rate: Verification Commenced (T-11),,16-Mar-26,0,,16-Mar-26,0,0,0%,440,OGAH Alima
    W730LT_UN,W730,HYB Enhanced Defueling Safety Cases,W730.2370,HYB Enhanced Defueling Rate: Issue to Peer CO & Station for comments,,16-Mar-26,0,,16-Mar-26,0,0,0%,440,OGAH Alima
    W731LT_UN,W731,TOR Enhanced Defueling Safety Cases,W731.1720,TOR Enhanced Defueling Rate: Issue to Peer CO & Station for comments,,16-Mar-26,0,,16-Mar-26,0,0,0%,440,OGAH Alima
    W731LT_UN,W731,TOR Enhanced Defueling Safety Cases,W731.1730,TOR Enhanced Defueling Rate: Verification Commenced (T-11),,16-Mar-26,0,,16-Mar-26,0,0,0%,440,OGAH Alima
    W731LT_UN,W731,TOR Enhanced Defueling Safety Cases,W731.1740,TOR Enhanced Defueling Rate: Safety Case Paper Authoring Complete EC NNNNNN - Enhanced Defueling Rate,,16-Mar-26,0,,16-Mar-26,0,0,0%,518,OGAH Alima
    W730LT_UN,W730,HYB Enhanced Defueling Safety Cases,W730.1600,Confirm Objectives to be Delivered at Gate B+,17-Mar-26,30-Mar-26,10,17-Mar-26,30-Mar-26,10,10,0%,11,OGAH Alima
    W230LT,W230,HYB Enhanced Defueling Safety Case Strategy,W230.3110,HYB Reactor Inspections Relaxations: Send NSRS to ONR to Determine Level of Review Required (Acknowledgement or Agreemen,01-Jul-25,01-Jul-25,1,17-Mar-26,17-Mar-26,1,1,0%,12,OGAH Alima
    W234LT,W234,TOR Enhanced Defueling Safety Case Strategy,W234.3110,TOR Reactor Inspections Relaxations: Send NSRS to ONR to Determine Level of Review Required (Acknowledgement or Agreemen,01-Jul-25,01-Jul-25,1,17-Mar-26,17-Mar-26,1,1,0%,12,OGAH Alima
    W731LT_UN,W731,TOR Enhanced Defueling Safety Cases,W731.1750,Confirm Objectives to be Delivered at Gate B+,17-Mar-26,30-Mar-26,10,17-Mar-26,30-Mar-26,10,10,0%,11,OGAH Alima
    W230LT,W230,HYB Enhanced Defueling Safety Case Strategy,W230.3130,HYB Reactor Inspections Relaxations: Outline Safety Case / ALARP Strategy,02-Jul-25,15-Jul-25,10,18-Mar-26,31-Mar-26,10,10,0%,12,OGAH Alima
    W230LT,W230,HYB Enhanced Defueling Safety Case Strategy,W230.3380,HYB Reactor Inspections Relaxations: Lessons Learned Activity - NSRS Approval,02-Jul-25,04-Jul-25,3,18-Mar-26,20-Mar-26,3,3,0%,39,OGAH Alima
    W234LT,W234,TOR Enhanced Defueling Safety Case Strategy,W234.3130,TOR Reactor Inspections Relaxations: Outline Safety Case / ALARP Strategy,02-Jul-25,15-Jul-25,10,18-Mar-26,31-Mar-26,10,10,0%,12,OGAH Alima
    W234LT,W234,TOR Enhanced Defueling Safety Case Strategy,W234.3380,TOR Reactor Inspections Relaxations: Lessons Learned Activity - NSRS Approval,02-Jul-25,04-Jul-25,3,18-Mar-26,20-Mar-26,3,3,0%,39,OGAH Alima
    W230LT,W230,HYB Enhanced Defueling Safety Case Strategy,W230.3590,HYB Reactor Inspections Relaxations: Lessons Learned Milestone - NSRS Approval,,27-Mar-25,0,,20-Mar-26,0,0,0%,39,OGAH Alima
    W234LT,W234,TOR Enhanced Defueling Safety Case Strategy,W234.3590,TOR Reactor Inspections Relaxations: Lessons Learned Milestone - NSRS Approval,,27-Mar-25,0,,20-Mar-26,0,0,0%,39,OGAH Alima
    W529LT,W529,TOR DPCS Defueling Support,W529.4530,TOR 2026 LSR - Recommendations Produced and Issued,27-May-26,09-Jun-26,10,25-Mar-26,09-Apr-26,10,10,0%,1668,OGAH Alima
    W526LT,W526,HYB DPCS Defueling Support,W526.4530,HYB 2026 LSR - Recommendations Produced and Issued,25-Mar-26,09-Apr-26,10,25-Mar-26,09-Apr-26,10,10,0%,1668,OGAH Alima
    ER7514LT,W161,HPB PSR4,W161.8310,>>>MIRROR OF INCOMING ENABLER (W404) - EC PDSC Approved (Station Approval) (To be linked),,01-Dec-25,0,,26-Mar-26*,0,0,0%,195,OGAH Alima
    ER7514LT,W161,HPB PSR4,W160.9600,>>>MIRROR OF INCOMING ENABLER (W404) - EC PDSC Safety Case Submitted to ONR,,,0,,26-Mar-26*,0,0,0%,194,OGAH Alima
    ER7514LT,W161,HPB PSR4,W161.9600,HPB PSR4 Head Doc: EC PDSC Safety Case Submitted to ONR (Incoming milestone to be linked),,,1,26-Mar-26,26-Mar-26,1,1,0%,194,OGAH Alima
    ER7514LT,W161,HPB PSR4,W160.9610,>>>INCOMING ENABLER (W404) - EC PDSC Safety Case Submitted to ONR,,,0,,26-Mar-26,0,0,0%,194,OGAH Alima
    ER7580LT,W194,HPB DPCS Defueling Support,W194.25680,Asset Assessment,12-Mar-26,11-May-26,30,27-Mar-26,12-May-26,30,30,0%,299,OGAH Alima
    ER7582LT,W196,HYA DPCS Defueling Support,W196.25530,Update LSR,27-Mar-26,02-Apr-26,5,27-Mar-26,02-Apr-26,5,5,0%,1202,OGAH Alima
    ER7514LT,W161,HPB PSR4,W161.8300,>>>INCOMING ENABLER (W404) - EC PDSC Approved,,02-Dec-25,0,,27-Mar-26,0,0,0%,193,OGAH Alima
    W730LT_UN,W730,HYB Enhanced Defueling Safety Cases,W730.1590,Initial high level scope of programme,31-Mar-26,15-Apr-26,10,31-Mar-26,15-Apr-26,10,10,0%,11,OGAH Alima
    W731LT_UN,W731,TOR Enhanced Defueling Safety Cases,W731.1760,Initial high level scope of programme,31-Mar-26,15-Apr-26,10,31-Mar-26,15-Apr-26,10,10,0%,11,OGAH Alima
    W230LT,W230,HYB Enhanced Defueling Safety Case Strategy,W230.3460,HYB Reactor Inspections Relaxations: Optioneering Complete (Outline Safety Case / ALARP Strategy),,07-Apr-25,0,,31-Mar-26,0,0,0%,12,OGAH Alima
    W230LT,W230,HYB Enhanced Defueling Safety Case Strategy,W230.3700,>>>OUTGOING ENABLER - NSRS's Complete - Feeds B-D Plan (Start Authoring References),,15-Jul-25,0,,31-Mar-26,0,0,0%,32,OGAH Alima
    W234LT,W234,TOR Enhanced Defueling Safety Case Strategy,W234.3460,TOR Reactor Inspections Relaxations: Optioneering Complete (Outline Safety Case / ALARP Strategy),,07-Apr-25,0,,31-Mar-26,0,0,0%,12,OGAH Alima
    W234LT,W234,TOR Enhanced Defueling Safety Case Strategy,W234.3700,>>>OUTGOING ENABLER - NSRS's Complete - Feeds B-D Plan (Start Authoring References),,15-Jul-25,0,,31-Mar-26,0,0,0%,32,OGAH Alima
 Subtotal,,,,,14-Mar-25,09-Jun-26,48,03-Mar-26,12-May-26,48,48,,1646,OGAH Alima
 01-Apr-26
    W155LT,W155,HRA Security,W155..2580,Implement administratively based mitigations,01-Apr-26,23-Apr-26,15,01-Apr-26*,23-Apr-26,15,15,0%,176,OGAH Alima
    ER7581LT,W195,HRA DPCS Defueling Support,W195.2390,Thales Long Term Support Contract Q2 2026,01-Apr-26,30-Jun-26,61,01-Apr-26,30-Jun-26,61,61,0%,1014,OGAH Alima
    ER7582LT,W196,HYA DPCS Defueling Support,W196.2400,Thales Long Term Support Contract Q2 2026,01-Apr-26,30-Jun-26,61,01-Apr-26*,30-Jun-26,61,61,0%,1144,OGAH Alima
    ER7743LT,W527,DNB DPCS Defueling Support,W527.1720,Worldgrid Software Modification Support (LAMPS) - Q2 2026,01-Apr-26,30-Jun-26,61,01-Apr-26,30-Jun-26,61,61,0%,1397,OGAH Alima
    ER7743LT,W527,DNB DPCS Defueling Support,W527.1705,Thales POLARIS & AIC Support Contract Q2 2026,01-Apr-26,30-Jun-26,61,01-Apr-26,30-Jun-26,61,61,0%,1397,OGAH Alima
    ER7743LT,W527,DNB DPCS Defueling Support,W527.1701,Worldgrid System Engineering Support (SQEP) Q2 2026,01-Apr-26,30-Jun-26,61,01-Apr-26*,30-Jun-26,61,61,0%,1397,OGAH Alima
    ER7743LT,W527,DNB DPCS Defueling Support,W527.1703,Worldgrid Long Term Support Contract Q2 2026,01-Apr-26,30-Jun-26,61,01-Apr-26,30-Jun-26,61,61,0%,1397,OGAH Alima
    W529LT,W529,TOR DPCS Defueling Support,W529.1295,TOR Thales Long Term Support Contract - Q2 2026,01-Apr-26,30-Jun-26,61,01-Apr-26,30-Jun-26,61,61,0%,1523,OGAH Alima
    W526LT,W526,HYB DPCS Defueling Support,W526.1295,HYB Thales Long Term Support Contract - Q2 2026,02-Jan-25,27-Mar-25,61,01-Apr-26,30-Jun-26,61,61,0%,1523,OGAH Alima
    W526LT,W526,HYB DPCS Defueling Support,W526.1270,HYB Argus Support Contract - Q3 2026,01-Apr-25,01-Apr-25,1,01-Apr-26,01-Apr-26,1,1,0%,1652,OGAH Alima
    W230LT,W230,HYB Enhanced Defueling Safety Case Strategy,W230.1780,## Gate D Submission - (Cost Summary)  ##,16-Jul-25,19-Aug-25,32,01-Apr-26,19-May-26,32,32,0%,0,OGAH Alima
    W230LT,W230,HYB Enhanced Defueling Safety Case Strategy,W230.1830,Hold Project Closeout and Lessons Learned Meeting,16-Jul-25,16-Jul-25,1,01-Apr-26,01-Apr-26,1,1,0%,12,OGAH Alima
    W529LT,W529,TOR DPCS Defueling Support,W529.1665,TOR Argus Support Contract - Q3 2026,01-Jul-26,30-Sep-26,65,01-Apr-26,06-Jul-26,65,65,0%,1584,OGAH Alima
    W234LT,W234,TOR Enhanced Defueling Safety Case Strategy,W234.1780,## Gate D Submission - (Cost Summary)  ##,16-Jul-25,19-Aug-25,32,01-Apr-26,19-May-26,32,32,0%,0,OGAH Alima
    W234LT,W234,TOR Enhanced Defueling Safety Case Strategy,W234.1830,Hold Project Closeout and Lessons Learned Meeting,16-Jul-25,16-Jul-25,1,01-Apr-26,01-Apr-26,1,1,0%,12,OGAH Alima
    W526LT,W526,HYB DPCS Defueling Support,W526.1275,HYB Argus Support Contract - Q2 2026,02-Apr-25,01-Jul-25,61,02-Apr-26,01-Jul-26,61,61,0%,1652,OGAH Alima
    ER7743LT,W527,DNB DPCS Defueling Support,W527.25510,"LSR Data Export, Analysis, Draft Report",02-Apr-26,24-Apr-26,15,02-Apr-26,24-Apr-26,15,15,0%,1412,OGAH Alima
    W730LT_UN,W730,HYB Enhanced Defueling Safety Cases,W730.1610,Prepare Draft Project Definition Document (PDD),02-Apr-26,17-Apr-26,10,02-Apr-26,17-Apr-26,10,10,0%,11,OGAH Alima
    W730LT_UN,W730,HYB Enhanced Defueling Safety Cases,W730.1620,PCL Validate & Approve Baseline Package for PRC Submission,02-Apr-26,17-Apr-26,10,02-Apr-26,17-Apr-26,10,10,0%,11,OGAH Alima
    W730LT_UN,W730,HYB Enhanced Defueling Safety Cases,W730.1630,Add Data to PRC / IMS2 Paper,02-Apr-26,17-Apr-26,10,02-Apr-26,17-Apr-26,10,10,0%,11,OGAH Alima
    W730LT_UN,W730,HYB Enhanced Defueling Safety Cases,W730.1640,Update Schedule/Estimate from Risk Log & Add Provisions,02-Apr-26,17-Apr-26,10,02-Apr-26,17-Apr-26,10,10,0%,11,OGAH Alima
    W730LT_UN,W730,HYB Enhanced Defueling Safety Cases,W730.1650,Complete Risk Log with Estimates,02-Apr-26,17-Apr-26,10,02-Apr-26,17-Apr-26,10,10,0%,11,OGAH Alima
    W730LT_UN,W730,HYB Enhanced Defueling Safety Cases,W730.1660,Hold Risk Workshop,02-Apr-26,17-Apr-26,10,02-Apr-26,17-Apr-26,10,10,0%,11,OGAH Alima
    W230LT,W230,HYB Enhanced Defueling Safety Case Strategy,W230.1820,Produce Lessons Learned Report,17-Jul-25,17-Jul-25,1,02-Apr-26,02-Apr-26,1,1,0%,12,OGAH Alima
    W234LT,W234,TOR Enhanced Defueling Safety Case Strategy,W234.1820,Produce Lessons Learned Report,17-Jul-25,17-Jul-25,1,02-Apr-26,02-Apr-26,1,1,0%,12,OGAH Alima
    W731LT_UN,W731,TOR Enhanced Defueling Safety Cases,W731.1770,Hold Risk Workshop,02-Apr-26,17-Apr-26,10,02-Apr-26,17-Apr-26,10,10,0%,11,OGAH Alima
    W731LT_UN,W731,TOR Enhanced Defueling Safety Cases,W731.1780,Complete Risk Log with Estimates,02-Apr-26,17-Apr-26,10,02-Apr-26,17-Apr-26,10,10,0%,11,OGAH Alima
    W731LT_UN,W731,TOR Enhanced Defueling Safety Cases,W731.1790,Update Schedule/Estimate from Risk Log & Add Provisions,02-Apr-26,17-Apr-26,10,02-Apr-26,17-Apr-26,10,10,0%,11,OGAH Alima
    W731LT_UN,W731,TOR Enhanced Defueling Safety Cases,W731.1800,Add Data to PRC / IMS2 Paper,02-Apr-26,17-Apr-26,10,02-Apr-26,17-Apr-26,10,10,0%,11,OGAH Alima
    W731LT_UN,W731,TOR Enhanced Defueling Safety Cases,W731.1810,PCL Validate & Approve Baseline Package for PRC Submission,02-Apr-26,17-Apr-26,10,02-Apr-26,17-Apr-26,10,10,0%,11,OGAH Alima
    W731LT_UN,W731,TOR Enhanced Defueling Safety Cases,W731.1820,Prepare Draft Project Definition Document (PDD),02-Apr-26,17-Apr-26,10,02-Apr-26,17-Apr-26,10,10,0%,11,OGAH Alima
    W230LT,W230,HYB Enhanced Defueling Safety Case Strategy,W230.3690,All CAT 2 Safety Cases: Lessons Learned Milestone - Gate D Lessons Learned Report Produced,,17-Jul-25,0,,02-Apr-26,0,0,0%,12,OGAH Alima
    W234LT,W234,TOR Enhanced Defueling Safety Case Strategy,W234.3690,All CAT 2 Safety Cases: Lessons Learned Milestone - Gate D Lessons Learned Report Produced,,17-Jul-25,0,,02-Apr-26,0,0,0%,12,OGAH Alima
    W230LT,W230,HYB Enhanced Defueling Safety Case Strategy,W230.1810,Produce Project Closeout Report,18-Jul-25,21-Jul-25,2,07-Apr-26,08-Apr-26,2,2,0%,12,OGAH Alima
    ER7582LT,W196,HYA DPCS Defueling Support,W196.25540,Issue LSR,07-Apr-26,07-Apr-26,1,07-Apr-26,07-Apr-26,1,1,0%,1202,OGAH Alima
    W526LT,W526,HYB DPCS Defueling Support,W526.10350,HYB 2026 TGN097 R8 - Inspection,07-Apr-26,13-Apr-26,5,07-Apr-26,13-Apr-26,5,5,0%,1681,OGAH Alima
    W234LT,W234,TOR Enhanced Defueling Safety Case Strategy,W234.1810,Produce Project Closeout Report,18-Jul-25,21-Jul-25,2,07-Apr-26,08-Apr-26,2,2,0%,12,OGAH Alima
    ER7582LT,W196,HYA DPCS Defueling Support,W196.25630,HYA 2026 LSR Issued,,07-Apr-26,0,,07-Apr-26,0,0,0%,1202,OGAH Alima
    W230LT,W230,HYB Enhanced Defueling Safety Case Strategy,W230.1790,Prepare Gate D PRC Paper,22-Jul-25,29-Jul-25,6,09-Apr-26,16-Apr-26,6,6,0%,12,OGAH Alima
    W234LT,W234,TOR Enhanced Defueling Safety Case Strategy,W234.1790,Prepare Gate D PRC Paper,22-Jul-25,29-Jul-25,6,09-Apr-26,16-Apr-26,6,6,0%,12,OGAH Alima
    W529LT,W529,TOR DPCS Defueling Support,W529.4520,TOR 2026 LSR - Recommendation Sentencing Workshop Preparation and Event,10-Jun-26,23-Jun-26,10,10-Apr-26,23-Apr-26,10,10,0%,1668,OGAH Alima
    W526LT,W526,HYB DPCS Defueling Support,W526.4520,HYB 2026 LSR - Recommendation Sentencing Workshop Preparation and Event,10-Apr-26,23-Apr-26,10,10-Apr-26,23-Apr-26,10,10,0%,1668,OGAH Alima
    W526LT,W526,HYB DPCS Defueling Support,W526.10360,"HYB 2026 TGN097 R8 - Draft Report Produced, Internal Review and Issue to EDF",14-Apr-26,27-Apr-26,10,14-Apr-26,27-Apr-26,10,10,0%,1681,OGAH Alima
    W730LT_UN,W730,HYB Enhanced Defueling Safety Cases,W730.1670,Ensure Alignment of Schedule & Estimate,16-Apr-26,17-Apr-26,2,16-Apr-26,17-Apr-26,2,2,0%,11,OGAH Alima
    W730LT_UN,W730,HYB Enhanced Defueling Safety Cases,W730.1680,Estimate Scope +/- 10% B-B+ & +/- 30% Lifecycle,16-Apr-26,17-Apr-26,2,16-Apr-26,17-Apr-26,2,2,0%,11,OGAH Alima
    W730LT_UN,W730,HYB Enhanced Defueling Safety Cases,W730.1690,Plan Scope in Primavera (Level 2 B-B+ &  Level 1 Lifecycle),16-Apr-26,17-Apr-26,2,16-Apr-26,17-Apr-26,2,2,0%,11,OGAH Alima
    W730LT_UN,W730,HYB Enhanced Defueling Safety Cases,W730.1700,Define Project Control Structures (WBS/CBS/OBS/PBS),16-Apr-26,17-Apr-26,2,16-Apr-26,17-Apr-26,2,2,0%,11,OGAH Alima
    W730LT_UN,W730,HYB Enhanced Defueling Safety Cases,W730.1720,Case Production Plan Peer Review & Update,16-Apr-26,17-Apr-26,2,16-Apr-26,17-Apr-26,2,2,0%,11,OGAH Alima
    W731LT_UN,W731,TOR Enhanced Defueling Safety Cases,W731.1830,Case Production Plan Peer Review & Update,16-Apr-26,17-Apr-26,2,16-Apr-26,17-Apr-26,2,2,0%,11,OGAH Alima
    W731LT_UN,W731,TOR Enhanced Defueling Safety Cases,W731.1840,Define Project Control Structures (WBS/CBS/OBS/PBS),16-Apr-26,17-Apr-26,2,16-Apr-26,17-Apr-26,2,2,0%,11,OGAH Alima
    W731LT_UN,W731,TOR Enhanced Defueling Safety Cases,W731.1850,Plan Scope in Primavera (Level 2 B-B+ &  Level 1 Lifecycle),16-Apr-26,17-Apr-26,2,16-Apr-26,17-Apr-26,2,2,0%,11,OGAH Alima
    W731LT_UN,W731,TOR Enhanced Defueling Safety Cases,W731.1860,Estimate Scope +/- 10% B-B+ & +/- 30% Lifecycle,16-Apr-26,17-Apr-26,2,16-Apr-26,17-Apr-26,2,2,0%,11,OGAH Alima
    W731LT_UN,W731,TOR Enhanced Defueling Safety Cases,W731.1870,Ensure Alignment of Schedule & Estimate,16-Apr-26,17-Apr-26,2,16-Apr-26,17-Apr-26,2,2,0%,11,OGAH Alima
    ER7514LT,W161,HPB PSR4,W161.9170,HPB PSR3 Extension EC: ONR Agree/Acknowledge Safety Case EC 374794,,22-Apr-25,0,,21-Apr-26,0,0,0%,157,OGAH Alima
    ER7514LT,W161,HPB PSR4,W161.9180,HPB PSR3 Extension EC: Station Approve EC 374794,,22-Apr-25,0,,21-Apr-26,0,0,0%,157,OGAH Alima
    ER7514LT,W161,HPB PSR4,W161.8540,HPB PSR3 Extension EC: Revise all Affected Drawings and Documents for EC Approval,23-Apr-25,07-May-25,10,22-Apr-26,06-May-26,10,10,0%,157,OGAH Alima
    W529LT,W529,TOR DPCS Defueling Support,W529.4510,TOR 2026 LSR - Draft Report Produced and Issued for EDF Review,24-Jun-26,08-Jul-26,11,24-Apr-26,11-May-26,11,11,0%,1668,OGAH Alima
    W526LT,W526,HYB DPCS Defueling Support,W526.4510,HYB 2026 LSR - Draft Report Produced and Issued for EDF Review,24-Apr-26,11-May-26,11,24-Apr-26,11-May-26,11,11,0%,1668,OGAH Alima
    ER7743LT,W527,DNB DPCS Defueling Support,W527.25720,DNB 2026 2.10 - Installation R1,24-Apr-26,08-May-26,10,24-Apr-26,08-May-26,10,10,0%,1404,OGAH Alima
    ER7743LT,W527,DNB DPCS Defueling Support,W527.25520,Issue Recommendations,27-Apr-26,27-Apr-26,1,27-Apr-26,27-Apr-26,1,1,0%,1412,OGAH Alima
    W526LT,W526,HYB DPCS Defueling Support,W526.10370,HYB 2026 TGN097 R8 - EDF Review,28-Apr-26,12-May-26,10,28-Apr-26,12-May-26,10,10,0%,1681,OGAH Alima
    ER7743LT,W527,DNB DPCS Defueling Support,W527.25530,Recommendations Workshop,30-Apr-26,30-Apr-26,1,30-Apr-26,30-Apr-26,1,1,0%,1412,OGAH Alima
 Subtotal,,,,,02-Jan-25,30-Sep-26,65,01-Apr-26,06-Jul-26,65,65,,1649,OGAH Alima
 01-May-26
    ER7743LT,W527,DNB DPCS Defueling Support,W527.25540,"LSR Update, Internal Review & Issue to EDF",01-May-26,15-May-26,10,01-May-26,15-May-26,10,10,0%,1412,OGAH Alima
    W730LT_UN,W730,HYB Enhanced Defueling Safety Cases,W730.1710,Gate B+ PRC Paper Submission,06-May-26,06-May-26,1,06-May-26,06-May-26,1,1,0%,0,OGAH Alima
    W230LT,W230,HYB Enhanced Defueling Safety Case Strategy,W230.1800,Gate D PRC Paper Submission,06-Aug-25,06-Aug-25,1,06-May-26,06-May-26,1,1,0%,0,OGAH Alima
    W234LT,W234,TOR Enhanced Defueling Safety Case Strategy,W234.1800,Gate D PRC Paper Submission,06-Aug-25,06-Aug-25,1,06-May-26,06-May-26,1,1,0%,0,OGAH Alima
    W731LT_UN,W731,TOR Enhanced Defueling Safety Cases,W731.1880,Gate B+ PRC Paper Submission,06-May-26,06-May-26,1,06-May-26,06-May-26,1,1,0%,0,OGAH Alima
    ER7514LT,W161,HPB PSR4,W161.8510,HPB PSR3 Extension EC: Develop Implementation & closeout Plan,08-May-25,21-May-25,10,07-May-26,20-May-26,10,10,0%,157,OGAH Alima
    W730LT_UN,W730,HYB Enhanced Defueling Safety Cases,W730.1730,PRC Members Review PRC / IMS2 Documentation,07-May-26,08-May-26,2,07-May-26,08-May-26,2,2,0%,6,OGAH Alima
    W731LT_UN,W731,TOR Enhanced Defueling Safety Cases,W731.1890,PRC Members Review PRC / IMS2 Documentation,07-May-26,08-May-26,2,07-May-26,08-May-26,2,2,0%,6,OGAH Alima
    ER7743LT,W527,DNB DPCS Defueling Support,W527.25790,DNB 2026 2.10 - Installation R21,,08-May-26,0,,08-May-26,0,0,0%,1433,OGAH Alima
    W529LT,W529,TOR DPCS Defueling Support,W529.4500,TOR 2026 LSR - EDF Review Comments Produced and Provided,09-Jul-26,23-Jul-26,11,12-May-26,27-May-26,11,11,0%,1668,OGAH Alima
    W526LT,W526,HYB DPCS Defueling Support,W526.4500,HYB 2026 LSR - EDF Review Comments Produced and Provided,12-May-26,27-May-26,11,12-May-26,27-May-26,11,11,0%,1668,OGAH Alima
    ER7580LT,W194,HPB DPCS Defueling Support,W194.25690,Revised Costs Provided,12-May-26,07-Jul-26,30,13-May-26,24-Jun-26,30,30,0%,299,OGAH Alima
    W526LT,W526,HYB DPCS Defueling Support,W526.10380,HYB 2026 TGN097 R8 - Update and Issue Report,13-May-26,19-May-26,5,13-May-26,19-May-26,5,5,0%,1681,OGAH Alima
    ER7743LT,W527,DNB DPCS Defueling Support,W527.25550,EDF Review,18-May-26,01-Jun-26,10,18-May-26,01-Jun-26,10,10,0%,1412,OGAH Alima
    W730LT_UN,W730,HYB Enhanced Defueling Safety Cases,W730.1760,Hold PRC Meeting,19-May-26,19-May-26,1,19-May-26,19-May-26,1,1,0%,0,OGAH Alima
    W230LT,W230,HYB Enhanced Defueling Safety Case Strategy,W230.1840,Gate D - Hold PRC Meeting,19-Aug-25,19-Aug-25,1,19-May-26,19-May-26,1,1,0%,0,OGAH Alima
    W234LT,W234,TOR Enhanced Defueling Safety Case Strategy,W234.1840,Gate D - Hold PRC Meeting,19-Aug-25,19-Aug-25,1,19-May-26,19-May-26,1,1,0%,0,OGAH Alima
    W731LT_UN,W731,TOR Enhanced Defueling Safety Cases,W731.1900,Hold PRC Meeting,19-May-26,19-May-26,1,19-May-26,19-May-26,1,1,0%,0,OGAH Alima
    W230LT,W230,HYB Enhanced Defueling Safety Case Strategy,W230.1110,Gate D Approved,,19-Aug-25,0,,19-May-26,0,0,0%,0,OGAH Alima
    W230LT,W230,HYB Enhanced Defueling Safety Case Strategy,W230.1020,Project Finish,,19-Aug-25,0,,19-May-26,0,0,0%,0,OGAH Alima
    W234LT,W234,TOR Enhanced Defueling Safety Case Strategy,W234.1110,Gate D Approved,,19-Aug-25,0,,19-May-26,0,0,0%,0,OGAH Alima
    W234LT,W234,TOR Enhanced Defueling Safety Case Strategy,W234.1020,Project Finish,,19-Aug-25,0,,19-May-26,0,0,0%,0,OGAH Alima
    W730LT_UN,W730,HYB Enhanced Defueling Safety Cases,W730.1750,"Modify Estimate, Schedule & Risk Log as Required",20-May-26,21-May-26,2,20-May-26,21-May-26,2,2,0%,0,OGAH Alima
    W526LT,W526,HYB DPCS Defueling Support,W526.10390,HYB 2026 TGN097 R8 - Report,20-May-26,20-May-26,1,20-May-26,20-May-26,1,1,0%,1681,OGAH Alima
    W731LT_UN,W731,TOR Enhanced Defueling Safety Cases,W731.1910,"Modify Estimate, Schedule & Risk Log as Required",20-May-26,21-May-26,2,20-May-26,21-May-26,2,2,0%,0,OGAH Alima
    W526LT,W526,HYB DPCS Defueling Support,W526.10460,HYB 2026 TGN097 R8 - Report,,20-May-26,0,,20-May-26,0,0,0%,1681,OGAH Alima
    ER7514LT,W161,HPB PSR4,W161.8590,HPB PSR3 Extension EC: Post Job Debrief (CAT 2),22-May-25,22-May-25,1,21-May-26,21-May-26,1,1,0%,157,OGAH Alima
    W730LT_UN,W730,HYB Enhanced Defueling Safety Cases,W730.1740,Modify PRC Paper as Required,21-May-26,21-May-26,1,21-May-26,21-May-26,1,1,0%,0,OGAH Alima
    W731LT_UN,W731,TOR Enhanced Defueling Safety Cases,W731.1920,Modify PRC Paper as Required,21-May-26,21-May-26,1,21-May-26,21-May-26,1,1,0%,0,OGAH Alima
    W730LT_UN,W730,HYB Enhanced Defueling Safety Cases,W730.1770,Gate B+ PRC Paper Approval,,21-May-26,0,,21-May-26,0,0,0%,0,OGAH Alima
    W730LT_UN,W730,HYB Enhanced Defueling Safety Cases,W730.1140,Gate B+ Approved,,21-May-26,0,,21-May-26,0,0,0%,0,OGAH Alima
    W730LT_UN,W730,HYB Enhanced Defueling Safety Cases,W730.2510,## HYB Low Deacy Heat: B+ - B++ Phase Funding - (Cost Summary)  ##,21-May-26,06-May-27,243,21-May-26,06-May-27,243,243,0%,230,OGAH Alima
    W730LT_UN,W730,HYB Enhanced Defueling Safety Cases,W730.2690,HYB Low Decay Heat: Commence Supporting References or Supporting EC's,,21-May-26,0,,21-May-26,0,0,0%,0,OGAH Alima
    W731LT_UN,W731,TOR Enhanced Defueling Safety Cases,W731.1930,TOR Low Decay Heat: Commence Supporting References or Supporting EC's,,21-May-26,0,,21-May-26,0,0,0%,0,OGAH Alima
    W731LT_UN,W731,TOR Enhanced Defueling Safety Cases,W731.1970,## TOR Low Deacy Heat: B+ - B++ Phase Funding - (Cost Summary)  ##,21-May-26,06-May-27,243,21-May-26,06-May-27,243,243,0%,230,OGAH Alima
    W731LT_UN,W731,TOR Enhanced Defueling Safety Cases,W731.1940,Gate B+ Approved,,21-May-26,0,,21-May-26,0,0,0%,0,OGAH Alima
    W731LT_UN,W731,TOR Enhanced Defueling Safety Cases,W731.1950,Gate B+ PRC Paper Approval,,21-May-26,0,,21-May-26,0,0,0%,0,OGAH Alima
    W730LT_UN,W730,HYB Enhanced Defueling Safety Cases,W730.2400,HYB Enhanced Defueling Rate: Verification of the case - First Round Comments (using BARRIER MODEL),22-May-26,19-Jun-26,20,22-May-26,19-Jun-26,20,20,0%,395,OGAH Alima
    W730LT_UN,W730,HYB Enhanced Defueling Safety Cases,W730.2860,HYB  Low Decay Heat: Produce Supporting References Author / Verify / Approve,22-May-26,17-Jul-26,40,22-May-26,17-Jul-26,40,40,0%,0,OGAH Alima
    W731LT_UN,W731,TOR Enhanced Defueling Safety Cases,W731.1960,TOR  Low Decay Heat: Produce Supporting References Author / Verify / Approve,22-May-26,17-Jul-26,40,22-May-26,17-Jul-26,40,40,0%,0,OGAH Alima
    W731LT_UN,W731,TOR Enhanced Defueling Safety Cases,W731.1980,TOR Enhanced Defueling Rate: Verification of the case - First Round Comments (using BARRIER MODEL),22-May-26,19-Jun-26,20,22-May-26,19-Jun-26,20,20,0%,395,OGAH Alima
    W529LT,W529,TOR DPCS Defueling Support,W529.4490,TOR 2026 LSR - Final Report Produced and Issued,24-Jul-26,05-Aug-26,9,28-May-26,09-Jun-26,9,9,0%,1668,OGAH Alima
    W526LT,W526,HYB DPCS Defueling Support,W526.4490,HYB 2026 LSR - Final Report Produced and Issued,28-May-26,09-Jun-26,9,28-May-26,09-Jun-26,9,9,0%,1668,OGAH Alima
    ER7743LT,W527,DNB DPCS Defueling Support,W527.25290,Asset Guardian Licences and Support 2026 - 2027,28-May-26,28-May-26,1,28-May-26*,28-May-26,1,1,0%,1420,OGAH Alima
    ER7514LT,W161,HPB PSR4,W161.6050,HPB PSR4 Head Doc: ONR Agree/Acknowledge Safety Case EC 374795,,28-Dec-26,0,,29-May-26,0,0,0%,99,OGAH Alima
    ER7514LT,W161,HPB PSR4,W161.6060,HPB PSR4 Head Doc: Station Approve EC 374795 - HPB PSR4,,28-Dec-26,0,,29-May-26,0,0,0%,99,OGAH Alima
 Subtotal,,,,,08-May-25,06-May-27,257,01-May-26,06-May-27,257,257,,1437,OGAH Alima
 01-Jun-26
    ER7514LT,W161,HPB PSR4,W161.6070,HPB PSR4 Head Doc: Revise all Affected Drawings and Documents for EC Approval,29-Dec-26,12-Jan-27,10,01-Jun-26,12-Jun-26,10,10,0%,99,OGAH Alima
    W526LT,W526,HYB DPCS Defueling Support,W526.10530,HYB 2026 S13R8 - Testing,01-Jun-26,28-Oct-26,107,01-Jun-26,28-Oct-26,107,107,0%,1505,OGAH Alima
    ER7743LT,W527,DNB DPCS Defueling Support,W527.25560,Update LSR,02-Jun-26,08-Jun-26,5,02-Jun-26,08-Jun-26,5,5,0%,1412,OGAH Alima
    ER7743LT,W527,DNB DPCS Defueling Support,W527.25680,DNB 2026 2.10 - Installation R2,08-Jun-26,19-Jun-26,10,08-Jun-26,19-Jun-26,10,10,0%,1404,OGAH Alima
    ER7743LT,W527,DNB DPCS Defueling Support,W527.25570,Issue Complete LSR,09-Jun-26,09-Jun-26,1,09-Jun-26,09-Jun-26,1,1,0%,1412,OGAH Alima
    ER7743LT,W527,DNB DPCS Defueling Support,W527.25940,DNB 2026 Issue Complete LSR,,09-Jun-26,0,,09-Jun-26,0,0,0%,1412,OGAH Alima
    ER7582LT,W196,HYA DPCS Defueling Support,W196.6340,HYA 2025 - Installation R1,10-Jun-26,30-Jun-26,15,10-Jun-26*,30-Jun-26,15,15,0%,1144,OGAH Alima
    ER7581LT,W195,HRA DPCS Defueling Support,W195.25650,HRA 2025  - Installation R1,10-Jun-26,30-Jun-26,15,10-Jun-26,30-Jun-26,15,15,0%,1144,OGAH Alima
    ER7514LT,W161,HPB PSR4,W161.6080,HPB PSR4 Head Doc: Develop Implementation & closeout Plan,13-Jan-27,26-Jan-27,10,15-Jun-26,26-Jun-26,10,10,0%,99,OGAH Alima
    W155LT,W155,HRA Security,W155.3730,>>> MIRROR INCOMING ENABLER (W224) Fuel Handling Enhanced SCs INSA Finally Approved,,19-Jun-26,0,,19-Jun-26*,0,0,0%,91,OGAH Alima
    ER7743LT,W527,DNB DPCS Defueling Support,W527.25800,DNB 2026 2.10 - Installation R22,,19-Jun-26,0,,19-Jun-26,0,0,0%,1404,OGAH Alima
    W155LT,W155,HRA Security,W155.2380,Revise SPPI File Against Issued Enhanced Safety Cases (W224),22-Jun-26,26-Jun-26,5,22-Jun-26,26-Jun-26,5,5,0%,126,OGAH Alima
    W155LT,W155,HRA Security,W155..3220,Revise Flasks SPPI File Against Issued Enhanced Safety Cases,22-Jun-26,26-Jun-26,5,22-Jun-26,26-Jun-26,5,5,0%,91,OGAH Alima
    W730LT_UN,W730,HYB Enhanced Defueling Safety Cases,W730.2390,HYB Enhanced Defueling Rate: Incorporate all stakeholder comments,22-Jun-26,26-Jun-26,5,22-Jun-26,26-Jun-26,5,5,0%,395,OGAH Alima
    W731LT_UN,W731,TOR Enhanced Defueling Safety Cases,W731.1990,TOR Enhanced Defueling Rate: Incorporate all stakeholder comments,22-Jun-26,26-Jun-26,5,22-Jun-26,26-Jun-26,5,5,0%,395,OGAH Alima
    ER7580LT,W194,HPB DPCS Defueling Support,W194.25710,Decommission Reference Rig,13-Jul-26,07-Sep-26,30,25-Jun-26,05-Aug-26,30,30,0%,299,OGAH Alima
    W155LT,W155,HRA Security,W155..2390,Review and Update SPORS,29-Jun-26,03-Jul-26,5,29-Jun-26,03-Jul-26,5,5,0%,126,OGAH Alima
    W155LT,W155,HRA Security,W155.3230,Review and Update SPORS,29-Jun-26,03-Jul-26,5,29-Jun-26,03-Jul-26,5,5,0%,91,OGAH Alima
    ER7514LT,W161,HPB PSR4,W161.6090,HPB PSR4 Head Doc: Post Job Debrief (CAT 2),27-Jan-27,27-Jan-27,1,29-Jun-26,29-Jun-26,1,1,0%,99,OGAH Alima
    W730LT_UN,W730,HYB Enhanced Defueling Safety Cases,W730.2360,HYB Enhanced Defueling Rate: Final Verification,29-Jun-26,03-Jul-26,5,29-Jun-26,03-Jul-26,5,5,0%,395,OGAH Alima
    W731LT_UN,W731,TOR Enhanced Defueling Safety Cases,W731.2000,TOR Enhanced Defueling Rate: Final Verification,29-Jun-26,03-Jul-26,5,29-Jun-26,03-Jul-26,5,5,0%,395,OGAH Alima
    ER7514LT,W161,HPB PSR4,W161.2100,Hold Project Closeout and Lessons Learned Meeting,28-Jan-27,28-Jan-27,1,30-Jun-26,30-Jun-26,1,1,0%,99,OGAH Alima
    W529LT,W529,TOR DPCS Defueling Support,W529.6380,TOR 2025 S14R1 - Go / No Go Decision,,30-Jun-26,0,,30-Jun-26,0,0,0%,1387,OGAH Alima
    ER7582LT,W196,HYA DPCS Defueling Support,W196.25440,HYA 2025 - Installation R1,,30-Jun-26,0,,30-Jun-26,0,0,0%,1144,OGAH Alima
 Subtotal,,,,,01-Jun-26,28-Jan-27,107,01-Jun-26,28-Oct-26,107,107,,1505,OGAH Alima
 01-Jul-26
    ER7581LT,W195,HRA DPCS Defueling Support,W195.2400,Thales Long Term Support Contract Q3 2026,01-Jul-26,30-Sep-26,65,01-Jul-26,30-Sep-26,65,65,0%,1014,OGAH Alima
    ER7582LT,W196,HYA DPCS Defueling Support,W196.2410,Thales Long Term Support Contract Q3 2026,01-Jul-26,30-Sep-26,65,01-Jul-26*,30-Sep-26,65,65,0%,1079,OGAH Alima
    ER7743LT,W527,DNB DPCS Defueling Support,W527.1730,Worldgrid System Engineering Support (SQEP) Q3 2026,01-Jul-26,30-Sep-26,65,01-Jul-26*,30-Sep-26,65,65,0%,1332,OGAH Alima
    ER7743LT,W527,DNB DPCS Defueling Support,W527.1731,Worldgrid Long Term Support Contract Q3 2026,01-Jul-26,30-Sep-26,65,01-Jul-26,30-Sep-26,65,65,0%,1332,OGAH Alima
    ER7743LT,W527,DNB DPCS Defueling Support,W527.1732,Thales POLARIS & AIC Support Contract Q3 2026,01-Jul-26,30-Sep-26,65,01-Jul-26,30-Sep-26,65,65,0%,1332,OGAH Alima
    ER7743LT,W527,DNB DPCS Defueling Support,W527.1735,Worldgrid Software Modification Support (LAMPS) - Q3 2026,01-Jul-26,30-Sep-26,65,01-Jul-26,30-Sep-26,65,65,0%,1332,OGAH Alima
    W529LT,W529,TOR DPCS Defueling Support,W529.1305,TOR Thales Long Term Support Contract - Q3 2026,01-Jul-26,30-Sep-26,65,01-Jul-26,30-Sep-26,65,65,0%,1523,OGAH Alima
    W526LT,W526,HYB DPCS Defueling Support,W526.1305,HYB Thales Long Term Support Contract - Q3 2026,02-Jan-25,02-Apr-25,65,01-Jul-26,30-Sep-26,65,65,0%,1523,OGAH Alima
    W529LT,W529,TOR DPCS Defueling Support,W529.6390,TOR 2025 S14R1 - Specification,01-Jul-26,22-Jan-27,145,01-Jul-26,22-Jan-27,145,145,0%,1387,OGAH Alima
    W157LT,W157,HYB Security,W157.24600,Reactor Equivalence Confirmed by NSG Group Head,01-Jul-26,04-Nov-26,90,01-Jul-26*,04-Nov-26,90,90,0%,40,OGAH Alima
    W159LT,W159,TOR Security,W159.2030,Implement Revised TSS/TSP Arrangements,01-Jul-26,23-Sep-26,60,01-Jul-26*,23-Sep-26,60,60,0%,90,OGAH Alima
    W159LT,W159,TOR Security,W159.24600,Reactor Equivalence Confirmed by NSG Group Head,01-Jul-26,04-Nov-26,90,01-Jul-26*,04-Nov-26,90,90,0%,0,OGAH Alima
    ER7514LT,W161,HPB PSR4,W161.2110,Produce Lessons Learned Report,29-Jan-27,29-Jan-27,1,01-Jul-26,01-Jul-26,1,1,0%,99,OGAH Alima
    W526LT,W526,HYB DPCS Defueling Support,W526.10080,HYB 2026 LSR Pre Data Extract,02-Jul-26,08-Jul-26,5,02-Jul-26*,08-Jul-26,5,5,0%,1585,OGAH Alima
    ER7514LT,W161,HPB PSR4,W161.2120,Produce Project Closeout Report,01-Feb-27,02-Feb-27,2,02-Jul-26,03-Jul-26,2,2,0%,99,OGAH Alima
    W155LT,W155,HRA Security,W155.2400,Issue Revised SPORS,06-Jul-26,06-Jul-26,1,06-Jul-26,06-Jul-26,1,1,0%,126,OGAH Alima
    W155LT,W155,HRA Security,W155.3240,Issue Revised SPORS,06-Jul-26,06-Jul-26,1,06-Jul-26,06-Jul-26,1,1,0%,91,OGAH Alima
    ER7514LT,W161,HPB PSR4,W161.2130,Prepare Gate D PRC Paper,03-Feb-27,10-Feb-27,6,06-Jul-26,13-Jul-26,6,6,0%,99,OGAH Alima
    W730LT_UN,W730,HYB Enhanced Defueling Safety Cases,W730.2410,HYB Enhanced Defueling Rate: Final Verification Risk (Risk 42008),06-Jul-26,17-Jul-26,10,06-Jul-26,17-Jul-26,10,10,0%,395,OGAH Alima
    W731LT_UN,W731,TOR Enhanced Defueling Safety Cases,W731.2010,TOR Enhanced Defueling Rate: Final Verification Risk (Risk 42008),06-Jul-26,17-Jul-26,10,06-Jul-26,17-Jul-26,10,10,0%,395,OGAH Alima
    W155LT,W155,HRA Security,W155.3490,Review Prep for Defueling Revised SPOR for Temporary or Permanent Mitigations,,06-Jul-26,0,,06-Jul-26,0,0,0%,126,OGAH Alima
    W155LT,W155,HRA Security,W155.3500,Review Prep for Off Site Transport Revised SPOR  for Temporary of Permanent Mitigations,,06-Jul-26,0,,06-Jul-26,0,0,0%,126,OGAH Alima
    W155LT,W155,HRA Security,W155.3250,Incorporate New Mitigations,07-Jul-26,24-Aug-26,35,07-Jul-26,24-Aug-26,35,35,0%,91,OGAH Alima
    W529LT,W529,TOR DPCS Defueling Support,W529.1675,TOR Argus Support Contract - Q4 2026,01-Oct-26,31-Dec-26,65,07-Jul-26,06-Oct-26,65,65,0%,1584,OGAH Alima
    W730LT_UN,W730,HYB Enhanced Defueling Safety Cases,W730.1090,HYB Enhanced Defueling Rate: Verification Complete/ Verified Draft A Issued for INSA  EC NNNNNN,,17-Jul-26,0,,17-Jul-26,0,0,0%,395,OGAH Alima
    W730LT_UN,W730,HYB Enhanced Defueling Safety Cases,W730.2380,HYB Enhanced Defueling Rate: Submit for approval - Categoriser ratifies; RE/CO endorsement,,17-Jul-26,0,,17-Jul-26,0,0,0%,395,OGAH Alima
    W730LT_UN,W730,HYB Enhanced Defueling Safety Cases,W730.2700,HYB  Low Decay Heat: All Supporting References Approved and Issued,,17-Jul-26,0,,17-Jul-26,0,0,0%,0,OGAH Alima
    W730LT_UN,W730,HYB Enhanced Defueling Safety Cases,W730.3390,HYB Low Decay Heat: All Key Supporting Technical References Completed,,17-Jul-26,0,,17-Jul-26,0,0,0%,0,OGAH Alima
    W731LT_UN,W731,TOR Enhanced Defueling Safety Cases,W731.2020,TOR Low Decay Heat: All Key Supporting Technical References Completed,,17-Jul-26,0,,17-Jul-26,0,0,0%,0,OGAH Alima
    W731LT_UN,W731,TOR Enhanced Defueling Safety Cases,W731.2030,TOR  Low Decay Heat: All Supporting References Approved and Issued,,17-Jul-26,0,,17-Jul-26,0,0,0%,0,OGAH Alima
    W731LT_UN,W731,TOR Enhanced Defueling Safety Cases,W731.2040,TOR Enhanced Defueling Rate: Submit for approval - Categoriser ratifies; RE/CO endorsement,,17-Jul-26,0,,17-Jul-26,0,0,0%,395,OGAH Alima
    W731LT_UN,W731,TOR Enhanced Defueling Safety Cases,W731.2050,TOR Enhanced Defueling Rate: Verification Complete/ Verified Draft A Issued for INSA  EC NNNNNN,,17-Jul-26,0,,17-Jul-26,0,0,0%,395,OGAH Alima
    W730LT_UN,W730,HYB Enhanced Defueling Safety Cases,W730.2420,HYB Enhanced Defueling Rate: INSA review & iteration of comments (using BARRIER MODEL),20-Jul-26,14-Aug-26,20,20-Jul-26,14-Aug-26,20,20,0%,395,OGAH Alima
    W730LT_UN,W730,HYB Enhanced Defueling Safety Cases,W730.2710,HYB  Low Decay Heat: Produce verification plan,20-Jul-26,24-Jul-26,5,20-Jul-26,24-Jul-26,5,5,0%,61,OGAH Alima
    W730LT_UN,W730,HYB Enhanced Defueling Safety Cases,W730.2720,HYB  Low Decay Heat: Prepare / Author the Safety Case Proposal,20-Jul-26,14-Sep-26,40,20-Jul-26,14-Sep-26,40,40,0%,0,OGAH Alima
    W730LT_UN,W730,HYB Enhanced Defueling Safety Cases,W730.2920,HYB Low Decay Heat: Lessons Learned Activitiy - Following Completeion of Technical References,20-Jul-26,22-Jul-26,3,20-Jul-26,22-Jul-26,3,3,0%,430,OGAH Alima
    W731LT_UN,W731,TOR Enhanced Defueling Safety Cases,W731.2060,TOR Low Decay Heat: Lessons Learned Activitiy - Following Completeion of Technical References,20-Jul-26,22-Jul-26,3,20-Jul-26,22-Jul-26,3,3,0%,430,OGAH Alima
    W731LT_UN,W731,TOR Enhanced Defueling Safety Cases,W731.2070,TOR  Low Decay Heat: Prepare / Author the Safety Case Proposal,20-Jul-26,14-Sep-26,40,20-Jul-26,14-Sep-26,40,40,0%,0,OGAH Alima
    W731LT_UN,W731,TOR Enhanced Defueling Safety Cases,W731.2080,TOR  Low Decay Heat: Produce verification plan,20-Jul-26,24-Jul-26,5,20-Jul-26,24-Jul-26,5,5,0%,61,OGAH Alima
    W731LT_UN,W731,TOR Enhanced Defueling Safety Cases,W731.2090,TOR Enhanced Defueling Rate: INSA review & iteration of comments (using BARRIER MODEL),20-Jul-26,14-Aug-26,20,20-Jul-26,14-Aug-26,20,20,0%,395,OGAH Alima
    W730LT_UN,W730,HYB Enhanced Defueling Safety Cases,W730.3600,HYB Low Decay Heat: Lessons Learned Milestone - Technical References,,22-Jul-26,0,,22-Jul-26,0,0,0%,430,OGAH Alima
    W731LT_UN,W731,TOR Enhanced Defueling Safety Cases,W731.2100,TOR Low Decay Heat: Lessons Learned Milestone - Technical References,,22-Jul-26,0,,22-Jul-26,0,0,0%,430,OGAH Alima
    W526LT,W526,HYB DPCS Defueling Support,W526.10090,"HYB 2026 LSR Data Export, Analysis, Draft Report",30-Jul-26,19-Aug-26,15,30-Jul-26,19-Aug-26,15,15,0%,1585,OGAH Alima
 Subtotal,,,,,02-Jan-25,10-Feb-27,145,01-Jul-26,22-Jan-27,145,145,,1508,OGAH Alima
 01-Aug-26
    ER7580LT,W194,HPB DPCS Defueling Support,W194.25720,Redistribute Assets,08-Sep-26,19-Oct-26,30,06-Aug-26,17-Sep-26,30,30,0%,299,OGAH Alima
    ER7514LT,W161,HPB PSR4,W161.2140,Gate D PRC Paper Submission,11-Feb-27,11-Feb-27,1,12-Aug-26,12-Aug-26,1,1,0%,4,OGAH Alima
    W730LT_UN,W730,HYB Enhanced Defueling Safety Cases,W730.1065,HYB Enhanced Defueling Rate: INSA Final Approval EC NNNNNN - Enhanced Defueling Rate,,14-Aug-26,0,,14-Aug-26,0,0,0%,398,OGAH Alima
    W731LT_UN,W731,TOR Enhanced Defueling Safety Cases,W731.2110,TOR Enhanced Defueling Rate: INSA Final Approval EC NNNNNN - Enhanced Defueling Rate,,14-Aug-26,0,,14-Aug-26,0,0,0%,398,OGAH Alima
    W730LT_UN,W730,HYB Enhanced Defueling Safety Cases,W730.2470,HYB Enhanced Defueling Rate: Lessons Learned Activitiy - Following Verification of the SC,17-Aug-26,19-Aug-26,3,17-Aug-26,19-Aug-26,3,3,0%,395,OGAH Alima
    W731LT_UN,W731,TOR Enhanced Defueling Safety Cases,W731.2120,TOR Enhanced Defueling Rate: Lessons Learned Activitiy - Following Verification of the SC,17-Aug-26,19-Aug-26,3,17-Aug-26,19-Aug-26,3,3,0%,395,OGAH Alima
    W730LT_UN,W730,HYB Enhanced Defueling Safety Cases,W730.1250,HYB Enhanced Defueling Rate: Lessons Learned Milestone - Verification of the Safety Case,,19-Aug-26,0,,19-Aug-26,0,0,0%,410,OGAH Alima
    W731LT_UN,W731,TOR Enhanced Defueling Safety Cases,W731.2130,TOR Enhanced Defueling Rate: Lessons Learned Milestone - Verification of the Safety Case,,19-Aug-26,0,,19-Aug-26,0,0,0%,410,OGAH Alima
    W526LT,W526,HYB DPCS Defueling Support,W526.10100,HYB 2026 Issue Recommendations,20-Aug-26,20-Aug-26,1,20-Aug-26,20-Aug-26,1,1,0%,1585,OGAH Alima
    W730LT_UN,W730,HYB Enhanced Defueling Safety Cases,W730.2450,HYB Enhanced Defueling Rate: Send CAT 2 Paper to ONR to Determine Level of Review Required (Acknowledge or Agreement),20-Aug-26,20-Aug-26,1,20-Aug-26,20-Aug-26,1,1,0%,395,OGAH Alima
    W731LT_UN,W731,TOR Enhanced Defueling Safety Cases,W731.2140,TOR Enhanced Defueling Rate: Send CAT 2 Paper to ONR to Determine Level of Review Required (Acknowledge or Agreement),20-Aug-26,20-Aug-26,1,20-Aug-26,20-Aug-26,1,1,0%,395,OGAH Alima
    W730LT_UN,W730,HYB Enhanced Defueling Safety Cases,W730.1050,HYB Enhanced Defueling Rate: ONR Agree/Acknowledge Safety Case - Enhanced Defueling Rate,,20-Aug-26,0,,20-Aug-26,0,0,0%,398,OGAH Alima
    W731LT_UN,W731,TOR Enhanced Defueling Safety Cases,W731.2150,TOR Enhanced Defueling Rate: ONR Agree/Acknowledge Safety Case - Enhanced Defueling Rate,,20-Aug-26,0,,20-Aug-26,0,0,0%,398,OGAH Alima
    W730LT_UN,W730,HYB Enhanced Defueling Safety Cases,W730.2480,HYB Enhanced Defueling Rate: Lessons Learned Activitiy - Following INSA Review of the SC,21-Aug-26,25-Aug-26,3,21-Aug-26,25-Aug-26,3,3,0%,395,OGAH Alima
    W731LT_UN,W731,TOR Enhanced Defueling Safety Cases,W731.2160,TOR Enhanced Defueling Rate: Lessons Learned Activitiy - Following INSA Review of the SC,21-Aug-26,25-Aug-26,3,21-Aug-26,25-Aug-26,3,3,0%,395,OGAH Alima
    W155LT,W155,HRA Security,W155.3300,Prep for Off Site Transport All Security Issues Considered & Addressed,,24-Aug-26,0,,24-Aug-26,0,0,0%,91,OGAH Alima
    ER7514LT,W161,HPB PSR4,W161.2150,Gate D - Hold PRC Meeting,12-Feb-27,12-Feb-27,1,25-Aug-26,25-Aug-26,1,1,0%,4,OGAH Alima
    ER7514LT,W161,HPB PSR4,W161.5400,Project Finish,,12-Feb-27,0,,25-Aug-26,0,0,0%,90,OGAH Alima
    ER7514LT,W161,HPB PSR4,W161.8000,Gate D -  PRC Paper Approval (HPB),,12-Feb-27,0,,25-Aug-26,0,0,0%,90,OGAH Alima
    W730LT_UN,W730,HYB Enhanced Defueling Safety Cases,W730.1260,HYB Enhanced Defueling Rate: Lessons Learned Milestone -  INSA Review of the Safety Case,,25-Aug-26,0,,25-Aug-26,0,0,0%,406,OGAH Alima
    W731LT_UN,W731,TOR Enhanced Defueling Safety Cases,W731.2170,TOR Enhanced Defueling Rate: Lessons Learned Milestone -  INSA Review of the Safety Case,,25-Aug-26,0,,25-Aug-26,0,0,0%,406,OGAH Alima
    W730LT_UN,W730,HYB Enhanced Defueling Safety Cases,W730.2460,HYB Enhanced Defueling Rate: Station Approval,26-Aug-26,02-Sep-26,5,26-Aug-26,02-Sep-26,5,5,0%,395,OGAH Alima
    W731LT_UN,W731,TOR Enhanced Defueling Safety Cases,W731.2180,TOR Enhanced Defueling Rate: Station Approval,26-Aug-26,02-Sep-26,5,26-Aug-26,02-Sep-26,5,5,0%,395,OGAH Alima
    W526LT,W526,HYB DPCS Defueling Support,W526.10110,HYB 2026 Recommendations Workshop,27-Aug-26,27-Aug-26,1,27-Aug-26,27-Aug-26,1,1,0%,1585,OGAH Alima
    W526LT,W526,HYB DPCS Defueling Support,W526.10120,"HYB 2026 LSR Update, Internal Review & Issue to EDF",28-Aug-26,11-Sep-26,10,28-Aug-26,11-Sep-26,10,10,0%,1585,OGAH Alima
    ER7581LT,W195,HRA DPCS Defueling Support,W195.25880,LSR Pre Data Extract,28-Aug-26,04-Sep-26,5,28-Aug-26*,04-Sep-26,5,5,0%,1034,OGAH Alima
 Subtotal,,,,,14-Aug-26,12-Feb-27,30,06-Aug-26,17-Sep-26,30,30,,1581,OGAH Alima
 01-Sep-26
    W730LT_UN,W730,HYB Enhanced Defueling Safety Cases,W730.2340,HYB Enhanced Defueling Rate: Station Approved Safety Case,,02-Sep-26,0,,02-Sep-26,0,0,0%,395,OGAH Alima
    W730LT_UN,W730,HYB Enhanced Defueling Safety Cases,W730.1080,HYB Enhanced Defueling Rate: Safety Case Approved - (Station Approval) - EC NNNNNN,,02-Sep-26,0,,02-Sep-26,0,0,0%,395,OGAH Alima
    W731LT_UN,W731,TOR Enhanced Defueling Safety Cases,W731.2190,TOR Enhanced Defueling Rate: Safety Case Approved - (Station Approval) - EC NNNNNN,,02-Sep-26,0,,02-Sep-26,0,0,0%,395,OGAH Alima
    W731LT_UN,W731,TOR Enhanced Defueling Safety Cases,W731.2200,TOR Enhanced Defueling Rate: Station Approved Safety Case,,02-Sep-26,0,,02-Sep-26,0,0,0%,395,OGAH Alima
    W730LT_UN,W730,HYB Enhanced Defueling Safety Cases,W730.2430,HYB Enhanced Defueling Rate: Develop Implementation & Closeout,03-Sep-26,09-Sep-26,5,03-Sep-26,09-Sep-26,5,5,0%,395,OGAH Alima
    ER7582LT,W196,HYA DPCS Defueling Support,W195.1090,TGN097 R1 - Inspection,03-Sep-26,09-Sep-26,5,03-Sep-26*,09-Sep-26,5,5,0%,1062,OGAH Alima
    W731LT_UN,W731,TOR Enhanced Defueling Safety Cases,W731.2210,TOR Enhanced Defueling Rate: Develop Implementation & Closeout,03-Sep-26,09-Sep-26,5,03-Sep-26,09-Sep-26,5,5,0%,395,OGAH Alima
    ER7582LT,W196,HYA DPCS Defueling Support,W196.6380,HYA 2025 - Installation R2,10-Sep-26,30-Sep-26,15,10-Sep-26*,30-Sep-26,15,15,0%,1079,OGAH Alima
    ER7581LT,W195,HRA DPCS Defueling Support,W195.25660,HRA 2025  - Installation R2,10-Sep-26,30-Sep-26,15,10-Sep-26*,30-Sep-26,15,15,0%,1079,OGAH Alima
    W730LT_UN,W730,HYB Enhanced Defueling Safety Cases,W730.2440,HYB Enhanced Defueling Rate: Post Job Debrief,10-Sep-26,10-Sep-26,1,10-Sep-26,10-Sep-26,1,1,0%,395,OGAH Alima
    ER7582LT,W196,HYA DPCS Defueling Support,W195.1120,"TGN097 R1 - Draft Report Produced, Internal Review and Issue to EDF",10-Sep-26,23-Sep-26,10,10-Sep-26,23-Sep-26,10,10,0%,1062,OGAH Alima
    W731LT_UN,W731,TOR Enhanced Defueling Safety Cases,W731.2220,TOR Enhanced Defueling Rate: Post Job Debrief,10-Sep-26,10-Sep-26,1,10-Sep-26,10-Sep-26,1,1,0%,395,OGAH Alima
    W526LT,W526,HYB DPCS Defueling Support,W526.10130,HYB 2026 EDF Review,14-Sep-26,25-Sep-26,10,14-Sep-26,25-Sep-26,10,10,0%,1585,OGAH Alima
    W730LT_UN,W730,HYB Enhanced Defueling Safety Cases,W730.3400,HYB Low Decay Heat: Safety Case Paper Authoring Complete EC NNNNNN,,14-Sep-26,0,,14-Sep-26,0,0,0%,0,OGAH Alima
    W731LT_UN,W731,TOR Enhanced Defueling Safety Cases,W731.2230,TOR Low Decay Heat: Safety Case Paper Authoring Complete EC NNNNNN,,14-Sep-26,0,,14-Sep-26,0,0,0%,0,OGAH Alima
    W730LT_UN,W730,HYB Enhanced Defueling Safety Cases,W730.2490,HYB  Low Decay Heat: Requirements Capture,15-Sep-26,17-Sep-26,3,15-Sep-26,17-Sep-26,3,3,0%,3,OGAH Alima
    W730LT_UN,W730,HYB Enhanced Defueling Safety Cases,W730.2740,HYB Low Decay Heat: Final Authoring Consolidation Check,15-Sep-26,22-Sep-26,6,15-Sep-26,22-Sep-26,6,6,0%,0,OGAH Alima
    W730LT_UN,W730,HYB Enhanced Defueling Safety Cases,W730.2890,HYB  Low Decay Heat: Lessons Learned Activitiy - Following Authoring of SC,15-Sep-26,17-Sep-26,3,15-Sep-26,17-Sep-26,3,3,0%,390,OGAH Alima
    W731LT_UN,W731,TOR Enhanced Defueling Safety Cases,W731.2240,TOR  Low Decay Heat: Lessons Learned Activitiy - Following Authoring of SC,15-Sep-26,17-Sep-26,3,15-Sep-26,17-Sep-26,3,3,0%,390,OGAH Alima
    W731LT_UN,W731,TOR Enhanced Defueling Safety Cases,W731.2250,TOR Low Decay Heat: Final Authoring Consolidation Check,15-Sep-26,22-Sep-26,6,15-Sep-26,22-Sep-26,6,6,0%,0,OGAH Alima
    W731LT_UN,W731,TOR Enhanced Defueling Safety Cases,W731.2260,TOR  Low Decay Heat: Requirements Capture,15-Sep-26,17-Sep-26,3,15-Sep-26,17-Sep-26,3,3,0%,3,OGAH Alima
    W730LT_UN,W730,HYB Enhanced Defueling Safety Cases,W730.3610,HYB Low Decay Heat: Lessons Learned Milestone - Authoring of the Safety Case,,17-Sep-26,0,,17-Sep-26,0,0,0%,390,OGAH Alima
    W731LT_UN,W731,TOR Enhanced Defueling Safety Cases,W731.2270,TOR Low Decay Heat: Lessons Learned Milestone - Authoring of the Safety Case,,17-Sep-26,0,,17-Sep-26,0,0,0%,390,OGAH Alima
    ER7580LT,W194,HPB DPCS Defueling Support,W194.25730,Disposal of Assets,20-Oct-26,14-Dec-26,30,18-Sep-26,29-Oct-26,30,30,0%,299,OGAH Alima
    W730LT_UN,W730,HYB Enhanced Defueling Safety Cases,W730.2730,HYB  Low Decay Heat: Obtain CO Review & Detail Checker,23-Sep-26,20-Oct-26,20,23-Sep-26,20-Oct-26,20,20,0%,0,OGAH Alima
    W731LT_UN,W731,TOR Enhanced Defueling Safety Cases,W731.2280,TOR  Low Decay Heat: Obtain CO Review & Detail Checker,23-Sep-26,20-Oct-26,20,23-Sep-26,20-Oct-26,20,20,0%,0,OGAH Alima
    ER7582LT,W196,HYA DPCS Defueling Support,W195.1110,TGN097 R1 - EDF Review,24-Sep-26,07-Oct-26,10,24-Sep-26,07-Oct-26,10,10,0%,1062,OGAH Alima
    W526LT,W526,HYB DPCS Defueling Support,W526.10140,HYB 2026 Update LSR,28-Sep-26,02-Oct-26,5,28-Sep-26,02-Oct-26,5,5,0%,1585,OGAH Alima
    ER7581LT,W195,HRA DPCS Defueling Support,W195.25890,"LSR Data Export, Analysis, Draft Report",28-Sep-26,16-Oct-26,15,28-Sep-26,16-Oct-26,15,15,0%,1034,OGAH Alima
    ER7582LT,W196,HYA DPCS Defueling Support,W196.25450,HYA 2025 - Installation R2,,30-Sep-26,0,,30-Sep-26,0,0,0%,1079,OGAH Alima
 Subtotal,,,,,02-Sep-26,14-Dec-26,41,02-Sep-26,29-Oct-26,41,41,,1566,OGAH Alima
 01-Oct-26
    ER7581LT,W195,HRA DPCS Defueling Support,W195.2410,Thales Long Term Support Contract Q4 2026,01-Oct-26,31-Dec-26,65,01-Oct-26,31-Dec-26,65,65,0%,1014,OGAH Alima
    ER7582LT,W196,HYA DPCS Defueling Support,W196.2420,Thales Long Term Support Contract Q4 2026,01-Oct-26,31-Dec-26,65,01-Oct-26*,31-Dec-26,65,65,0%,1014,OGAH Alima
    ER7743LT,W527,DNB DPCS Defueling Support,W527.1750,Worldgrid System Engineering Support (SQEP) Q4 2026,01-Oct-26,31-Dec-26,65,01-Oct-26*,31-Dec-26,65,65,0%,1267,OGAH Alima
    ER7743LT,W527,DNB DPCS Defueling Support,W527.1752,Worldgrid Long Term Support Contract Q4 2026,01-Oct-26,31-Dec-26,65,01-Oct-26,31-Dec-26,65,65,0%,1267,OGAH Alima
    ER7743LT,W527,DNB DPCS Defueling Support,W527.1754,Thales POLARIS & AIC Support Contract Q4 2026,01-Oct-26,31-Dec-26,65,01-Oct-26,31-Dec-26,65,65,0%,1267,OGAH Alima
    ER7743LT,W527,DNB DPCS Defueling Support,W527.1756,Worldgrid Software Modification Support (LAMPS) - Q4 2026,01-Oct-26,31-Dec-26,65,01-Oct-26,31-Dec-26,65,65,0%,1267,OGAH Alima
    W529LT,W529,TOR DPCS Defueling Support,W529.1315,TOR Thales Long Term Support Contract - Q4 2026,01-Oct-26,31-Dec-26,65,01-Oct-26,31-Dec-26,65,65,0%,1523,OGAH Alima
    W526LT,W526,HYB DPCS Defueling Support,W526.1315,HYB Thales Long Term Support Contract - Q4 2026,02-Jan-25,02-Apr-25,65,01-Oct-26,31-Dec-26,65,65,0%,1523,OGAH Alima
    W526LT,W526,HYB DPCS Defueling Support,W526.10150,HYB 2026 Issue Complete LSR,05-Oct-26,05-Oct-26,1,05-Oct-26,05-Oct-26,1,1,0%,1585,OGAH Alima
    ER7743LT,W527,DNB DPCS Defueling Support,W527.25760,DNB 2027 2.11 - Testing,05-Oct-26,13-Nov-26,30,05-Oct-26,13-Nov-26,30,30,0%,1152,OGAH Alima
    W526LT,W526,HYB DPCS Defueling Support,W526.10320,HYB 2026 Issue Complete LSR,,05-Oct-26,0,,05-Oct-26,0,0,0%,1585,OGAH Alima
    ER7582LT,W196,HYA DPCS Defueling Support,W195.1020,HYA 2026 - Consolidation and Testing,08-Oct-26,30-Mar-27,120,08-Oct-26*,30-Mar-27,120,120,0%,954,OGAH Alima
    ER7581LT,W195,HRA DPCS Defueling Support,W195.25900,Issue Recommendations,19-Oct-26,19-Oct-26,1,19-Oct-26,19-Oct-26,1,1,0%,1034,OGAH Alima
    ER7582LT,W196,HYA DPCS Defueling Support,W195.1100,TGN097 R1 - Report Issue,19-Oct-26,23-Oct-26,5,19-Oct-26,23-Oct-26,5,5,0%,1062,OGAH Alima
    W730LT_UN,W730,HYB Enhanced Defueling Safety Cases,W730.2750,HYB  Low Decay Heat: Verification Commenced (T-11),,20-Oct-26,0,,20-Oct-26,0,0,0%,0,OGAH Alima
    W730LT_UN,W730,HYB Enhanced Defueling Safety Cases,W730.2770,HYB  Low Decay Heat: Issue to Peer CO & Station for comments,,20-Oct-26,0,,20-Oct-26,0,0,0%,0,OGAH Alima
    W731LT_UN,W731,TOR Enhanced Defueling Safety Cases,W731.2290,TOR  Low Decay Heat: Issue to Peer CO & Station for comments,,20-Oct-26,0,,20-Oct-26,0,0,0%,0,OGAH Alima
    W731LT_UN,W731,TOR Enhanced Defueling Safety Cases,W731.2300,TOR  Low Decay Heat: Verification Commenced (T-11),,20-Oct-26,0,,20-Oct-26,0,0,0%,0,OGAH Alima
    W730LT_UN,W730,HYB Enhanced Defueling Safety Cases,W730.2800,HYB  Low Decay Heat: Verification of the case - First Round Comments (using BARRIER MODEL),21-Oct-26,15-Dec-26,40,21-Oct-26,15-Dec-26,40,40,0%,0,OGAH Alima
    W731LT_UN,W731,TOR Enhanced Defueling Safety Cases,W731.2310,TOR  Low Decay Heat: Verification of the case - First Round Comments (using BARRIER MODEL),21-Oct-26,15-Dec-26,40,21-Oct-26,15-Dec-26,40,40,0%,0,OGAH Alima
    ER7582LT,W196,HYA DPCS Defueling Support,W195.1130,HYA 2026 TGN097 R2 - Report Issue,,23-Oct-26,0,,23-Oct-26,0,0,0%,1062,OGAH Alima
    ER7581LT,W195,HRA DPCS Defueling Support,W195.25910,Recommendations Workshop,27-Oct-26,27-Oct-26,1,27-Oct-26,27-Oct-26,1,1,0%,1034,OGAH Alima
    ER7581LT,W195,HRA DPCS Defueling Support,W195.25920,"LSR Update, Internal Review & Issue to EDF",28-Oct-26,10-Nov-26,10,28-Oct-26,10-Nov-26,10,10,0%,1034,OGAH Alima
    W526LT,W526,HYB DPCS Defueling Support,W526.10540,HYB 2026 S13R8 - Delivery,29-Oct-26,30-Nov-26,23,29-Oct-26,30-Nov-26,23,23,0%,1505,OGAH Alima
    ER7580LT,W194,HPB DPCS Defueling Support,W194.25210,HPB DPCS Defueling Support Project End,,14-Dec-26,0,,29-Oct-26,0,0,0%,299,OGAH Alima
    ER7580LT,W194,HPB DPCS Defueling Support,W194.25270,HPB 2025 Project End,,14-Dec-26,0,,29-Oct-26,0,0,0%,299,OGAH Alima
    ER7580LT,W194,HPB DPCS Defueling Support,W194.25740,HPB 2025 DPCS Decommissioning,,14-Dec-26,0,,29-Oct-26,0,0,0%,299,OGAH Alima
 Subtotal,,,,,02-Jan-25,30-Mar-27,125,01-Oct-26,30-Mar-27,125,125,,1463,OGAH Alima
 01-Nov-26
    ER7581LT,W195,HRA DPCS Defueling Support,W195.25780,HRA 2026  - Specification,02-Nov-26,15-Dec-26,32,02-Nov-26*,15-Dec-26,32,32,0%,890,OGAH Alima
    ER7582LT,W196,HYA DPCS Defueling Support,W195.1040,HYA 2026 - Specification,04-Nov-26,15-Dec-26,30,04-Nov-26*,15-Dec-26,30,30,0%,1024,OGAH Alima
    W157LT,W157,HYB Security,W157.2580,Implement administratively based mitigations,05-Nov-26,02-Dec-26,20,05-Nov-26*,02-Dec-26,20,20,0%,20,OGAH Alima
    W159LT,W159,TOR Security,W159.2600,Implement permanent infrastructure and organisational mitigations,05-Nov-26,29-Jan-27,60,05-Nov-26,29-Jan-27,60,60,0%,0,OGAH Alima
    W159LT,W159,TOR Security,W159.2590,Implement temp. infrastructure and org mitigations required to enable commencement of defuelling (FEEDS TO SUMMARY SCHE),05-Nov-26,29-Jan-27,60,05-Nov-26,29-Jan-27,60,60,0%,0,OGAH Alima
    W159LT,W159,TOR Security,W159.2580,Implement administratively based mitigations,05-Nov-26,02-Dec-26,20,05-Nov-26,02-Dec-26,20,20,0%,0,OGAH Alima
    ER7743LT,W527,DNB DPCS Defueling Support,W527.3520,DNB 2026 Lifetime Sustainability Review (LSR) (TBC),,06-Nov-26,0,,06-Nov-26*,0,0,0%,1305,OGAH Alima
    ER7581LT,W195,HRA DPCS Defueling Support,W195.25930,EDF Review,11-Nov-26,24-Nov-26,10,11-Nov-26,24-Nov-26,10,10,0%,1034,OGAH Alima
    W155LT,W155,HRA Security,W155.A10501600,Project Closed,,05-Nov-26,0,,11-Nov-26,0,0,0%,35,OGAH Alima
    W155LT,W155,HRA Security,W155.A1022,All Scope Delivered [FEEDS TO SUMMARY SCHEDULE],,05-Nov-26,0,,11-Nov-26,0,0,0%,35,OGAH Alima
    W155LT,W155,HRA Security,W155.3750,Prep for Defueling All Security Issues Considered & Addressed for Permanent Mitigations,,05-Nov-26,0,,11-Nov-26,0,0,0%,35,OGAH Alima
    ER7743LT,W527,DNB DPCS Defueling Support,W527.25770,DNB 2027 2.11 - Delivery,23-Nov-26,18-Dec-26,20,23-Nov-26,18-Dec-26,20,20,0%,1152,OGAH Alima
    ER7581LT,W195,HRA DPCS Defueling Support,W195.25940,Update LSR,25-Nov-26,01-Dec-26,5,25-Nov-26,01-Dec-26,5,5,0%,1034,OGAH Alima
 Subtotal,,,,,02-Nov-26,29-Jan-27,63,02-Nov-26,29-Jan-27,63,63,,1247,OGAH Alima
 01-Dec-26
    ER7581LT,W195,HRA DPCS Defueling Support,W195.25950,Issue Complete LSR,02-Dec-26,02-Dec-26,1,02-Dec-26,02-Dec-26,1,1,0%,1034,OGAH Alima
    W157LT,W157,HYB Security,W157.A1022,All Scope Delivered [FEEDS TO SUMMARY SCHEDULE],,02-Dec-26,0,,02-Dec-26,0,0,0%,20,OGAH Alima
    W157LT,W157,HYB Security,W157.A10501600,Project Closed,,02-Dec-26,0,,02-Dec-26,0,0,0%,20,OGAH Alima
    ER7581LT,W195,HRA DPCS Defueling Support,W195.25960,HRA 2026 Issue Complete LSR,,02-Dec-26,0,,02-Dec-26,0,0,0%,1034,OGAH Alima
    ER7581LT,W195,HRA DPCS Defueling Support,W195.25790,TGN097 R1 - Plan Produced,10-Dec-26,05-Feb-27,40,10-Dec-26*,05-Feb-27,40,40,0%,989,OGAH Alima
    W730LT_UN,W730,HYB Enhanced Defueling Safety Cases,W730.2790,HYB  Low Decay Heat: Incorporate all stakeholder comments,16-Dec-26,21-Jan-27,25,16-Dec-26,21-Jan-27,25,25,0%,0,OGAH Alima
    ER7581LT,W195,HRA DPCS Defueling Support,W195.25740,HRA 2026  - Go / No Go Decision,16-Dec-26,29-Jan-27,31,16-Dec-26*,29-Jan-27,31,31,0%,890,OGAH Alima
    W731LT_UN,W731,TOR Enhanced Defueling Safety Cases,W731.2320,TOR  Low Decay Heat: Incorporate all stakeholder comments,16-Dec-26,21-Jan-27,25,16-Dec-26,21-Jan-27,25,25,0%,0,OGAH Alima
    ER7743LT,W527,DNB DPCS Defueling Support,W527.25730,DNB 2027 2.11 - Site Acceptance Testing,31-Dec-26,25-Mar-27,60,31-Dec-26,25-Mar-27,60,60,0%,1152,OGAH Alima
 Subtotal,,,,,02-Dec-26,25-Mar-27,80,02-Dec-26,25-Mar-27,80,80,,1152,OGAH Alima
 01-Jan-27
    ER7581LT,W195,HRA DPCS Defueling Support,W195.2320,HRA PES Group Support - 2027,04-Jan-27,31-Dec-27,255,04-Jan-27*,31-Dec-27,255,255,0%,759,OGAH Alima
    ER7581LT,W195,HRA DPCS Defueling Support,W195.2330,Plant Control Systems & Simulators (PCS&S) Group - 2027,04-Jan-27,31-Dec-27,255,04-Jan-27,31-Dec-27,255,255,0%,759,OGAH Alima
    ER7581LT,W195,HRA DPCS Defueling Support,W195.2460,Thales Long Term Support Contract Q1 2027,04-Jan-27,31-Mar-27,61,04-Jan-27,31-Mar-27,61,61,0%,759,OGAH Alima
    ER7582LT,W196,HYA DPCS Defueling Support,W196.2330,Plant Control Systems & Simulators (PCS&S) Group - 2027,04-Jan-27,31-Dec-27,255,04-Jan-27*,31-Dec-27,255,255,0%,759,OGAH Alima
    ER7582LT,W196,HYA DPCS Defueling Support,W196.2340,HYA PES Group Support - 2027,04-Jan-27,31-Dec-27,255,04-Jan-27,31-Dec-27,255,255,0%,759,OGAH Alima
    ER7582LT,W196,HYA DPCS Defueling Support,W196.2470,Thales Long Term Support Contract Q1 2027,04-Jan-27,31-Mar-27,61,04-Jan-27,31-Mar-27,61,61,0%,759,OGAH Alima
    ER7743LT,W527,DNB DPCS Defueling Support,W527.1782,Worldgrid System Engineering Support (SQEP) Q1 2027,04-Jan-27,31-Mar-27,61,04-Jan-27,31-Mar-27,61,61,0%,1012,OGAH Alima
    ER7743LT,W527,DNB DPCS Defueling Support,W527.1787,Worldgrid Software Modification Support (LAMPS) - Q1 2027,04-Jan-27,31-Mar-27,61,04-Jan-27,31-Mar-27,61,61,0%,1012,OGAH Alima
    ER7743LT,W527,DNB DPCS Defueling Support,W527.1830,DNB PES Group Support - 2027,04-Jan-27,31-Dec-27,255,04-Jan-27*,31-Dec-27,255,255,0%,1012,OGAH Alima
    ER7743LT,W527,DNB DPCS Defueling Support,W527.1840,Plant Control Systems & Simulators (PCS&S) Group - 2027,04-Jan-27,24-Jun-27,255,04-Jan-27,31-Dec-27,255,255,0%,1012,OGAH Alima
    ER7743LT,W527,DNB DPCS Defueling Support,W527.1783,Worldgrid Long Term Support Contract Q1 2027,04-Jan-27,31-Mar-27,61,04-Jan-27,31-Mar-27,61,61,0%,1012,OGAH Alima
    ER7743LT,W527,DNB DPCS Defueling Support,W527.1785,Thales POLARIS & AIC Support Contract Q1 2027,04-Jan-27,31-Mar-27,61,04-Jan-27,31-Mar-27,61,61,0%,1012,OGAH Alima
    ER7743LT,W527,DNB DPCS Defueling Support,W527.1797,Cost Engineer Support 2027,04-Jan-27,31-Dec-27,255,04-Jan-27,31-Dec-27,255,255,0%,1012,OGAH Alima
    W529LT,W529,TOR DPCS Defueling Support,W529.3040,TOR 2027 Defueling Software Build,02-Mar-27,26-Jan-28,232,04-Jan-27*,30-Nov-27,232,232,0%,1268,OGAH Alima
    W529LT,W529,TOR DPCS Defueling Support,W529.1320,TOR Argus Support Contract - Q1 2027,04-Jan-27,31-Mar-27,61,04-Jan-27*,31-Mar-27,61,61,0%,1268,OGAH Alima
    W529LT,W529,TOR DPCS Defueling Support,W529.1345,TOR Thales Long Term Support Contract - Q1 2027,04-Jan-27,31-Mar-27,61,04-Jan-27*,31-Mar-27,61,61,0%,1268,OGAH Alima
    W529LT,W529,TOR DPCS Defueling Support,W529.1080,TOR PES Group Support - 2027,04-Jan-27,31-Dec-27,255,04-Jan-27*,31-Dec-27,255,255,0%,1268,OGAH Alima
    W529LT,W529,TOR DPCS Defueling Support,W529.1090,TOR Plant Control Systems & Simulators (PCS&S) Group - 2027,04-Jan-27,31-Dec-27,255,04-Jan-27*,31-Dec-27,255,255,0%,1268,OGAH Alima
    W529LT,W529,TOR DPCS Defueling Support,W529.3050,TOR DPCS Long Term Support Contract 2027,02-Mar-27,28-Feb-28,255,04-Jan-27,31-Dec-27,255,255,0%,1268,OGAH Alima
    W526LT,W526,HYB DPCS Defueling Support,W526.4620,HYB 2027 LSR - Pre-export Data Validation Produced and Completed,04-Jan-27,24-Feb-27,38,04-Jan-27*,24-Feb-27,38,38,0%,1414,OGAH Alima
    W526LT,W526,HYB DPCS Defueling Support,W526.1325,HYB Argus Support Contract - Q1 2027,02-Jan-25,31-Mar-25,63,04-Jan-27*,02-Apr-27,63,63,0%,1268,OGAH Alima
    W526LT,W526,HYB DPCS Defueling Support,W526.3050,HYB DPCS Long Term Support Contract 2027,04-Jan-27,31-Dec-27,255,04-Jan-27*,31-Dec-27,255,255,0%,1036,OGAH Alima
    W526LT,W526,HYB DPCS Defueling Support,W526.1090,HYB Plant Control Systems & Simulators (PCS&S) Group - 2027,04-Jan-27,31-Dec-27,255,04-Jan-27*,31-Dec-27,255,255,0%,1268,OGAH Alima
    W526LT,W526,HYB DPCS Defueling Support,W526.1080,HYB PES Group Support - 2027,04-Jan-27,31-Dec-27,255,04-Jan-27,31-Dec-27,255,255,0%,1268,OGAH Alima
    W526LT,W526,HYB DPCS Defueling Support,W526.1345,HYB Thales Long Term Support Contract - Q1 2027,02-Jan-25,31-Mar-25,63,04-Jan-27*,02-Apr-27,63,63,0%,1268,OGAH Alima
    ER7743LT,W527,DNB DPCS Defueling Support,W527.25250,ETC 2027,04-Jan-27,31-Dec-27,255,04-Jan-27,31-Dec-27,255,255,0%,0,OGAH Alima
    W526LT,W526,HYB DPCS Defueling Support,W526.10020,HYB 2027 External Costs,04-Jan-27,31-Dec-27,255,04-Jan-27,31-Dec-27,255,255,0%,1268,OGAH Alima
    W529LT,W529,TOR DPCS Defueling Support,W529.10020,TOR 2027 External Costs,04-Jan-27,31-Dec-27,255,04-Jan-27*,31-Dec-27,255,255,0%,1268,OGAH Alima
    ER7581LT,W195,HRA DPCS Defueling Support,W195.25220,2027 External,04-Jan-27,31-Dec-27,255,04-Jan-27,31-Dec-27,255,255,0%,759,OGAH Alima
    ER7582LT,W196,HYA DPCS Defueling Support,W196.1030,2027 Externals,04-Jan-27,31-Dec-27,255,04-Jan-27,31-Dec-27,255,255,0%,759,OGAH Alima
    ER7581LT,W195,HRA DPCS Defueling Support,W195.25700,TPM and JCRB Meetings Held - 2027,04-Jan-27,31-Dec-27,255,04-Jan-27,31-Dec-27,255,255,0%,759,OGAH Alima
    ER7582LT,W196,HYA DPCS Defueling Support,W196.1245,TPM and JCRB Meetings Held 2027,04-Jan-27,31-Dec-27,255,04-Jan-27,31-Dec-27,255,255,0%,759,OGAH Alima
    ER7743LT,W527,DNB DPCS Defueling Support,W527.4840,TPM and JCRB Meetings Held 2027,04-Jan-27,31-Dec-27,255,04-Jan-27,31-Dec-27,255,255,0%,1012,OGAH Alima
    W526LT,W526,HYB DPCS Defueling Support,W526.10180,TPM and JCRB Meeting Held 2027,04-Jan-27,31-Dec-27,255,04-Jan-27,31-Dec-27,255,255,0%,0,OGAH Alima
    ER7582LT,W196,HYA DPCS Defueling Support,W196.25550,LSR Pre Data Extract,04-Jan-27,08-Jan-27,5,04-Jan-27*,08-Jan-27,5,5,0%,946,OGAH Alima
    W529LT,W529,TOR DPCS Defueling Support,W529.10090,TGN097 R1 - Plan Produced,04-Jan-27,05-Feb-27,25,04-Jan-27*,05-Feb-27,25,25,0%,1323,OGAH Alima
    W529LT,W529,TOR DPCS Defueling Support,W529.10160,TOR 2027 S14R2 - Software Build Requirement,04-Jan-27,30-Jun-27,124,04-Jan-27*,30-Jun-27,124,124,0%,1176,OGAH Alima
    ER7580LT,W194,HPB DPCS Defueling Support,W194.25790,Project Support - 2027,04-Jan-27,31-Dec-27,255,04-Jan-27*,31-Dec-27,255,255,0%,0,OGAH Alima
    ER7580LT,W194,HPB DPCS Defueling Support,W194.25800,HPB PES Group Support - 2027,04-Jan-27,31-Dec-27,255,04-Jan-27,31-Dec-27,255,255,0%,0,OGAH Alima
    ER7580LT,W194,HPB DPCS Defueling Support,W194.25810,Plant Control Systems & Simulators (PCS&S) Group - 2027,04-Jan-27,04-Jan-27,255,04-Jan-27,31-Dec-27,255,255,0%,0,OGAH Alima
    ER7581LT,W195,HRA DPCS Defueling Support,W195.26080,ETC 2027,04-Jan-27,31-Dec-27,255,04-Jan-27,31-Dec-27,255,255,0%,0,OGAH Alima
    ER7582LT,W196,HYA DPCS Defueling Support,W196.2100,ETC 2027,04-Jan-27,31-Dec-27,255,04-Jan-27,31-Dec-27,255,255,0%,0,OGAH Alima
    W529LT,W529,TOR DPCS Defueling Support,30,ETC 2027,04-Jan-27,31-Dec-27,255,04-Jan-27*,31-Dec-27,255,255,0%,1268,OGAH Alima
    W529LT,W529,TOR DPCS Defueling Support,W195.1020,TPM and JCRB Meetings Held - 2027,04-Jan-27,31-Dec-27,255,04-Jan-27,31-Dec-27,255,255,0%,0,OGAH Alima
    W526LT,W526,HYB DPCS Defueling Support,W526.1210,ETC 2027,,,255,04-Jan-27,31-Dec-27,255,255,0%,0,OGAH Alima
    W730LT_UN,W730,HYB Enhanced Defueling Safety Cases,W730.2760,HYB Low Decay Heat: Final Verification,22-Jan-27,18-Feb-27,20,22-Jan-27,18-Feb-27,20,20,0%,0,OGAH Alima
    W731LT_UN,W731,TOR Enhanced Defueling Safety Cases,W731.2330,TOR Low Decay Heat: Final Verification,22-Jan-27,18-Feb-27,20,22-Jan-27,18-Feb-27,20,20,0%,0,OGAH Alima
    W529LT,W529,TOR DPCS Defueling Support,W529.6400,TOR 2025 S14R1 - Testing,25-Jan-27,16-Apr-27,58,25-Jan-27,16-Apr-27,58,58,0%,1387,OGAH Alima
    W526LT,W526,HYB DPCS Defueling Support,W526.10560,HYB 2026 S13R8 - Installation R8,27-Jan-27,27-Jan-27,1,27-Jan-27,27-Jan-27,1,1,0%,1505,OGAH Alima
    W526LT,W526,HYB DPCS Defueling Support,W526.10620,HYB 2026 S13R8 - Installation R8,,27-Jan-27,0,,27-Jan-27,0,0,0%,1505,OGAH Alima
    ER7582LT,W196,HYA DPCS Defueling Support,W195.1010,HYA 2026 - Go / No Go Decision,29-Jan-27,29-Jan-27,1,29-Jan-27*,29-Jan-27,1,1,0%,994,OGAH Alima
    W159LT,W159,TOR Security,W159.A1022,All Scope Delivered [FEEDS TO SUMMARY SCHEDULE],,29-Jan-27,0,,29-Jan-27,0,0,0%,0,OGAH Alima
    W159LT,W159,TOR Security,W159.A10501600,Project Closed,,29-Jan-27,0,,29-Jan-27,0,0,0%,0,OGAH Alima
 Subtotal,,,,,02-Jan-25,28-Feb-28,255,04-Jan-27,31-Dec-27,255,255,,1268,OGAH Alima
 01-Feb-27
    ER7582LT,W196,HYA DPCS Defueling Support,W196.25560,"LSR Data Export, Analysis, Draft Report",01-Feb-27,19-Feb-27,15,01-Feb-27,19-Feb-27,15,15,0%,946,OGAH Alima
    ER7581LT,W195,HRA DPCS Defueling Support,W195.25750,"HRA 2026  - Design, Consolidation and Testing",02-Feb-27,30-Mar-27,39,02-Feb-27,30-Mar-27,39,39,0%,890,OGAH Alima
    W526LT,W526,HYB DPCS Defueling Support,W526.10580,HYB 2027 S14R7 - Testing,03-Feb-27,23-Apr-27,56,03-Feb-27,23-Apr-27,56,56,0%,1377,OGAH Alima
    W526LT,W526,HYB DPCS Defueling Support,W526.10400,HYB 2027 TGN097 R7 - Plan Produced,05-Feb-27,05-Apr-27,40,05-Feb-27*,05-Apr-27,40,40,0%,1459,OGAH Alima
    W730LT_UN,W730,HYB Enhanced Defueling Safety Cases,W730.2780,HYB  Low Decay Heat: Submit for approval - Categoriser ratifies; RE/CO endorsement,,18-Feb-27,0,,18-Feb-27,0,0,0%,0,OGAH Alima
    W730LT_UN,W730,HYB Enhanced Defueling Safety Cases,W730.3450,HYB Low Decay Heat: Verification Complete/ Verified Draft A Issued for INSA  EC NNNNNN,,18-Feb-27,0,,18-Feb-27,0,0,0%,0,OGAH Alima
    W731LT_UN,W731,TOR Enhanced Defueling Safety Cases,W731.2340,TOR Low Decay Heat: Verification Complete/ Verified Draft A Issued for INSA  EC NNNNNN,,18-Feb-27,0,,18-Feb-27,0,0,0%,0,OGAH Alima
    W731LT_UN,W731,TOR Enhanced Defueling Safety Cases,W731.2350,TOR  Low Decay Heat: Submit for approval - Categoriser ratifies; RE/CO endorsement,,18-Feb-27,0,,18-Feb-27,0,0,0%,0,OGAH Alima
    W730LT_UN,W730,HYB Enhanced Defueling Safety Cases,W730.2820,HYB Low Decay Heat: INSA review & iteration of comments (using BARRIER MODEL),19-Feb-27,18-Mar-27,20,19-Feb-27,18-Mar-27,20,20,0%,218,OGAH Alima
    W730LT_UN,W730,HYB Enhanced Defueling Safety Cases,W730.2900,HYB  Low Decay Heat: Lessons Learned Activitiy - Following Verification of the SC,19-Feb-27,23-Feb-27,3,19-Feb-27,23-Feb-27,3,3,0%,279,OGAH Alima
    W730LT_UN,W730,HYB Enhanced Defueling Safety Cases,W730.4020,Confirm Objectives to be Delivered at Gate B++,19-Feb-27,04-Mar-27,10,19-Feb-27,04-Mar-27,10,10,0%,0,OGAH Alima
    W731LT_UN,W731,TOR Enhanced Defueling Safety Cases,W731.2360,Confirm Objectives to be Delivered at Gate B++,19-Feb-27,04-Mar-27,10,19-Feb-27,04-Mar-27,10,10,0%,0,OGAH Alima
    W731LT_UN,W731,TOR Enhanced Defueling Safety Cases,W731.2370,TOR  Low Decay Heat: Lessons Learned Activitiy - Following Verification of the SC,19-Feb-27,23-Feb-27,3,19-Feb-27,23-Feb-27,3,3,0%,279,OGAH Alima
    W731LT_UN,W731,TOR Enhanced Defueling Safety Cases,W731.2380,TOR Low Decay Heat: INSA review & iteration of comments (using BARRIER MODEL),19-Feb-27,18-Mar-27,20,19-Feb-27,18-Mar-27,20,20,0%,218,OGAH Alima
    ER7582LT,W196,HYA DPCS Defueling Support,W196.25570,Issue Recommendations,22-Feb-27,22-Feb-27,1,22-Feb-27,22-Feb-27,1,1,0%,946,OGAH Alima
    W730LT_UN,W730,HYB Enhanced Defueling Safety Cases,W730.3620,HYB Low Decay Heat: Lessons Learned Milestone - Verification of the Safety Case,,23-Feb-27,0,,23-Feb-27,0,0,0%,279,OGAH Alima
    W731LT_UN,W731,TOR Enhanced Defueling Safety Cases,W731.2390,TOR Low Decay Heat: Lessons Learned Milestone - Verification of the Safety Case,,23-Feb-27,0,,23-Feb-27,0,0,0%,279,OGAH Alima
    W526LT,W526,HYB DPCS Defueling Support,W526.4610,HYB 2027 LSR - Data Export Produced and Issued,25-Feb-27,24-Mar-27,20,25-Feb-27,24-Mar-27,20,20,0%,1414,OGAH Alima
 Subtotal,,,,,01-Feb-27,23-Apr-27,58,01-Feb-27,23-Apr-27,58,58,,1445,OGAH Alima
 01-Mar-27
    W529LT,W529,TOR DPCS Defueling Support,W529.4620,TOR 2027 LSR - Pre-export Data Validation Produced and Completed,02-Mar-27,26-Apr-27,38,01-Mar-27*,23-Apr-27,38,38,0%,1374,OGAH Alima
    ER7582LT,W196,HYA DPCS Defueling Support,W196.25580,Recommendations Workshop,02-Mar-27,02-Mar-27,1,02-Mar-27,02-Mar-27,1,1,0%,946,OGAH Alima
    ER7582LT,W196,HYA DPCS Defueling Support,W196.25590,"LSR Update, Internal Review & Issue to EDF",03-Mar-27,16-Mar-27,10,03-Mar-27,16-Mar-27,10,10,0%,946,OGAH Alima
    ER7743LT,W527,DNB DPCS Defueling Support,W527.25850,LSR Pre Data Extract,05-Mar-27,11-Mar-27,5,05-Mar-27*,11-Mar-27,5,5,0%,1159,OGAH Alima
    W730LT_UN,W730,HYB Enhanced Defueling Safety Cases,W730.4010,Initial high level scope of programme,05-Mar-27,18-Mar-27,10,05-Mar-27,18-Mar-27,10,10,0%,0,OGAH Alima
    W731LT_UN,W731,TOR Enhanced Defueling Safety Cases,W731.2400,Initial high level scope of programme,05-Mar-27,18-Mar-27,10,05-Mar-27,18-Mar-27,10,10,0%,0,OGAH Alima
    W526LT,W526,HYB DPCS Defueling Support,W526.10410,HYB 2027 TGN097 R7 - Inspection,08-Mar-27,12-Mar-27,5,08-Mar-27*,12-Mar-27,5,5,0%,1447,OGAH Alima
    W730LT_UN,W730,HYB Enhanced Defueling Safety Cases,W730.4070,Prepare Draft Project Definition Document (PDD),09-Mar-27,22-Mar-27,10,09-Mar-27,22-Mar-27,10,10,0%,0,OGAH Alima
    W730LT_UN,W730,HYB Enhanced Defueling Safety Cases,W730.4080,PCL Validate & Approve Baseline Package for PRC Submission,09-Mar-27,22-Mar-27,10,09-Mar-27,22-Mar-27,10,10,0%,0,OGAH Alima
    W730LT_UN,W730,HYB Enhanced Defueling Safety Cases,W730.4090,Add Data to PRC / IMS2 Paper,09-Mar-27,22-Mar-27,10,09-Mar-27,22-Mar-27,10,10,0%,0,OGAH Alima
    W730LT_UN,W730,HYB Enhanced Defueling Safety Cases,W730.4100,Update Schedule/Estimate from Risk Log & Add Provisions,09-Mar-27,22-Mar-27,10,09-Mar-27,22-Mar-27,10,10,0%,0,OGAH Alima
    W730LT_UN,W730,HYB Enhanced Defueling Safety Cases,W730.4110,Complete Risk Log with Estimates,09-Mar-27,22-Mar-27,10,09-Mar-27,22-Mar-27,10,10,0%,0,OGAH Alima
    W730LT_UN,W730,HYB Enhanced Defueling Safety Cases,W730.4120,Hold Risk Workshop,09-Mar-27,22-Mar-27,10,09-Mar-27,22-Mar-27,10,10,0%,0,OGAH Alima
    W731LT_UN,W731,TOR Enhanced Defueling Safety Cases,W731.2410,Hold Risk Workshop,09-Mar-27,22-Mar-27,10,09-Mar-27,22-Mar-27,10,10,0%,0,OGAH Alima
    W731LT_UN,W731,TOR Enhanced Defueling Safety Cases,W731.2420,Complete Risk Log with Estimates,09-Mar-27,22-Mar-27,10,09-Mar-27,22-Mar-27,10,10,0%,0,OGAH Alima
    W731LT_UN,W731,TOR Enhanced Defueling Safety Cases,W731.2430,Update Schedule/Estimate from Risk Log & Add Provisions,09-Mar-27,22-Mar-27,10,09-Mar-27,22-Mar-27,10,10,0%,0,OGAH Alima
    W731LT_UN,W731,TOR Enhanced Defueling Safety Cases,W731.2440,Add Data to PRC / IMS2 Paper,09-Mar-27,22-Mar-27,10,09-Mar-27,22-Mar-27,10,10,0%,0,OGAH Alima
    W731LT_UN,W731,TOR Enhanced Defueling Safety Cases,W731.2450,PCL Validate & Approve Baseline Package for PRC Submission,09-Mar-27,22-Mar-27,10,09-Mar-27,22-Mar-27,10,10,0%,0,OGAH Alima
    W731LT_UN,W731,TOR Enhanced Defueling Safety Cases,W731.2460,Prepare Draft Project Definition Document (PDD),09-Mar-27,22-Mar-27,10,09-Mar-27,22-Mar-27,10,10,0%,0,OGAH Alima
    W526LT,W526,HYB DPCS Defueling Support,W526.10420,"HYB 2027 TGN097 R7 - Draft Report Produced, Internal Review and Issue to EDF",15-Mar-27,30-Mar-27,10,15-Mar-27,30-Mar-27,10,10,0%,1447,OGAH Alima
    ER7582LT,W196,HYA DPCS Defueling Support,W196.25600,EDF Review,17-Mar-27,01-Apr-27,10,17-Mar-27,01-Apr-27,10,10,0%,946,OGAH Alima
    W730LT_UN,W730,HYB Enhanced Defueling Safety Cases,W730.2810,HYB  Low Decay Heat: Incorporate INSA comments,19-Mar-27,05-Apr-27,10,19-Mar-27,05-Apr-27,10,10,0%,218,OGAH Alima
    W730LT_UN,W730,HYB Enhanced Defueling Safety Cases,W730.4130,Ensure Alignment of Schedule & Estimate,19-Mar-27,22-Mar-27,2,19-Mar-27,22-Mar-27,2,2,0%,0,OGAH Alima
    W730LT_UN,W730,HYB Enhanced Defueling Safety Cases,W730.4140,Estimate Scope +/- 10% B+-B++ & +/- 30% Lifecycle,19-Mar-27,22-Mar-27,2,19-Mar-27,22-Mar-27,2,2,0%,0,OGAH Alima
    W730LT_UN,W730,HYB Enhanced Defueling Safety Cases,W730.4150,Plan Scope in Primavera (Level 2 B+-B++ &  Level 1 Lifecycle),19-Mar-27,22-Mar-27,2,19-Mar-27,22-Mar-27,2,2,0%,0,OGAH Alima
    W730LT_UN,W730,HYB Enhanced Defueling Safety Cases,W730.4160,Define Project Control Structures (WBS/CBS/OBS/PBS),19-Mar-27,22-Mar-27,2,19-Mar-27,22-Mar-27,2,2,0%,0,OGAH Alima
    W730LT_UN,W730,HYB Enhanced Defueling Safety Cases,W730.4180,Case Production Plan Peer Review & Update,19-Mar-27,22-Mar-27,2,19-Mar-27,22-Mar-27,2,2,0%,0,OGAH Alima
    W731LT_UN,W731,TOR Enhanced Defueling Safety Cases,W731.2470,Case Production Plan Peer Review & Update,19-Mar-27,22-Mar-27,2,19-Mar-27,22-Mar-27,2,2,0%,0,OGAH Alima
    W731LT_UN,W731,TOR Enhanced Defueling Safety Cases,W731.2480,Define Project Control Structures (WBS/CBS/OBS/PBS),19-Mar-27,22-Mar-27,2,19-Mar-27,22-Mar-27,2,2,0%,0,OGAH Alima
    W731LT_UN,W731,TOR Enhanced Defueling Safety Cases,W731.2490,Plan Scope in Primavera (Level 2 B+-B++ &  Level 1 Lifecycle),19-Mar-27,22-Mar-27,2,19-Mar-27,22-Mar-27,2,2,0%,0,OGAH Alima
    W731LT_UN,W731,TOR Enhanced Defueling Safety Cases,W731.2500,Estimate Scope +/- 10% B+-B++ & +/- 30% Lifecycle,19-Mar-27,22-Mar-27,2,19-Mar-27,22-Mar-27,2,2,0%,0,OGAH Alima
    W731LT_UN,W731,TOR Enhanced Defueling Safety Cases,W731.2510,Ensure Alignment of Schedule & Estimate,19-Mar-27,22-Mar-27,2,19-Mar-27,22-Mar-27,2,2,0%,0,OGAH Alima
    W731LT_UN,W731,TOR Enhanced Defueling Safety Cases,W731.2520,TOR  Low Decay Heat: Incorporate INSA comments,19-Mar-27,05-Apr-27,10,19-Mar-27,05-Apr-27,10,10,0%,218,OGAH Alima
    W730LT_UN,W730,HYB Enhanced Defueling Safety Cases,W730.4170,Gate B++ PRC Paper Submission,23-Mar-27,23-Mar-27,1,23-Mar-27,23-Mar-27,1,1,0%,0,OGAH Alima
    W731LT_UN,W731,TOR Enhanced Defueling Safety Cases,W731.2530,Gate B++ PRC Paper Submission,23-Mar-27,23-Mar-27,1,23-Mar-27,23-Mar-27,1,1,0%,0,OGAH Alima
    W730LT_UN,W730,HYB Enhanced Defueling Safety Cases,W730.4030,PRC Members Review PRC / IMS2 Documentation,24-Mar-27,25-Mar-27,2,24-Mar-27,25-Mar-27,2,2,0%,0,OGAH Alima
    W731LT_UN,W731,TOR Enhanced Defueling Safety Cases,W731.2540,PRC Members Review PRC / IMS2 Documentation,24-Mar-27,25-Mar-27,2,24-Mar-27,25-Mar-27,2,2,0%,0,OGAH Alima
    W526LT,W526,HYB DPCS Defueling Support,W526.4600,HYB 2027 LSR - Recommendations Produced and Issued,25-Mar-27,09-Apr-27,10,25-Mar-27,09-Apr-27,10,10,0%,1414,OGAH Alima
    W730LT_UN,W730,HYB Enhanced Defueling Safety Cases,W730.4060,Hold PRC Meeting,26-Mar-27,26-Mar-27,1,26-Mar-27,26-Mar-27,1,1,0%,1,OGAH Alima
    W731LT_UN,W731,TOR Enhanced Defueling Safety Cases,W731.2550,Hold PRC Meeting,26-Mar-27,26-Mar-27,1,26-Mar-27,26-Mar-27,1,1,0%,1,OGAH Alima
    W730LT_UN,W730,HYB Enhanced Defueling Safety Cases,W730.4050,"Modify Estimate, Schedule & Risk Log as Required",30-Mar-27,31-Mar-27,2,30-Mar-27,31-Mar-27,2,2,0%,0,OGAH Alima
    W731LT_UN,W731,TOR Enhanced Defueling Safety Cases,W731.2560,"Modify Estimate, Schedule & Risk Log as Required",30-Mar-27,31-Mar-27,2,30-Mar-27,31-Mar-27,2,2,0%,0,OGAH Alima
    W526LT,W526,HYB DPCS Defueling Support,W526.10430,HYB 2027 TGN097 R7 - EDF Review,31-Mar-27,13-Apr-27,10,31-Mar-27,13-Apr-27,10,10,0%,1447,OGAH Alima
    W730LT_UN,W730,HYB Enhanced Defueling Safety Cases,W730.4040,Modify PRC Paper as Required,31-Mar-27,31-Mar-27,1,31-Mar-27,31-Mar-27,1,1,0%,0,OGAH Alima
    W731LT_UN,W731,TOR Enhanced Defueling Safety Cases,W731.2570,Modify PRC Paper as Required,31-Mar-27,31-Mar-27,1,31-Mar-27,31-Mar-27,1,1,0%,0,OGAH Alima
    W730LT_UN,W730,HYB Enhanced Defueling Safety Cases,W730.2960,## HYB  Reactor Inspections Relaxations: B++ - D  Phase Funding - (Cost Summary)  ##,31-Mar-27,09-Mar-28,243,31-Mar-27,09-Mar-28,243,243,0%,12,OGAH Alima
    W730LT_UN,W730,HYB Enhanced Defueling Safety Cases,W730.3140,HYB  Reactor Inspections Relaxations: Commence Supporting References or Supporting EC's,,31-Mar-27,0,,31-Mar-27,0,0,0%,0,OGAH Alima
    W730LT_UN,W730,HYB Enhanced Defueling Safety Cases,W730.4190,Gate B++ PRC Paper Approval,,31-Mar-27,0,,31-Mar-27,0,0,0%,0,OGAH Alima
    W730LT_UN,W730,HYB Enhanced Defueling Safety Cases,W730.1200,Gate B++ Approved,,31-Mar-27,0,,31-Mar-27,0,0,0%,0,OGAH Alima
    W731LT_UN,W731,TOR Enhanced Defueling Safety Cases,W731.2580,Gate B++ Approved,,31-Mar-27,0,,31-Mar-27,0,0,0%,0,OGAH Alima
    W731LT_UN,W731,TOR Enhanced Defueling Safety Cases,W731.2590,Gate B++ PRC Paper Approval,,31-Mar-27,0,,31-Mar-27,0,0,0%,0,OGAH Alima
    W731LT_UN,W731,TOR Enhanced Defueling Safety Cases,W731.2600,TOR  Reactor Inspections Relaxations: Commence Supporting References or Supporting EC's,,31-Mar-27,0,,31-Mar-27,0,0,0%,0,OGAH Alima
    W731LT_UN,W731,TOR Enhanced Defueling Safety Cases,W731.2620,## TOR  Reactor Inspections Relaxations: B++ - D  Phase Funding - (Cost Summary)  ##,31-Mar-27,09-Mar-28,243,31-Mar-27,09-Mar-28,243,243,0%,12,OGAH Alima
 Subtotal,,,,,02-Mar-27,09-Mar-28,264,01-Mar-27,09-Mar-28,264,264,,1213,OGAH Alima
 01-Apr-27
    ER7581LT,W195,HRA DPCS Defueling Support,W195.2470,Thales Long Term Support Contract Q2 2027,01-Apr-27,30-Jun-27,63,01-Apr-27,30-Jun-27,63,63,0%,759,OGAH Alima
    ER7582LT,W196,HYA DPCS Defueling Support,W196.2480,Thales Long Term Support Contract Q2 2027,01-Apr-27,30-Jun-27,63,01-Apr-27*,30-Jun-27,63,63,0%,890,OGAH Alima
    ER7743LT,W527,DNB DPCS Defueling Support,W527.1807,Worldgrid Software Modification Support (LAMPS) - Q2 2027,01-Apr-27,30-Jun-27,63,01-Apr-27,30-Jun-27,63,63,0%,1143,OGAH Alima
    ER7743LT,W527,DNB DPCS Defueling Support,W527.1802,Worldgrid System Engineering Support (SQEP) Q2 2027,01-Apr-27,30-Jun-27,63,01-Apr-27*,30-Jun-27,63,63,0%,1143,OGAH Alima
    ER7743LT,W527,DNB DPCS Defueling Support,W527.1805,Worldgrid Long Term Support Contract Q2 2027,01-Apr-27,30-Jun-27,63,01-Apr-27,30-Jun-27,63,63,0%,1143,OGAH Alima
    ER7743LT,W527,DNB DPCS Defueling Support,W527.1806,Thales POLARIS & AIC Support Contract Q2 2022,01-Apr-27,30-Jun-27,63,01-Apr-27,30-Jun-27,63,63,0%,1143,OGAH Alima
    W529LT,W529,TOR DPCS Defueling Support,W529.1355,TOR Thales Long Term Support Contract - Q2 2027,01-Apr-27,30-Jun-27,63,01-Apr-27,30-Jun-27,63,63,0%,1268,OGAH Alima
    W529LT,W529,TOR DPCS Defueling Support,W529.1325,TOR Argus Support Contract - Q2 2027,01-Apr-27,30-Jun-27,63,01-Apr-27,30-Jun-27,63,63,0%,1268,OGAH Alima
    W730LT_UN,W730,HYB Enhanced Defueling Safety Cases,W730.3310,HYB  Reactor Inspections Relaxations: Produce Supporting References Author / Verify / Approve,01-Apr-27,27-May-27,40,01-Apr-27,27-May-27,40,40,0%,0,OGAH Alima
    W731LT_UN,W731,TOR Enhanced Defueling Safety Cases,W731.2610,TOR  Reactor Inspections Relaxations: Produce Supporting References Author / Verify / Approve,01-Apr-27,27-May-27,40,01-Apr-27,27-May-27,40,40,0%,0,OGAH Alima
    ER7582LT,W196,HYA DPCS Defueling Support,W196.25610,Update LSR,02-Apr-27,08-Apr-27,5,02-Apr-27,08-Apr-27,5,5,0%,946,OGAH Alima
    ER7743LT,W527,DNB DPCS Defueling Support,W527.25860,"LSR Data Export, Analysis, Draft Report",02-Apr-27,22-Apr-27,15,02-Apr-27,22-Apr-27,15,15,0%,1159,OGAH Alima
    W526LT,W526,HYB DPCS Defueling Support,W526.1355,HYB Thales Long Term Support Contract - Q2 2027,01-Apr-25,30-Jun-25,61,05-Apr-27,30-Jun-27,61,61,0%,1270,OGAH Alima
    W526LT,W526,HYB DPCS Defueling Support,W526.1320,HYB Argus Support Contract - Q2 2027,01-Apr-25,30-Jun-25,61,05-Apr-27,30-Jun-27,61,61,0%,1270,OGAH Alima
    W730LT_UN,W730,HYB Enhanced Defueling Safety Cases,W730.3420,HYB Low Decay Heat: INSA Final Approval EC NNNNNN,,05-Apr-27,0,,05-Apr-27,0,0,0%,218,OGAH Alima
    W731LT_UN,W731,TOR Enhanced Defueling Safety Cases,W731.2630,TOR Low Decay Heat: INSA Final Approval EC NNNNNN,,05-Apr-27,0,,05-Apr-27,0,0,0%,218,OGAH Alima
    W730LT_UN,W730,HYB Enhanced Defueling Safety Cases,W730.2850,HYB  Low Decay Heat: Send CAT 2 Paper to ONR to Determine Level of Review Required (Acknowledge or Agree,06-Apr-27,06-Apr-27,1,06-Apr-27,06-Apr-27,1,1,0%,218,OGAH Alima
    W730LT_UN,W730,HYB Enhanced Defueling Safety Cases,W730.2910,HYB  Low Decay Heat: Lessons Learned Activitiy - Following INSA Review of the SC,06-Apr-27,08-Apr-27,3,06-Apr-27,08-Apr-27,3,3,0%,249,OGAH Alima
    W731LT_UN,W731,TOR Enhanced Defueling Safety Cases,W731.2640,TOR  Low Decay Heat: Lessons Learned Activitiy - Following INSA Review of the SC,06-Apr-27,08-Apr-27,3,06-Apr-27,08-Apr-27,3,3,0%,249,OGAH Alima
    W731LT_UN,W731,TOR Enhanced Defueling Safety Cases,W731.2650,TOR  Low Decay Heat: Send CAT 2 Paper to ONR to Determine Level of Review Required (Acknowledge or Agree,06-Apr-27,06-Apr-27,1,06-Apr-27,06-Apr-27,1,1,0%,218,OGAH Alima
    W730LT_UN,W730,HYB Enhanced Defueling Safety Cases,W730.3410,HYB Low Decay Heat: ONR Agree/Acknowledge Safety Case,,06-Apr-27,0,,06-Apr-27,0,0,0%,218,OGAH Alima
    W731LT_UN,W731,TOR Enhanced Defueling Safety Cases,W731.2660,TOR Low Decay Heat: ONR Agree/Acknowledge Safety Case,,06-Apr-27,0,,06-Apr-27,0,0,0%,218,OGAH Alima
    W730LT_UN,W730,HYB Enhanced Defueling Safety Cases,W730.2870,HYB  Low Decay Heat: Station Approval,07-Apr-27,20-Apr-27,10,07-Apr-27,20-Apr-27,10,10,0%,218,OGAH Alima
    W731LT_UN,W731,TOR Enhanced Defueling Safety Cases,W731.2670,TOR  Low Decay Heat: Station Approval,07-Apr-27,20-Apr-27,10,07-Apr-27,20-Apr-27,10,10,0%,218,OGAH Alima
    W730LT_UN,W730,HYB Enhanced Defueling Safety Cases,W730.3630,HYB Low Decay Heat: Lessons Learned Milestone -  INSA Review of the Safety Case,,08-Apr-27,0,,08-Apr-27,0,0,0%,249,OGAH Alima
    W731LT_UN,W731,TOR Enhanced Defueling Safety Cases,W731.2680,TOR Low Decay Heat: Lessons Learned Milestone -  INSA Review of the Safety Case,,08-Apr-27,0,,08-Apr-27,0,0,0%,249,OGAH Alima
    ER7582LT,W196,HYA DPCS Defueling Support,W196.25620,Issue LSR,09-Apr-27,09-Apr-27,1,09-Apr-27,09-Apr-27,1,1,0%,946,OGAH Alima
    ER7582LT,W196,HYA DPCS Defueling Support,W196.25640,HYA 2027 LSR Issued,,09-Apr-27,0,,09-Apr-27,0,0,0%,946,OGAH Alima
    W526LT,W526,HYB DPCS Defueling Support,W526.4590,HYB 2027 LSR - Recommendation Sentencing Workshop Preparation and Event,12-Apr-27,23-Apr-27,10,12-Apr-27,23-Apr-27,10,10,0%,1414,OGAH Alima
    W526LT,W526,HYB DPCS Defueling Support,W526.10440,HYB 2027 TGN097 R7 - Update and Issue Report,14-Apr-27,20-Apr-27,5,14-Apr-27,20-Apr-27,5,5,0%,1447,OGAH Alima
    W529LT,W529,TOR DPCS Defueling Support,W529.6410,TOR 2025 S14R1 - Delivery,19-Apr-27,14-May-27,19,19-Apr-27,14-May-27,19,19,0%,1387,OGAH Alima
    W730LT_UN,W730,HYB Enhanced Defueling Safety Cases,W730.2530,HYB Low Decay Heat: Station Approved Safety Case,,20-Apr-27,0,,20-Apr-27,0,0,0%,218,OGAH Alima
    W730LT_UN,W730,HYB Enhanced Defueling Safety Cases,W730.3440,HYB Low Decay Heat: Safety Case Approved - (Station Approval) - EC NNNNNN,,20-Apr-27,0,,20-Apr-27,0,0,0%,218,OGAH Alima
    W731LT_UN,W731,TOR Enhanced Defueling Safety Cases,W731.2690,TOR Low Decay Heat: Safety Case Approved - (Station Approval) - EC NNNNNN,,20-Apr-27,0,,20-Apr-27,0,0,0%,218,OGAH Alima
    W731LT_UN,W731,TOR Enhanced Defueling Safety Cases,W731.2700,TOR Low Decay Heat: Station Approved Safety Case,,20-Apr-27,0,,20-Apr-27,0,0,0%,218,OGAH Alima
    W730LT_UN,W730,HYB Enhanced Defueling Safety Cases,W730.2830,HYB  Low Decay Heat: Develop Implementation & Closeout,21-Apr-27,05-May-27,10,21-Apr-27,05-May-27,10,10,0%,218,OGAH Alima
    W526LT,W526,HYB DPCS Defueling Support,W526.10450,HYB 2027 TGN097 R7 - Report,21-Apr-27,21-Apr-27,1,21-Apr-27,21-Apr-27,1,1,0%,1447,OGAH Alima
    W731LT_UN,W731,TOR Enhanced Defueling Safety Cases,W731.2710,TOR  Low Decay Heat: Develop Implementation & Closeout,21-Apr-27,05-May-27,10,21-Apr-27,05-May-27,10,10,0%,218,OGAH Alima
    W526LT,W526,HYB DPCS Defueling Support,W526.10470,HYB 2027 TGN097 R7 - Report,,21-Apr-27,0,,21-Apr-27,0,0,0%,1447,OGAH Alima
    ER7743LT,W527,DNB DPCS Defueling Support,W527.25780,DNB 2027 2.11 - Installation R1,22-Apr-27,06-May-27,10,22-Apr-27,06-May-27,10,10,0%,1152,OGAH Alima
    ER7743LT,W527,DNB DPCS Defueling Support,W527.25870,Issue Recommendations,23-Apr-27,23-Apr-27,1,23-Apr-27,23-Apr-27,1,1,0%,1159,OGAH Alima
    W529LT,W529,TOR DPCS Defueling Support,W529.4610,TOR 2027 LSR - Data Export Produced and Issued,27-Apr-27,25-May-27,20,26-Apr-27,24-May-27,20,20,0%,1374,OGAH Alima
    W526LT,W526,HYB DPCS Defueling Support,W526.4580,HYB 2027 LSR - Draft Report Produced and Issued for EDF Review,26-Apr-27,11-May-27,11,26-Apr-27,11-May-27,11,11,0%,1414,OGAH Alima
    W526LT,W526,HYB DPCS Defueling Support,W526.10590,HYB 2027 S14R7 - Delivery,26-Apr-27,27-May-27,23,26-Apr-27,27-May-27,23,23,0%,1377,OGAH Alima
    ER7743LT,W527,DNB DPCS Defueling Support,W527.25880,Recommendations Workshop,29-Apr-27,29-Apr-27,1,29-Apr-27,29-Apr-27,1,1,0%,1159,OGAH Alima
    ER7743LT,W527,DNB DPCS Defueling Support,W527.25890,"LSR Update, Internal Review & Issue to EDF",30-Apr-27,14-May-27,10,30-Apr-27,14-May-27,10,10,0%,1159,OGAH Alima
 Subtotal,,,,,01-Apr-25,30-Jun-27,63,01-Apr-27,30-Jun-27,63,63,,1399,OGAH Alima
 01-May-27
    W730LT_UN,W730,HYB Enhanced Defueling Safety Cases,W730.2840,HYB  Low Decay Heat: Post Job Debrief,06-May-27,06-May-27,1,06-May-27,06-May-27,1,1,0%,218,OGAH Alima
    W731LT_UN,W731,TOR Enhanced Defueling Safety Cases,W731.2720,TOR  Low Decay Heat: Post Job Debrief,06-May-27,06-May-27,1,06-May-27,06-May-27,1,1,0%,218,OGAH Alima
    ER7743LT,W527,DNB DPCS Defueling Support,W527.25810,DNB 2027 2.11 - Installation R21,,06-May-27,0,,06-May-27,0,0,0%,1181,OGAH Alima
    W526LT,W526,HYB DPCS Defueling Support,W526.4570,HYB 2027 LSR - EDF Review Comments Produced and Provided,12-May-27,26-May-27,11,12-May-27,26-May-27,11,11,0%,1414,OGAH Alima
    W529LT,W529,TOR DPCS Defueling Support,W529.6420,TOR 2025 S14R1 - Installation R1,17-May-27,16-Jul-27,44,17-May-27,16-Jul-27,44,44,0%,1387,OGAH Alima
    ER7743LT,W527,DNB DPCS Defueling Support,W527.25900,EDF Review,17-May-27,28-May-27,10,17-May-27,28-May-27,10,10,0%,1159,OGAH Alima
    W529LT,W529,TOR DPCS Defueling Support,W529.4600,TOR 2027 LSR - Recommendations Produced and Issued,26-May-27,09-Jun-27,10,25-May-27,08-Jun-27,10,10,0%,1374,OGAH Alima
    W526LT,W526,HYB DPCS Defueling Support,W526.4560,HYB 2027 LSR - Final Report Produced and Issued,27-May-27,09-Jun-27,9,27-May-27,09-Jun-27,9,9,0%,1414,OGAH Alima
    W730LT_UN,W730,HYB Enhanced Defueling Safety Cases,W730.3150,HYB  Reactor Inspections Relaxations: All Supporting References Approved and Issued,,27-May-27,0,,27-May-27,0,0,0%,0,OGAH Alima
    W730LT_UN,W730,HYB Enhanced Defueling Safety Cases,W730.3470,HYB Reactor Inspections Relaxations: All Key Supporting Technical References Completed,,27-May-27,0,,27-May-27,0,0,0%,0,OGAH Alima
    W731LT_UN,W731,TOR Enhanced Defueling Safety Cases,W731.2730,TOR Reactor Inspections Relaxations: All Key Supporting Technical References Completed,,27-May-27,0,,27-May-27,0,0,0%,0,OGAH Alima
    W731LT_UN,W731,TOR Enhanced Defueling Safety Cases,W731.2740,TOR  Reactor Inspections Relaxations: All Supporting References Approved and Issued,,27-May-27,0,,27-May-27,0,0,0%,0,OGAH Alima
    ER7743LT,W527,DNB DPCS Defueling Support,W527.25300,Asset Guardian Licences and Support 2027,28-May-27,28-May-27,1,28-May-27*,28-May-27,1,1,0%,1165,OGAH Alima
    W730LT_UN,W730,HYB Enhanced Defueling Safety Cases,W730.3160,HYB  Reactor Inspections Relaxations: Produce verification plan,28-May-27,04-Jun-27,5,28-May-27,04-Jun-27,5,5,0%,61,OGAH Alima
    W730LT_UN,W730,HYB Enhanced Defueling Safety Cases,W730.3170,HYB  Reactor Inspections Relaxations: Prepare / Author the Safety Case Proposal,28-May-27,23-Jul-27,40,28-May-27,23-Jul-27,40,40,0%,0,OGAH Alima
    W730LT_UN,W730,HYB Enhanced Defueling Safety Cases,W730.3370,HYB  Reactor Inspections Relaxations: Lessons Learned Activitiy - Following Completeion of Technical References,28-May-27,02-Jun-27,3,28-May-27,02-Jun-27,3,3,0%,212,OGAH Alima
    W731LT_UN,W731,TOR Enhanced Defueling Safety Cases,W731.2750,TOR  Reactor Inspections Relaxations: Lessons Learned Activitiy - Following Completeion of Technical References,28-May-27,02-Jun-27,3,28-May-27,02-Jun-27,3,3,0%,212,OGAH Alima
    W731LT_UN,W731,TOR Enhanced Defueling Safety Cases,W731.2760,TOR  Reactor Inspections Relaxations: Prepare / Author the Safety Case Proposal,28-May-27,23-Jul-27,40,28-May-27,23-Jul-27,40,40,0%,0,OGAH Alima
    W731LT_UN,W731,TOR Enhanced Defueling Safety Cases,W731.2770,TOR  Reactor Inspections Relaxations: Produce verification plan,28-May-27,04-Jun-27,5,28-May-27,04-Jun-27,5,5,0%,61,OGAH Alima
 Subtotal,,,,,06-May-27,23-Jul-27,56,06-May-27,23-Jul-27,56,56,,1382,OGAH Alima
 01-Jun-27
    ER7581LT,W195,HRA DPCS Defueling Support,W195.25800,TGN097 R1 - Inspection,01-Jun-27,07-Jun-27,5,01-Jun-27*,07-Jun-27,5,5,0%,857,OGAH Alima
    ER7743LT,W527,DNB DPCS Defueling Support,W527.25910,Update LSR,01-Jun-27,07-Jun-27,5,01-Jun-27,07-Jun-27,5,5,0%,1159,OGAH Alima
    W730LT_UN,W730,HYB Enhanced Defueling Safety Cases,W730.3650,HYB Reactor Inspections Relaxations: Lessons Learned Milestone - Technical References,,02-Jun-27,0,,02-Jun-27,0,0,0%,212,OGAH Alima
    W731LT_UN,W731,TOR Enhanced Defueling Safety Cases,W731.2780,TOR Reactor Inspections Relaxations: Lessons Learned Milestone - Technical References,,02-Jun-27,0,,02-Jun-27,0,0,0%,212,OGAH Alima
    ER7743LT,W527,DNB DPCS Defueling Support,W527.25740,DNB 2027 2.11 - Installation R2,04-Jun-27,17-Jun-27,10,04-Jun-27,17-Jun-27,10,10,0%,1152,OGAH Alima
    ER7581LT,W195,HRA DPCS Defueling Support,W195.25760,HRA 2026  - Installation R1,08-Jun-27,30-Jun-27,17,08-Jun-27,30-Jun-27,17,17,0%,890,OGAH Alima
    ER7581LT,W195,HRA DPCS Defueling Support,W195.25830,"TGN097 R1 - Draft Report Produced, Internal Review and Issue to EDF",08-Jun-27,21-Jun-27,10,08-Jun-27,21-Jun-27,10,10,0%,857,OGAH Alima
    ER7743LT,W527,DNB DPCS Defueling Support,W527.25920,Issue Complete LSR,08-Jun-27,08-Jun-27,1,08-Jun-27,08-Jun-27,1,1,0%,1159,OGAH Alima
    ER7743LT,W527,DNB DPCS Defueling Support,W527.25950,DNB 2027 Issue Complete LSR,,08-Jun-27,0,,08-Jun-27,0,0,0%,1159,OGAH Alima
    W529LT,W529,TOR DPCS Defueling Support,W529.4590,TOR 2027 LSR - Recommendation Sentencing Workshop Preparation and Event,10-Jun-27,23-Jun-27,10,09-Jun-27,22-Jun-27,10,10,0%,1374,OGAH Alima
    ER7582LT,W196,HYA DPCS Defueling Support,W195.1030,HYA 2026 - Installation R1,10-Jun-27,30-Jun-27,15,10-Jun-27*,30-Jun-27,15,15,0%,890,OGAH Alima
    ER7743LT,W527,DNB DPCS Defueling Support,W527.25820,DNB 2027 2.11 - Installation R22,,17-Jun-27,0,,17-Jun-27,0,0,0%,1152,OGAH Alima
    ER7581LT,W195,HRA DPCS Defueling Support,W195.25820,TGN097 R1 - EDF Review,22-Jun-27,05-Jul-27,10,22-Jun-27,05-Jul-27,10,10,0%,857,OGAH Alima
    W529LT,W529,TOR DPCS Defueling Support,W529.4580,TOR 2027 LSR - Draft Report Produced and Issued for EDF Review,24-Jun-27,08-Jul-27,11,23-Jun-27,07-Jul-27,11,11,0%,1374,OGAH Alima
    ER7581LT,W195,HRA DPCS Defueling Support,W195.25840,HRA 2026  - Installation R1,,30-Jun-27,0,,30-Jun-27,0,0,0%,890,OGAH Alima
    ER7582LT,W196,HYA DPCS Defueling Support,W195.1060,HYA 2026 - Installation R1,,30-Jun-27,0,,30-Jun-27,0,0,0%,890,OGAH Alima
    W529LT,W529,TOR DPCS Defueling Support,W529.10170,TOR 2027 S14R2 - Go / No Go Decision,,30-Jun-27,0,,30-Jun-27,0,0,0%,1176,OGAH Alima
 Subtotal,,,,,01-Jun-27,08-Jul-27,27,01-Jun-27,07-Jul-27,27,27,,1374,OGAH Alima
 01-Jul-27
    ER7581LT,W195,HRA DPCS Defueling Support,W195.2480,Thales Long Term Support Contract Q3 2027,01-Jul-27,30-Sep-27,65,01-Jul-27,30-Sep-27,65,65,0%,759,OGAH Alima
    ER7582LT,W196,HYA DPCS Defueling Support,W196.2490,Thales Long Term Support Contract Q3 2027,01-Jul-27,30-Sep-27,65,01-Jul-27*,30-Sep-27,65,65,0%,825,OGAH Alima
    ER7743LT,W527,DNB DPCS Defueling Support,W527.1812,Worldgrid Long Term Support Contract Q3 2027,01-Jul-27,30-Sep-27,65,01-Jul-27,30-Sep-27,65,65,0%,1078,OGAH Alima
    ER7743LT,W527,DNB DPCS Defueling Support,W527.1809,Worldgrid System Engineering Support (SQEP) Q3 2027,01-Jul-27,30-Sep-27,65,01-Jul-27*,30-Sep-27,65,65,0%,1078,OGAH Alima
    ER7743LT,W527,DNB DPCS Defueling Support,W527.1815,Thales POLARIS & AIC Support Contract Q3 2027,01-Jul-27,30-Sep-27,65,01-Jul-27,30-Sep-27,65,65,0%,1078,OGAH Alima
    ER7743LT,W527,DNB DPCS Defueling Support,W527.1817,Worldgrid Software Modification Support (LAMPS) - Q3 2027,01-Jul-27,30-Sep-27,65,01-Jul-27,30-Sep-27,65,65,0%,1078,OGAH Alima
    W529LT,W529,TOR DPCS Defueling Support,W529.1330,TOR Argus Support Contract - Q3 2027,01-Jul-27,30-Sep-27,65,01-Jul-27,30-Sep-27,65,65,0%,1268,OGAH Alima
    W529LT,W529,TOR DPCS Defueling Support,W529.1365,TOR Thales Long Term Support Contract - Q3 2027,01-Jul-27,30-Sep-27,65,01-Jul-27,30-Sep-27,65,65,0%,1268,OGAH Alima
    W526LT,W526,HYB DPCS Defueling Support,W526.1335,HYB Argus Support Contract - Q3 2027,01-Jul-25,30-Sep-25,65,01-Jul-27,30-Sep-27,65,65,0%,1270,OGAH Alima
    W526LT,W526,HYB DPCS Defueling Support,W526.1365,HYB Thales Long Term Support Contract - Q3 2027,01-Jul-25,30-Sep-25,65,01-Jul-27,30-Sep-27,65,65,0%,1270,OGAH Alima
    W526LT,W526,HYB DPCS Defueling Support,W526.10240,HYB 2026 LSR Pre Data Extract,01-Jul-27,07-Jul-27,5,01-Jul-27*,07-Jul-27,5,5,0%,1332,OGAH Alima
    W529LT,W529,TOR DPCS Defueling Support,W529.10180,TOR 2027 S14R2 - Specification,01-Jul-27,10-Dec-27,116,01-Jul-27,10-Dec-27,116,116,0%,1176,OGAH Alima
    W529LT,W529,TOR DPCS Defueling Support,W529.4570,TOR 2027 LSR - EDF Review Comments Produced and Provided,09-Jul-27,23-Jul-27,11,08-Jul-27,22-Jul-27,11,11,0%,1374,OGAH Alima
    W529LT,W529,TOR DPCS Defueling Support,W529.10150,TOR 2026 S14R1 - Installation R1,,16-Jul-27,0,,16-Jul-27,0,0,0%,1387,OGAH Alima
    W529LT,W529,TOR DPCS Defueling Support,W529.4560,TOR 2027 LSR - Final Report Produced and Issued,26-Jul-27,05-Aug-27,9,23-Jul-27,04-Aug-27,9,9,0%,1374,OGAH Alima
    W730LT_UN,W730,HYB Enhanced Defueling Safety Cases,W730.1160,>>>OUTGOING ENABLER (W295) Safety Cases Authored,,23-Jul-27,0,,23-Jul-27,0,0,0%,175,OGAH Alima
    W730LT_UN,W730,HYB Enhanced Defueling Safety Cases,W730.3480,HYB Reactor Inspections Relaxations: Safety Case Paper Authoring Complete EC NNNNNN,,23-Jul-27,0,,23-Jul-27,0,0,0%,0,OGAH Alima
    W731LT_UN,W731,TOR Enhanced Defueling Safety Cases,W731.2790,TOR Reactor Inspections Relaxations: Safety Case Paper Authoring Complete EC NNNNNN,,23-Jul-27,0,,23-Jul-27,0,0,0%,0,OGAH Alima
    W731LT_UN,W731,TOR Enhanced Defueling Safety Cases,W731.2800,>>>OUTGOING ENABLER (W295) Safety Cases Authored,,23-Jul-27,0,,23-Jul-27,0,0,0%,175,OGAH Alima
    W730LT_UN,W730,HYB Enhanced Defueling Safety Cases,W730.2940,HYB  Reactor Inspections Relaxations: Requirements Capture,26-Jul-27,28-Jul-27,3,26-Jul-27,28-Jul-27,3,3,0%,3,OGAH Alima
    W730LT_UN,W730,HYB Enhanced Defueling Safety Cases,W730.3190,HYB  Reactor Inspections Relaxations: Final Authoring Consolidation Check,26-Jul-27,02-Aug-27,6,26-Jul-27,02-Aug-27,6,6,0%,0,OGAH Alima
    W730LT_UN,W730,HYB Enhanced Defueling Safety Cases,W730.3340,HYB  Reactor Inspections Relaxations: Lessons Learned Activitiy - Following Authoring of SC,26-Jul-27,28-Jul-27,3,26-Jul-27,28-Jul-27,3,3,0%,172,OGAH Alima
    W731LT_UN,W731,TOR Enhanced Defueling Safety Cases,W731.2810,TOR  Reactor Inspections Relaxations: Lessons Learned Activitiy - Following Authoring of SC,26-Jul-27,28-Jul-27,3,26-Jul-27,28-Jul-27,3,3,0%,172,OGAH Alima
    W731LT_UN,W731,TOR Enhanced Defueling Safety Cases,W731.2820,TOR  Reactor Inspections Relaxations: Final Authoring Consolidation Check,26-Jul-27,02-Aug-27,6,26-Jul-27,02-Aug-27,6,6,0%,0,OGAH Alima
    W731LT_UN,W731,TOR Enhanced Defueling Safety Cases,W731.2830,TOR  Reactor Inspections Relaxations: Requirements Capture,26-Jul-27,28-Jul-27,3,26-Jul-27,28-Jul-27,3,3,0%,3,OGAH Alima
    W730LT_UN,W730,HYB Enhanced Defueling Safety Cases,W730.3660,HYB Reactor Inspections Relaxations: Lessons Learned Milestone - Authoring of the Safety Case,,28-Jul-27,0,,28-Jul-27,0,0,0%,172,OGAH Alima
    W731LT_UN,W731,TOR Enhanced Defueling Safety Cases,W731.2840,TOR Reactor Inspections Relaxations: Lessons Learned Milestone - Authoring of the Safety Case,,28-Jul-27,0,,28-Jul-27,0,0,0%,172,OGAH Alima
    W526LT,W526,HYB DPCS Defueling Support,W526.10250,"HYB 2026 LSR Data Export, Analysis, Draft Report",29-Jul-27,18-Aug-27,15,29-Jul-27,18-Aug-27,15,15,0%,1332,OGAH Alima
    W526LT,W526,HYB DPCS Defueling Support,W526.10610,HYB 2027 S14R7 - Installation R7,30-Jul-27,30-Jul-27,1,30-Jul-27,30-Jul-27,1,1,0%,1377,OGAH Alima
    W526LT,W526,HYB DPCS Defueling Support,W526.10630,HYB 2027 S14R7 - Installation R7,,30-Jul-27,0,,30-Jul-27,0,0,0%,1377,OGAH Alima
 Subtotal,,,,,01-Jul-25,10-Dec-27,116,01-Jul-27,10-Dec-27,116,116,,1283,OGAH Alima
 01-Aug-27
    W730LT_UN,W730,HYB Enhanced Defueling Safety Cases,W730.3180,HYB  Reactor Inspections Relaxations: Obtain CO Review & Detail Checker,03-Aug-27,31-Aug-27,20,03-Aug-27,31-Aug-27,20,20,0%,0,OGAH Alima
    W731LT_UN,W731,TOR Enhanced Defueling Safety Cases,W731.2850,TOR  Reactor Inspections Relaxations: Obtain CO Review & Detail Checker,03-Aug-27,31-Aug-27,20,03-Aug-27,31-Aug-27,20,20,0%,0,OGAH Alima
    ER7581LT,W195,HRA DPCS Defueling Support,W195.25810,TGN097 R1 - Report Issue,10-Aug-27,16-Aug-27,5,10-Aug-27,16-Aug-27,5,5,0%,857,OGAH Alima
    ER7581LT,W195,HRA DPCS Defueling Support,W195.25860,HRA 2026 TGN097 R2 - Report Issue,,16-Aug-27,0,,16-Aug-27,0,0,0%,857,OGAH Alima
    ER7581LT,W195,HRA DPCS Defueling Support,W195.25870,HRA 2027 TGN097 R2 - Report Issue,,16-Aug-27,0,,16-Aug-27,0,0,0%,857,OGAH Alima
    W526LT,W526,HYB DPCS Defueling Support,W526.10260,HYB 2026 Issue Recommendations,19-Aug-27,19-Aug-27,1,19-Aug-27,19-Aug-27,1,1,0%,1332,OGAH Alima
    W526LT,W526,HYB DPCS Defueling Support,W526.10270,HYB 2026 Recommendations Workshop,26-Aug-27,26-Aug-27,1,26-Aug-27,26-Aug-27,1,1,0%,1332,OGAH Alima
    W526LT,W526,HYB DPCS Defueling Support,W526.10280,"HYB 2026 LSR Update, Internal Review & Issue to EDF",27-Aug-27,10-Sep-27,10,27-Aug-27,10-Sep-27,10,10,0%,1332,OGAH Alima
    ER7581LT,W195,HRA DPCS Defueling Support,W195.25980,LSR Pre Data Extract,31-Aug-27,06-Sep-27,5,31-Aug-27*,06-Sep-27,5,5,0%,781,OGAH Alima
    W529LT,W529,TOR DPCS Defueling Support,W529.10100,TGN097 R1 - Inspection,31-Aug-27,06-Sep-27,5,31-Aug-27,06-Sep-27,5,5,0%,1323,OGAH Alima
    W730LT_UN,W730,HYB Enhanced Defueling Safety Cases,W730.3200,HYB Reactor Inspections Relaxations: Verification Commenced (T-11),,31-Aug-27,0,,31-Aug-27,0,0,0%,0,OGAH Alima
    W730LT_UN,W730,HYB Enhanced Defueling Safety Cases,W730.3220,HYB  Reactor Inspections Relaxations: Issue to Peer CO & Station for comments,,31-Aug-27,0,,31-Aug-27,0,0,0%,0,OGAH Alima
    W731LT_UN,W731,TOR Enhanced Defueling Safety Cases,W731.2860,TOR  Reactor Inspections Relaxations: Issue to Peer CO & Station for comments,,31-Aug-27,0,,31-Aug-27,0,0,0%,0,OGAH Alima
    W731LT_UN,W731,TOR Enhanced Defueling Safety Cases,W731.2870,TOR Reactor Inspections Relaxations: Verification Commenced (T-11),,31-Aug-27,0,,31-Aug-27,0,0,0%,0,OGAH Alima
 Subtotal,,,,,03-Aug-27,10-Sep-27,28,03-Aug-27,10-Sep-27,28,28,,1332,OGAH Alima
 01-Sep-27
    W730LT_UN,W730,HYB Enhanced Defueling Safety Cases,W730.3250,HYB Reactor Inspections Relaxations: Verification of the case - First Round Comments (using BARRIER MODEL),01-Sep-27,26-Oct-27,40,01-Sep-27,26-Oct-27,40,40,0%,0,OGAH Alima
    W731LT_UN,W731,TOR Enhanced Defueling Safety Cases,W731.2880,TOR Reactor Inspections Relaxations: Verification of the case - First Round Comments (using BARRIER MODEL),01-Sep-27,26-Oct-27,40,01-Sep-27,26-Oct-27,40,40,0%,0,OGAH Alima
    W529LT,W529,TOR DPCS Defueling Support,W529.10130,"TGN097 R1 - Draft Report Produced, Internal Review and Issue to EDF",07-Sep-27,20-Sep-27,10,07-Sep-27,20-Sep-27,10,10,0%,1323,OGAH Alima
    ER7582LT,W196,HYA DPCS Defueling Support,W195.1050,HYA 2026 - Installation R2,10-Sep-27,30-Sep-27,15,10-Sep-27*,30-Sep-27,15,15,0%,825,OGAH Alima
    ER7581LT,W195,HRA DPCS Defueling Support,W195.25770,HRA 2026  - Installation R2,13-Sep-27,30-Sep-27,14,13-Sep-27*,30-Sep-27,14,14,0%,825,OGAH Alima
    W526LT,W526,HYB DPCS Defueling Support,W526.10290,HYB 2026 EDF Review,13-Sep-27,24-Sep-27,10,13-Sep-27,24-Sep-27,10,10,0%,1332,OGAH Alima
    W529LT,W529,TOR DPCS Defueling Support,W529.10120,TGN097 R1 - EDF Review,21-Sep-27,04-Oct-27,10,21-Sep-27,04-Oct-27,10,10,0%,1323,OGAH Alima
    ER7581LT,W195,HRA DPCS Defueling Support,W195.25990,"LSR Data Export, Analysis, Draft Report",27-Sep-27,15-Oct-27,15,27-Sep-27,15-Oct-27,15,15,0%,781,OGAH Alima
    W526LT,W526,HYB DPCS Defueling Support,W526.10300,HYB 2026 Update LSR,27-Sep-27,01-Oct-27,5,27-Sep-27,01-Oct-27,5,5,0%,1332,OGAH Alima
    ER7581LT,W195,HRA DPCS Defueling Support,W195.25850,HRA 2026  - Installation R2,,30-Sep-27,0,,30-Sep-27,0,0,0%,825,OGAH Alima
    ER7582LT,W196,HYA DPCS Defueling Support,W195.1070,HYA 2026 - Installation R2,,30-Sep-27,0,,30-Sep-27,0,0,0%,825,OGAH Alima
 Subtotal,,,,,01-Sep-27,26-Oct-27,40,01-Sep-27,26-Oct-27,40,40,,1315,OGAH Alima
 01-Oct-27
    ER7581LT,W195,HRA DPCS Defueling Support,W195.2490,Thales Long Term Support Contract Q4 2027,01-Oct-27,31-Dec-27,66,01-Oct-27,31-Dec-27,66,66,0%,759,OGAH Alima
    ER7582LT,W196,HYA DPCS Defueling Support,W196.2500,Thales Long Term Support Contract Q4 2027,01-Oct-27,31-Dec-27,66,01-Oct-27*,31-Dec-27,66,66,0%,759,OGAH Alima
    ER7743LT,W527,DNB DPCS Defueling Support,W527.1880,Worldgrid System Engineering Support (SQEP) Q4 2027,01-Oct-27,31-Dec-27,66,01-Oct-27*,31-Dec-27,66,66,0%,1012,OGAH Alima
    ER7743LT,W527,DNB DPCS Defueling Support,W527.1883,Worldgrid Long Term Support Contract Q4 2027,01-Oct-27,31-Dec-27,66,01-Oct-27,31-Dec-27,66,66,0%,1012,OGAH Alima
    ER7743LT,W527,DNB DPCS Defueling Support,W527.1885,Thales POLARIS & AIC Support Contract Q4 2027,01-Oct-27,31-Dec-27,66,01-Oct-27,31-Dec-27,66,66,0%,1012,OGAH Alima
    ER7743LT,W527,DNB DPCS Defueling Support,W527.1888,Worldgrid Software Modification Support (LAMPS) - Q4 2027,01-Oct-27,31-Dec-27,66,01-Oct-27,31-Dec-27,66,66,0%,1012,OGAH Alima
    W529LT,W529,TOR DPCS Defueling Support,W529.1375,TOR Thales Long Term Support Contract - Q4 2027,01-Oct-27,31-Dec-27,66,01-Oct-27,31-Dec-27,66,66,0%,1268,OGAH Alima
    W529LT,W529,TOR DPCS Defueling Support,W529.1335,TOR Argus Support Contract - Q4 2027,01-Oct-27,31-Dec-27,66,01-Oct-27,31-Dec-27,66,66,0%,1268,OGAH Alima
    W526LT,W526,HYB DPCS Defueling Support,W526.1375,HYB Thales Long Term Support Contract - Q4 2027,01-Oct-25,31-Dec-25,64,01-Oct-27,29-Dec-27,64,64,0%,1270,OGAH Alima
    W526LT,W526,HYB DPCS Defueling Support,W526.1330,HYB Argus Support Contract - Q4 2027,01-Oct-25,31-Dec-25,64,01-Oct-27,29-Dec-27,64,64,0%,1270,OGAH Alima
    W526LT,W526,HYB DPCS Defueling Support,W526.10310,HYB 2026 Issue Complete LSR,04-Oct-27,04-Oct-27,1,04-Oct-27,04-Oct-27,1,1,0%,1332,OGAH Alima
    W526LT,W526,HYB DPCS Defueling Support,W526.10330,HYB 2027 Issue Complete LSR,,04-Oct-27,0,,04-Oct-27,0,0,0%,1332,OGAH Alima
    W529LT,W529,TOR DPCS Defueling Support,W529.10110,TGN097 R1 - Update and Issue Report,11-Oct-27,15-Oct-27,5,11-Oct-27,15-Oct-27,5,5,0%,1323,OGAH Alima
    W529LT,W529,TOR DPCS Defueling Support,W529.10080,TOR 2027 R1 TGN097 Inspection Complete,,15-Oct-27,0,,15-Oct-27,0,0,0%,1323,OGAH Alima
    ER7581LT,W195,HRA DPCS Defueling Support,W195.26000,Issue Recommendations,18-Oct-27,18-Oct-27,1,18-Oct-27,18-Oct-27,1,1,0%,781,OGAH Alima
    ER7581LT,W195,HRA DPCS Defueling Support,W195.26010,Recommendations Workshop,26-Oct-27,26-Oct-27,1,26-Oct-27,26-Oct-27,1,1,0%,781,OGAH Alima
    W730LT_UN,W730,HYB Enhanced Defueling Safety Cases,W730.3240,HYB  Reactor Inspections Relaxations: Incorporate all stakeholder comments,27-Oct-27,30-Nov-27,25,27-Oct-27,30-Nov-27,25,25,0%,0,OGAH Alima
    ER7581LT,W195,HRA DPCS Defueling Support,W195.26020,"LSR Update, Internal Review & Issue to EDF",27-Oct-27,27-Oct-27,1,27-Oct-27,27-Oct-27,1,1,0%,781,OGAH Alima
    W731LT_UN,W731,TOR Enhanced Defueling Safety Cases,W731.2890,TOR  Reactor Inspections Relaxations: Incorporate all stakeholder comments,27-Oct-27,30-Nov-27,25,27-Oct-27,30-Nov-27,25,25,0%,0,OGAH Alima
 Subtotal,,,,,01-Oct-25,31-Dec-27,66,01-Oct-27,31-Dec-27,66,66,,1268,OGAH Alima
 01-Nov-27
    ER7581LT,W195,HRA DPCS Defueling Support,W195.26030,EDF Review,10-Nov-27,23-Nov-27,10,10-Nov-27,23-Nov-27,10,10,0%,781,OGAH Alima
    W156LT,W156,HYA Security,W156.A10501600,Project Closed,,17-Nov-26,0,,15-Nov-27,0,0,0%,0,OGAH Alima
    W156LT,W156,HYA Security,W156.A1022,All Scope Delivered [FEEDS TO SUMMARY SCHEDULE],,17-Nov-26,0,,15-Nov-27,0,0,0%,0,OGAH Alima
    W156LT,W156,HYA Security,W156.3750,Prep for Defueling All Security Issues Considered & Addressed for Permanent Mitigations,,17-Nov-26,0,,15-Nov-27,0,0,0%,0,OGAH Alima
    ER7581LT,W195,HRA DPCS Defueling Support,W195.26040,Update LSR,24-Nov-27,30-Nov-27,5,24-Nov-27,30-Nov-27,5,5,0%,781,OGAH Alima
 Subtotal,,,,,17-Nov-26,30-Nov-27,15,10-Nov-27,30-Nov-27,15,15,,781,OGAH Alima
 01-Dec-27
    W730LT_UN,W730,HYB Enhanced Defueling Safety Cases,W730.3210,HYB  Reactor Inspections Relaxations: Final Verification,01-Dec-27,28-Dec-27,20,01-Dec-27,28-Dec-27,20,20,0%,0,OGAH Alima
    ER7581LT,W195,HRA DPCS Defueling Support,W195.26050,Issue Complete LSR,01-Dec-27,01-Dec-27,1,01-Dec-27,01-Dec-27,1,1,0%,781,OGAH Alima
    W731LT_UN,W731,TOR Enhanced Defueling Safety Cases,W731.2900,TOR  Reactor Inspections Relaxations: Final Verification,01-Dec-27,28-Dec-27,20,01-Dec-27,28-Dec-27,20,20,0%,0,OGAH Alima
    ER7581LT,W195,HRA DPCS Defueling Support,W195.25970,HRA 2027 Issue Complete LSR,,01-Dec-27,0,,01-Dec-27,0,0,0%,781,OGAH Alima
    W529LT,W529,TOR DPCS Defueling Support,W529.10190,TOR 2027 S14R2 - Testing,13-Dec-27,17-Mar-28,70,13-Dec-27,17-Mar-28,70,70,0%,1176,OGAH Alima
    W730LT_UN,W730,HYB Enhanced Defueling Safety Cases,W730.3230,HYB  Reactor Inspections Relaxations: Submit for approval - Categoriser ratifies; RE/CO endorsement,,28-Dec-27,0,,28-Dec-27,0,0,0%,0,OGAH Alima
    W730LT_UN,W730,HYB Enhanced Defueling Safety Cases,W730.3530,HYB Reactor Inspections Relaxations: Verification Complete/ Verified Draft A Issued for INSA  EC NNNNNN,,28-Dec-27,0,,28-Dec-27,0,0,0%,0,OGAH Alima
    W731LT_UN,W731,TOR Enhanced Defueling Safety Cases,W731.2910,TOR Reactor Inspections Relaxations: Verification Complete/ Verified Draft A Issued for INSA  EC NNNNNN,,28-Dec-27,0,,28-Dec-27,0,0,0%,0,OGAH Alima
    W731LT_UN,W731,TOR Enhanced Defueling Safety Cases,W731.2920,TOR  Reactor Inspections Relaxations: Submit for approval - Categoriser ratifies; RE/CO endorsement,,28-Dec-27,0,,28-Dec-27,0,0,0%,0,OGAH Alima
    W730LT_UN,W730,HYB Enhanced Defueling Safety Cases,W730.3270,HYB  Reactor Inspections Relaxations: INSA review & iteration of comments (using BARRIER MODEL),29-Dec-27,25-Jan-28,20,29-Dec-27,25-Jan-28,20,20,0%,0,OGAH Alima
    W730LT_UN,W730,HYB Enhanced Defueling Safety Cases,W730.3350,HYB  Reactor Inspections Relaxations: Lessons Learned Activitiy - Following Verification of the SC,29-Dec-27,31-Dec-27,3,29-Dec-27,31-Dec-27,3,3,0%,61,OGAH Alima
    W731LT_UN,W731,TOR Enhanced Defueling Safety Cases,W731.2930,TOR  Reactor Inspections Relaxations: Lessons Learned Activitiy - Following Verification of the SC,29-Dec-27,31-Dec-27,3,29-Dec-27,31-Dec-27,3,3,0%,61,OGAH Alima
    W731LT_UN,W731,TOR Enhanced Defueling Safety Cases,W731.2940,TOR  Reactor Inspections Relaxations: INSA review & iteration of comments (using BARRIER MODEL),29-Dec-27,25-Jan-28,20,29-Dec-27,25-Jan-28,20,20,0%,0,OGAH Alima
    ER7743LT,W527,DNB DPCS Defueling Support,W527.25150,DNB DPCS Defueling Support - Project End,,31-Dec-27,0,,31-Dec-27,0,0,0%,1012,OGAH Alima
    W730LT_UN,W730,HYB Enhanced Defueling Safety Cases,W730.3670,HYB Reactor Inspections Relaxations: Lessons Learned Milestone - Verification of the Safety Case,,31-Dec-27,0,,31-Dec-27,0,0,0%,61,OGAH Alima
    W731LT_UN,W731,TOR Enhanced Defueling Safety Cases,W731.2950,TOR Reactor Inspections Relaxations: Lessons Learned Milestone - Verification of the Safety Case,,31-Dec-27,0,,31-Dec-27,0,0,0%,61,OGAH Alima
 Subtotal,,,,,01-Dec-27,17-Mar-28,78,01-Dec-27,17-Mar-28,78,78,,1176,OGAH Alima
 01-Jan-28
    W529LT,W529,TOR DPCS Defueling Support,W529.3080,TOR 2029 Defueling Software Build,02-Jan-29,27-Nov-29,231,03-Jan-28,27-Nov-28,231,231,0%,1015,OGAH Alima
    W529LT,W529,TOR DPCS Defueling Support,W529.3060,TOR 2028 Defueling Software Build,03-Jan-28,29-Nov-28,233,03-Jan-28*,29-Nov-28,233,233,0%,782,OGAH Alima
    W529LT,W529,TOR DPCS Defueling Support,W529.1385,TOR Argus Support Contract - Q1 2028 Delivery,03-Jan-28,31-Mar-28,65,03-Jan-28*,31-Mar-28,65,65,0%,1015,OGAH Alima
    W529LT,W529,TOR DPCS Defueling Support,W529.1425,TOR Thales Long Term Support Contract - Q1 2028 Delivery,03-Jan-28,31-Mar-28,65,03-Jan-28*,31-Mar-28,65,65,0%,1015,OGAH Alima
    W529LT,W529,TOR DPCS Defueling Support,W529.3090,TOR DPCS Long Term Support Contract 2029,02-Jan-29,31-Dec-29,253,03-Jan-28,29-Dec-28,253,253,0%,1015,OGAH Alima
    W529LT,W529,TOR DPCS Defueling Support,W529.1100,TOR PES Group Support - 2028,03-Jan-28,29-Dec-28,253,03-Jan-28*,29-Dec-28,253,253,0%,1015,OGAH Alima
    W529LT,W529,TOR DPCS Defueling Support,W529.1110,TOR Plant Control Systems & Simulators (PCS&S) Group - 2028,03-Jan-28,29-Dec-28,253,03-Jan-28*,29-Dec-28,253,253,0%,1015,OGAH Alima
    W529LT,W529,TOR DPCS Defueling Support,W529.4690,TOR 2028 LSR - Pre-export Data Validation Produced and Completed,03-Jan-28,23-Feb-28,38,03-Jan-28*,23-Feb-28,38,38,0%,1015,OGAH Alima
    W526LT,W526,HYB DPCS Defueling Support,W526.4690,HYB 2028 LSR - Pre-export Data Validation Produced and Completed,03-Jan-28,23-Feb-28,38,03-Jan-28*,23-Feb-28,38,38,0%,1159,OGAH Alima
    W526LT,W526,HYB DPCS Defueling Support,W526.1380,HYB Argus Support Contract - Q1 2028,03-Jan-28,31-Mar-28,65,03-Jan-28,31-Mar-28,65,65,0%,1015,OGAH Alima
    W526LT,W526,HYB DPCS Defueling Support,W526.1110,HYB Plant Control Systems & Simulators (PCS&S) Group - 2028,03-Jan-28,08-Dec-28,240,03-Jan-28,08-Dec-28,240,240,0%,1015,OGAH Alima
    W526LT,W526,HYB DPCS Defueling Support,W526.1100,HYB PES Group Support - 2028,03-Jan-28,29-Dec-28,253,03-Jan-28,29-Dec-28,253,253,0%,1015,OGAH Alima
    W526LT,W526,HYB DPCS Defueling Support,W526.3070,HYB DPCS Long Term Support Contract 2028,03-Jan-28,29-Dec-28,253,03-Jan-28*,29-Dec-28,253,253,0%,1015,OGAH Alima
    W526LT,W526,HYB DPCS Defueling Support,W526.1425,HYB Thales Long Term Support Contract - Q1 2028,03-Jan-28,31-Mar-28,65,03-Jan-28,31-Mar-28,65,65,0%,1015,OGAH Alima
    W526LT,W526,HYB DPCS Defueling Support,W526.3040,HYB 2027 Defueling Software Build,04-Jan-27,30-Nov-27,232,03-Jan-28,28-Nov-28,232,232,0%,1036,OGAH Alima
    W526LT,W526,HYB DPCS Defueling Support,W526.3060,HYB 2028 Defueling Software Build,03-Jan-28,29-Nov-28,233,03-Jan-28,29-Nov-28,233,233,0%,1015,OGAH Alima
    W526LT,W526,HYB DPCS Defueling Support,W526.10030,HYB 2028 External Costs,03-Jan-28,29-Dec-28,253,03-Jan-28*,29-Dec-28,253,253,0%,1015,OGAH Alima
    W529LT,W529,TOR DPCS Defueling Support,W529.10030,TOR 2028 External Costs,03-Jan-28,29-Dec-28,253,03-Jan-28*,29-Dec-28,253,253,0%,1015,OGAH Alima
    W526LT,W526,HYB DPCS Defueling Support,W526.10190,TPM and JCRB Meeting Held 2028,03-Jan-28,29-Dec-28,253,03-Jan-28,29-Dec-28,253,253,0%,0,OGAH Alima
    ER7743LT,W527,DNB DPCS Defueling Support,W527.26020,Worldgrid System Engineering Support (SQEP) Q1 2028,03-Jan-28,31-Mar-28,65,03-Jan-28*,31-Mar-28,65,65,0%,756,OGAH Alima
    ER7743LT,W527,DNB DPCS Defueling Support,W527.26040,Worldgrid Software Modification Support (LAMPS) - Q1 2028,03-Jan-28,27-Mar-28,61,03-Jan-28*,27-Mar-28,61,61,0%,951,OGAH Alima
    ER7743LT,W527,DNB DPCS Defueling Support,W527.26080,Worldgrid Long Term Support Contract Q1 2028,03-Jan-28,27-Mar-28,61,03-Jan-28*,27-Mar-28,61,61,0%,951,OGAH Alima
    ER7743LT,W527,DNB DPCS Defueling Support,W527.26130,Thales POLARIS & AIC Support Contract Q1 2028,03-Jan-28,27-Mar-28,61,03-Jan-28*,27-Mar-28,61,61,0%,951,OGAH Alima
    ER7743LT,W527,DNB DPCS Defueling Support,W527.26190,Cost Engineer Support 2028,03-Jan-28,29-Dec-28,253,03-Jan-28*,29-Dec-28,253,253,0%,759,OGAH Alima
    ER7743LT,W527,DNB DPCS Defueling Support,W527.26390,DNB PES Group Support - 2028,03-Jan-28,29-Dec-28,253,03-Jan-28*,29-Dec-28,253,253,0%,759,OGAH Alima
    ER7743LT,W527,DNB DPCS Defueling Support,W527.26400,Plant Control Systems & Simulators (PCS&S) Group - 2028,03-Jan-28,23-Jun-28,253,03-Jan-28,29-Dec-28,253,253,0%,759,OGAH Alima
    ER7581LT,W195,HRA DPCS Defueling Support,W195.26090,ETC 2028,03-Jan-28,29-Dec-28,253,03-Jan-28,29-Dec-28,253,253,0%,0,OGAH Alima
    ER7581LT,W195,HRA DPCS Defueling Support,W194.1000,HRA PES Group Support - 2028,03-Jan-28,29-Dec-28,253,03-Jan-28*,29-Dec-28,253,253,0%,506,OGAH Alima
    ER7581LT,W195,HRA DPCS Defueling Support,W194.1010,Plant Control Systems & Simulators (PCS&S) Group - 2028,03-Jan-28,29-Dec-28,253,03-Jan-28,29-Dec-28,253,253,0%,506,OGAH Alima
    ER7582LT,W196,HYA DPCS Defueling Support,W196.2110,ETC 2028,03-Jan-28,29-Dec-28,253,03-Jan-28,29-Dec-28,253,253,0%,0,OGAH Alima
    ER7582LT,W196,HYA DPCS Defueling Support,W194.1000,Plant Control Systems & Simulators (PCS&S) Group - 2028,03-Jan-28,29-Dec-28,253,03-Jan-28*,29-Dec-28,253,253,0%,0,OGAH Alima
    ER7582LT,W196,HYA DPCS Defueling Support,W194.1010,HYA PES Group Support - 2028,03-Jan-28,29-Dec-28,253,03-Jan-28,29-Dec-28,253,253,0%,0,OGAH Alima
    ER7743LT,W527,DNB DPCS Defueling Support,W527.1150,ETC 2028,03-Jan-28,29-Dec-28,253,03-Jan-28,29-Dec-28,253,253,0%,0,OGAH Alima
    W529LT,W529,TOR DPCS Defueling Support,40,ETC 2028,03-Jan-28,29-Dec-28,253,03-Jan-28*,29-Dec-28,253,253,0%,1015,OGAH Alima
    W529LT,W529,TOR DPCS Defueling Support,W195.1030,TPM and JCRB Meetings Held - 2028,03-Jan-28,29-Dec-28,253,03-Jan-28,29-Dec-28,253,253,0%,0,OGAH Alima
    W526LT,W526,HYB DPCS Defueling Support,W526.1220,ETC 2028,,,253,03-Jan-28,29-Dec-28,253,253,0%,0,OGAH Alima
    W730LT_UN,W730,HYB Enhanced Defueling Safety Cases,W730.3260,HYB  Reactor Inspections Relaxations: Incorporate INSA comments,26-Jan-28,08-Feb-28,10,26-Jan-28,08-Feb-28,10,10,0%,0,OGAH Alima
    W731LT_UN,W731,TOR Enhanced Defueling Safety Cases,W731.2960,TOR  Reactor Inspections Relaxations: Incorporate INSA comments,26-Jan-28,08-Feb-28,10,26-Jan-28,08-Feb-28,10,10,0%,0,OGAH Alima
 Subtotal,,,,,04-Jan-27,31-Dec-29,253,03-Jan-28,29-Dec-28,253,253,,1015,OGAH Alima
 01-Feb-28
    W730LT_UN,W730,HYB Enhanced Defueling Safety Cases,W730.3500,HYB Reactor Inspections Relaxations: INSA Final Approval EC NNNNNN,,08-Feb-28,0,,08-Feb-28,0,0,0%,0,OGAH Alima
    W731LT_UN,W731,TOR Enhanced Defueling Safety Cases,W731.2970,TOR Reactor Inspections Relaxations: INSA Final Approval EC NNNNNN,,08-Feb-28,0,,08-Feb-28,0,0,0%,0,OGAH Alima
    W730LT_UN,W730,HYB Enhanced Defueling Safety Cases,W730.3300,HYB Reactor Inspections R: Send CAT 2 Paper to ONR to Determine Level of Review Required (Acknowledge or Agreement),09-Feb-28,09-Feb-28,1,09-Feb-28,09-Feb-28,1,1,0%,0,OGAH Alima
    W730LT_UN,W730,HYB Enhanced Defueling Safety Cases,W730.3360,HYB Reactor Inspections Relaxations: Lessons Learned Activitiy - Following INSA Review of the SC,09-Feb-28,11-Feb-28,3,09-Feb-28,11-Feb-28,3,3,0%,31,OGAH Alima
    W731LT_UN,W731,TOR Enhanced Defueling Safety Cases,W731.2980,TOR Reactor Inspections Relaxations: Lessons Learned Activitiy - Following INSA Review of the SC,09-Feb-28,11-Feb-28,3,09-Feb-28,11-Feb-28,3,3,0%,31,OGAH Alima
    W731LT_UN,W731,TOR Enhanced Defueling Safety Cases,W731.2990,TOR Reactor Inspections R: Send CAT 2 Paper to ONR to Determine Level of Review Required (Acknowledge or Agreement),09-Feb-28,09-Feb-28,1,09-Feb-28,09-Feb-28,1,1,0%,0,OGAH Alima
    W730LT_UN,W730,HYB Enhanced Defueling Safety Cases,W730.3490,HYB Reactor Inspections Relaxations: ONR Agree/Acknowledge Safety Case,,09-Feb-28,0,,09-Feb-28,0,0,0%,0,OGAH Alima
    W731LT_UN,W731,TOR Enhanced Defueling Safety Cases,W731.3000,TOR Reactor Inspections Relaxations: ONR Agree/Acknowledge Safety Case,,09-Feb-28,0,,09-Feb-28,0,0,0%,0,OGAH Alima
    W730LT_UN,W730,HYB Enhanced Defueling Safety Cases,W730.3320,HYB Reactor Inspections Relaxations: Station Approval,10-Feb-28,23-Feb-28,10,10-Feb-28,23-Feb-28,10,10,0%,0,OGAH Alima
    W731LT_UN,W731,TOR Enhanced Defueling Safety Cases,W731.3010,TOR Reactor Inspections Relaxations: Station Approval,10-Feb-28,23-Feb-28,10,10-Feb-28,23-Feb-28,10,10,0%,0,OGAH Alima
    W730LT_UN,W730,HYB Enhanced Defueling Safety Cases,W730.3680,HYB Reactor Inspections Relaxations: Lessons Learned Milestone -  INSA Review of the Safety Case,,11-Feb-28,0,,11-Feb-28,0,0,0%,31,OGAH Alima
    W731LT_UN,W731,TOR Enhanced Defueling Safety Cases,W731.3020,TOR Reactor Inspections Relaxations: Lessons Learned Milestone -  INSA Review of the Safety Case,,11-Feb-28,0,,11-Feb-28,0,0,0%,31,OGAH Alima
    W730LT_UN,W730,HYB Enhanced Defueling Safety Cases,W730.1170,>>>OUTGOING ENABLER (W157 - HYB Security Plan) - EC / Station Approved,,23-Feb-28,0,,23-Feb-28,0,0,0%,23,OGAH Alima
    W730LT_UN,W730,HYB Enhanced Defueling Safety Cases,W730.2980,HYB Reactor Inspections Relaxations: Station Approved Safety Case,,23-Feb-28,0,,23-Feb-28,0,0,0%,0,OGAH Alima
    W730LT_UN,W730,HYB Enhanced Defueling Safety Cases,W730.3520,HYB Reactor Inspections Relaxations: Safety Case Approved - (Station Approval) - EC NNNNNN,,23-Feb-28,0,,23-Feb-28,0,0,0%,0,OGAH Alima
    W731LT_UN,W731,TOR Enhanced Defueling Safety Cases,W731.3030,TOR Reactor Inspections Relaxations: Safety Case Approved - (Station Approval) - EC NNNNNN,,23-Feb-28,0,,23-Feb-28,0,0,0%,0,OGAH Alima
    W731LT_UN,W731,TOR Enhanced Defueling Safety Cases,W731.3040,TOR Reactor Inspections Relaxations: Station Approved Safety Case,,23-Feb-28,0,,23-Feb-28,0,0,0%,0,OGAH Alima
    W731LT_UN,W731,TOR Enhanced Defueling Safety Cases,W731.3050,>>>OUTGOING ENABLER (W157 - TOR Security Plan) - EC / Station Approved,,23-Feb-28,0,,23-Feb-28,0,0,0%,23,OGAH Alima
    W529LT,W529,TOR DPCS Defueling Support,W529.4680,TOR 2028 LSR - Data Export Produced and Issued,24-Feb-28,22-Mar-28,20,24-Feb-28,22-Mar-28,20,20,0%,1159,OGAH Alima
    W526LT,W526,HYB DPCS Defueling Support,W526.4680,HYB 2028 LSR - Data Export Produced and Issued,24-Feb-28,22-Mar-28,20,24-Feb-28,22-Mar-28,20,20,0%,1159,OGAH Alima
    W730LT_UN,W730,HYB Enhanced Defueling Safety Cases,W730.3280,HYB Reactor Inspections Relaxations: Develop Implementation & Closeout,24-Feb-28,08-Mar-28,10,24-Feb-28,08-Mar-28,10,10,0%,0,OGAH Alima
    W731LT_UN,W731,TOR Enhanced Defueling Safety Cases,W731.3060,TOR Reactor Inspections Relaxations: Develop Implementation & Closeout,24-Feb-28,08-Mar-28,10,24-Feb-28,08-Mar-28,10,10,0%,0,OGAH Alima
 Subtotal,,,,,08-Feb-28,22-Mar-28,31,08-Feb-28,22-Mar-28,31,31,,1159,OGAH Alima
 01-Mar-28
    W730LT_UN,W730,HYB Enhanced Defueling Safety Cases,W730.3290,HYB Reactor Inspections Relaxations: Post Job Debrief,09-Mar-28,09-Mar-28,1,09-Mar-28,09-Mar-28,1,1,0%,0,OGAH Alima
    W731LT_UN,W731,TOR Enhanced Defueling Safety Cases,W731.3070,TOR Reactor Inspections Relaxations: Post Job Debrief,09-Mar-28,09-Mar-28,1,09-Mar-28,09-Mar-28,1,1,0%,0,OGAH Alima
    W730LT_UN,W730,HYB Enhanced Defueling Safety Cases,W730.1780,## Gate D Submission - (Cost Summary)  ##,10-Mar-28,27-Mar-28,12,10-Mar-28,27-Mar-28,12,12,0%,0,OGAH Alima
    W730LT_UN,W730,HYB Enhanced Defueling Safety Cases,W730.1830,Hold Project Closeout and Lessons Learned Meeting,10-Mar-28,10-Mar-28,1,10-Mar-28,10-Mar-28,1,1,0%,0,OGAH Alima
    W731LT_UN,W731,TOR Enhanced Defueling Safety Cases,W731.3080,Hold Project Closeout and Lessons Learned Meeting,10-Mar-28,10-Mar-28,1,10-Mar-28,10-Mar-28,1,1,0%,0,OGAH Alima
    W731LT_UN,W731,TOR Enhanced Defueling Safety Cases,W731.3090,## Gate D Submission - (Cost Summary)  ##,10-Mar-28,27-Mar-28,12,10-Mar-28,27-Mar-28,12,12,0%,0,OGAH Alima
    W730LT_UN,W730,HYB Enhanced Defueling Safety Cases,W730.1820,Produce Lessons Learned Report,13-Mar-28,13-Mar-28,1,13-Mar-28,13-Mar-28,1,1,0%,0,OGAH Alima
    W731LT_UN,W731,TOR Enhanced Defueling Safety Cases,W731.3100,Produce Lessons Learned Report,13-Mar-28,13-Mar-28,1,13-Mar-28,13-Mar-28,1,1,0%,0,OGAH Alima
    W730LT_UN,W730,HYB Enhanced Defueling Safety Cases,W730.3690,All CAT 2 Safety Cases: Lessons Learned Milestone - Gate D Lessons Learned Report Produced,,13-Mar-28,0,,13-Mar-28,0,0,0%,10,OGAH Alima
    W731LT_UN,W731,TOR Enhanced Defueling Safety Cases,W731.3110,All CAT 2 Safety Cases: Lessons Learned Milestone - Gate D Lessons Learned Report Produced,,13-Mar-28,0,,13-Mar-28,0,0,0%,10,OGAH Alima
    W730LT_UN,W730,HYB Enhanced Defueling Safety Cases,W730.1810,Produce Project Closeout Report,14-Mar-28,15-Mar-28,2,14-Mar-28,15-Mar-28,2,2,0%,0,OGAH Alima
    W731LT_UN,W731,TOR Enhanced Defueling Safety Cases,W731.3120,Produce Project Closeout Report,14-Mar-28,15-Mar-28,2,14-Mar-28,15-Mar-28,2,2,0%,0,OGAH Alima
    W730LT_UN,W730,HYB Enhanced Defueling Safety Cases,W730.1790,Prepare Gate D PRC Paper,16-Mar-28,23-Mar-28,6,16-Mar-28,23-Mar-28,6,6,0%,0,OGAH Alima
    W731LT_UN,W731,TOR Enhanced Defueling Safety Cases,W731.3130,Prepare Gate D PRC Paper,16-Mar-28,23-Mar-28,6,16-Mar-28,23-Mar-28,6,6,0%,0,OGAH Alima
    W529LT,W529,TOR DPCS Defueling Support,W529.10200,TOR 2027 S14R2 - Delivery,20-Mar-28,13-Apr-28,19,20-Mar-28,13-Apr-28,19,19,0%,1176,OGAH Alima
    W529LT,W529,TOR DPCS Defueling Support,W529.4670,TOR 2028 LSR - Recommendations Produced and Issued,23-Mar-28,05-Apr-28,10,23-Mar-28,05-Apr-28,10,10,0%,1159,OGAH Alima
    W526LT,W526,HYB DPCS Defueling Support,W526.4670,HYB 2028 LSR - Recommendations Produced and Issued,23-Mar-28,05-Apr-28,10,23-Mar-28,05-Apr-28,10,10,0%,1159,OGAH Alima
    W730LT_UN,W730,HYB Enhanced Defueling Safety Cases,W730.1800,Gate D PRC Paper Submission,24-Mar-28,24-Mar-28,1,24-Mar-28,24-Mar-28,1,1,0%,0,OGAH Alima
    W731LT_UN,W731,TOR Enhanced Defueling Safety Cases,W731.3140,Gate D PRC Paper Submission,24-Mar-28,24-Mar-28,1,24-Mar-28,24-Mar-28,1,1,0%,0,OGAH Alima
    W730LT_UN,W730,HYB Enhanced Defueling Safety Cases,W730.1840,Gate D - Hold PRC Meeting,27-Mar-28,27-Mar-28,1,27-Mar-28,27-Mar-28,1,1,0%,0,OGAH Alima
    W731LT_UN,W731,TOR Enhanced Defueling Safety Cases,W731.3150,Gate D - Hold PRC Meeting,27-Mar-28,27-Mar-28,1,27-Mar-28,27-Mar-28,1,1,0%,0,OGAH Alima
    W730LT_UN,W730,HYB Enhanced Defueling Safety Cases,W730.1110,Gate D Approved,,27-Mar-28,0,,27-Mar-28,0,0,0%,0,OGAH Alima
    W730LT_UN,W730,HYB Enhanced Defueling Safety Cases,W730.1020,Project Finish,,27-Mar-28,0,,27-Mar-28,0,0,0%,0,OGAH Alima
    W731LT_UN,W731,TOR Enhanced Defueling Safety Cases,W731.3160,Project Finish,,27-Mar-28,0,,27-Mar-28,0,0,0%,0,OGAH Alima
    W731LT_UN,W731,TOR Enhanced Defueling Safety Cases,W731.3170,Gate D Approved,,27-Mar-28,0,,27-Mar-28,0,0,0%,0,OGAH Alima
 Subtotal,,,,,09-Mar-28,13-Apr-28,26,09-Mar-28,13-Apr-28,26,26,,1176,OGAH Alima
 01-Apr-28
    W529LT,W529,TOR DPCS Defueling Support,W529.1395,TOR Argus Support Contract - Q2 2028,03-Apr-28,30-Jun-28,61,03-Apr-28,30-Jun-28,61,61,0%,1015,OGAH Alima
    W529LT,W529,TOR DPCS Defueling Support,W529.1435,TOR Thales Long Term Support Contract - Q2 2028,03-Apr-28,30-Jun-28,61,03-Apr-28,30-Jun-28,61,61,0%,1015,OGAH Alima
    W526LT,W526,HYB DPCS Defueling Support,W526.1390,HYB Argus Support Contract - Q2 2028,03-Apr-28,30-Jun-28,61,03-Apr-28,30-Jun-28,61,61,0%,1015,OGAH Alima
    W526LT,W526,HYB DPCS Defueling Support,W526.1435,HYB Thales Long Term Support Contract - Q2 2028,03-Apr-28,30-Jun-28,61,03-Apr-28,30-Jun-28,61,61,0%,1015,OGAH Alima
    ER7743LT,W527,DNB DPCS Defueling Support,W527.26030,Worldgrid Software Modification Support (LAMPS) - Q2 2028,03-Apr-28,04-Jul-28,63,03-Apr-28,04-Jul-28,63,63,0%,884,OGAH Alima
    ER7743LT,W527,DNB DPCS Defueling Support,W527.26100,Worldgrid System Engineering Support (SQEP) Q2 2028,03-Apr-28,30-Jun-28,61,03-Apr-28*,30-Jun-28,61,61,0%,756,OGAH Alima
    ER7743LT,W527,DNB DPCS Defueling Support,W527.26120,Worldgrid Long Term Support Contract Q2 2028,03-Apr-28,04-Jul-28,63,03-Apr-28,04-Jul-28,63,63,0%,884,OGAH Alima
    ER7743LT,W527,DNB DPCS Defueling Support,W527.26160,Thales POLARIS & AIC Support Contract Q2 2028,03-Apr-28,04-Jul-28,63,03-Apr-28,04-Jul-28,63,63,0%,884,OGAH Alima
    W529LT,W529,TOR DPCS Defueling Support,W529.4660,TOR 2028 LSR - Recommendation Sentencing Workshop Preparation and Event,06-Apr-28,21-Apr-28,10,06-Apr-28,21-Apr-28,10,10,0%,1159,OGAH Alima
    W526LT,W526,HYB DPCS Defueling Support,W526.4660,HYB 2028 LSR - Recommendation Sentencing Workshop Preparation and Event,06-Apr-28,21-Apr-28,10,06-Apr-28,21-Apr-28,10,10,0%,1159,OGAH Alima
    W529LT,W529,TOR DPCS Defueling Support,W529.10210,TOR 2027 S14R2 - Installation R2,18-Apr-28,12-May-28,18,18-Apr-28,12-May-28,18,18,0%,1176,OGAH Alima
    W529LT,W529,TOR DPCS Defueling Support,W529.4650,TOR 2028 LSR - Draft Report Produced and Issued for EDF Review,24-Apr-28,09-May-28,11,24-Apr-28,09-May-28,11,11,0%,1159,OGAH Alima
    W526LT,W526,HYB DPCS Defueling Support,W526.4650,HYB 2028 LSR - Draft Report Produced and Issued for EDF Review,24-Apr-28,09-May-28,11,24-Apr-28,09-May-28,11,11,0%,1159,OGAH Alima
 Subtotal,,,,,03-Apr-28,04-Jul-28,63,03-Apr-28,04-Jul-28,63,63,,1140,OGAH Alima
 01-May-28
    ER7743LT,W527,DNB DPCS Defueling Support,W527.26200,Asset Guardian Licences and Support 2028,02-May-28,02-May-28,1,02-May-28*,02-May-28,1,1,0%,928,OGAH Alima
    W529LT,W529,TOR DPCS Defueling Support,W529.4640,TOR 2028 LSR - EDF Review Comments Produced and Provided,10-May-28,24-May-28,11,10-May-28,24-May-28,11,11,0%,1159,OGAH Alima
    W526LT,W526,HYB DPCS Defueling Support,W526.4640,HYB 2028 LSR - EDF Review Comments Produced and Provided,10-May-28,24-May-28,11,10-May-28,24-May-28,11,11,0%,1159,OGAH Alima
    W529LT,W529,TOR DPCS Defueling Support,W529.10220,TOR 2027 S14R2 - Installation R2,,12-May-28,0,,12-May-28,0,0,0%,1176,OGAH Alima
    W529LT,W529,TOR DPCS Defueling Support,W529.4630,TOR 2028 LSR - Final Report Produced and Issued,25-May-28,07-Jun-28,9,25-May-28,07-Jun-28,9,9,0%,1159,OGAH Alima
    W526LT,W526,HYB DPCS Defueling Support,W526.4630,HYB 2028 LSR - Final Report Produced and Issued,25-May-28,07-Jun-28,9,25-May-28,07-Jun-28,9,9,0%,1159,OGAH Alima
 Subtotal,,,,,02-May-28,07-Jun-28,26,02-May-28,07-Jun-28,26,26,,1159,OGAH Alima
 01-Jun-28
    W526LT,W526,HYB DPCS Defueling Support,W526.5080,HYB 2028 Thales RFS (Scope/Requirements Capture/Proposal) for 2031 Support,,30-Jun-28,0,,30-Jun-28*,0,0,0%,1143,OGAH Alima
    W526LT,W526,HYB DPCS Defueling Support,W526.5070,HYB 2028 Thales RFS (Scope/Requirements Capture/Proposal) for 2030 Support,,30-Jun-28,0,,30-Jun-28*,0,0,0%,1143,OGAH Alima
    W526LT,W526,HYB DPCS Defueling Support,W526.5090,HYB 2028 Thales RFS (Scope/Requirements Capture/Proposal) for 2032 Support,,30-Jun-28,0,,30-Jun-28*,0,0,0%,1143,OGAH Alima
 Subtotal,W526,,,,30-Jun-28,30-Jun-28,0,30-Jun-28,30-Jun-28,0,0,,1143,OGAH Alima
 01-Jul-28
    W529LT,W529,TOR DPCS Defueling Support,W529.1405,TOR Argus Support Contract - Q3 2028,03-Jul-28,29-Sep-28,64,03-Jul-28,29-Sep-28,64,64,0%,1015,OGAH Alima
    W529LT,W529,TOR DPCS Defueling Support,W529.1445,TOR Thales Long Term Support Contract - Q3 2028,03-Jul-28,29-Sep-28,64,03-Jul-28,29-Sep-28,64,64,0%,1015,OGAH Alima
    W526LT,W526,HYB DPCS Defueling Support,W526.1400,HYB Argus Support Contract - Q3 2028,03-Jul-28,29-Sep-28,64,03-Jul-28,29-Sep-28,64,64,0%,1015,OGAH Alima
    W526LT,W526,HYB DPCS Defueling Support,W526.1445,HYB Thales Long Term Support Contract - Q3 2028,03-Jul-28,29-Sep-28,64,03-Jul-28,29-Sep-28,64,64,0%,1015,OGAH Alima
    ER7743LT,W527,DNB DPCS Defueling Support,W527.26070,Worldgrid Long Term Support Contract Q3 2028,03-Jul-28,02-Oct-28,65,03-Jul-28,02-Oct-28,65,65,0%,821,OGAH Alima
    ER7743LT,W527,DNB DPCS Defueling Support,W527.26090,Worldgrid System Engineering Support (SQEP) Q3 2028,03-Jul-28,29-Sep-28,64,03-Jul-28*,29-Sep-28,64,64,0%,756,OGAH Alima
    ER7743LT,W527,DNB DPCS Defueling Support,W527.26150,Thales POLARIS & AIC Support Contract Q3 2028,03-Jul-28,02-Oct-28,65,03-Jul-28,02-Oct-28,65,65,0%,821,OGAH Alima
    ER7743LT,W527,DNB DPCS Defueling Support,W527.26170,Worldgrid Software Modification Support (LAMPS) - Q3 2028,03-Jul-28,02-Oct-28,65,03-Jul-28,02-Oct-28,65,65,0%,821,OGAH Alima
 Subtotal,,,,,03-Jul-28,02-Oct-28,65,03-Jul-28,02-Oct-28,65,65,,1014,OGAH Alima
 01-Sep-28
    W529LT,W529,TOR DPCS Defueling Support,W529.5110,TOR 2028 TGN097 Inspection,,01-Sep-28,0,,01-Sep-28*,0,0,0%,1099,OGAH Alima
    W526LT,W526,HYB DPCS Defueling Support,W526.5110,HYB 2028 TGN097 Inspection,,01-Sep-28,0,,01-Sep-28*,0,0,0%,1099,OGAH Alima
 Subtotal,,,,,01-Sep-28,01-Sep-28,0,01-Sep-28,01-Sep-28,0,0,,1099,OGAH Alima
 01-Oct-28
    W529LT,W529,TOR DPCS Defueling Support,W529.1415,TOR Argus Support Contract - Q4 2028,02-Oct-28,29-Dec-28,63,02-Oct-28,29-Dec-28,63,63,0%,1015,OGAH Alima
    W529LT,W529,TOR DPCS Defueling Support,W529.1455,TOR Thales Long Term Support Contract - Q4 2028,02-Oct-28,29-Dec-28,63,02-Oct-28,29-Dec-28,63,63,0%,1015,OGAH Alima
    W526LT,W526,HYB DPCS Defueling Support,W526.1410,HYB Argus Support Contract - Q4 2028,02-Oct-28,29-Dec-28,63,02-Oct-28,29-Dec-28,63,63,0%,1015,OGAH Alima
    W526LT,W526,HYB DPCS Defueling Support,W526.1455,HYB Thales Long Term Support Contract - Q4,02-Oct-28,29-Dec-28,63,02-Oct-28,29-Dec-28,63,63,0%,1015,OGAH Alima
    ER7743LT,W527,DNB DPCS Defueling Support,W527.26010,Worldgrid System Engineering Support (SQEP) Q4 2028,02-Oct-28,29-Dec-28,63,02-Oct-28*,29-Dec-28,63,63,0%,756,OGAH Alima
    ER7743LT,W527,DNB DPCS Defueling Support,W527.26110,Worldgrid Long Term Support Contract Q4 2028,02-Oct-28,04-Jan-29,66,02-Oct-28,04-Jan-29,66,66,0%,756,OGAH Alima
    ER7743LT,W527,DNB DPCS Defueling Support,W527.26140,Thales POLARIS & AIC Support Contract Q4 2028,02-Oct-28,04-Jan-29,66,02-Oct-28,04-Jan-29,66,66,0%,756,OGAH Alima
    ER7743LT,W527,DNB DPCS Defueling Support,W527.26180,Worldgrid Software Modification Support (LAMPS) - Q4 2028,02-Oct-28,04-Jan-29,66,02-Oct-28,04-Jan-29,66,66,0%,756,OGAH Alima
 Subtotal,,,,,02-Oct-28,04-Jan-29,66,02-Oct-28,04-Jan-29,66,66,,1012,OGAH Alima
 01-Nov-28
    W529LT,W529,TOR DPCS Defueling Support,W529.3070,TOR DPCS Long Term Support Contract 2028,03-Jan-28,29-Dec-28,253,30-Nov-28,29-Nov-29,253,253,0%,782,OGAH Alima
 Subtotal,W529,,,,03-Jan-28,29-Dec-28,253,30-Nov-28,29-Nov-29,253,253,,782,OGAH Alima
 01-Jan-29
    W529LT,W529,TOR DPCS Defueling Support,W529.1120,TOR PES Group Support - 2029,02-Jan-29,31-Dec-29,253,02-Jan-29*,31-Dec-29,253,253,0%,762,OGAH Alima
    W529LT,W529,TOR DPCS Defueling Support,W529.1130,TOR Plant Control Systems & Simulators (PCS&S) Group - 2029,02-Jan-29,31-Dec-29,253,02-Jan-29,31-Dec-29,253,253,0%,762,OGAH Alima
    W529LT,W529,TOR DPCS Defueling Support,W529.1465,TOR Argus Support Contract - Q1 2029,02-Jan-29,29-Mar-29,63,02-Jan-29*,29-Mar-29,63,63,0%,762,OGAH Alima
    W529LT,W529,TOR DPCS Defueling Support,W529.1505,TOR Thales Long Term Support Contract - Q1 2029,02-Jan-29,29-Mar-29,63,02-Jan-29*,29-Mar-29,63,63,0%,762,OGAH Alima
    W529LT,W529,TOR DPCS Defueling Support,W529.4760,TOR 2029 LSR - Pre-export Data Validation Produced and Completed,02-Jan-29,22-Feb-29,38,02-Jan-29*,22-Feb-29,38,38,0%,906,OGAH Alima
    W526LT,W526,HYB DPCS Defueling Support,W526.4760,HYB 2029 LSR - Pre-export Data Validation Produced and Completed,02-Jan-29,22-Feb-29,38,02-Jan-29*,22-Feb-29,38,38,0%,906,OGAH Alima
    W526LT,W526,HYB DPCS Defueling Support,W526.1505,HYB Thales Long Term Support Contract - Q1 2029,02-Jan-29,29-Mar-29,63,02-Jan-29*,29-Mar-29,63,63,0%,762,OGAH Alima
    W526LT,W526,HYB DPCS Defueling Support,W526.1465,HYB Argus Support Contract - Q1 2029,02-Jan-29,29-Mar-29,63,02-Jan-29*,29-Mar-29,63,63,0%,762,OGAH Alima
    W526LT,W526,HYB DPCS Defueling Support,W526.1130,HYB Plant Control Systems & Simulators (PCS&S) Group - 2029,02-Jan-29,10-Dec-29,253,02-Jan-29,31-Dec-29,253,253,0%,762,OGAH Alima
    W526LT,W526,HYB DPCS Defueling Support,W526.1120,HYB PES Group Support - 2029,02-Jan-29,31-Dec-29,253,02-Jan-29,31-Dec-29,253,253,0%,762,OGAH Alima
    W526LT,W526,HYB DPCS Defueling Support,W526.3090,HYB DPCS Long Term Support Contract 2029,02-Jan-29,31-Dec-29,253,02-Jan-29*,31-Dec-29,253,253,0%,762,OGAH Alima
    W526LT,W526,HYB DPCS Defueling Support,W526.3080,HYB 2029 Defueling Software Build,02-Jan-29,27-Nov-29,253,02-Jan-29*,31-Dec-29,253,253,0%,762,OGAH Alima
    W526LT,W526,HYB DPCS Defueling Support,W526.10040,HYB 2029 External Costs,02-Jan-29,31-Dec-29,253,02-Jan-29,31-Dec-29,253,253,0%,762,OGAH Alima
    W529LT,W529,TOR DPCS Defueling Support,W529.10040,TOR 2029 External Costs,02-Jan-29,31-Dec-29,253,02-Jan-29,31-Dec-29,253,253,0%,762,OGAH Alima
    W526LT,W526,HYB DPCS Defueling Support,W526.10200,TPM and JCRB Meeting Held 2029,02-Jan-29,31-Dec-29,253,02-Jan-29,31-Dec-29,253,253,0%,0,OGAH Alima
    ER7743LT,W527,DNB DPCS Defueling Support,W527.26050,DNB PES Group Support - 2029,02-Jan-29,31-Dec-29,253,02-Jan-29*,31-Dec-29,253,253,0%,506,OGAH Alima
    ER7743LT,W527,DNB DPCS Defueling Support,W527.26060,Plant Control Systems & Simulators (PCS&S) Group - 2029,02-Jan-29,25-Jun-29,253,02-Jan-29,31-Dec-29,253,253,0%,506,OGAH Alima
    ER7743LT,W527,DNB DPCS Defueling Support,W527.26360,Worldgrid System Engineering Support (SQEP) Q1 2029,02-Jan-29,27-Mar-29,61,02-Jan-29*,27-Mar-29,61,61,0%,506,OGAH Alima
    ER7743LT,W527,DNB DPCS Defueling Support,W527.26380,Worldgrid Software Modification Support (LAMPS) - Q1 2029,02-Jan-29,27-Mar-29,61,02-Jan-29*,27-Mar-29,61,61,0%,506,OGAH Alima
    ER7743LT,W527,DNB DPCS Defueling Support,W527.26420,Worldgrid Long Term Support Contract Q1 2029,02-Jan-29,27-Mar-29,61,02-Jan-29*,27-Mar-29,61,61,0%,506,OGAH Alima
    ER7743LT,W527,DNB DPCS Defueling Support,W527.26470,Thales POLARIS & AIC Support Contract Q1 2029,02-Jan-29,27-Mar-29,61,02-Jan-29*,27-Mar-29,61,61,0%,506,OGAH Alima
    ER7743LT,W527,DNB DPCS Defueling Support,W527.26530,Cost Engineer Support 2029,02-Jan-29,31-Dec-29,253,02-Jan-29*,31-Dec-29,253,253,0%,506,OGAH Alima
    ER7581LT,W195,HRA DPCS Defueling Support,W195.26100,ETC 2029,02-Jan-29,31-Dec-29,253,02-Jan-29,31-Dec-29,253,253,0%,0,OGAH Alima
    ER7581LT,W195,HRA DPCS Defueling Support,W194.1020,HRA PES Group Support - 2029,02-Jan-29,31-Dec-29,253,02-Jan-29*,31-Dec-29,253,253,0%,253,OGAH Alima
    ER7581LT,W195,HRA DPCS Defueling Support,W194.1030,Plant Control Systems & Simulators (PCS&S) Group - 2029,02-Jan-29,31-Dec-29,253,02-Jan-29*,31-Dec-29,253,253,0%,0,OGAH Alima
    ER7582LT,W196,HYA DPCS Defueling Support,W196.2120,ETC 2029,02-Jan-29,31-Dec-29,253,02-Jan-29,31-Dec-29,253,253,0%,0,OGAH Alima
    ER7582LT,W196,HYA DPCS Defueling Support,W194.1020,Plant Control Systems & Simulators (PCS&S) Group - 2029,02-Jan-29,31-Dec-29,253,02-Jan-29,31-Dec-29,253,253,0%,0,OGAH Alima
    ER7582LT,W196,HYA DPCS Defueling Support,W194.1030,HYA PES Group Support - 2029,02-Jan-29,31-Dec-29,253,02-Jan-29,31-Dec-29,253,253,0%,0,OGAH Alima
    ER7743LT,W527,DNB DPCS Defueling Support,W527.1160,ETC 2029,02-Jan-29,31-Dec-29,253,02-Jan-29,31-Dec-29,253,253,0%,0,OGAH Alima
    W529LT,W529,TOR DPCS Defueling Support,50,ETC 2029,02-Jan-29,31-Dec-29,253,02-Jan-29*,31-Dec-29,253,253,0%,762,OGAH Alima
    W529LT,W529,TOR DPCS Defueling Support,W195.1040,TPM and JCRB Meetings Held - 2029,02-Jan-29,31-Dec-29,253,02-Jan-29,31-Dec-29,253,253,0%,0,OGAH Alima
    W526LT,W526,HYB DPCS Defueling Support,W526.1230,ETC 2029,,,253,02-Jan-29,31-Dec-29,253,253,0%,0,OGAH Alima
 Subtotal,,,,,02-Jan-29,31-Dec-29,253,02-Jan-29,31-Dec-29,253,253,,762,OGAH Alima
 01-Feb-29
    W529LT,W529,TOR DPCS Defueling Support,W529.4750,TOR 2029 LSR - Data Export Produced and Issued,23-Feb-29,22-Mar-29,20,23-Feb-29,22-Mar-29,20,20,0%,906,OGAH Alima
    W526LT,W526,HYB DPCS Defueling Support,W526.4750,HYB 2029 LSR - Data Export Produced and Issued,23-Feb-29,22-Mar-29,20,23-Feb-29,22-Mar-29,20,20,0%,906,OGAH Alima
 Subtotal,,,,,23-Feb-29,22-Mar-29,20,23-Feb-29,22-Mar-29,20,20,,906,OGAH Alima
 01-Mar-29
    W529LT,W529,TOR DPCS Defueling Support,W529.4740,TOR 2029 LSR - Recommendations Produced and Issued,23-Mar-29,09-Apr-29,10,23-Mar-29,09-Apr-29,10,10,0%,906,OGAH Alima
    W526LT,W526,HYB DPCS Defueling Support,W526.4740,HYB 2029 LSR - Recommendations Produced and Issued,23-Mar-29,09-Apr-29,10,23-Mar-29,09-Apr-29,10,10,0%,906,OGAH Alima
    ER7743LT,W527,DNB DPCS Defueling Support,W527.26370,Worldgrid Software Modification Support (LAMPS) - Q2 2029,28-Mar-29,28-Jun-29,63,28-Mar-29,28-Jun-29,63,63,0%,506,OGAH Alima
    ER7743LT,W527,DNB DPCS Defueling Support,W527.26440,Worldgrid System Engineering Support (SQEP) Q2 2029,28-Mar-29,28-Jun-29,63,28-Mar-29*,28-Jun-29,63,63,0%,506,OGAH Alima
    ER7743LT,W527,DNB DPCS Defueling Support,W527.26460,Worldgrid Long Term Support Contract Q2 2029,28-Mar-29,28-Jun-29,63,28-Mar-29,28-Jun-29,63,63,0%,506,OGAH Alima
    ER7743LT,W527,DNB DPCS Defueling Support,W527.26500,Thales POLARIS & AIC Support Contract Q2 2029,28-Mar-29,28-Jun-29,63,28-Mar-29,28-Jun-29,63,63,0%,506,OGAH Alima
 Subtotal,,,,,23-Mar-29,28-Jun-29,66,23-Mar-29,28-Jun-29,66,66,,850,OGAH Alima
 01-Apr-29
    W529LT,W529,TOR DPCS Defueling Support,W529.1475,TOR Argus Support Contract - Q2 2029,03-Apr-29,29-Jun-29,62,03-Apr-29,29-Jun-29,62,62,0%,762,OGAH Alima
    W529LT,W529,TOR DPCS Defueling Support,W529.1515,TOR Thales Long Term Support Contract - Q2 2029,03-Apr-29,29-Jun-29,62,03-Apr-29,29-Jun-29,62,62,0%,762,OGAH Alima
    W526LT,W526,HYB DPCS Defueling Support,W526.1515,HYB Thales Long Term Support Contract - Q2 2029,03-Apr-29,29-Jun-29,62,03-Apr-29,29-Jun-29,62,62,0%,762,OGAH Alima
    W526LT,W526,HYB DPCS Defueling Support,W526.1475,HYB Argus Support Contract - Q2 2029,03-Apr-29,29-Jun-29,62,03-Apr-29,29-Jun-29,62,62,0%,762,OGAH Alima
    W529LT,W529,TOR DPCS Defueling Support,W529.4730,TOR 2029 LSR - Recommendation Sentencing Workshop Preparation and Event,10-Apr-29,23-Apr-29,10,10-Apr-29,23-Apr-29,10,10,0%,906,OGAH Alima
    W526LT,W526,HYB DPCS Defueling Support,W526.4730,HYB 2029 LSR - Recommendation Sentencing Workshop Preparation and Event,10-Apr-29,23-Apr-29,10,10-Apr-29,23-Apr-29,10,10,0%,906,OGAH Alima
    W529LT,W529,TOR DPCS Defueling Support,W529.4720,TOR 2029 LSR - Draft Report Produced and Issued for EDF Review,24-Apr-29,09-May-29,11,24-Apr-29,09-May-29,11,11,0%,906,OGAH Alima
    W526LT,W526,HYB DPCS Defueling Support,W526.4720,HYB 2029 LSR - Draft Report Produced and Issued for EDF Review,24-Apr-29,09-May-29,11,24-Apr-29,09-May-29,11,11,0%,906,OGAH Alima
 Subtotal,,,,,03-Apr-29,29-Jun-29,62,03-Apr-29,29-Jun-29,62,62,,870,OGAH Alima
 01-May-29
    ER7743LT,W527,DNB DPCS Defueling Support,W527.26540,Asset Guardian Licences and Support 2029,01-May-29,01-May-29,1,01-May-29*,01-May-29,1,1,0%,675,OGAH Alima
    W529LT,W529,TOR DPCS Defueling Support,W529.4710,TOR 2029 LSR - EDF Review Comments Produced and Provided,10-May-29,24-May-29,11,10-May-29,24-May-29,11,11,0%,906,OGAH Alima
    W526LT,W526,HYB DPCS Defueling Support,W526.4710,HYB 2029 LSR - EDF Review Comments Produced and Provided,10-May-29,24-May-29,11,10-May-29,24-May-29,11,11,0%,906,OGAH Alima
    W529LT,W529,TOR DPCS Defueling Support,W529.4700,TOR 2029 LSR - Final Report Produced and Issued,25-May-29,07-Jun-29,9,25-May-29,07-Jun-29,9,9,0%,906,OGAH Alima
    W526LT,W526,HYB DPCS Defueling Support,W526.4700,HYB 2029 LSR - Final Report Produced and Issued,25-May-29,07-Jun-29,9,25-May-29,07-Jun-29,9,9,0%,906,OGAH Alima
 Subtotal,,,,,01-May-29,07-Jun-29,26,01-May-29,07-Jun-29,26,26,,906,OGAH Alima
 01-Jun-29
    ER7743LT,W527,DNB DPCS Defueling Support,W527.26410,Worldgrid Long Term Support Contract Q3 2027,29-Jun-29,28-Sep-29,65,29-Jun-29,28-Sep-29,65,65,0%,506,OGAH Alima
    ER7743LT,W527,DNB DPCS Defueling Support,W527.26430,Worldgrid System Engineering Support (SQEP) Q3 2028,29-Jun-29,28-Sep-29,65,29-Jun-29*,28-Sep-29,65,65,0%,506,OGAH Alima
    ER7743LT,W527,DNB DPCS Defueling Support,W527.26490,Thales POLARIS & AIC Support Contract Q3 2029,29-Jun-29,28-Sep-29,65,29-Jun-29,28-Sep-29,65,65,0%,506,OGAH Alima
    ER7743LT,W527,DNB DPCS Defueling Support,W527.26510,Worldgrid Software Modification Support (LAMPS) - Q3 2029,29-Jun-29,28-Sep-29,65,29-Jun-29,28-Sep-29,65,65,0%,506,OGAH Alima
 Subtotal,W527,,,,29-Jun-29,28-Sep-29,65,29-Jun-29,28-Sep-29,65,65,,506,OGAH Alima
 01-Jul-29
    W529LT,W529,TOR DPCS Defueling Support,W529.1485,TOR Argus Support Contract - Q3 2029,02-Jul-29,28-Sep-29,64,02-Jul-29,28-Sep-29,64,64,0%,762,OGAH Alima
    W529LT,W529,TOR DPCS Defueling Support,W529.1525,TOR Thales Long Term Support Contract - Q3 2029,02-Jul-29,28-Sep-29,64,02-Jul-29,28-Sep-29,64,64,0%,762,OGAH Alima
    W526LT,W526,HYB DPCS Defueling Support,W526.1525,HYB Thales Long Term Support Contract - Q3 2029,02-Jul-29,28-Sep-29,64,02-Jul-29,28-Sep-29,64,64,0%,762,OGAH Alima
    W526LT,W526,HYB DPCS Defueling Support,W526.1485,HYB Argus Support Contract - Q3 2029,02-Jul-29,28-Sep-29,64,02-Jul-29,28-Sep-29,64,64,0%,762,OGAH Alima
 Subtotal,,,,,02-Jul-29,28-Sep-29,64,02-Jul-29,28-Sep-29,64,64,,762,OGAH Alima
 01-Oct-29
    W529LT,W529,TOR DPCS Defueling Support,W529.1495,TOR Argus Support Contract - Q4 2029,01-Oct-29,31-Dec-29,64,01-Oct-29,31-Dec-29,64,64,0%,762,OGAH Alima
    W529LT,W529,TOR DPCS Defueling Support,W529.1535,TOR Thales Long Term Support Contract - Q4 2029,01-Oct-29,31-Dec-29,64,01-Oct-29,31-Dec-29,64,64,0%,762,OGAH Alima
    W526LT,W526,HYB DPCS Defueling Support,W526.1535,HYB Thales Long Term Support Contract - Q4 2029,01-Oct-29,31-Dec-29,64,01-Oct-29,31-Dec-29,64,64,0%,762,OGAH Alima
    W526LT,W526,HYB DPCS Defueling Support,W526.1495,HYB Argus Support Contract - Q4 2029,01-Oct-29,31-Dec-29,64,01-Oct-29,31-Dec-29,64,64,0%,762,OGAH Alima
    ER7743LT,W527,DNB DPCS Defueling Support,W527.26350,Worldgrid System Engineering Support (SQEP) Q4 2029,01-Oct-29,31-Dec-29,64,01-Oct-29*,31-Dec-29,64,64,0%,506,OGAH Alima
    ER7743LT,W527,DNB DPCS Defueling Support,W527.26450,Worldgrid Long Term Support Contract Q4 2029,01-Oct-29,31-Dec-29,64,01-Oct-29,31-Dec-29,64,64,0%,506,OGAH Alima
    ER7743LT,W527,DNB DPCS Defueling Support,W527.26480,Thales POLARIS & AIC Support Contract Q4 2029,01-Oct-29,31-Dec-29,64,01-Oct-29,31-Dec-29,64,64,0%,506,OGAH Alima
    ER7743LT,W527,DNB DPCS Defueling Support,W527.26520,Worldgrid Software Modification Support (LAMPS) - Q4 2029,01-Oct-29,31-Dec-29,64,01-Oct-29,31-Dec-29,64,64,0%,506,OGAH Alima
 Subtotal,,,,,01-Oct-29,31-Dec-29,64,01-Oct-29,31-Dec-29,64,64,,762,OGAH Alima
 01-Jan-30
    W529LT,W529,TOR DPCS Defueling Support,W529.3100,TOR 2030 Defueling Software Build,02-Jan-30,27-Nov-30,231,02-Jan-30*,27-Nov-30,231,231,0%,509,OGAH Alima
    W529LT,W529,TOR DPCS Defueling Support,W529.3110,TOR DPCS Long Term Support Contract 2030,02-Jan-30,31-Dec-30,253,02-Jan-30,31-Dec-30,253,253,0%,509,OGAH Alima
    W529LT,W529,TOR DPCS Defueling Support,W529.1140,TOR PES Group Support - 2030,02-Jan-30,31-Dec-30,253,02-Jan-30,31-Dec-30,253,253,0%,509,OGAH Alima
    W529LT,W529,TOR DPCS Defueling Support,W529.1150,TOR Plant Control Systems & Simulators (PCS&S) Group - 2030,02-Jan-30,31-Dec-30,253,02-Jan-30,31-Dec-30,253,253,0%,509,OGAH Alima
    W529LT,W529,TOR DPCS Defueling Support,W529.1545,TOR Thales Long Term Support Contract - Q1 2030,02-Jan-30,29-Mar-30,63,02-Jan-30*,29-Mar-30,63,63,0%,509,OGAH Alima
    W529LT,W529,TOR DPCS Defueling Support,W529.4830,TOR 2030 LSR - Pre-export Data Validation Produced and Completed,02-Jan-30,22-Feb-30,38,02-Jan-30*,22-Feb-30,38,38,0%,653,OGAH Alima
    W526LT,W526,HYB DPCS Defueling Support,W526.4830,HYB 2030 LSR - Pre-export Data Validation Produced and Completed,02-Jan-30,22-Feb-30,38,02-Jan-30*,22-Feb-30,38,38,0%,653,OGAH Alima
    W526LT,W526,HYB DPCS Defueling Support,W526.1545,HYB Thales Long Term Support Contract - Q1 2030,02-Jan-30,29-Mar-30,63,02-Jan-30*,29-Mar-30,63,63,0%,509,OGAH Alima
    W526LT,W526,HYB DPCS Defueling Support,W526.1150,HYB Plant Control Systems & Simulators (PCS&S) Group - 2030,02-Jan-30,10-Dec-30,240,02-Jan-30,10-Dec-30,240,240,0%,509,OGAH Alima
    W526LT,W526,HYB DPCS Defueling Support,W526.1140,HYB PES Group Support - 2030,02-Jan-30,31-Dec-30,253,02-Jan-30,31-Dec-30,253,253,0%,509,OGAH Alima
    W526LT,W526,HYB DPCS Defueling Support,W526.3110,HYB DPCS Long Term Support Contract 2030,02-Jan-30,31-Dec-30,253,02-Jan-30*,31-Dec-30,253,253,0%,509,OGAH Alima
    W526LT,W526,HYB DPCS Defueling Support,W526.3100,HYB 2030 Defueling Software Build,02-Jan-30,27-Nov-30,231,02-Jan-30,27-Nov-30,231,231,0%,509,OGAH Alima
    W526LT,W526,HYB DPCS Defueling Support,W526.10050,HYB 2030 External Costs,02-Jan-30,31-Dec-30,253,02-Jan-30,31-Dec-30,253,253,0%,509,OGAH Alima
    W529LT,W529,TOR DPCS Defueling Support,W529.10050,TOR 2030 External Costs,02-Jan-30,31-Dec-30,253,02-Jan-30,31-Dec-30,253,253,0%,509,OGAH Alima
    W526LT,W526,HYB DPCS Defueling Support,W526.10210,TPM and JCRB Meeting Held 2030,02-Jan-30,31-Dec-30,253,02-Jan-30,31-Dec-30,253,253,0%,0,OGAH Alima
    ER7743LT,W527,DNB DPCS Defueling Support,W527.26630,DNB PES Group Support - 2030,02-Jan-30,31-Dec-30,253,02-Jan-30*,31-Dec-30,253,253,0%,0,OGAH Alima
    ER7743LT,W527,DNB DPCS Defueling Support,W527.26640,Plant Control Systems & Simulators (PCS&S) Group - 2030,02-Jan-30,02-May-30,253,02-Jan-30,31-Dec-30,253,253,0%,0,OGAH Alima
    ER7743LT,W527,DNB DPCS Defueling Support,W527.26660,Worldgrid System Engineering Support (SQEP) Q1 2030,02-Jan-30,27-Mar-30,61,02-Jan-30,27-Mar-30,61,61,0%,0,OGAH Alima
    ER7743LT,W527,DNB DPCS Defueling Support,W527.26680,Worldgrid Software Modification Support (LAMPS) - Q1 2030,02-Jan-30,27-Mar-30,61,02-Jan-30,27-Mar-30,61,61,0%,0,OGAH Alima
    ER7743LT,W527,DNB DPCS Defueling Support,W527.26700,Worldgrid Long Term Support Contract Q1 2030,02-Jan-30,27-Mar-30,61,02-Jan-30,27-Mar-30,61,61,0%,0,OGAH Alima
    ER7743LT,W527,DNB DPCS Defueling Support,W527.26750,Thales POLARIS & AIC Support Contract Q1 2030,02-Jan-30,27-Mar-30,61,02-Jan-30,27-Mar-30,61,61,0%,0,OGAH Alima
    ER7743LT,W527,DNB DPCS Defueling Support,W527.26810,Cost Engineer Support 2030,02-Jan-30,31-Dec-30,253,02-Jan-30,31-Dec-30,253,253,0%,0,OGAH Alima
    ER7581LT,W195,HRA DPCS Defueling Support,W195.26110,ETC 2030,02-Jan-30,31-Dec-30,253,02-Jan-30,31-Dec-30,253,253,0%,0,OGAH Alima
    ER7581LT,W195,HRA DPCS Defueling Support,W194.1040,HRA PES Group Support - 2030,02-Jan-30,31-Dec-30,253,02-Jan-30,31-Dec-30,253,253,0%,0,OGAH Alima
    ER7581LT,W195,HRA DPCS Defueling Support,W194.1050,Plant Control Systems & Simulators (PCS&S) Group - 2030,02-Jan-30,31-Dec-30,253,02-Jan-30,31-Dec-30,253,253,0%,0,OGAH Alima
    ER7582LT,W196,HYA DPCS Defueling Support,W196.2350,ETC 2030,02-Jan-30,31-Dec-30,253,02-Jan-30,31-Dec-30,253,253,0%,0,OGAH Alima
    ER7582LT,W196,HYA DPCS Defueling Support,W194.1040,Plant Control Systems & Simulators (PCS&S) Group - 2030,02-Jan-30,31-Dec-30,253,02-Jan-30,31-Dec-30,253,253,0%,0,OGAH Alima
    ER7582LT,W196,HYA DPCS Defueling Support,W194.1050,HYA PES Group Support - 2030,02-Jan-30,31-Dec-30,253,02-Jan-30,31-Dec-30,253,253,0%,0,OGAH Alima
    ER7743LT,W527,DNB DPCS Defueling Support,W527.1250,ETC 2030,02-Jan-30,31-Dec-30,253,02-Jan-30,31-Dec-30,253,253,0%,0,OGAH Alima
    W529LT,W529,TOR DPCS Defueling Support,60,ETC 2030,02-Jan-30,31-Dec-30,253,02-Jan-30*,31-Dec-30,253,253,0%,509,OGAH Alima
    W529LT,W529,TOR DPCS Defueling Support,W195.1050,TPM and JCRB Meetings Held - 2030,02-Jan-30,31-Dec-30,253,02-Jan-30,31-Dec-30,253,253,0%,0,OGAH Alima
    W526LT,W526,HYB DPCS Defueling Support,W526.1240,ETC 2030,,,253,02-Jan-30,31-Dec-30,253,253,0%,0,OGAH Alima
 Subtotal,,,,,02-Jan-30,31-Dec-30,253,02-Jan-30,31-Dec-30,253,253,,509,OGAH Alima
 01-Feb-30
    W529LT,W529,TOR DPCS Defueling Support,W529.4820,TOR 2030 LSR - Data Export Produced and Issued,25-Feb-30,22-Mar-30,20,25-Feb-30,22-Mar-30,20,20,0%,653,OGAH Alima
    W526LT,W526,HYB DPCS Defueling Support,W526.4820,HYB 2030 LSR - Data Export Produced and Issued,25-Feb-30,22-Mar-30,20,25-Feb-30,22-Mar-30,20,20,0%,653,OGAH Alima
 Subtotal,,,,,25-Feb-30,22-Mar-30,20,25-Feb-30,22-Mar-30,20,20,,653,OGAH Alima
 01-Mar-30
    W529LT,W529,TOR DPCS Defueling Support,W529.4810,TOR 2030 LSR - Recommendations Produced and Issued,25-Mar-30,05-Apr-30,10,25-Mar-30,05-Apr-30,10,10,0%,653,OGAH Alima
    W526LT,W526,HYB DPCS Defueling Support,W526.4810,HYB 2030 LSR - Recommendations Produced and Issued,25-Mar-30,05-Apr-30,10,25-Mar-30,05-Apr-30,10,10,0%,653,OGAH Alima
    ER7743LT,W527,DNB DPCS Defueling Support,W527.26670,Worldgrid Software Modification Support (LAMPS) - Q2 2030,28-Mar-30,28-Jun-30,63,28-Mar-30,28-Jun-30,63,63,0%,253,OGAH Alima
    ER7743LT,W527,DNB DPCS Defueling Support,W527.26720,Worldgrid System Engineering Support (SQEP) Q2 2030,28-Mar-30,28-Jun-30,63,28-Mar-30*,28-Jun-30,63,63,0%,253,OGAH Alima
    ER7743LT,W527,DNB DPCS Defueling Support,W527.26740,Worldgrid Long Term Support Contract Q2 2030,28-Mar-30,28-Jun-30,63,28-Mar-30,28-Jun-30,63,63,0%,253,OGAH Alima
    ER7743LT,W527,DNB DPCS Defueling Support,W527.26780,Thales POLARIS & AIC Support Contract Q2 2030,28-Mar-30,28-Jun-30,63,28-Mar-30,28-Jun-30,63,63,0%,253,OGAH Alima
 Subtotal,,,,,25-Mar-30,28-Jun-30,66,25-Mar-30,28-Jun-30,66,66,,597,OGAH Alima
 01-Apr-30
    W529LT,W529,TOR DPCS Defueling Support,W529.1555,TOR Thales Long Term Support Contract - Q2 2030,01-Apr-30,28-Jun-30,61,01-Apr-30,28-Jun-30,61,61,0%,509,OGAH Alima
    W526LT,W526,HYB DPCS Defueling Support,W526.1555,HYB Thales Long Term Support Contract - Q2 2030,01-Apr-30,28-Jun-30,61,01-Apr-30,28-Jun-30,61,61,0%,509,OGAH Alima
    W529LT,W529,TOR DPCS Defueling Support,W529.4800,TOR 2030 LSR - Recommendation Sentencing Workshop Preparation and Event,08-Apr-30,23-Apr-30,10,08-Apr-30,23-Apr-30,10,10,0%,653,OGAH Alima
    W526LT,W526,HYB DPCS Defueling Support,W526.4800,HYB 2030 LSR - Recommendation Sentencing Workshop Preparation and Event,08-Apr-30,23-Apr-30,10,08-Apr-30,23-Apr-30,10,10,0%,653,OGAH Alima
    W529LT,W529,TOR DPCS Defueling Support,W529.4790,TOR 2030 LSR - Draft Report Produced and Issued for EDF Review,24-Apr-30,09-May-30,11,24-Apr-30,09-May-30,11,11,0%,653,OGAH Alima
    W526LT,W526,HYB DPCS Defueling Support,W526.4790,HYB 2030 LSR - Draft Report Produced and Issued for EDF Review,24-Apr-30,09-May-30,11,24-Apr-30,09-May-30,11,11,0%,653,OGAH Alima
 Subtotal,,,,,01-Apr-30,28-Jun-30,61,01-Apr-30,28-Jun-30,61,61,,618,OGAH Alima
 01-May-30
    W529LT,W529,TOR DPCS Defueling Support,W529.4780,TOR 2030 LSR - EDF Review Comments Produced and Provided,10-May-30,24-May-30,11,10-May-30,24-May-30,11,11,0%,653,OGAH Alima
    W526LT,W526,HYB DPCS Defueling Support,W526.4780,HYB 2030 LSR - EDF Review Comments Produced and Provided,10-May-30,24-May-30,11,10-May-30,24-May-30,11,11,0%,653,OGAH Alima
    W529LT,W529,TOR DPCS Defueling Support,W529.4770,TOR 2030 LSR - Final Report Produced and Issued,28-May-30,07-Jun-30,9,28-May-30,07-Jun-30,9,9,0%,653,OGAH Alima
    W526LT,W526,HYB DPCS Defueling Support,W526.4770,HYB 2030 LSR - Final Report Produced and Issued,28-May-30,07-Jun-30,9,28-May-30,07-Jun-30,9,9,0%,653,OGAH Alima
    ER7743LT,W527,DNB DPCS Defueling Support,W527.26820,Asset Guardian Licences and Support 2030,28-May-30,28-May-30,1,28-May-30*,28-May-30,1,1,0%,405,OGAH Alima
 Subtotal,,,,,10-May-30,07-Jun-30,20,10-May-30,07-Jun-30,20,20,,653,OGAH Alima
 01-Jul-30
    W529LT,W529,TOR DPCS Defueling Support,W529.1565,TOR Thales Long Term Support Contract - Q3 2030,01-Jul-30,30-Sep-30,65,01-Jul-30,30-Sep-30,65,65,0%,509,OGAH Alima
    W526LT,W526,HYB DPCS Defueling Support,W526.1565,HYB Thales Long Term Support Contract - Q3 2030,01-Jul-30,30-Sep-30,65,01-Jul-30,30-Sep-30,65,65,0%,509,OGAH Alima
    ER7743LT,W527,DNB DPCS Defueling Support,W527.26690,Worldgrid Long Term Support Contract Q3 2030,01-Jul-30,30-Sep-30,65,01-Jul-30,30-Sep-30,65,65,0%,253,OGAH Alima
    ER7743LT,W527,DNB DPCS Defueling Support,W527.26710,Worldgrid System Engineering Support (SQEP) Q3 2030,01-Jul-30,30-Sep-30,65,01-Jul-30*,30-Sep-30,65,65,0%,253,OGAH Alima
    ER7743LT,W527,DNB DPCS Defueling Support,W527.26770,Thales POLARIS & AIC Support Contract Q3 2030,01-Jul-30,30-Sep-30,65,01-Jul-30,30-Sep-30,65,65,0%,253,OGAH Alima
    ER7743LT,W527,DNB DPCS Defueling Support,W527.26790,Worldgrid Software Modification Support (LAMPS) - Q3 2030,01-Jul-30,30-Sep-30,65,01-Jul-30,30-Sep-30,65,65,0%,253,OGAH Alima
 Subtotal,,,,,01-Jul-30,30-Sep-30,65,01-Jul-30,30-Sep-30,65,65,,509,OGAH Alima
 01-Oct-30
    W529LT,W529,TOR DPCS Defueling Support,W529.1575,TOR Thales Long Term Support Contract - Q4 2030,01-Oct-30,31-Dec-30,64,01-Oct-30,31-Dec-30,64,64,0%,509,OGAH Alima
    W526LT,W526,HYB DPCS Defueling Support,W526.1575,HYB Thales Long Term Support Contract - Q4 2030,01-Oct-30,31-Dec-30,64,01-Oct-30,31-Dec-30,64,64,0%,509,OGAH Alima
    ER7743LT,W527,DNB DPCS Defueling Support,W527.26650,Worldgrid System Engineering Support (SQEP) Q4 2030,01-Oct-30,31-Dec-30,64,01-Oct-30*,31-Dec-30,64,64,0%,253,OGAH Alima
    ER7743LT,W527,DNB DPCS Defueling Support,W527.26730,Worldgrid Long Term Support Contract Q4 2030,01-Oct-30,31-Dec-30,64,01-Oct-30,31-Dec-30,64,64,0%,253,OGAH Alima
    ER7743LT,W527,DNB DPCS Defueling Support,W527.26760,Thales POLARIS & AIC Support Contract Q4 2030,01-Oct-30,31-Dec-30,64,01-Oct-30,31-Dec-30,64,64,0%,253,OGAH Alima
    ER7743LT,W527,DNB DPCS Defueling Support,W527.26800,Worldgrid Software Modification Support (LAMPS) - Q4 2030,01-Oct-30,31-Dec-30,64,01-Oct-30,31-Dec-30,64,64,0%,253,OGAH Alima
 Subtotal,,,,,01-Oct-30,31-Dec-30,64,01-Oct-30,31-Dec-30,64,64,,509,OGAH Alima
 01-Jan-31
    W529LT,W529,TOR DPCS Defueling Support,W529.1585,TOR Thales Long Term Support Contract - Q1 2031,02-Jan-31,31-Mar-31,63,02-Jan-31*,31-Mar-31,63,63,0%,256,OGAH Alima
    W529LT,W529,TOR DPCS Defueling Support,W529.4900,TOR 2031 LSR - Pre-export Data Validation Produced and Completed,02-Jan-31,24-Feb-31,38,02-Jan-31*,24-Feb-31,38,38,0%,400,OGAH Alima
    W526LT,W526,HYB DPCS Defueling Support,W526.4900,HYB 2031 LSR - Pre-export Data Validation Produced and Completed,02-Jan-31,24-Feb-31,38,02-Jan-31*,24-Feb-31,38,38,0%,400,OGAH Alima
    W526LT,W526,HYB DPCS Defueling Support,W526.1170,HYB Plant Control Systems & Simulators (PCS&S) Group - 2031,02-Jan-31,31-Dec-31,253,02-Jan-31,31-Dec-31,253,253,0%,0,OGAH Alima
    W526LT,W526,HYB DPCS Defueling Support,W526.1160,HYB PES Group Support - 2031,02-Jan-31,31-Dec-31,253,02-Jan-31,31-Dec-31,253,253,0%,0,OGAH Alima
    W526LT,W526,HYB DPCS Defueling Support,W526.3130,HYB DPCS Long Term Support Contract 2031,02-Jan-31,31-Dec-31,253,02-Jan-31*,31-Dec-31,253,253,0%,0,OGAH Alima
    W526LT,W526,HYB DPCS Defueling Support,W526.1585,HYB Thales Long Term Support Contract - Q1 2031,02-Jan-31,31-Mar-31,63,02-Jan-31*,31-Mar-31,63,63,0%,0,OGAH Alima
    W526LT,W526,HYB DPCS Defueling Support,W526.1595,HYB Thales Long Term Support Contract - Q2 2031,01-Apr-31,30-Jun-31,61,02-Jan-31,27-Mar-31,61,61,0%,319,OGAH Alima
    W526LT,W526,HYB DPCS Defueling Support,W526.3120,HYB 2031 Defueling Software Build,02-Jan-31,27-Nov-31,231,02-Jan-31,27-Nov-31,231,231,0%,0,OGAH Alima
    W526LT,W526,HYB DPCS Defueling Support,W526.10060,HYB 2031 External Costs,02-Jan-31,31-Dec-31,253,02-Jan-31,31-Dec-31,253,253,0%,0,OGAH Alima
    W526LT,W526,HYB DPCS Defueling Support,W526.10220,TPM and JCRB Meeting Held 2031,02-Jan-31,31-Dec-31,253,02-Jan-31,31-Dec-31,253,253,0%,0,OGAH Alima
    ER7743LT,W527,DNB DPCS Defueling Support,W527.26910,DNB PES Group Support - 2031,02-Jan-31,31-Dec-31,253,02-Jan-31,31-Dec-31,253,253,0%,0,OGAH Alima
    ER7743LT,W527,DNB DPCS Defueling Support,W527.26920,Plant Control Systems & Simulators (PCS&S) Group - 2031,02-Jan-31,26-Mar-31,253,02-Jan-31,31-Dec-31,253,253,0%,0,OGAH Alima
    ER7743LT,W527,DNB DPCS Defueling Support,W527.26940,Worldgrid System Engineering Support (SQEP) Q1 2031,02-Jan-31,27-Mar-31,61,02-Jan-31,27-Mar-31,61,61,0%,0,OGAH Alima
    ER7743LT,W527,DNB DPCS Defueling Support,W527.26960,Worldgrid Software Modification Support (LAMPS) - Q1 2031,02-Jan-31,27-Mar-31,61,02-Jan-31,27-Mar-31,61,61,0%,0,OGAH Alima
    ER7743LT,W527,DNB DPCS Defueling Support,W527.26980,Worldgrid Long Term Support Contract Q1 2031,02-Jan-31,27-Mar-31,61,02-Jan-31,27-Mar-31,61,61,0%,0,OGAH Alima
    ER7743LT,W527,DNB DPCS Defueling Support,W527.27030,Thales POLARIS & AIC Support Contract Q1 2031,02-Jan-31,27-Mar-31,61,02-Jan-31,27-Mar-31,61,61,0%,0,OGAH Alima
    ER7743LT,W527,DNB DPCS Defueling Support,W527.27090,Cost Engineer Support 2031,02-Jan-31,31-Dec-31,253,02-Jan-31,31-Dec-31,253,253,0%,0,OGAH Alima
    ER7743LT,W527,DNB DPCS Defueling Support,W527.1290,ETC 2031,02-Jan-31,31-Dec-31,253,02-Jan-31,31-Dec-31,253,253,0%,0,OGAH Alima
    W529LT,W529,TOR DPCS Defueling Support,70,ETC 2031,02-Jan-31,31-Dec-31,253,02-Jan-31*,31-Dec-31,253,253,0%,256,OGAH Alima
    W529LT,W529,TOR DPCS Defueling Support,W195.1060,TPM and JCRB Meetings Held - 2031,02-Jan-31,31-Dec-31,253,02-Jan-31,31-Dec-31,253,253,0%,0,OGAH Alima
    W526LT,W526,HYB DPCS Defueling Support,W526.1250,ETC 2031,,,253,02-Jan-31,31-Dec-31,253,253,0%,0,OGAH Alima
    W529LT,W529,TOR DPCS Defueling Support,W529.3120,TOR 2031 Defueling Software Build,02-Jan-31,27-Nov-31,231,03-Jan-31*,28-Nov-31,231,231,0%,255,OGAH Alima
    W529LT,W529,TOR DPCS Defueling Support,W529.3130,TOR DPCS Long Term Support Contract 2031,02-Jan-31,31-Dec-31,253,03-Jan-31,02-Jan-32,253,253,0%,255,OGAH Alima
    W529LT,W529,TOR DPCS Defueling Support,W529.1160,TOR PES Group Support - 2031,02-Jan-31,31-Dec-31,253,03-Jan-31,02-Jan-32,253,253,0%,255,OGAH Alima
    W529LT,W529,TOR DPCS Defueling Support,W529.1170,TOR Plant Control Systems & Simulators (PCS&S) Group - 2031,02-Jan-31,31-Dec-31,253,03-Jan-31,02-Jan-32,253,253,0%,255,OGAH Alima
    W529LT,W529,TOR DPCS Defueling Support,W529.10060,TOR 2031 External Costs,02-Jan-31,31-Dec-31,253,03-Jan-31,02-Jan-32,253,253,0%,255,OGAH Alima
 Subtotal,,,,,02-Jan-31,31-Dec-31,254,02-Jan-31,02-Jan-32,254,254,,255,OGAH Alima
 01-Feb-31
    W529LT,W529,TOR DPCS Defueling Support,W529.4890,TOR 2031 LSR - Data Export Produced and Issued,25-Feb-31,24-Mar-31,20,25-Feb-31,24-Mar-31,20,20,0%,400,OGAH Alima
    W526LT,W526,HYB DPCS Defueling Support,W526.4890,HYB 2031 LSR - Data Export Produced and Issued,25-Feb-31,24-Mar-31,20,25-Feb-31,24-Mar-31,20,20,0%,400,OGAH Alima
 Subtotal,,,,,25-Feb-31,24-Mar-31,20,25-Feb-31,24-Mar-31,20,20,,400,OGAH Alima
 01-Mar-31
    W529LT,W529,TOR DPCS Defueling Support,W529.4880,TOR 2031 LSR - Recommendations Produced and Issued,25-Mar-31,07-Apr-31,10,25-Mar-31,07-Apr-31,10,10,0%,400,OGAH Alima
    W526LT,W526,HYB DPCS Defueling Support,W526.4880,HYB 2031 LSR - Recommendations Produced and Issued,25-Mar-31,07-Apr-31,10,25-Mar-31,07-Apr-31,10,10,0%,400,OGAH Alima
    W526LT,W526,HYB DPCS Defueling Support,W526.1605,HYB Thales Long Term Support Contract - Q3 2031,01-Jul-31,30-Sep-31,65,28-Mar-31,02-Jul-31,65,65,0%,319,OGAH Alima
    ER7743LT,W527,DNB DPCS Defueling Support,W527.26950,Worldgrid Software Modification Support (LAMPS) - Q2 2031,28-Mar-31,30-Jun-31,63,28-Mar-31,30-Jun-31,63,63,0%,0,OGAH Alima
    ER7743LT,W527,DNB DPCS Defueling Support,W527.27000,Worldgrid System Engineering Support (SQEP) Q2 2031,28-Mar-31,30-Jun-31,63,28-Mar-31*,30-Jun-31,63,63,0%,0,OGAH Alima
    ER7743LT,W527,DNB DPCS Defueling Support,W527.27020,Worldgrid Long Term Support Contract Q2 2031,28-Mar-31,30-Jun-31,63,28-Mar-31,30-Jun-31,63,63,0%,0,OGAH Alima
    ER7743LT,W527,DNB DPCS Defueling Support,W527.27060,Thales POLARIS & AIC Support Contract Q2 2031,28-Mar-31,30-Jun-31,63,28-Mar-31,30-Jun-31,63,63,0%,0,OGAH Alima
 Subtotal,,,,,25-Mar-31,30-Sep-31,68,25-Mar-31,02-Jul-31,68,68,,342,OGAH Alima
 01-Apr-31
    W529LT,W529,TOR DPCS Defueling Support,W529.1595,TOR Thales Long Term Support Contract - Q2 2031,01-Apr-31,30-Jun-31,61,01-Apr-31,30-Jun-31,61,61,0%,256,OGAH Alima
    W529LT,W529,TOR DPCS Defueling Support,W529.4870,TOR 2031 LSR - Recommendation Sentencing Workshop Preparation and Event,08-Apr-31,23-Apr-31,10,08-Apr-31,23-Apr-31,10,10,0%,400,OGAH Alima
    W526LT,W526,HYB DPCS Defueling Support,W526.4870,HYB 2031 LSR - Recommendation Sentencing Workshop Preparation and Event,08-Apr-31,23-Apr-31,10,08-Apr-31,23-Apr-31,10,10,0%,400,OGAH Alima
    W529LT,W529,TOR DPCS Defueling Support,W529.4860,TOR 2031 LSR - Draft Report Produced and Issued for EDF Review,24-Apr-31,09-May-31,11,24-Apr-31,09-May-31,11,11,0%,400,OGAH Alima
    W526LT,W526,HYB DPCS Defueling Support,W526.4860,HYB 2031 LSR - Draft Report Produced and Issued for EDF Review,24-Apr-31,09-May-31,11,24-Apr-31,09-May-31,11,11,0%,400,OGAH Alima
 Subtotal,,,,,01-Apr-31,30-Jun-31,61,01-Apr-31,30-Jun-31,61,61,,365,OGAH Alima
 01-May-31
    W529LT,W529,TOR DPCS Defueling Support,W529.4850,TOR 2031 LSR - EDF Review Comments Produced and Provided,12-May-31,27-May-31,11,12-May-31,27-May-31,11,11,0%,400,OGAH Alima
    W526LT,W526,HYB DPCS Defueling Support,W526.4850,HYB 2031 LSR - EDF Review Comments Produced and Provided,12-May-31,27-May-31,11,12-May-31,27-May-31,11,11,0%,400,OGAH Alima
    W529LT,W529,TOR DPCS Defueling Support,W529.4840,TOR 2031 LSR - Final Report Produced and Issued,28-May-31,09-Jun-31,9,28-May-31,09-Jun-31,9,9,0%,400,OGAH Alima
    W526LT,W526,HYB DPCS Defueling Support,W526.4840,HYB 2031 LSR - Final Report Produced and Issued,28-May-31,09-Jun-31,9,28-May-31,09-Jun-31,9,9,0%,400,OGAH Alima
    ER7743LT,W527,DNB DPCS Defueling Support,W527.27100,Asset Guardian Licences and Support 2031,30-May-31,30-May-31,1,30-May-31*,30-May-31,1,1,0%,150,OGAH Alima
 Subtotal,,,,,12-May-31,09-Jun-31,20,12-May-31,09-Jun-31,20,20,,400,OGAH Alima
 01-Jul-31
    W529LT,W529,TOR DPCS Defueling Support,W529.1605,TOR Thales Long Term Support Contract - Q3 2031,01-Jul-31,30-Sep-31,65,01-Jul-31,30-Sep-31,65,65,0%,256,OGAH Alima
    ER7743LT,W527,DNB DPCS Defueling Support,W527.26970,Worldgrid Long Term Support Contract Q3 2031,01-Jul-31,30-Sep-31,65,01-Jul-31,30-Sep-31,65,65,0%,0,OGAH Alima
    ER7743LT,W527,DNB DPCS Defueling Support,W527.26990,Worldgrid System Engineering Support (SQEP) Q3 2031,01-Jul-31,30-Sep-31,65,01-Jul-31*,30-Sep-31,65,65,0%,0,OGAH Alima
    ER7743LT,W527,DNB DPCS Defueling Support,W527.27050,Thales POLARIS & AIC Support Contract Q3 2031,01-Jul-31,30-Sep-31,65,01-Jul-31,30-Sep-31,65,65,0%,0,OGAH Alima
    ER7743LT,W527,DNB DPCS Defueling Support,W527.27070,Worldgrid Software Modification Support (LAMPS) - Q3 2031,01-Jul-31,30-Sep-31,65,01-Jul-31,30-Sep-31,65,65,0%,64,OGAH Alima
    W526LT,W526,HYB DPCS Defueling Support,W526.1615,HYB Thales Long Term Support Contract - Q4 2031,01-Oct-31,31-Dec-31,64,03-Jul-31,01-Oct-31,64,64,0%,319,OGAH Alima
 Subtotal,,,,,01-Jul-31,31-Dec-31,66,01-Jul-31,01-Oct-31,66,66,,319,OGAH Alima
 01-Sep-31
    W529LT,W529,TOR DPCS Defueling Support,W529.5120,TOR 2031 TGN097 Inspection,,01-Sep-31,0,,01-Sep-31*,0,0,0%,342,OGAH Alima
    W526LT,W526,HYB DPCS Defueling Support,W526.5120,HYB 2031 TGN097 Inspection,,01-Sep-31,0,,01-Sep-31*,0,0,0%,342,OGAH Alima
 Subtotal,,,,,01-Sep-31,01-Sep-31,0,01-Sep-31,01-Sep-31,0,0,,342,OGAH Alima
 01-Oct-31
    W529LT,W529,TOR DPCS Defueling Support,W529.1615,TOR Thales Long Term Support Contract - Q4 2031,01-Oct-31,31-Dec-31,64,01-Oct-31,31-Dec-31,64,64,0%,256,OGAH Alima
    ER7743LT,W527,DNB DPCS Defueling Support,W527.26930,Worldgrid System Engineering Support (SQEP) Q4 2031,01-Oct-31,31-Dec-31,64,01-Oct-31*,31-Dec-31,64,64,0%,0,OGAH Alima
    ER7743LT,W527,DNB DPCS Defueling Support,W527.27010,Worldgrid Long Term Support Contract Q4 2031,01-Oct-31,31-Dec-31,64,01-Oct-31,31-Dec-31,64,64,0%,0,OGAH Alima
    ER7743LT,W527,DNB DPCS Defueling Support,W527.27040,Thales POLARIS & AIC Support Contract Q4 2031,01-Oct-31,31-Dec-31,64,01-Oct-31,31-Dec-31,64,64,0%,0,OGAH Alima
    ER7743LT,W527,DNB DPCS Defueling Support,W527.27080,Worldgrid Software Modification Support (LAMPS) - Q4 2031,01-Oct-31,31-Dec-31,64,01-Oct-31,31-Dec-31,64,64,0%,0,OGAH Alima
 Subtotal,,,,,01-Oct-31,31-Dec-31,64,01-Oct-31,31-Dec-31,64,64,,256,OGAH Alima
 01-Jan-32
    W529LT,W529,TOR DPCS Defueling Support,W529.3140,TOR 2032 Defueling Software Build,02-Jan-32,26-Nov-32,231,02-Jan-32*,26-Nov-32,231,231,0%,0,OGAH Alima
    W529LT,W529,TOR DPCS Defueling Support,W529.1625,TOR Thales Long Term Support Contract - Q1 2032,02-Jan-32,31-Mar-32,62,02-Jan-32*,31-Mar-32,62,62,0%,0,OGAH Alima
    W529LT,W529,TOR DPCS Defueling Support,W529.3150,TOR DPCS Long Term Support Contract 2032,02-Jan-32,31-Dec-32,256,02-Jan-32,31-Dec-32,256,256,0%,0,OGAH Alima
    W529LT,W529,TOR DPCS Defueling Support,W529.1180,TOR PES Group Support - 2032,02-Jan-32,31-Dec-32,256,02-Jan-32,31-Dec-32,256,256,0%,0,OGAH Alima
    W529LT,W529,TOR DPCS Defueling Support,W529.1190,TOR Plant Control Systems & Simulators (PCS&S) Group - 2032,02-Jan-32,31-Dec-32,256,02-Jan-32,31-Dec-32,256,256,0%,0,OGAH Alima
    W529LT,W529,TOR DPCS Defueling Support,W529.4970,TOR 2032 LSR - Pre-export Data Validation Produced and Completed,02-Jan-32,24-Feb-32,38,02-Jan-32*,24-Feb-32,38,38,0%,147,OGAH Alima
    W526LT,W526,HYB DPCS Defueling Support,W526.4970,HYB 2032 LSR - Pre-export Data Validation Produced and Completed,02-Jan-32,24-Feb-32,38,02-Jan-32*,24-Feb-32,38,38,0%,147,OGAH Alima
    W526LT,W526,HYB DPCS Defueling Support,W526.1190,HYB Plant Control Systems & Simulators (PCS&S) Group - 2032,02-Jan-32,31-Dec-32,256,02-Jan-32*,31-Dec-32,256,256,0%,0,OGAH Alima
    W526LT,W526,HYB DPCS Defueling Support,W526.1180,HYB PES Group Support - 2032,02-Jan-32,31-Dec-32,256,02-Jan-32,31-Dec-32,256,256,0%,0,OGAH Alima
    W526LT,W526,HYB DPCS Defueling Support,W526.3150,HYB DPCS Long Term Support Contract 2032,02-Jan-32,31-Dec-32,256,02-Jan-32*,31-Dec-32,256,256,0%,0,OGAH Alima
    W526LT,W526,HYB DPCS Defueling Support,W526.1625,HYB Thales Long Term Support Contract - Q1 2032 Delivery,02-Jan-32,31-Mar-32,62,02-Jan-32*,31-Mar-32,62,62,0%,62,OGAH Alima
    W526LT,W526,HYB DPCS Defueling Support,W526.1635,HYB Thales Long Term Support Contract - Q2 2032 Delivery,01-Apr-32,30-Jun-32,63,02-Jan-32,01-Apr-32,63,63,0%,62,OGAH Alima
    W526LT,W526,HYB DPCS Defueling Support,W526.3140,HYB 2032 Defueling Software Build,02-Jan-32,26-Nov-32,231,02-Jan-32,26-Nov-32,231,231,0%,0,OGAH Alima
    W526LT,W526,HYB DPCS Defueling Support,W526.10070,HYB 2032 External Costs,02-Jan-32,31-Dec-32,256,02-Jan-32,31-Dec-32,256,256,0%,0,OGAH Alima
    W529LT,W529,TOR DPCS Defueling Support,W529.10070,TOR 2032 External Costs,02-Jan-32,31-Dec-32,256,02-Jan-32,31-Dec-32,256,256,0%,0,OGAH Alima
    W526LT,W526,HYB DPCS Defueling Support,W526.10230,TPM and JCRB Meeting Held 2032,02-Jan-32,31-Dec-32,256,02-Jan-32,31-Dec-32,256,256,0%,0,OGAH Alima
    W529LT,W529,TOR DPCS Defueling Support,80,ETC 2032,02-Jan-32,31-Dec-32,256,02-Jan-32*,31-Dec-32,256,256,0%,0,OGAH Alima
    W529LT,W529,TOR DPCS Defueling Support,W195.1070,TPM and JCRB Meetings Held - 2032,02-Jan-32,31-Dec-32,256,02-Jan-32,31-Dec-32,256,256,0%,0,OGAH Alima
    W526LT,W526,HYB DPCS Defueling Support,W526.1260,ETC 2032,,,256,02-Jan-32,31-Dec-32,256,256,0%,0,OGAH Alima
 Subtotal,,,,,02-Jan-32,31-Dec-32,256,02-Jan-32,31-Dec-32,256,256,,0,OGAH Alima
 01-Feb-32
    W529LT,W529,TOR DPCS Defueling Support,W529.4960,TOR 2032 LSR - Asset Guardian Data Export Produced and Issued,25-Feb-32,23-Mar-32,20,25-Feb-32,23-Mar-32,20,20,0%,147,OGAH Alima
    W526LT,W526,HYB DPCS Defueling Support,W526.4960,HYB 2032 LSR - Data Export Produced and Issued,25-Feb-32,23-Mar-32,20,25-Feb-32,23-Mar-32,20,20,0%,147,OGAH Alima
 Subtotal,,,,,25-Feb-32,23-Mar-32,20,25-Feb-32,23-Mar-32,20,20,,147,OGAH Alima
 01-Mar-32
    W529LT,W529,TOR DPCS Defueling Support,W529.4950,TOR 2032 LSR - Recommendations Produced and Issued,24-Mar-32,08-Apr-32,10,24-Mar-32,08-Apr-32,10,10,0%,147,OGAH Alima
    W526LT,W526,HYB DPCS Defueling Support,W526.4950,HYB 2032 LSR - Recommendations Produced and Issued,24-Mar-32,08-Apr-32,10,24-Mar-32,08-Apr-32,10,10,0%,147,OGAH Alima
 Subtotal,,,,,24-Mar-32,08-Apr-32,10,24-Mar-32,08-Apr-32,10,10,,147,OGAH Alima
 01-Apr-32
    W529LT,W529,TOR DPCS Defueling Support,W529.1635,TOR Thales Long Term Support Contract - Q2 2032,01-Apr-32,30-Jun-32,63,01-Apr-32,30-Jun-32,63,63,0%,0,OGAH Alima
    W526LT,W526,HYB DPCS Defueling Support,W526.1645,HYB Thales Long Term Support Contract - Q3 2032 Delivery,01-Jul-32,30-Sep-32,65,02-Apr-32,05-Jul-32,65,65,0%,62,OGAH Alima
    W529LT,W529,TOR DPCS Defueling Support,W529.4940,TOR 2032 LSR - Recommendation Sentencing Workshop Preparation and Event,09-Apr-32,22-Apr-32,10,09-Apr-32,22-Apr-32,10,10,0%,147,OGAH Alima
    W526LT,W526,HYB DPCS Defueling Support,W526.4940,HYB 2032 LSR - Recommendation Sentencing Workshop Preparation and Event,09-Apr-32,22-Apr-32,10,09-Apr-32,22-Apr-32,10,10,0%,147,OGAH Alima
    W529LT,W529,TOR DPCS Defueling Support,W529.4930,TOR 2032 LSR - Draft Report Produced and Issued for EDF Review,23-Apr-32,10-May-32,11,23-Apr-32,10-May-32,11,11,0%,147,OGAH Alima
    W526LT,W526,HYB DPCS Defueling Support,W526.4930,HYB 2032 LSR - Draft Report Produced and Issued for EDF Review,23-Apr-32,10-May-32,11,23-Apr-32,10-May-32,11,11,0%,147,OGAH Alima
 Subtotal,,,,,01-Apr-32,30-Sep-32,66,01-Apr-32,05-Jul-32,66,66,,108,OGAH Alima
 01-May-32
    W529LT,W529,TOR DPCS Defueling Support,W529.4920,TOR 2032 LSR - EDF Review Comments Produced and Provided,11-May-32,25-May-32,11,11-May-32,25-May-32,11,11,0%,147,OGAH Alima
    W526LT,W526,HYB DPCS Defueling Support,W526.4920,HYB 2032 LSR - EDF Review Comments Produced and Provided,11-May-32,25-May-32,11,11-May-32,25-May-32,11,11,0%,147,OGAH Alima
    W529LT,W529,TOR DPCS Defueling Support,W529.4910,TOR 2032 LSR - Final Report Produced and Issued,26-May-32,08-Jun-32,9,26-May-32,08-Jun-32,9,9,0%,147,OGAH Alima
    W526LT,W526,HYB DPCS Defueling Support,W526.4910,HYB 2032 LSR - Final Report Produced and Issued,26-May-32,08-Jun-32,9,26-May-32,08-Jun-32,9,9,0%,147,OGAH Alima
 Subtotal,,,,,11-May-32,08-Jun-32,20,11-May-32,08-Jun-32,20,20,,147,OGAH Alima
 01-Jul-32
    W529LT,W529,TOR DPCS Defueling Support,W529.1645,TOR Thales Long Term Support Contract - Q3 2032,01-Jul-32,30-Sep-32,65,01-Jul-32,30-Sep-32,65,65,0%,0,OGAH Alima
    W526LT,W526,HYB DPCS Defueling Support,W526.1655,HYB Thales Long Term Support Contract - Q4 2032 Delivery,01-Oct-32,31-Dec-32,66,06-Jul-32,06-Oct-32,66,66,0%,62,OGAH Alima
 Subtotal,,,,,01-Jul-32,31-Dec-32,69,01-Jul-32,06-Oct-32,69,69,,62,OGAH Alima
 01-Oct-32
    W529LT,W529,TOR DPCS Defueling Support,W529.1655,TOR Thales Long Term Support Contract - Q4 2032,01-Oct-32,31-Dec-32,66,01-Oct-32,31-Dec-32,66,66,0%,0,OGAH Alima
 Subtotal,W529,,,,01-Oct-32,31-Dec-32,66,01-Oct-32,31-Dec-32,66,66,,0,OGAH Alima
 01-Dec-32
    W529LT,W529,TOR DPCS Defueling Support,W529.1010,TOR - DPCS Defueling Support - Project End,,31-Dec-32,0,,30-Dec-32,0,0,0%,1,OGAH Alima
    W526LT,W526,HYB DPCS Defueling Support,W526.1010,HYB - DPCS Defueling Support - Project End,,31-Dec-32,0,,30-Dec-32,0,0,0%,1,OGAH Alima
 Subtotal,,,,,31-Dec-32,31-Dec-32,0,30-Dec-32,30-Dec-32,0,0,,1,OGAH Alima
